# As-built period from Mar 2010 to May 2014

Schedule from Primavera P6, 2010-02-07 to 2018-04-10, data date 2017-01-01, A marks actual dates.
Baseline Data Date / 1-Jun-14
Must finish by 2015-05-10

## Calendars

- W7 - 6 day - Single Shift (10H) - All Holidays: Mon-Sat 08:00-12:00, 13:00-18:00; Sun off. Exceptions (off unless hours are given): 2010-02-13, 2010-02-15 to 2010-02-20, 2010-04-02 to 2010-04-03, 2010-04-05 to 2010-04-06, 2010-05-21, 2010-06-16, 2010-07-01, 2010-09-23, 2010-10-01, 2010-10-16, 2010-12-22, 2010-12-25, 2010-12-27, 2011-01-01, 2011-02-03 to 2011-02-05, 2011-04-05, 2011-04-22 to 2011-04-23, 2011-04-25, 2011-05-02, 2011-05-10, 2011-06-06, 2011-07-01, 2011-09-13, 2011-10-01, 2011-10-05, 2011-12-25 to 2011-12-27, 2012-01-01 to 2012-01-02, 2012-01-22 to 2012-01-25, 2012-04-04, 2012-04-06 to 2012-04-09, 2012-04-28, 2012-05-01, 2012-07-01 to 2012-07-02, 2012-09-30 to 2012-10-02, 2012-10-23, 2012-12-25 to 2012-12-26, 2013-01-01, 2013-02-10 to 2013-02-12, 2013-03-29 to 2013-03-30, 2013-04-01, 2013-04-05, 2013-05-01, 2013-05-17, 2013-06-12, 2013-06-30 to 2013-07-01, 2013-09-20, 2013-10-01, 2013-10-06, 2013-10-13 to 2013-10-14, 2013-10-20, 2013-10-27, 2013-11-03, 2013-11-10, 2013-11-17, 2013-11-24, 2013-12-01, 2013-12-08, 2013-12-15, 2013-12-22, 2013-12-25 to 2013-12-26, 2013-12-29, 2014-01-01, 2014-01-05, 2014-01-12, 2014-01-19, 2014-01-26, 2014-01-31 to 2014-02-01, 2014-04-05, 2014-04-18 to 2014-04-19, 2014-04-21, 2014-05-01, 2014-06-02, 2014-06-12, 2014-07-01, 2014-09-08, 2014-10-01, 2014-12-25 to 2014-12-26, 2015-01-01, 2015-02-15, 2015-02-19 to 2015-02-21, 2015-04-05 to 2015-04-06, 2015-12-25, 2016-01-01, 2016-12-25, 2017-01-01, 2017-12-25, 2018-01-01.
- W7 - 24 Hour - 7 day - No Holiday: Mon-Sun 00:00-00:00. Exceptions (off unless hours are given): 2010-02-13, 2010-02-15 to 2010-02-20, 2014-02-01, 2015-12-25, 2016-01-01, 2016-12-25, 2017-01-01, 2017-12-25, 2018-01-01.
- Shing Mun 24/7-1: Mon-Sun 07:30-16:30. Exceptions (off unless hours are given): 2010-02-13, 2010-02-15 to 2010-02-16, 2010-05-01, 2010-06-16, 2010-07-01, 2010-09-23, 2010-10-01, 2010-10-16, 2010-12-25, 2010-12-27, 2011-01-01, 2011-02-03 to 2011-02-05, 2011-04-05, 2011-05-02, 2011-06-06, 2011-07-01, 2011-09-13, 2011-10-01, 2011-10-05, 2011-12-25 to 2011-12-27, 2012-01-01 to 2012-01-02, 2012-01-23 to 2012-01-25, 2012-04-06 to 2012-04-07, 2012-05-01, 2012-06-23, 2012-07-02, 2012-09-11, 2012-10-01, 2012-10-05, 2012-12-25 to 2012-12-26, 2013-01-01, 2013-02-09, 2013-02-11 to 2013-02-12, 2013-04-04, 2013-05-01, 2013-06-12, 2013-07-01, 2013-09-19, 2013-10-01, 2013-10-09, 2013-12-25 to 2013-12-26, 2014-01-01, 2014-01-30 to 2014-02-01, 2014-04-05, 2014-05-01, 2014-06-02, 2014-07-01, 2014-09-08, 2014-10-01 to 2014-10-02, 2014-12-25 to 2014-12-26, 2015-01-01, 2015-02-16 to 2015-02-21, 2015-04-06, 2015-05-01, 2015-09-28, 2015-12-25, 2016-01-01, 2016-12-25, 2017-01-01, 2017-12-25, 2018-01-01.
- W822 - 3 - 6D+ Site Holiday: Mon-Sat 07:30-16:30; Sun off. Exceptions (off unless hours are given): 2010-02-13, 2010-02-15 to 2010-02-16, 2010-05-01, 2010-06-16, 2010-07-01, 2010-09-23, 2010-10-01, 2010-10-16, 2010-12-25, 2010-12-27, 2011-01-01, 2011-02-03 to 2011-02-05, 2011-04-05, 2011-05-02, 2011-06-06, 2011-07-01, 2011-09-13, 2011-10-01, 2011-10-05, 2011-12-06 08:00-17:00, 2011-12-25 to 2011-12-27, 2012-01-01 to 2012-01-02, 2012-01-23 to 2012-01-25, 2012-04-06 to 2012-04-07, 2012-05-01, 2012-06-04, 2012-07-02, 2012-09-11, 2012-10-01, 2012-10-05, 2012-12-25 to 2012-12-26, 2013-01-01, 2013-02-09, 2013-02-11 to 2013-02-12, 2013-04-04, 2013-05-01, 2013-06-12, 2013-07-01, 2013-09-19, 2013-10-01, 2013-10-09, 2013-12-25 to 2013-12-26, 2014-01-01, 2014-01-30 to 2014-02-01, 2014-04-05, 2014-05-01, 2014-06-02, 2014-07-01, 2014-09-08, 2014-10-01 to 2014-10-02, 2014-12-25 to 2014-12-26, 2015-01-01, 2015-02-16 to 2015-02-21, 2015-04-06, 2015-05-01, 2015-09-28, 2015-12-25, 2016-01-01, 2016-12-25, 2017-01-01, 2017-12-25, 2018-01-01.
- W7 - 6 day - Double Shift (20H) - All Holidays: Mon-Fri 01:00-06:30, 07:30-12:00, 13:00-18:30, 19:30-00:00; Sat 01:00-06:30, 07:30-12:00, 13:00-18:30; Sun 19:30-00:00. Exceptions (off unless hours are given): 2010-02-13, 2010-02-15 to 2010-02-20, 2010-04-02 to 2010-04-03, 2010-04-05 to 2010-04-06, 2010-05-21, 2010-06-16, 2010-07-01, 2010-09-23, 2010-10-01, 2010-10-16, 2010-12-22, 2010-12-25, 2010-12-27, 2011-01-01, 2011-02-03 to 2011-02-05, 2011-04-05, 2011-04-22 to 2011-04-23, 2011-04-25, 2011-05-02, 2011-05-10, 2011-06-06, 2011-07-01, 2011-09-13, 2011-09-30 01:00-06:30, 07:30-12:00, 13:00-18:30, 2011-10-01, 2011-10-04 01:00-06:30, 07:30-12:00, 13:00-18:30, 2011-10-05 19:30-00:00, 2011-12-25 to 2011-12-26, 2011-12-27 19:30-00:00, 2012-01-01, 2012-01-02 19:30-00:00, 2012-01-22 to 2012-01-24, 2012-01-25 19:30-00:00, 2012-04-03 01:00-06:30, 07:30-12:00, 13:00-18:30, 2012-04-04 18:30-00:00, 2012-04-05 01:00-06:30, 07:30-12:00, 13:00-18:30, 2012-04-06 to 2012-04-07, 2012-04-09 19:30-00:00, 2012-04-27 01:00-06:30, 07:30-12:00, 13:00-18:30, 2012-04-28, 2012-04-30 01:00-06:30, 07:30-12:00, 13:00-18:30, 2012-05-01 19:30-00:00, 2012-07-01, 2012-07-02 19:30-00:00, 2012-09-30 to 2012-10-01, 2012-10-02 19:30-00:00, 2012-10-22 01:00-06:30, 07:30-12:00, 13:00-18:30, 2012-10-23 19:30-00:00, 2012-12-24 01:00-06:30, 07:30-12:00, 13:00-18:30, 2012-12-25, 2012-12-26 19:30-00:00, 2012-12-31 01:00-06:30, 07:30-12:00, 13:00-18:30, 2013-01-01 19:30-00:00, 2013-02-10 to 2013-02-11, 2013-02-12 19:30-00:00, 2013-03-28 01:00-06:30, 07:30-12:00, 13:00-18:30, 2013-03-29 to 2013-03-30, 2013-04-01 19:30-00:00, 2013-04-04 01:00-06:30, 07:30-12:00, 13:00-18:30, 2013-04-05 19:30-00:00, 2013-04-30 01:00-06:30, 07:30-12:00, 13:00-18:30, 2013-05-01 19:30-00:00, 2013-05-16 01:00-06:30, 07:30-12:00, 13:00-18:30, 2013-05-17 19:30-00:00, 2013-06-11 01:00-06:30, 07:30-12:00, 13:00-18:30, 2013-06-12 19:30-00:00, 2013-06-30, 2013-07-01 19:30-00:00, 2013-09-19 01:00-06:30, 07:30-12:00, 13:00-18:30, 2013-09-20 19:30-00:00, 2013-09-30 01:00-06:30, 07:30-12:00, 13:00-18:30, 2013-10-01 19:30-00:00, 2013-10-13, 2013-10-14 18:30-00:00, 2013-12-24 01:00-06:30, 07:30-12:00, 13:00-18:30, 2013-12-25, 2013-12-26 19:30-00:00, 2013-12-31 01:00-06:30, 07:30-12:00, 13:00-18:30, 2014-01-01 19:30-00:00, 2014-01-30 01:00-06:30, 07:30-12:00, 13:00-18:30, 2014-01-31 to 2014-02-01, 2014-04-04 01:00-06:30, 07:30-12:00, 13:00-18:30, 2014-04-05, 2014-04-17 01:00-06:30, 07:30-12:00, 13:00-18:30, 2014-04-18 to 2014-04-19, 2014-04-21 19:30-00:00, 2014-04-30 01:00-06:30, 07:30-12:00, 13:00-18:30, 2014-05-01 18:30-00:00, 2014-06-02 18:30-00:00, 2014-06-11 01:00-06:30, 07:30-12:00, 13:00-18:30, 2014-06-12 19:30-00:00, 2014-06-30 01:00-06:30, 07:30-12:00, 13:00-18:30, 2014-07-01 18:30-00:00, 2014-09-08 18:30-00:00, 2014-09-30 01:00-06:30, 07:30-12:00, 13:00-18:30, 2014-10-01, 2014-10-02 19:30-00:00, 2014-12-24 01:00-06:30, 07:30-12:00, 13:00-18:30, 2014-12-25, 2014-12-26 19:30-00:00, 2014-12-31 01:00-06:30, 07:30-12:00, 13:00-18:30, 2015-01-01 18:30-00:00, 2015-02-15 18:30-00:00, 2015-02-18 01:00-06:30, 07:30-12:00, 13:00-18:30, 2015-02-19 to 2015-02-21, 2015-04-05, 2015-04-06 18:30-00:00, 2015-12-25, 2016-01-01, 2016-12-25, 2017-01-01, 2017-12-25, 2018-01-01.
- G_MTR_7D09H_NoHoliday: Mon-Sun 08:00-12:00, 13:00-18:00.
- M: Mon-Sun 08:00-16:00.
- W822 - 1 - 6D+ All Holidays: Mon-Sat 08:00-12:00, 13:00-17:00; Sun off. Exceptions (off unless hours are given): 2010-02-13, 2010-02-15 to 2010-02-20, 2010-04-02 to 2010-04-03, 2010-04-05 to 2010-04-06, 2010-05-21, 2010-06-16, 2010-07-01, 2010-09-23, 2010-10-01, 2010-10-16, 2010-12-22, 2010-12-25, 2010-12-27, 2011-01-01, 2011-02-03 to 2011-02-05, 2011-04-05, 2011-04-22 to 2011-04-23, 2011-04-25, 2011-05-02, 2011-05-10, 2011-06-06, 2011-07-01, 2011-09-13, 2011-10-01, 2011-10-05, 2011-12-25 to 2011-12-27, 2012-01-01 to 2012-01-02, 2012-01-23 to 2012-01-25, 2012-04-05 to 2012-04-07, 2012-04-09, 2012-05-01, 2012-05-10, 2012-06-04, 2012-07-02, 2012-09-11, 2012-10-01, 2012-10-05, 2012-12-25 to 2012-12-26, 2013-01-01, 2013-02-09, 2013-02-11 to 2013-02-12, 2013-03-29 to 2013-03-30, 2013-04-01, 2013-04-04, 2013-05-01, 2013-05-17, 2013-06-12, 2013-07-01, 2013-09-19, 2013-10-01, 2013-10-09, 2013-12-24 to 2013-12-26, 2014-01-01, 2014-01-30 to 2014-02-01, 2014-04-05, 2014-04-18 to 2014-04-19, 2014-04-21, 2014-05-01, 2014-06-02, 2014-06-12, 2014-07-01, 2014-09-08, 2014-10-01 to 2014-10-02, 2014-12-25 to 2014-12-26, 2015-01-01, 2015-02-16 to 2015-02-21, 2015-04-06, 2015-12-25, 2016-01-01, 2016-12-25, 2017-01-01, 2017-12-25, 2018-01-01.
- OCT1 - 1 - 6D+ All Holidays: Mon-Sat 08:00-12:00, 13:00-17:00; Sun off. Exceptions (off unless hours are given): 2010-02-13, 2010-02-15 to 2010-02-20, 2010-04-02 to 2010-04-03, 2010-04-05 to 2010-04-06, 2010-05-21, 2010-06-16, 2010-07-01, 2010-07-04 08:00-12:00, 13:00-17:00, 2010-09-23, 2010-10-01, 2010-10-16, 2010-12-22, 2010-12-25, 2010-12-27, 2011-01-01, 2011-02-03 to 2011-02-05, 2011-04-05, 2011-04-22 to 2011-04-23, 2011-04-25, 2011-05-02, 2011-05-10, 2011-06-06, 2011-07-01, 2011-09-13, 2011-10-01, 2011-10-05, 2011-12-25 to 2011-12-27, 2012-01-01 to 2012-01-02, 2012-01-23 to 2012-01-25, 2012-04-05 to 2012-04-07, 2012-04-09, 2012-05-01, 2012-05-10, 2012-06-04, 2012-07-02, 2012-09-11, 2012-10-01, 2012-10-05, 2012-12-25 to 2012-12-26, 2013-01-01, 2013-02-09, 2013-02-11 to 2013-02-12, 2013-03-29 to 2013-03-30, 2013-04-01, 2013-04-04, 2013-05-01, 2013-05-17, 2013-06-12, 2013-07-01, 2013-09-19, 2013-10-01, 2013-10-09, 2013-12-24 to 2013-12-26, 2014-01-01, 2014-01-30 to 2014-02-01, 2014-04-05, 2014-04-18 to 2014-04-19, 2014-04-21, 2014-05-01, 2014-06-02, 2014-06-12, 2014-07-01, 2014-09-08, 2014-10-01 to 2014-10-02, 2014-12-25 to 2014-12-26, 2015-01-01, 2015-02-16 to 2015-02-21, 2015-04-06, 2015-12-25, 2016-01-01, 2016-12-25, 2017-01-01, 2017-12-25, 2018-01-01.

## Schedule

| ID | WBS | Activity | Type | Duration | Start | Finish | Predecessors | Complete | Planned start | Planned finish | Total float | Free float | Constraint | Calendar | L1 : Project | L2 : Phase | L3 : Area | L4 : Sub-Area | L5 : Element | L6 : Sub-Element | 822_AB_W010 | Stef Temp A1 |
| --- | --- | --- | --- | --- | --- | --- | --- | --- | --- | --- | --- | --- | --- | --- | --- | --- | --- | --- | --- | --- | --- | --- |
|  | 1 | **Preliminaries** |  |  | 2010-02-07 | 2018-04-10 |  |  |  |  |  |  |  |  |  |  |  |  |  |  |  |  |
|  | 6 | **General** |  |  | 2010-03-10 | 2018-04-10 |  |  |  |  |  |  |  |  |  |  |  |  |  |  |  |  |
|  | 1 | **Project Key Dates** |  |  | 2010-03-10 | 2018-04-10 |  |  |  |  |  |  |  |  |  |  |  |  |  |  |  |  |
| 8220-START |  | Project Start | milestone | 0d | 2010-03-10 A | 2010-03-10 A |  | 100% |  |  |  |  |  | W7 - 24 Hour - 7 day - No Holiday | C822 | B30 | 01 | G001 | GD01 | KD | 822_AB_W010 |  |
| 8220-KD3A |  | KD3A - Provide Explosive Storage to C821 (Contract Date 38/10) | milestone | 0d | 2010-09-26 A | 2010-09-26 A | 8220H-0860 FF | 100% | 2010-09-23 | 2010-09-23 |  |  |  | W7 - 24 Hour - 7 day - No Holiday | C822 | B30 | 01 | G001 | GD01 | KD | 822_AB_W010 |  |
| 8220-KD3B |  | KD3B - Provide Explosive Storage to C824 (Contract Date 51/10) | milestone | 0d | 2010-12-26 A | 2010-12-26 A | 8220H-0760 FF | 100% | 2011-01-19 | 2011-01-19 |  |  | finish on or before 2010-12-26 | W7 - 24 Hour - 7 day - No Holiday | C822 | B30 | 01 | G001 | GD01 | KD | 822_AB_W010 |  |
| 8220-KD4C1 |  | KD4C1 - Complete VB4 to Degree 1 (Contract Date 35/13) | milestone | 0d | 2013-09-29 A | 2013-09-29 A | 8220D-0320, 8220D-5910 | 100% | 2014-05-16 | 2014-05-16 |  |  | finish on 2013-09-01 | W7 - 24 Hour - 7 day - No Holiday | C822 | B30 | 01 | G001 | GD01 | KD |  |  |
| 822-KD-SDC-4C-1 |  | PH Vent Building - all rooms and common areas Degree 1 | milestone | 0d | 2013-11-08 A | 2013-11-08 A |  | 100% | 2017-01-29 | 2017-01-29 |  |  |  | G_MTR_7D09H_NoHoliday |  |  |  |  |  |  | 822_AB_W010 |  |
| 822-KD-SDC-4C-2 |  | PH Vent Building - all rooms and common areas Degree 2 | milestone | 0d | 2013-12-27 A | 2013-12-27 A |  | 100% | 2017-01-29 | 2017-01-29 |  |  |  | G_MTR_7D09H_NoHoliday |  |  |  |  |  |  | 822_AB_W010 |  |
| 8220-KD4C2 |  | KD4C2 - Complete VB4 to Degree 2 (Contract Date 52/13) | milestone | 0d | 2013-12-31 A | 2013-12-31 A | 8220D-6750 | 100% | 2014-03-05 | 2014-03-05 |  |  | finish on 2013-12-29 | W7 - 24 Hour - 7 day - No Holiday | C822 | B30 | 01 | G001 | GD01 | KD |  |  |
| 822-KD-SDC-4E-1 |  | SM EAP Adit - all rooms and common areas Degree 1 | milestone | 0d | 2014-12-23 A | 2014-12-23 A |  | 100% | 2015-01-02 | 2015-01-02 |  |  |  | G_MTR_7D09H_NoHoliday |  |  |  |  |  |  | 822_AB_W010 |  |
| 822-KD-SDC-4A-1 |  | Tunnels from Northern to Southern Limit Degree 1 (revised 14/03/14) | milestone | 0d | 2015-03-01 A | 2015-03-01 A |  | 100% | 2015-11-24 | 2015-11-24 |  |  |  | G_MTR_7D09H_NoHoliday |  |  |  |  |  |  | 822_AB_W010 |  |
| 822-KD-SDC-4F-1 |  | PH Ventilation Adit - Common areas Degree 1 | milestone | 0d | 2015-04-09 A | 2015-04-09 A |  | 100% | 2015-05-01 | 2015-05-01 |  |  |  | G_MTR_7D09H_NoHoliday |  |  |  |  |  |  | 822_AB_W010 |  |
| 822-KD-SDC-4H-1 |  | PH Vehicular Access Adit - All rooms Degree 1 | milestone | 0d | 2015-04-30 A | 2015-04-30 A |  | 100% | 2015-06-14 | 2015-06-14 |  |  |  | G_MTR_7D09H_NoHoliday |  |  |  |  |  |  | 822_AB_W010 |  |
| 822-KD-SDC-4G-1 |  | PH Vehicular Access Adit - Common areas Degree 1 | milestone | 0d | 2015-07-24 A | 2015-07-24 A |  | 100% | 2015-12-06 | 2015-12-06 |  |  |  | G_MTR_7D09H_NoHoliday |  |  |  |  |  |  | 822_AB_W010 |  |
| 822-KD-SDC-4F-2 |  | PH Ventilation Adit - Common areas Degree 2 | milestone | 0d | 2015-11-29 A | 2015-11-29 A |  | 100% | 2015-11-30 | 2015-11-30 |  |  |  | G_MTR_7D09H_NoHoliday |  |  |  |  |  |  | 822_AB_W010 |  |
| 822-KD-SDC-4H-2 |  | PH Vehicular Access Adit - All rooms Degree 2 | milestone | 0d | 2015-11-30 A | 2015-11-30 A |  | 100% |  |  |  |  |  | G_MTR_7D09H_NoHoliday |  |  |  |  |  |  | 822_AB_W010 |  |
| 822-KD-SDC-4G-2 |  | PH Vehicular Access Adit - Common areas Degree 2 | milestone | 0d | 2016-01-03 A | 2016-01-03 A |  | 100% | 2015-11-30 | 2015-11-30 |  |  |  | G_MTR_7D09H_NoHoliday |  |  |  |  |  |  | 822_AB_W010 |  |
| 822-KD-SDC-4B-1 |  | SM Vent Building and Shaft - all rooms and common areas Degree 1 | milestone | 0d | 2016-01-22 A | 2016-01-22 A |  | 100% | 2016-02-05 | 2016-02-05 |  |  |  | G_MTR_7D09H_NoHoliday |  |  |  |  |  |  | 822_AB_W010 |  |
| 822-KD-SDC-4E-2 |  | SM EAP Adit - all rooms and common areas Degree 2 | milestone | 0d | 2017-01-01 | 2017-01-01 |  |  |  |  | -602d | 464.51d |  | G_MTR_7D09H_NoHoliday |  |  |  |  |  |  | 822_AB_W010 |  |
| 8220-KD4H1 |  | KD4H1 - Complete PHVAA to Degree 1 (Contract Date 13/14) | milestone | 0d | 2017-03-20 | 2017-03-20 | 8220C-1630 |  |  |  | -1081.92d | 0d | finish on 2014-03-30 | W7 - 24 Hour - 7 day - No Holiday | C822 | B30 | 01 | G001 | GD01 | KD |  |  |
| 8220-KD4H2 |  | KD4H2 - Complete PHVAA to Degree 2 (Contract Date 17/14) | milestone | 0d | 2017-03-20 | 2017-03-20 | 8220C-0890, 8220-KD4H1 FF |  |  |  | -1053.92d | 0d | finish on 2014-04-27 | W7 - 24 Hour - 7 day - No Holiday | C822 | B30 | 01 | G001 | GD01 | KD |  |  |
| 8220-KD4E1 |  | KD4E1 - Complete EAP Adit to Degree 1 (Contract Date 39/13) | milestone | 0d | 2017-03-25 | 2017-03-25 | 8220EE0110, 8220EE1340 |  |  |  | -1268d | 378.82d | finish on 2013-09-29 | W7 - 24 Hour - 7 day - No Holiday | C822 | B30 | 01 | G001 | GD01 | KD |  |  |
| 8220-KD4H3 |  | KD4H3 - Complete PHVAA to Degree 3 (Contract Date 22/14) | milestone | 0d | 2017-04-19 | 2017-04-19 | 8220-KD4H2 FF+30d |  |  |  | -1048.92d | 353.9d | finish on 2014-06-01 | W7 - 24 Hour - 7 day - No Holiday | C822 | B30 | 01 | G001 | GD01 | KD |  |  |
| 8220-KD4G1 |  | KD4G1 - Complete PHVAA Common Areas to Degree 1 (Contract Date 26/13) | milestone | 0d | 2017-05-11 | 2017-05-11 | 8220C-2180, 8220C-5160 |  |  |  | -1406d | 0d | finish on 2013-06-30 | W7 - 24 Hour - 7 day - No Holiday | C822 | B30 | 01 | G001 | GD01 | KD |  |  |
| 8220-KD4E2 |  | KD4E2 - Complete EAP Adit to Degree 2 (Contract Date 52/13) | milestone | 0d | 2017-05-20 | 2017-05-20 | 8220EE1350 |  |  |  | -1233d | 322.82d | finish on 2013-12-29 | W7 - 24 Hour - 7 day - No Holiday | C822 | B30 | 01 | G001 | GD01 | KD |  |  |
| 8220-KD4A1 |  | KD4A1 - Complete Tunnels to Degree 1 (Contract Date 39/13) | milestone | 0d | 2017-05-29 | 2017-05-29 | 8220B-6130, 8220B-5305, 8220B-5315, 8220B-7780, 8220B-7800, 8220B-5595, 8220B-0650, 8220B-5450, 8220B-3510, 8220B-5500, 8220C-2180, 8220H-1280, 8220H-1270, 8220B-2760, 8220B-11200, 8220B-11800, 8220B-11230, 8220B-12060, 8220B-12090, 8220B-12220, 8220B-12240, 8220B-12260, 8220B-12160, 8220B-12540, 8220B-12150, 8220B-11790 FF, 8220B-5050, 8220B-12580 |  |  |  | -1332.66d | 0d | finish on or before 2013-09-29 | W7 - 24 Hour - 7 day - No Holiday | C822 | B30 | 01 | G001 | GD01 | KD |  | NEW |
| 8220-KD4E3 |  | KD4E3 - Complete EAP Adit to Degree 3 (Contract Date 09/14) | milestone | 0d | 2017-06-20 | 2017-06-20 | 8220EE1360 |  |  |  | -1202d | 291.82d | finish on 2014-03-02 | W7 - 24 Hour - 7 day - No Holiday | C822 | B30 | 01 | G001 | GD01 | KD |  |  |
| 8220-KD4B1 |  | KD4B1 - Complete VB5 to Degree 1 (Contract Date 22/13) | milestone | 0d | 2017-09-10 | 2017-09-10 | 8220G-1530, 8220G-6000, 8220D-6790, 8220G-6070, 8220G-5640, 8220G-5620, 8220G-5600 |  |  |  | -1555.75d | 210.07d | finish on 2013-06-02 | W7 - 24 Hour - 7 day - No Holiday | C822 | B30 | 01 | G001 | GD01 | KD |  |  |
| 8220-KD4C3 |  | KD4C3 - Complete VB4 to Degree 3 (Contract Date 09/14) | milestone | 0d | 2017-09-23 | 2017-09-23 | 8220D-0425, 8220D-1030, 8220D-5630, 8220D-0780, 8220D-6640 |  |  |  | -1296.96d | 196.86d | finish on 2014-03-02 | W7 - 24 Hour - 7 day - No Holiday | C822 | B30 | 01 | G001 | GD01 | KD |  |  |
| 8220-KD4B2 |  | KD4B2 - Complete VB5 to Degree 2 (Contract Date 39/13) | milestone | 0d | 2017-10-05 | 2017-10-05 | 8220G-5850, 8220G-6090 |  |  |  | -1461.75d | 185.07d | finish on 2013-09-29 | W7 - 24 Hour - 7 day - No Holiday | C822 | B30 | 01 | G001 | GD01 | KD |  |  |
| 8220-KD4F1 |  | KD4F1 - Complete PHVA to Degree 1 (Contract Date 39/13) | milestone | 0d | 2017-11-15 | 2017-11-15 | 8220C-0510, 8220C-1230, 8220C-0980, 8220C-5110 |  |  |  | -1502.61d | 0d | finish on 2013-09-29 | W7 - 24 Hour - 7 day - No Holiday | C822 | B30 | 01 | G001 | GD01 | KD |  |  |
| 8220-KD4B3 |  | KD4B3 - Complete VB5 to Degree 3 (Contract Date 48/13) | milestone | 0d | 2017-11-20 | 2017-11-20 | 8220G-1770, 8220D-5980, 8220D-6050 |  |  |  | -1444.75d | 139.07d | finish on 2013-12-01 | W7 - 24 Hour - 7 day - No Holiday | C822 | B30 | 01 | G001 | GD01 | KD |  |  |
| 8220-KD4G2 |  | KD4G2 - Complete PHVAA Common Areas to Degree 2 (Contract Date 09/14) | milestone | 0d | 2018-01-11 | 2018-01-11 | 8220-KD4G1 FF+243d |  |  |  | -1405d | 0d | finish on 2014-03-02 | W7 - 24 Hour - 7 day - No Holiday | C822 | B30 | 01 | G001 | GD01 | KD |  |  |
| 8220-KD4G3 |  | KD4G3 - Complete PHVAA Common Areas to Degree 3 (Contract Date 14/14) | milestone | 0d | 2018-02-08 | 2018-02-08 | 8220-KD4G2 FF+28d |  |  |  | -1398d | 60.82d | finish on 2014-04-06 | W7 - 24 Hour - 7 day - No Holiday | C822 | B30 | 01 | G001 | GD01 | KD |  |  |
| 8220-KD4F2 |  | KD4F2 - Complete PHVA to Degree 2 (Contract Date 52/13) | milestone | 0d | 2018-02-12 | 2018-02-12 | 8220C-520 |  |  |  | -1498.61d | 0d | finish on 2013-12-29 | W7 - 24 Hour - 7 day - No Holiday | C822 | B30 | 01 | G001 | GD01 | KD |  |  |
| 8220-KD5 |  | KD5 - Complete all of the Works (Contract Date 19/15) | milestone | 0d | 2018-03-29 | 2018-03-29 | 8220H-1230, 8220CM-151, 8220D-6050, 8220D-6620, 8220A-2810, 8220D-6060, 8220H-MS08, 8220E-MS07, 8220C-MS07, 8220B-MS10, 8220A-MS12, 8220A-4120 |  |  |  | -1048.67d | 11.9d | finish on 2015-05-10 | W7 - 24 Hour - 7 day - No Holiday | C822 | B30 | 01 | G001 | GD01 | KD |  |  |
| 8220-KD4F3 |  | KD4F3 - Complete PHVA to Degree 3 (Contract Date 09/14) | milestone | 0d | 2018-04-10 | 2018-04-10 | 8220C-530 |  |  |  | -1493.82d | 0d | finish on 2014-03-02 | W7 - 24 Hour - 7 day - No Holiday | C822 | B30 | 01 | G001 | GD01 | KD |  |  |

| ID | WBS | Activity | Type | Duration | Start | Finish | Predecessors | Complete | Planned start | Planned finish | Total float | Free float | Constraint | Calendar | L1 : Project | L2 : Phase | L3 : Area | L4 : Sub-Area | L5 : Element | L6 : Sub-Element | M1: Contracts | M2 : Cost Centre | L7 : System |
| --- | --- | --- | --- | --- | --- | --- | --- | --- | --- | --- | --- | --- | --- | --- | --- | --- | --- | --- | --- | --- | --- | --- | --- |
|  | 3 | **IPS Milestones (Rev.2)** |  |  | 2010-04-26 | 2017-12-21 |  |  |  |  |  |  |  |  |  |  |  |  |  |  |  |  |  |
|  | 1 | **Cost Centre A - Preliminaries** |  |  | 2010-06-28 | 2017-07-01 |  |  |  |  |  |  |  |  |  |  |  |  |  |  |  |  |  |
| 8220A-MS01 |  | Approval of Contractors Submissions | milestone | 0d | 2010-06-28 A | 2010-06-28 A |  | 100% |  |  |  |  |  | W7 - 24 Hour - 7 day - No Holiday | C822 | B35 | 01 | G001 | GD01 | CCAM | 822 | AA | MIL |
| 8220A-MS02 |  | Complete Erection of Engineer's Office, Engineer | milestone | 0d | 2010-09-23 A | 2010-09-23 A | 8220A-4800 FF | 100% |  |  |  |  |  | W7 - 24 Hour - 7 day - No Holiday | C822 | B35 | 01 | G001 | GD01 | CCAM | 822 | AA | MIL |
| 8220A-MS03 |  | Engineer's Confirmation of Satisfactory Implemen | milestone | 0d | 2011-01-30 A | 2011-01-30 A |  | 100% |  |  |  |  |  | W7 - 24 Hour - 7 day - No Holiday | C822 | B35 | 01 | G001 | GD01 | CCAM | 822 | AA | MIL |
| 8220A-MS05 |  | Approval of Detailed Interface Spec w/DC's | milestone | 0d | 2011-07-30 A | 2011-07-30 A |  | 100% | 2011-07-31 | 2011-07-31 |  |  |  | W7 - 24 Hour - 7 day - No Holiday | C822 | B35 | 01 | G001 | GD01 | CCAM | 822 | AA | MIL |
| 8220A-MS04 |  | Complete 5% of Excavation and Temporary Support | milestone | 0d | 2011-08-31 A | 2011-08-31 A | 8220B-2880, 8220B-1270 | 100% | 2011-07-22 | 2011-07-22 |  |  |  | W7 - 24 Hour - 7 day - No Holiday | C822 | B35 | 01 | G001 | GD01 | CCAM | 822 | AA | MIL |
| 8220A-MS06 |  | Engineer's Confirmation of Satisfactory Implemen | milestone | 0d | 2012-01-28 A | 2012-01-28 A | 8220A-2770 | 100% | 2012-02-25 | 2012-02-25 |  |  |  | W7 - 24 Hour - 7 day - No Holiday | C822 | B35 | 01 | G001 | GD01 | CCAM | 822 | AA | MIL |
| 8220A-MS08 |  | Engineer's Confirmation of Satisfactory Implemen | milestone | 0d | 2012-07-23 A | 2012-07-23 A | 8220A-2780, 8220A-MS06 | 100% | 2012-09-23 | 2012-09-23 |  |  |  | W7 - 24 Hour - 7 day - No Holiday | C822 | B35 | 01 | G001 | GD01 | CCAM | 822 | AA | MIL |
| 8220A-MS07 |  | Complete 30% of Exca &Temp Support & Approve DIS | milestone | 0d | 2012-09-26 A | 2012-09-26 A | 8220A-MS08, 8220B-0480 | 100% | 2012-10-31 | 2012-10-31 |  |  |  | W7 - 24 Hour - 7 day - No Holiday | C822 | B35 | 01 | G001 | GD01 | CCAM | 822 | AA | MIL |
| 8220A-MS09 |  | Engineer's Confirmation of Satisfactory Implemen | milestone | 0d | 2013-01-29 A | 2013-01-29 A | 8220A-2790, 8220A-MS07 | 100% | 2013-03-03 | 2013-03-03 |  |  |  | W7 - 24 Hour - 7 day - No Holiday | C822 | B35 | 01 | G001 | GD01 | CCAM | 822 | AA | MIL |
| 8220A-MS10 |  | Engineer's Confirmation of Satisfactory Implemen | milestone | 0d | 2013-08-27 A | 2013-08-27 A | 8220A-2800, 8220A-MS09 | 100% |  |  |  |  |  | W7 - 24 Hour - 7 day - No Holiday | C822 | B35 | 01 | G001 | GD01 | CCAM | 822 | AA | MIL |
| 8220A-MS12 |  | Engineer's Confirmation of Satisfactory Implemen | milestone | 0d | 2014-01-30 A | 2014-01-30 A | 8220A-2810 | 100% | 2014-03-01 | 2014-03-01 |  |  |  | W7 - 24 Hour - 7 day - No Holiday | C822 | B35 | 01 | G001 | GD01 | CCAM | 822 | AA | MIL |
| 8220A-MS11 |  | Achieve Degree 1 Completion for the Tunnels | milestone | 0d | 2017-05-29 | 2017-05-29 | 8220A-MS10, 8220-KD4A1, 8220B-12060 |  |  |  | -746.41d | 314.16d |  | W7 - 24 Hour - 7 day - No Holiday | C822 | B35 | 01 | G001 | GD01 | CCAM | 822 | AA | MIL |
| 8220A-MS13 |  | Approval of Draft O&M Manual | milestone | 0d | 2017-07-01 | 2017-07-01 | 8220A-2870 |  |  |  | -1051.25d | 281.57d | finish on 2014-08-10 | W7 - 24 Hour - 7 day - No Holiday | C822 | B35 | 01 | G001 | GD01 | CCAM | 822 | AA | MIL |
| 8220A-MS14 |  | Approval of O&M Manual and As-Built Drawings | milestone | 0d | 2017-07-01 | 2017-07-01 | 8220A-2840 |  |  |  | -869.25d | 281.57d | finish on 2015-02-08 | W7 - 24 Hour - 7 day - No Holiday | C822 | B35 | 01 | G001 | GD01 | CCAM | 822 | AA | MIL |
|  | 2 | **Cost Centre B - Pat Heung to Shek Yam Tunnels** |  |  | 2010-04-26 | 2017-05-29 |  |  |  |  |  |  |  |  |  |  |  |  |  |  |  |  |  |
| 8220B-MS01 |  | Drilling Jumbo Order Placed | milestone | 0d | 2010-04-26 A | 2010-04-26 A | 8220A-4680 | 100% |  |  |  |  |  | W7 - 24 Hour - 7 day - No Holiday | C822 | B35 | 01 | G001 | GD01 | CCBM | 822 | BB | MIL |
| 8220B-MS02 |  | Complete 5% of Excavation and Temporary Support | milestone | 0d | 2011-08-31 A | 2011-08-31 A | 8220B-1285 | 100% | 2011-07-22 | 2011-07-22 |  |  |  | W7 - 24 Hour - 7 day - No Holiday | C822 | B35 | 01 | G001 | GD01 | CCBM | 822 | BB | MIL |
| 8220B-MS03 |  | Complete 10% of Excavation and Temporary Support | milestone | 0d | 2012-02-25 A | 2012-02-25 A | 8220B-2610 | 100% | 2012-06-01 | 2012-06-01 |  |  |  | W7 - 24 Hour - 7 day - No Holiday | C822 | B35 | 01 | G001 | GD01 | CCBM | 822 | BB | MIL |
| 8220B-MS04 |  | Complete 20% of Excavation and Temporary Support | milestone | 0d | 2012-07-07 A | 2012-07-07 A | 8220B-MS03, 8220B-0560 | 100% | 2012-08-27 | 2012-08-27 |  |  |  | W7 - 24 Hour - 7 day - No Holiday | C822 | B35 | 01 | G001 | GD01 | CCBM | 822 | BB | MIL |
| 8220B-MS05 |  | Complete 30% of Excavation and Temporary Support | milestone | 0d | 2012-09-26 A | 2012-09-26 A | 8220B-0480, 8220B-MS04 | 100% | 2012-10-31 | 2012-10-31 |  |  |  | W7 - 24 Hour - 7 day - No Holiday | C822 | B35 | 01 | G001 | GD01 | CCBM | 822 | BB | MIL |
| 8220B-MS06 |  | Complete 50% of Exca & Support & 10% of Lining | milestone | 0d | 2013-03-05 A | 2013-03-05 A | 8220B-10100, 8220B-3580, 8220B-MS05 | 100% | 2013-04-10 | 2013-04-10 |  |  |  | W7 - 24 Hour - 7 day - No Holiday | C822 | B35 | 01 | G001 | GD01 | CCBM | 822 | BB | MIL |
| 8220B-MS07 |  | Complete 80% of Excavation and Temporary Support | milestone | 0d | 2013-09-20 A | 2013-09-20 A | 8220B-2780, 8220B-MS06 | 100% | 2013-10-22 | 2013-10-22 |  |  |  | W7 - 24 Hour - 7 day - No Holiday | C822 | B35 | 01 | G001 | GD01 | CCBM | 822 | BB | MIL |
| 8220B-MS08 |  | Complete 70% of Tunnel Lining | milestone | 0d | 2014-01-13 A | 2014-01-13 A | 8220B-3350 | 100% | 2014-02-01 | 2014-02-01 |  |  |  | W7 - 24 Hour - 7 day - No Holiday | C822 | B35 | 01 | G001 | GD01 | CCBM | 822 | BB | MIL |
| 8220B-MS09 |  | Achieve Degree 1 Completion for both Tunnels | milestone | 0d | 2017-05-29 | 2017-05-29 | 8220B-6130, 8220B-12060, 8220-KD4A1 |  |  |  | -746.41d | 0d |  | W7 - 24 Hour - 7 day - No Holiday | C822 | B35 | 01 | G001 | GD01 | CCBM | 822 | BB | MIL |
| 8220B-MS10 |  | Substantially Complete all Works | milestone | 0d | 2017-05-29 | 2017-05-29 | 8220B-MS09 |  |  |  | -746.41d | 302.26d | finish on or after 2014-09-01 | W7 - 24 Hour - 7 day - No Holiday | C822 | B35 | 01 | G001 | GD01 | CCBM | 822 | BB | MIL |

Notes:
- 8220B-MS08: P3 Activity Log Info: Drives Milestone B07 (70% of Tunnel Lining)

| ID | WBS | Activity | Type | Duration | Start | Finish | Predecessors | Complete | Planned start | Planned finish | Total float | Free float | Constraint | Calendar | L1 : Project | L2 : Phase | L3 : Area | L4 : Sub-Area | L5 : Element | L6 : Sub-Element | M1: Contracts | M2 : Cost Centre | M4 : Location | L7 : System | M3 : Works Area | Stef Temp A1 |
| --- | --- | --- | --- | --- | --- | --- | --- | --- | --- | --- | --- | --- | --- | --- | --- | --- | --- | --- | --- | --- | --- | --- | --- | --- | --- | --- |
|  | 3 | **Cost Centre C - Adit Connections between VB4 & Track Alignment** |  |  | 2011-10-29 | 2017-11-15 |  |  |  |  |  |  |  |  |  |  |  |  |  |  |  |  |  |  |  |  |
| 8220C-MS01 |  | Complete 10% of Excav & Temp Support PHVA | milestone | 0d | 2011-10-29 A | 2011-10-29 A | 8220C-0310 | 100% | 2011-06-30 | 2011-06-30 |  |  |  | W7 - 24 Hour - 7 day - No Holiday | C822 | B35 | 02 | 0202 | GD01 | CCCM | 822 | CC | 2270 | MIL |  |  |
| 8220C-MS02 |  | Complete 90% of Excav & Temp Support PHVA | milestone | 0d | 2012-04-12 A | 2012-04-12 A | 8220C-0400 | 100% | 2012-06-01 | 2012-06-01 |  |  |  | W7 - 24 Hour - 7 day - No Holiday | C822 | B35 | 02 | 0201 | GD01 | CCCM | 822 | CC | 2270 | MIL |  |  |
| 8220C-MS03 |  | Complete 90% of Excav and Temp Support PHVAA | milestone | 0d | 2012-06-05 A | 2012-06-05 A | 8220C-0610 | 100% | 2012-08-01 | 2012-08-01 |  |  |  | W7 - 24 Hour - 7 day - No Holiday | C822 | B35 | 02 | 0203 | GD01 | CCCM | 822 | CC | 2280 | MIL |  |  |
| 8220C-MS05 |  | Complete 50% of Adit Lining of the PHVA | milestone | 0d | 2014-04-26 A | 2014-04-26 A | 8220C-0970, 8220C-MS04 | 100% | 2014-06-23 | 2014-06-23 |  |  |  | W7 - 24 Hour - 7 day - No Holiday | C822 | B35 | 02 | 0202 | GD01 | CCCM | 822 | CC | 2270 | MIL |  |  |
| 8220C-MS08 |  | All Works Substantially Complete | milestone | 0d | 2017-01-01 | 2017-01-01 |  |  |  |  | -599d | 461.57d | finish on or after 2014-11-12 | W7 - 24 Hour - 7 day - No Holiday | C822 | B35 | 02 | 0201 | GD01 | CCCM | 822 | CC |  | MIL |  |  |
| 8220C-MS04 |  | Complete 90% of Adit Lining of the PHVAA | milestone | 0d | 2017-03-13 | 2017-03-13 | 8220C-0550, 8220C-MS03 |  |  |  | -669.75d | 67d |  | W7 - 24 Hour - 7 day - No Holiday | C822 | B35 | 02 | 0203 | GD01 | CCCM | 822 | CC | 2280 | MIL |  |  |
| 8220C-MS06 |  | Achieve Degree 1 Completion for the PHVA | milestone | 0d | 2017-11-15 | 2017-11-15 | 8220C-0510, 8220C-MS05 |  |  |  | -916.36d | 0d |  | W7 - 24 Hour - 7 day - No Holiday | C822 | B35 | 02 | 0202 | GD01 | CCCM | 822 | CC | 2270 | MIL |  |  |
| 8220C-MS07 |  | Achieve Degree 2 Completion for all Rooms PHVAA | milestone | 0d | 2017-11-15 | 2017-11-15 | 8220C-0240, 8220C-MS06 |  |  |  | -916.36d | 132.31d |  | W7 - 24 Hour - 7 day - No Holiday | C822 | B35 | 02 | 0203 | GD01 | CCCM | 822 | CC | 2280 | MIL |  |  |
|  | 4 | **Cost Centre D - Pat Heung Ventilation Building (VB4)** |  |  | 2010-10-01 | 2017-11-16 |  |  |  |  |  |  |  |  |  |  |  |  |  |  |  |  |  |  |  |  |
| 8220D-MS01 |  | Approval of Method Statement for Portal Work | milestone | 0d | 2010-10-01 A | 2010-10-01 A | 8220D-5050 | 100% |  |  |  |  |  | W7 - 24 Hour - 7 day - No Holiday | C822 | B35 | 02 | 0201 | GD01 | CCDM | 822 | DD |  | MIL | 61 |  |
| 8220D-MS2A |  | Portal Formation Complete for PHVAA | milestone | 0d | 2011-03-23 A | 2011-03-23 A |  | 100% |  |  |  |  |  | W7 - 24 Hour - 7 day - No Holiday | C822 | B35 | 02 | 0203 | GD01 | CCDM | 822 | DD | 2280 | MIL | 61 |  |
| 8220D-MS3A |  | Portal Formation Complete for PHVA | milestone | 0d | 2011-05-14 A | 2011-05-14 A | 8220D-1690 FF | 100% | 2011-04-23 | 2011-04-23 |  |  |  | W7 - 24 Hour - 7 day - No Holiday | C822 | B35 | 02 | 0201 | GD01 | CCDM | 822 | DD | 2270 | MIL | 61 |  |
| 8220D-MS05 |  | Achieve Degree 2 Completion for all Rooms VB4 | milestone | 0d | 2013-12-27 A | 2013-12-27 A | 8220-KD4C2, 8220D-6750 | 100% | 2013-12-28 | 2013-12-28 |  |  |  | W7 - 24 Hour - 7 day - No Holiday | C822 | B35 | 02 | 0201 | GD01 | CCDM | 822 | DD | 2230 | MIL | 61 |  |
| 8220D-MS06 |  | All Permanent Doors Installed in VB4 | milestone | 0d | 2017-02-11 | 2017-02-11 | 8220D-6640 |  |  |  | -1073.42d | 1.58d | finish on 2014-03-02 | W7 - 24 Hour - 7 day - No Holiday | C822 | B35 | 02 | 0201 | GD01 | CCDM | 822 | DD | 2230 | MIL | 61 |  |
| 8220D-MS04 |  | Complete the Structure of the VB4 | milestone | 0d | 2017-04-01 | 2017-04-01 | 8220D-0320 |  |  |  | -688.73d | 371.83d |  | W7 - 24 Hour - 7 day - No Holiday | C822 | B35 | 02 | 0201 | GD01 | CCDM | 822 | DD | 2230 | MIL | 61 |  |
| 8220D-MS07 |  | All Works Substantially Complete | milestone | 0d | 2017-11-16 | 2017-11-16 | 8220D-6620 |  |  |  | -917.42d | 143.15d |  | W7 - 24 Hour - 7 day - No Holiday | C822 | B35 | 02 | 0201 | GD01 | CCDM | 822 | DD |  | MIL | 61 |  |
|  | 5 | **Cost Centre E - Shing Mun EAP Adit** |  |  | 2013-02-02 | 2017-06-20 |  |  |  |  |  |  |  |  |  |  |  |  |  |  |  |  |  |  |  |  |
| 8220E-MS01 |  | Complete Excavation and Temporary Support EAP | milestone | 0d | 2013-02-02 A | 2013-02-02 A | 8220EE160 | 100% | 2013-03-01 | 2013-03-01 |  |  |  | W7 - 24 Hour - 7 day - No Holiday | C822 | B35 | 03 | 0301 | GD01 | CCEM | 822 | EE | 2260 | MIL |  | EAP |
| 8220E-MS02 |  | Complete 20% of Lining for the EAP Adit | milestone | 0d | 2014-02-02 A | 2014-02-02 A | 8220EE0040, 8220E-MS01 | 100% | 2014-03-01 | 2014-03-01 |  |  |  | W7 - 24 Hour - 7 day - No Holiday | C822 | B35 | 03 | 0301 | GD01 | CCEM | 822 | EE | 2260 | MIL |  | EAP |
| 8220E-MS03 |  | Complete Lining of the EAP Adit | milestone | 0d | 2014-05-29 A | 2014-05-29 A | 8220EE0060, 8220E-MS02 | 100% | 2014-06-01 | 2014-06-01 |  |  |  | W7 - 24 Hour - 7 day - No Holiday | C822 | B35 | 03 | 0301 | GD01 | CCEM | 822 | EE | 2260 | MIL |  | EAP |
| 8220E-MS04 |  | Complete Internal Structure of the EAP Adit | milestone | 0d | 2017-03-04 | 2017-03-04 | 8220EE0100, 8220E-MS03 |  |  |  | -660.75d | 21d |  | W7 - 24 Hour - 7 day - No Holiday | C822 | B35 | 03 | 0301 | GD01 | CCEM | 822 | EE | 2260 | MIL |  | EAP |
| 8220E-MS05 |  | Achieve Degree 1 Completion for the EAP Adit | milestone | 0d | 2017-03-25 | 2017-03-25 | 8220EE0110, 8220E-MS04 |  |  |  | -681.75d | 56d |  | W7 - 24 Hour - 7 day - No Holiday | C822 | B35 | 03 | 0301 | GD01 | CCEM | 822 | EE | 2260 | MIL |  | EAP |
| 8220E-MS06 |  | Achieve Degree 2 Completion for the EAP Adit | milestone | 0d | 2017-05-20 | 2017-05-20 | 8220EE1350, 8220E-MS05 |  |  |  | -737.75d | 31d |  | W7 - 24 Hour - 7 day - No Holiday | C822 | B35 | 03 | 0301 | GD01 | CCEM | 822 | EE | 2260 | MIL |  | EAP |
| 8220E-MS07 |  | Substantially Complete all Works | milestone | 0d | 2017-06-20 | 2017-06-20 | 8220EE1360, 8220E-MS06 |  |  |  | -768.75d | 279.92d | finish on or after 2014-08-30 | W7 - 24 Hour - 7 day - No Holiday | C822 | B35 | 03 | 0301 | GD01 | CCEM | 822 | EE | 2260 | MIL |  | EAP |

| ID | WBS | Activity | Type | Duration | Start | Finish | Predecessors | Complete | Planned start | Planned finish | Total float | Free float | Constraint | Calendar | L1 : Project | L2 : Phase | L3 : Area | L4 : Sub-Area | L5 : Element | L6 : Sub-Element | M1: Contracts | M2 : Cost Centre | M3 : Works Area | L7 : System | M4 : Location |
| --- | --- | --- | --- | --- | --- | --- | --- | --- | --- | --- | --- | --- | --- | --- | --- | --- | --- | --- | --- | --- | --- | --- | --- | --- | --- |
|  | 6 | **Cost Centre F - Shing Mun Shaft Structure** |  |  | 2010-09-27 | 2017-10-20 |  |  |  |  |  |  |  |  |  |  |  |  |  |  |  |  |  |  |  |
| 8220F-MS01 |  | Complete Relocation of the Bus Terminus | milestone | 0d | 2010-09-27 A | 2010-09-27 A |  | 100% |  |  |  |  |  | W7 - 24 Hour - 7 day - No Holiday | C822 | B35 | 03 | 0301 | GD01 | CCFM | 822 | FF | 73 | MIL |  |
| 8220F-MS02 |  | Complete Pipe Pile Walls | milestone | 0d | 2011-07-09 A | 2011-07-09 A | 8220G-0700, 8220G-0780 | 100% | 2011-06-02 | 2011-06-02 |  |  |  | W7 - 24 Hour - 7 day - No Holiday | C822 | B35 | 03 | 0301 | GD01 | CCFM | 822 | FF | 71 | MIL |  |
| 8220F-MS03 |  | Complete 20% of Excavation for the Vent Shaft | milestone | 0d | 2012-07-19 A | 2012-07-19 A | 8220G-1500, 8220G-5120 | 100% | 2013-02-15 | 2013-02-15 |  |  |  | W7 - 24 Hour - 7 day - No Holiday | C822 | B35 | 03 | 0301 | GD01 | CCFM | 822 | FF | 71 | MIL |  |
| 8220F-MS04 |  | Complete 50% of Excavation for the Vent Shaft | milestone | 0d | 2012-11-20 A | 2012-11-20 A | 8220G-5240 SF | 100% | 2013-04-12 | 2013-04-12 |  |  |  | W7 - 24 Hour - 7 day - No Holiday | C822 | B35 | 03 | 0301 | GD01 | CCFM | 822 | FF | 71 | MIL |  |
| 8220F-MS05 |  | Complete 90% of Excavation | milestone | 0d | 2013-07-28 A | 2013-07-28 A | 8220G-5400 | 100% | 2013-08-01 | 2013-08-01 |  |  |  | W7 - 24 Hour - 7 day - No Holiday | C822 | B35 | 03 | 0301 | GD01 | CCFM | 822 | FF | 71 | MIL |  |
| 8220F-MS10 |  | All Permanent Door Installed | milestone | 0d | 2017-01-01 | 2017-01-01 |  |  |  |  | -599d | 461.57d | finish on or after 2014-06-02 | W7 - 24 Hour - 7 day - No Holiday | C822 | B35 | 03 | 0301 | GD01 | CCFM | 822 | FF | 71 | MIL |  |
| 8220F-MS11 |  | All Works Substantially Complete | milestone | 0d | 2017-01-01 | 2017-01-01 |  |  |  |  | -599d | 461.57d | finish on or after 2014-08-30 | W7 - 24 Hour - 7 day - No Holiday | C822 | B35 | 03 | 0301 | GD01 | CCFM | 822 | FF | 71 | MIL |  |
| 8220F-MS06 |  | Complete the Shaft Wall Structure up to +57mPD | milestone | 0d | 2017-01-17 | 2017-01-17 | 8220F-0710 |  |  |  | -614.5d | 446.07d |  | W7 - 24 Hour - 7 day - No Holiday | C822 | B35 | 03 | 0301 | GD01 | CCFM | 822 | FF | 71 | MIL |  |
| 8220F-MS07 |  | Achieve Degree 1 Completion for all Rooms | milestone | 0d | 2017-09-10 | 2017-09-10 | 8220G-1470 |  |  |  | -850.5d | 210.07d |  | W7 - 24 Hour - 7 day - No Holiday | C822 | B35 | 03 | 0301 | GD01 | CCFM | 822 | FF | 71 | MIL |  |
| 8220F-MS08 |  | Achieve Degree 2 Completion for all Rooms | milestone | 0d | 2017-10-05 | 2017-10-05 | 8220G-6090 |  |  |  | -875.5d | 185.07d |  | W7 - 24 Hour - 7 day - No Holiday | C822 | B35 | 03 | 0301 | GD01 | CCFM | 822 | FF | 71 | MIL |  |
| 8220F-MS09 |  | Achieve Degree 3 Completion for all Rooms | milestone | 0d | 2017-10-20 | 2017-10-20 | 8220G-1770 |  |  |  | -890.69d | 169.88d |  | W7 - 24 Hour - 7 day - No Holiday | C822 | B35 | 03 | 0301 | GD01 | CCFM | 822 | FF | 71 | MIL |  |
|  | 7 | **Cost Centre G - Shing Mun Ventilation Building (VB5)** |  |  | 2017-01-01 | 2017-12-21 |  |  |  |  |  |  |  |  |  |  |  |  |  |  |  |  |  |  |  |
| 8220G-MS06 |  | All Permanent Door Installed | milestone | 0d | 2017-01-01 | 2017-01-01 |  |  |  |  | -599d | 461.57d | finish on or after 2014-06-02 | W7 - 24 Hour - 7 day - No Holiday | C822 | B35 | 03 | 0306 | GD01 | CCGM | 822 | GG |  | MIL |  |
| 8220G-MS01 |  | Complete SMVB Structure to Ground Level | milestone | 0d | 2017-07-04 | 2017-07-04 | 8220G-0180, 8220G-5800 |  |  |  | -782.5d | 278.07d |  | W7 - 24 Hour - 7 day - No Holiday | C822 | B35 | 03 | 0306 | GD01 | CCGM | 822 | GG |  | MIL |  |
| 8220G-MS02 |  | Complete SMVB Structure to Roof Level | milestone | 0d | 2017-09-06 | 2017-09-06 | 8220G-0230 |  |  |  | -846.5d | 214.07d |  | W7 - 24 Hour - 7 day - No Holiday | C822 | B35 | 03 | 0306 | GD01 | CCGM | 822 | GG |  | MIL |  |
| 8220G-MS03 |  | Achieve Degree 1 Completion for all Rooms | milestone | 0d | 2017-09-10 | 2017-09-10 | 8220G-1470 |  |  |  | -850.5d | 210.07d |  | W7 - 24 Hour - 7 day - No Holiday | C822 | B35 | 03 | 0306 | GD01 | CCGM | 822 | GG |  | MIL |  |
| 8220G-MS04 |  | Achieve Degree 2 Completion for all Rooms | milestone | 0d | 2017-10-05 | 2017-10-05 | 8220G-6090 |  |  |  | -875.5d | 185.07d |  | W7 - 24 Hour - 7 day - No Holiday | C822 | B35 | 03 | 0306 | GD01 | CCGM | 822 | GG |  | MIL |  |
| 8220G-MS05 |  | Achieve Degree 3 Completion for all Rooms | milestone | 0d | 2017-11-20 | 2017-11-20 | 8220D-5980 |  |  |  | -921.5d | 139.07d |  | W7 - 24 Hour - 7 day - No Holiday | C822 | B35 | 03 | 0306 | GD01 | CCGM | 822 | GG |  | MIL |  |
| 8220G-MS07 |  | All Works Substantially Complete | milestone | 0d | 2017-12-21 | 2017-12-21 | 8220D-6060 |  |  |  | -952.5d | 108.07d |  | W7 - 24 Hour - 7 day - No Holiday | C822 | B35 | 03 | 0306 | GD01 | CCGM | 822 | GG |  | MIL |  |
|  | 8 | **Cost Centre H - Associated Works** |  |  | 2010-09-01 | 2017-01-01 |  |  |  |  |  |  |  |  |  |  |  |  |  |  |  |  |  |  |  |
| 8220H-MS01 |  | Shek Yam Tunnel Portal Formation Complete | milestone | 0d | 2010-09-01 A | 2010-09-01 A | 8220H-0090 | 100% |  |  |  |  |  | W7 - 24 Hour - 7 day - No Holiday | C822 | B35 | 04 | 0401 | GD01 | CCHM | 822 | HH |  | MIL | 2240 |
| 8220H-MS02 |  | Complete SYCA & Magazine in Area 6.11 | milestone | 0d | 2011-04-27 A | 2011-04-27 A | 8220A-5360, 8220A-5740 | 100% | 2011-04-17 | 2011-04-17 |  |  |  | W7 - 24 Hour - 7 day - No Holiday | C822 | B35 | 04 | 0401 | GD01 | CCHM | 822 | HH |  | MIL | 2240 |
| 8220H-MS03 |  | Submit Instrumentation Monitoring Report No.1 | milestone | 0d | 2011-06-30 A | 2011-06-30 A |  | 100% | 2011-06-27 | 2011-06-27 |  |  | finish on or after 2011-06-27 | W7 - 24 Hour - 7 day - No Holiday | C822 | B35 | 04 | 0401 | GD01 | CCHM | 822 | HH |  | MIL | 2240 |
| 8220H-MS04 |  | Submit Instrumentation Monitoring Report No.2 | milestone | 0d | 2011-12-26 A | 2011-12-26 A |  | 100% | 2012-02-25 | 2012-02-25 |  |  | finish on or after 2011-12-26 | W7 - 24 Hour - 7 day - No Holiday | C822 | B35 | 04 | 0401 | GD01 | CCHM | 822 | HH |  | MIL | 2240 |
| 8220H-MS05 |  | Submit Instrumentation Monitoring Report No.3 | milestone | 0d | 2012-07-01 A | 2012-07-01 A | 8220H-MS04 | 100% | 2012-08-01 | 2012-08-01 |  |  | finish on or after 2012-06-25 | W7 - 24 Hour - 7 day - No Holiday | C822 | B35 | 04 | 0401 | GD01 | CCHM | 822 | HH |  | MIL | 2240 |
| 8220H-MS06 |  | Submit Instrumentation Monitoring Report No.4 | milestone | 0d | 2012-12-30 A | 2012-12-30 A | 8220H-MS05 | 100% | 2013-01-01 | 2013-01-01 |  |  | finish on or after 2012-12-31 | W7 - 24 Hour - 7 day - No Holiday | C822 | B35 | 04 | 0401 | GD01 | CCHM | 822 | HH |  | MIL | 2240 |
| 8220H-MS07 |  | Submit Instrumentation Monitoring Report No.5 | milestone | 0d | 2013-07-01 A | 2013-07-01 A | 8220H-MS06 | 100% | 2013-10-01 | 2013-10-01 |  |  | finish on or after 2013-07-01 | W7 - 24 Hour - 7 day - No Holiday | C822 | B35 | 04 | 0401 | GD01 | CCHM | 822 | HH |  | MIL | 2240 |
| 8220H-MS08 |  | Submit Instrumentation Monitoring Report No.6 | milestone | 0d | 2013-12-28 A | 2013-12-28 A | 8220H-MS07 | 100% | 2014-01-01 | 2014-01-01 |  |  | finish on or after 2013-12-30 | W7 - 24 Hour - 7 day - No Holiday | C822 | B35 | 04 | 0401 | GD01 | CCHM | 822 | HH |  | MIL | 2240 |
| 8220H-MS09 |  | Substantially Complete all Works | milestone | 0d | 2017-01-01 | 2017-01-01 |  |  |  |  | -599d | 461.57d | finish on or after 2015-05-10; finish on or before 2015-05-10 | W7 - 24 Hour - 7 day - No Holiday | C822 | B35 | 04 | 0401 | GD01 | CCHM | 822 | HH |  | MIL | 2240 |

| ID | WBS | Activity | Type | Duration | Start | Finish | Predecessors | Complete | Planned start | Planned finish | Total float | Free float | Constraint | Calendar | L1 : Project | L2 : Phase | L3 : Area | L4 : Sub-Area | L5 : Element | L6 : Sub-Element | M1: Contracts | M2 : Cost Centre | M4 : Location | L7 : System |
| --- | --- | --- | --- | --- | --- | --- | --- | --- | --- | --- | --- | --- | --- | --- | --- | --- | --- | --- | --- | --- | --- | --- | --- | --- |
|  | 2 | **Project Dates** |  |  | 2010-09-23 | 2017-05-06 |  |  |  |  |  |  |  |  |  |  |  |  |  |  |  |  |  |  |
| 8220PD4 |  | Complete Engineer's Office & Install all equipment | milestone | 0d | 2010-09-23 A | 2010-09-23 A |  | 100% |  |  |  |  |  | W7 - 24 Hour - 7 day - No Holiday | C822 | B32 | 10 | G001 | GD01 | PDPD | 822 | AA |  |  |
| 8220PD2-2 |  | Close Tunnel Wall Opening at SYCA/Tunnel Junction | milestone | 0d | 2014-02-14 A | 2014-02-14 A |  | 100% | 2014-05-01 | 2014-05-01 |  |  | finish on or after 2014-04-01; finish on or before 2014-04-01 | W7 - 24 Hour - 7 day - No Holiday | C822 | B32 | 04 | 0402 | GD01 | PDTA | 822 | AA | 2240 | ACO |
| 8220PD2-1 |  | Close Tunnel Wall Opening at PHVAA/Tunnel Junction | milestone | 0d | 2017-01-01 | 2017-01-01 |  |  |  |  | -1030.29d | 461.57d | finish on or after 2014-03-04; finish on or before 2014-03-04 | W7 - 24 Hour - 7 day - No Holiday | C822 | B32 | 02 | 0203 | 11 | PDTA | 822 | AA | 2280 | ACO |
| 8220PD3-03 |  | VB4 - Complete all External Water Works (31/14) (PS. App C1) | milestone | 0d | 2017-01-01 | 2017-01-01 |  |  |  |  | -878.29d | 461.57d | finish on or after 2014-08-03; finish on or before 2014-08-03 | W7 - 24 Hour - 7 day - No Holiday | C822 | B32 | 02 | 0204 | GD01 | PDSI | 822 | AA | 2230 |  |
| 8220PD3-04 |  | VB4 - Complete all Telephone Works (35/14) (PS. App C1) | milestone | 0d | 2017-01-01 | 2017-01-01 |  |  |  |  | -850.29d | 461.57d | finish on or after 2014-08-31; finish on or before 2014-08-31 | W7 - 24 Hour - 7 day - No Holiday | C822 | B32 | 02 | 0204 | GD01 | PDSI | 822 | AA | 2230 |  |
| 8220PD1-02 |  | Overhead Lines Power On (by DC) | milestone | 0d | 2017-01-02 | 2017-01-02 |  |  |  |  | -822.67d | 461.57d | start on 2014-09-28 | W7 - 24 Hour - 7 day - No Holiday | C822 | B32 | 06 | G001 |  |  |  |  |  |  |
| 8220PD1-2 |  | Permanent Power On (VB5) (PS. App C1) | milestone | 0d | 2017-01-02 | 2017-01-02 |  |  |  |  | -941.67d | 461.57d | start on 2014-06-01 | W7 - 24 Hour - 7 day - No Holiday | C822 | B32 | 03 | 0301 | GD01 | PDPO | 822 | AA | 2230 |  |
| 8220PD1-01 |  | Permanent Power On (VB4) (PS. App C1) | milestone | 0d | 2017-01-12 | 2017-01-12 | 8220D-6470 |  |  |  | -952.42d | 0.58d | start on 2014-06-01 | W7 - 24 Hour - 7 day - No Holiday | C822 | B32 | 02 | 0201 | GD01 | PDPO |  |  |  |  |
| 8220PD3-02 |  | VB5 - Complete all Telephone Works (29/14) (PS. App C1) | milestone | 0d | 2017-04-08 | 2017-04-08 | 8220D-6120 |  |  |  | -989.04d | 364.82d | finish on or after 2014-07-20; finish on or before 2014-07-20 | W7 - 24 Hour - 7 day - No Holiday | C822 | B32 | 03 | 0306 | GD01 | PDSI | 822 | AA | 2220 |  |
| 8220PD3-01 |  | VB5 - Complete all External Water Works (24/14) (PS. App C1) | milestone | 0d | 2017-05-06 | 2017-05-06 | 8220D-6820 |  |  |  | -1052.04d | 336.82d | finish on or after 2014-06-15; finish on or before 2014-06-15 | W7 - 24 Hour - 7 day - No Holiday | C822 | B32 | 03 | 0306 | GD01 | PDSI | 822 | AA | 2220 |  |
|  | 4 | **Contractor Milestones** |  |  | 2010-12-23 | 2018-03-29 |  |  |  |  |  |  |  |  |  |  |  |  |  |  |  |  |  |  |
|  | 1 | **Shek Yam** |  |  | 2010-12-23 | 2011-11-11 |  |  |  |  |  |  |  |  |  |  |  |  |  |  |  |  |  |  |
| 8220CM-01 |  | Shek Yam - Complete Adit to Ch0+150 | milestone | 0d | 2010-12-23 A | 2010-12-23 A | 8220H-0180 | 100% | 2011-12-01 | 2011-12-01 |  |  |  | W7 - 24 Hour - 7 day - No Holiday | C822 | B37 | 01 | 0401 | GD01 | GEN | 822 | AA | 2280 |  |
| 8220CM-11 |  | Shek Yam - Complete Adit to Tunnel Alignment Ch0+493 | milestone | 0d | 2011-04-28 A | 2011-04-28 A | 8220H-0940 | 100% |  |  |  |  |  | W7 - 24 Hour - 7 day - No Holiday | C822 | B37 | 01 | 0401 | GD01 | GEN |  |  |  |  |
| 8220CM-201 |  | Shek Yam - Complete Crusher Hall and Adits Excavation | milestone | 0d | 2011-08-27 A | 2011-08-27 A | 8220H-0510 | 100% | 2011-12-01 | 2011-12-01 |  |  |  | W7 - 24 Hour - 7 day - No Holiday | C822 | B37 | 01 | 0401 | GD01 | GEN |  |  |  |  |
| 8220CM-211 |  | Shek Yam - Crusher Operational | milestone | 0d | 2011-11-11 A | 2011-11-11 A | 8220H-1200 | 100% | 2012-06-01 | 2012-06-01 |  |  |  | W7 - 24 Hour - 7 day - No Holiday | C822 | B37 | 01 | 0401 | GD01 | GEN |  |  |  |  |
|  | 2 | **Shing Mun** |  |  | 2011-07-09 | 2017-11-20 |  |  |  |  |  |  |  |  |  |  |  |  |  |  |  |  |  |  |
| 8220CM-91 |  | Shing Mun - Complete Pipe Piling | milestone | 0d | 2011-07-09 A | 2011-07-09 A | 8220G-0700, 8220G-0780 | 100% |  |  |  |  |  | W7 - 24 Hour - 7 day - No Holiday | C822 | B37 | 01 | 0303 | GD01 | GEN |  |  |  |  |
| 8220CM-191 |  | Shing Mun - Complete Cofferdam Excavation | milestone | 0d | 2012-12-07 A | 2012-12-07 A | 8220G-6380 | 100% | 2013-01-09 | 2013-01-09 |  |  |  | W7 - 24 Hour - 7 day - No Holiday | C822 | B37 | 01 | 0303 | GD01 | GEN |  |  |  |  |
| 8220CM-41 |  | Shing Mun - Vertical Shaft Complete D&B Excavation and Breakthrough | milestone | 0d | 2013-08-11 A | 2013-08-11 A | 8220G-0120 | 100% | 2013-09-06 | 2013-09-06 |  |  |  | W7 - 24 Hour - 7 day - No Holiday | C822 | B37 | 01 | 0305 | GD01 | GEN |  |  |  |  |
| 8220CM-281 |  | Shing Mun - Complete Basement Permanent Works | milestone | 0d | 2014-04-17 A | 2014-04-17 A | 8220G-1050 | 100% | 2014-05-01 | 2014-05-01 |  |  |  | W7 - 24 Hour - 7 day - No Holiday | C822 | B37 | 01 | 0305 | GD01 | GEN |  |  |  |  |
| 8220CM-101 |  | Shing Mun - Complete Shaft Lining | milestone | 0d | 2017-02-10 | 2017-02-10 | 8220F-1040 |  |  |  | -638.5d | 422.07d |  | W7 - 24 Hour - 7 day - No Holiday | C822 | B37 | 01 | 0305 | GD01 | GEN |  |  |  |  |
| 8220CM-251 |  | Shing Mun - Earliest date for Shared Access with DC855 | milestone | 0d | 2017-04-29 | 2017-04-29 | 8220G1870 |  |  |  | -716.69d | 343.88d |  | W7 - 24 Hour - 7 day - No Holiday | C822 | B37 | 01 | 0301 | GD01 | GEN |  |  |  |  |
| 8220CM-231 |  | Shing Mun - Complete VB5 Superstructure | milestone | 0d | 2017-09-06 | 2017-09-06 | 8220G-0230 |  |  |  | -846.5d | 214.07d |  | W7 - 24 Hour - 7 day - No Holiday | C822 | B37 | 01 | 0306 | GD01 | GEN |  |  |  |  |
| 8220CM-241 |  | Shing Mun - Complete VB5 External ABWF Works | milestone | 0d | 2017-11-20 | 2017-11-20 | 8220D-5980 |  |  |  | -921.5d | 139.07d |  | W7 - 24 Hour - 7 day - No Holiday | C822 | B37 | 01 | 0306 | GD01 | GEN |  |  |  |  |

| ID | WBS | Activity | Type | Duration | Start | Finish | Predecessors | Complete | Planned start | Planned finish | Total float | Free float | Constraint | Calendar | L1 : Project | L2 : Phase | L3 : Area | L4 : Sub-Area | L5 : Element | L6 : Sub-Element | Stef Temp A1 | L8: Section | M2 : Cost Centre |
| --- | --- | --- | --- | --- | --- | --- | --- | --- | --- | --- | --- | --- | --- | --- | --- | --- | --- | --- | --- | --- | --- | --- | --- |
|  | 1 | **SMEAP** |  |  | 2012-10-23 | 2017-03-25 |  |  |  |  |  |  |  |  |  |  |  |  |  |  |  |  |  |
| 8220CM-291 |  | Shing Mun - Commence EAP Adit Excavation | milestone | 0d | 2012-10-23 A | 2012-10-23 A | 8220EE0140 SF | 100% | 2012-11-01 | 2012-11-01 |  |  |  | W7 - 24 Hour - 7 day - No Holiday | C822 | B37 | 01 | 0301 | GD01 | GEN |  |  |  |
| 8220CM-181 |  | Shing Mun - Complete EAP Adit Excavation | milestone | 0d | 2013-02-02 A | 2013-02-02 A | 8220G-1370 | 100% | 2013-03-09 | 2013-03-09 |  |  |  | W7 - 24 Hour - 7 day - No Holiday | C822 | B37 | 01 | 0301 | GD01 | GEN |  |  |  |
| 8220CM-271 |  | Shing Mun EAP - Earliest Shared Access with DC855 in VB5 | milestone | 0d | 2017-03-25 | 2017-03-25 | 8220EE0110 |  |  |  | -681.75d | 378.82d |  | W7 - 24 Hour - 7 day - No Holiday | C822 | B37 | 01 | 0301 | GD01 | GEN |  |  |  |
|  | 3 | **Pat Heung** |  |  | 2012-03-27 | 2017-11-02 |  |  |  |  |  |  |  |  |  |  |  |  |  |  |  |  |  |
|  | 1 | **PHVA** |  |  | 2012-05-16 | 2017-11-02 |  |  |  |  |  |  |  |  |  |  |  |  |  |  |  |  |  |
| 8220CM-21 |  | PHVA to Tunnel Alignment at Ch0+611 | milestone | 0d | 2012-05-16 A | 2012-05-16 A | 8220C-0400 | 100% | 2012-06-01 | 2012-06-01 |  |  |  | W7 - 24 Hour - 7 day - No Holiday | C822 | B37 | 01 | 0202 | GD01 | GEN |  |  |  |
| 8220CM-361 |  | PHVA Complete Adit Lining | milestone | 0d | 2017-11-02 | 2017-11-02 | 8220C-1240, 8220C-1230 |  |  |  | -903.48d | 157.08d |  | W7 - 24 Hour - 7 day - No Holiday | C822 | B37 | 01 | 0202 | GD01 | GEN |  |  |  |
|  | 2 | **PHVAA** |  |  | 2012-03-27 | 2017-04-01 |  |  |  |  |  |  |  |  |  |  |  |  |  |  |  |  |  |
| 8220CM-321 |  | PHVAA Commence the VB4 Excavation | milestone | 0d | 2012-03-27 A | 2012-03-27 A | 8220D-6700, 8220D-2240 | 100% | 2012-06-07 | 2012-06-07 |  |  |  | W7 - 24 Hour - 7 day - No Holiday | C822 | B37 | 01 | 0204 | GD01 | GEN |  |  |  |
| 8220CM-311 |  | PHVAA Complete the VAA Excavation | milestone | 0d | 2012-07-28 A | 2012-07-28 A | 8220C-0730 | 100% | 2012-08-14 | 2012-08-14 |  |  |  | W7 - 24 Hour - 7 day - No Holiday | C822 | B37 | 01 | 0203 | GD01 | GEN |  |  |  |
| 8220CM-331 |  | PHVAA Complete the VB4 Structure | milestone | 0d | 2013-09-30 A | 2013-09-30 A | 8220D-0350, 8220D-0350 FF, 8220D-0380 FF | 100% | 2013-11-08 | 2013-11-08 |  |  |  | W7 - 24 Hour - 7 day - No Holiday | C822 | B37 | 01 | 0204 | GD01 | GEN | LINk |  |  |
| 8220CM-221 |  | PHVAA - Complete Undertrack Passage | milestone | 0d | 2017-02-02 | 2017-02-02 | 8220C-2170 FF |  |  |  | -630.75d | 429.82d |  | W7 - 24 Hour - 7 day - No Holiday | C822 | B37 | 01 | G001 | GD01 | GEN |  |  |  |
| 8220CM-341 |  | PHVAA Complete the VB4 Link Structure | milestone | 0d | 2017-04-01 | 2017-04-01 | 8220D-0320 |  |  |  | -688.73d | 371.83d |  | W7 - 24 Hour - 7 day - No Holiday | C822 | B37 | 01 | 0204 | GD01 | GEN | LINk |  |  |
|  | 4 | **Main Tunnels** |  |  | 2012-03-12 | 2018-03-29 |  |  |  |  |  |  |  |  |  |  |  |  |  |  |  |  |  |
| 8220CM-111 |  | Tunnels - BREAKTHROUGH | milestone | 0d | 2014-03-02 A | 2014-03-02 A | 8220B-2760, 8220B-12580 | 100% | 2014-04-01 | 2014-04-01 |  |  |  | W7 - 24 Hour - 7 day - No Holiday | C822 | B37 | 01 | G001 | GD01 | GEN |  | A |  |
| 8220CM-121 |  | Tunnels - Commence XRL Test Running | milestone | 0d | 2017-01-01 | 2017-01-01 |  |  |  |  | -731.29d | 318.42d | finish on or after 2014-12-28; finish on or before 2014-12-28 | W7 - 24 Hour - 7 day - No Holiday | C822 | B37 | 01 | G001 | GD01 | GEN |  |  | AA |
| 8220CM-141 |  | Tunnels - XRL Test Runing Period |  | 66d | 2017-11-16 | 2018-01-23 | 8220CM-121, 8220D-6620 |  |  |  | -1048.67d | 0d |  | W7 - 24 Hour - 7 day - No Holiday | C822 | B37 | 01 | G001 | GD01 | GEN |  |  | AA |
| 8220CM-131 |  | Tunnels - Commence XRL Trial Running | milestone | 0d | 2018-01-23 | 2018-01-23 | 8220CM-141 FF |  |  |  | -1048.67d | 0d |  | W7 - 24 Hour - 7 day - No Holiday | C822 | B37 | 01 | G001 | GD01 | GEN |  |  | AA |
| 8220CM-151 |  | Tunnels - XRL Trial Running |  | 65.25d | 2018-01-23 | 2018-03-29 | 8220CM-131 |  |  |  | -1048.67d | 0d |  | W7 - 24 Hour - 7 day - No Holiday | C822 | B37 | 01 | G001 | GD01 | GEN |  |  | AA |
|  | 1 | **Northern Tunnels** |  |  | 2012-08-06 | 2014-02-28 |  |  |  |  |  |  |  |  |  |  |  |  |  |  |  |  |  |
| 8220CM-261 |  | Tunnels - Breakthrough Between PHVA and PHVAA | milestone | 0d | 2012-08-06 A | 2012-08-06 A | 8220B-0590 FF | 100% | 2012-09-01 | 2012-09-01 |  |  |  | W7 - 24 Hour - 7 day - No Holiday | C822 | B37 | 01 | 0502 | GD01 | GEN |  |  |  |
| 8220CM-81 |  | Tunnels - Launch Northern Type M Shutter | milestone | 0d | 2013-02-27 A | 2013-02-27 A | 8220B-0830 SF | 100% | 2013-03-01 | 2013-03-01 |  |  |  | W7 - 24 Hour - 7 day - No Holiday | C822 | B37 | 01 | 0503 | GD01 | GEN |  |  |  |
| 8220CM-61 |  | Tunnels - Launch Northern Type C Shutter | milestone | 0d | 2013-03-25 A | 2013-03-25 A | 8220B-0860 SF | 100% | 2013-05-01 | 2013-05-01 |  |  |  | W7 - 24 Hour - 7 day - No Holiday | C822 | B37 | 01 | 0503 | GD01 | GEN |  |  |  |
| 8220CM-171 |  | Tunnels - Breakthrough at Northern End | milestone | 0d | 2013-05-11 A | 2013-05-11 A | 8220B-0520, 8220B-0530 | 100% | 2013-06-01 | 2013-06-01 |  |  |  | W7 - 24 Hour - 7 day - No Holiday | C822 | B37 | 01 | 0602 | GD01 | GEN |  |  |  |
| 8220CM-351 |  | Tunnels - Launch Northern Type A Shutter | milestone | 0d | 2013-09-03 A | 2013-09-03 A | 8220B-7800 | 100% | 2014-02-26 | 2014-02-26 |  |  |  | W7 - 24 Hour - 7 day - No Holiday | C822 | B37 | 01 | 0503 | GD01 | GEN |  |  |  |
| 8220CM-301 |  | Tunnels - Launch Northern Type G Wall Shutter | milestone | 0d | 2013-10-31 A | 2013-10-31 A | 8220B-12210 | 100% | 2013-11-01 | 2013-11-01 |  |  |  | W7 - 24 Hour - 7 day - No Holiday | C822 | B37 | 01 | 0503 | GD01 | GEN |  |  |  |
| 8220CM-371 |  | Tunnels - Launch Northern Type G Arch Shutter | milestone | 0d | 2014-02-28 A | 2014-02-28 A | 8220B-0680 | 100% | 2014-03-01 | 2014-03-01 |  |  |  | W7 - 24 Hour - 7 day - No Holiday |  |  |  |  |  |  |  |  |  |

| ID | WBS | Activity | Type | Duration | Start | Finish | Predecessors | Complete | Planned start | Planned finish | Total float | Free float | Constraint | Calendar | L1 : Project | L2 : Phase | L3 : Area | L4 : Sub-Area | L5 : Element | L6 : Sub-Element | M1: Contracts | M2 : Cost Centre | 822_AB_W010 | M3 : Works Area | M4 : Location |
| --- | --- | --- | --- | --- | --- | --- | --- | --- | --- | --- | --- | --- | --- | --- | --- | --- | --- | --- | --- | --- | --- | --- | --- | --- | --- |
|  | 2 | **Southern Tunnels** |  |  | 2012-03-12 | 2013-07-17 |  |  |  |  |  |  |  |  |  |  |  |  |  |  |  |  |  |  |  |
| 8220CM-51 |  | Tunnels - Launch Southern Type C Shutter | milestone | 0d | 2012-03-12 A | 2012-03-12 A | 8220B-1700 SF | 100% | 2012-06-01 | 2012-06-01 |  |  |  | W7 - 24 Hour - 7 day - No Holiday | C822 | B37 | 01 | 0603 | GD01 | GEN |  |  |  |  |  |
| 8220CM-161 |  | Tunnels - Reach Ch133+000 - C821 Interface | milestone | 0d | 2012-06-13 A | 2012-06-13 A | 8220B-0090 | 100% | 2012-08-01 | 2012-08-01 |  |  |  | W7 - 24 Hour - 7 day - No Holiday | C822 | B37 | 01 | 0602 | GD01 | GEN |  |  |  |  |  |
| 8220CM-71 |  | Tunnels - Launch Southern Type M Shutter | milestone | 0d | 2013-07-17 A | 2013-07-17 A | 8220B-1720 SF | 100% | 2013-08-01 | 2013-08-01 |  |  |  | W7 - 24 Hour - 7 day - No Holiday | C822 | B37 | 01 | 0603 | GD01 | GEN |  |  |  |  |  |
|  | 5 | **Possession and Vacation of Works Areas** |  |  | 2010-03-10 | 2017-06-27 |  |  |  |  |  |  |  |  |  |  |  |  |  |  |  |  |  |  |  |
|  | 1 | **Works Area Possession Dates** |  |  | 2010-03-10 | 2017-01-02 |  |  |  |  |  |  |  |  |  |  |  |  |  |  |  |  |  |  |  |
|  | 1 | **Pat Heung** |  |  | 2010-09-22 | 2017-01-02 |  |  |  |  |  |  |  |  |  |  |  |  |  |  |  |  |  |  |  |
| 8220A-3200 |  | Take Possession of Area 6.4 (Kam Sheung Rd - by SLG) | milestone | 0d | 2010-09-22 A | 2010-09-22 A | 8220D-0150 SS | 100% |  |  |  |  | as late as possible | W7 - 24 Hour - 7 day - No Holiday | C822 | B62 | 01 | 0201 | GD01 | ACCC | 822 | AA | 822_AB_W010 |  |  |
| 8220A-3210 |  | Take Possession of Area 6.1 (Pat Heung) | milestone | 0d | 2010-09-22 A | 2010-09-22 A | 8220D-0150 | 100% |  |  |  |  |  | W7 - 24 Hour - 7 day - No Holiday | C822 | B62 | 01 | 0201 | GD01 | ACCC | 822 | AA | 822_AB_W010 |  |  |
| 8220A-3220 |  | Take 1st Possession of Area 6.2 (Pat Heung) | milestone | 0d | 2010-09-22 A | 2010-09-22 A | 8220D-0150 | 100% |  |  |  |  |  | W7 - 24 Hour - 7 day - No Holiday | C822 | B62 | 01 | 0201 | GD01 | ACCC | 822 | AA | 822_AB_W010 |  |  |
| 8220A-3230 |  | Take Possession of Area 6.3 (Pat Heung) | milestone | 0d | 2010-09-22 A | 2010-09-22 A | 8220A-3200 SS | 100% |  |  |  |  |  | W7 - 24 Hour - 7 day - No Holiday | C822 | B62 | 01 | 0201 | GD01 | ACCC | 822 | AA | 822_AB_W010 |  |  |
| 8220A-4870 |  | Take Possession of Area 6.1A (Pat Heung) | milestone | 0d | 2010-09-22 A | 2010-09-22 A | 8220D-0150 | 100% |  |  |  |  |  | W7 - 24 Hour - 7 day - No Holiday | C822 | B62 | 01 | 0201 | GD01 | ACCC |  |  | 822_AB_W010 |  |  |
| 8220A-3260 |  | Take 2nd Possession of Area 6.2 (Pat Heung) | milestone | 0d | 2017-01-02 | 2017-01-02 |  |  |  |  | -599d | 461.57d | start on or after 2014-06-02 | W7 - 24 Hour - 7 day - No Holiday | C822 | B62 | 01 | 0201 | GD01 | ACCC | 822 | AA |  |  |  |
|  | 2 | **Shing Mun** |  |  | 2010-03-10 | 2017-01-02 |  |  |  |  |  |  |  |  |  |  |  |  |  |  |  |  |  |  |  |
| 8220A-3080 |  | Take Possession of Area 7.2 (Shing Mun) | milestone | 0d | 2010-03-10 A | 2010-03-10 A | 8220-START | 100% |  |  |  |  |  | W7 - 24 Hour - 7 day - No Holiday | C822 | B62 | 01 | 0301 | GD01 | ACCC | 822 | AA | 822_AB_W010 |  |  |
| 8220A-3070 |  | Take Possession of Area 7.1(SLG) Late required (Shing Mun) | milestone | 0d | 2010-06-05 A | 2010-06-05 A |  | 100% |  |  |  |  | as late as possible | W7 - 24 Hour - 7 day - No Holiday | C822 | B62 | 01 | 0301 | GD01 | ACCC | 822 | AA | 822_AB_W010 |  |  |
| 8220A-3150 |  | Take Possession of Area 7.3 (Part - Shing Mun Bus Terminus) | milestone | 0d | 2010-07-09 A | 2010-07-09 A |  | 100% |  |  |  |  |  | W7 - 24 Hour - 7 day - No Holiday | C822 | B62 | 01 | 0301 | GD01 | ACCC | 822 | AA | 822_AB_W010 |  |  |
| 8220A-4890 |  | Take Possession of Area 7.3 (Part - Shing Mun Bus Terminus) | milestone | 0d | 2010-10-20 A | 2010-10-20 A |  | 100% |  |  |  |  |  | W7 - 24 Hour - 7 day - No Holiday | C822 | B62 | 01 | 0301 | GD01 | ACCC |  |  | 822_AB_W010 |  |  |
| 8220A-5640 |  | VB5 - Obtain HA Approval to Posses Area 7.4 |  | 40d | 2014-03-03 A | 2014-04-12 A |  | 100% | 2014-04-02 | 2014-05-12 |  |  |  | W7 - 24 Hour - 7 day - No Holiday | C822 | B62 | 01 | 0301 | GD01 | ACCC | 822 | AA | 822_AB_W010 | 74 | 2220 |
| 8220A-3190 |  | Take Possession of Area 7.4 (SLG) (Shing Mun - Cheung Shan Estate Rd) | milestone | 0d | 2017-01-02 | 2017-01-02 | 8220A-5640 |  |  |  | -1495d | 0d | as late as possible | W7 - 24 Hour - 7 day - No Holiday | C822 | B62 | 01 | 0301 | GD01 | ACCC | 822 | AA |  | 74 |  |
|  | 3 | **Shek Yam** |  |  | 2010-03-10 | 2017-01-02 |  |  |  |  |  |  |  |  |  |  |  |  |  |  |  |  |  |  |  |
| 8220A-3110 |  | Take 1st Possession of Area 8.2 (Shek Yam) | milestone | 0d | 2010-03-10 A | 2010-03-10 A | 8220-START | 100% |  |  |  |  |  | W7 - 24 Hour - 7 day - No Holiday | C822 | B62 | 01 | 0401 | GD01 | ACCC | 822 | AA | 822_AB_W010 |  |  |
| 8220A-3120 |  | Take Possession of Area 8.3 (Shek Yam) | milestone | 0d | 2010-03-10 A | 2010-03-10 A | 8220-START | 100% |  |  |  |  |  | W7 - 24 Hour - 7 day - No Holiday | C822 | B62 | 01 | 0401 | GD01 | ACCC | 822 | AA | 822_AB_W010 |  |  |
| 8220A-3250 |  | Take 2nd Possession of Area 8.2 (Shek Yam) | milestone | 0d | 2017-01-02 | 2017-01-02 |  |  |  |  | -599d | 461.57d | start on or after 2014-05-05 | W7 - 24 Hour - 7 day - No Holiday | C822 | B62 | 01 | 0401 | GD01 | ACCC | 822 | AA |  |  |  |

| ID | WBS | Activity | Type | Duration | Start | Finish | Predecessors | Complete | Planned start | Planned finish | Total float | Free float | Constraint | Calendar | L1 : Project | L2 : Phase | L3 : Area | L4 : Sub-Area | L5 : Element | L6 : Sub-Element | M1: Contracts | M2 : Cost Centre | 822_AB_W010 | M3 : Works Area |
| --- | --- | --- | --- | --- | --- | --- | --- | --- | --- | --- | --- | --- | --- | --- | --- | --- | --- | --- | --- | --- | --- | --- | --- | --- |
|  | 5 | **Tai Shu Ha** |  |  | 2010-03-10 | 2010-06-30 |  |  |  |  |  |  |  |  |  |  |  |  |  |  |  |  |  |  |
| 8220A-3090 |  | Take Possession of Area 6.13 (Tai Shu Ha) | milestone | 0d | 2010-03-10 A | 2010-03-10 A | 8220-START | 100% |  |  |  |  |  | W7 - 24 Hour - 7 day - No Holiday | C822 | B62 | 01 | 0701 | GD01 | ACCC | 822 | AA | 822_AB_W010 |  |
| 8220A-3160 |  | Take Possession of Area 6.11 (Tai Shu Ha) | milestone | 0d | 2010-06-30 A | 2010-06-30 A |  | 100% |  |  |  |  |  | W7 - 24 Hour - 7 day - No Holiday | C822 | B62 | 01 | 0701 | GD01 | ACCC | 822 | AA | 822_AB_W010 |  |
| 8220A-3170 |  | Take Possession of Area 6.12 (Tai Shu Ha) | milestone | 0d | 2010-06-30 A | 2010-06-30 A |  | 100% |  |  |  |  |  | W7 - 24 Hour - 7 day - No Holiday | C822 | B62 | 01 | 0701 | GD01 | ACCC | 822 | AA | 822_AB_W010 |  |
|  | 6 | **So Kwan Wat** |  |  | 2010-03-19 | 2010-03-19 |  |  |  |  |  |  |  |  |  |  |  |  |  |  |  |  |  |  |
| 8220A-3100 |  | Take Possession of Area 6.8 (So Kwan Wat) | milestone | 0d | 2010-03-19 A | 2010-03-19 A |  | 100% |  |  |  |  |  | W7 - 24 Hour - 7 day - No Holiday | C822 | B62 | 01 | 0801 | GD01 | ACCC | 822 | AA | 822_AB_W010 |  |
|  | 4 | **Kwai Fong** |  |  | 2010-03-10 | 2010-07-05 |  |  |  |  |  |  |  |  |  |  |  |  |  |  |  |  |  |  |
| 8220A-3130 |  | Take Possession of Area 8.5 (Kwai Fong Compound) | milestone | 0d | 2010-03-10 A | 2010-03-10 A | 8220-START | 100% |  |  |  |  |  | W7 - 24 Hour - 7 day - No Holiday | C822 | B62 | 01 | G001 | GD01 | ACCC | 822 | AA | 822_AB_W010 |  |
| 8220A-3140 |  | Take Possession of Area 8.4 (Yau Ma Hom Road - by SLG) | milestone | 0d | 2010-07-05 A | 2010-07-05 A |  | 100% |  |  |  |  |  | W7 - 24 Hour - 7 day - No Holiday | C822 | B62 | 01 | G001 | GD01 | ACCC | 822 | AA | 822_AB_W010 |  |
| 8220A-3180 |  | Take Possession of Area 8.1 (Kwok Shui Road Office) | milestone | 0d | 2010-07-05 A | 2010-07-05 A |  | 100% |  |  |  |  |  | W7 - 24 Hour - 7 day - No Holiday | C822 | B62 | 01 | G001 | GD01 | ACCC | 822 | AA | 822_AB_W010 |  |
|  | 7 | **Yam O Barging Point** |  |  | 2010-03-10 | 2011-12-12 |  |  |  |  |  |  |  |  |  |  |  |  |  |  |  |  |  |  |
| 8220A-9870 |  | Take Possession of Area 6.13 (Yam O Barging Point) | milestone | 0d | 2010-03-10 A | 2010-03-10 A | 8220-START | 100% | 2011-12-12 | 2011-12-12 |  |  | start on or after 2011-12-12 | W7 - 24 Hour - 7 day - No Holiday | C822 | B62 | 01 | 0901 | GD01 | ACCC | 822 | AA | 822_AB_W010 |  |
| 8220A-3240 |  | Take Possession of Area 6.14 (Yam O Barging Point) | milestone | 0d | 2011-12-12 A | 2011-12-12 A |  | 100% | 2012-11-01 | 2012-11-01 |  |  | start on or after 2011-12-12 | W7 - 24 Hour - 7 day - No Holiday | C822 | B62 | 01 | 0901 | GD01 | ACCC | 822 | AA | 822_AB_W010 |  |
|  | 2 | **Works Area Vacate Dates** |  |  | 2010-10-21 | 2017-06-27 |  |  |  |  |  |  |  |  |  |  |  |  |  |  |  |  |  |  |
|  | 1 | **Pat Heung** |  |  | 2017-01-01 | 2017-06-27 |  |  |  |  |  |  |  |  |  |  |  |  |  |  |  |  |  |  |
| 8220A-3320 |  | 1st Vacate Area 6.2 (Pat Heung) to C830 | milestone | 0d | 2017-01-01 | 2017-01-01 |  |  |  |  | -1212.62d | 0d | mandatory finish 2013-09-02 | W7 - 24 Hour - 7 day - No Holiday | C822 | B62 | 01 | 0201 | GD01 | VCCC | 822 | AA |  |  |
| 8220A-3380 |  | Vacate Area 6.1 (Pat Heung) | milestone | 0d | 2017-01-01 | 2017-01-01 |  |  |  |  | -599d | 461.57d | finish on or after 2015-05-10 | W7 - 24 Hour - 7 day - No Holiday | C822 | B62 | 01 | 0201 | GD01 | VCCC | 822 | AA |  |  |
| 8220A-3390 |  | 2nd Vacate Area 6.2 (Pat Heung) | milestone | 0d | 2017-01-01 | 2017-01-01 |  |  |  |  | -599d | 461.57d | finish on or after 2015-05-10 | W7 - 24 Hour - 7 day - No Holiday | C822 | B62 | 01 | 0201 | GD01 | VCCC | 822 | AA |  |  |
| 8220A-3400 |  | Vacate Area 6.3 (Pat Heung) | milestone | 0d | 2017-01-01 | 2017-01-01 |  |  |  |  | -599d | 461.57d | finish on or after 2015-05-10 | W7 - 24 Hour - 7 day - No Holiday | C822 | B62 | 01 | 0201 | GD01 | VCCC | 822 | AA |  |  |
| 8220A-4880 |  | Vacate Area 6.1A (Pat Heung) | milestone | 0d | 2017-01-01 | 2017-01-01 |  |  |  |  | -599d | 461.57d | finish on or after 2016-05-10 | W7 - 24 Hour - 7 day - No Holiday | C822 | B62 | 01 | 0201 | GD01 | VCCC |  |  |  |  |
| 8220A-3290 |  | Vacate Area 6.4 (Kam Sheung Rd - by SLG) | milestone | 0d | 2017-06-27 | 2017-06-27 | 8220D-6790 |  |  |  | -775.75d | 284.82d |  | W7 - 24 Hour - 7 day - No Holiday | C822 | B62 | 01 | 0201 | GD01 | VCCC | 822 | AA |  |  |
|  | 2 | **Shing Mun** |  |  | 2010-10-21 | 2017-04-22 |  |  |  |  |  |  |  |  |  |  |  |  |  |  |  |  |  |  |
| 8220A-3280 |  | Vacate Area 7.3 (Part - Shing Mun Bus Terminus) | milestone | 0d | 2010-10-21 A | 2010-10-21 A |  | 100% |  |  |  |  |  | W7 - 24 Hour - 7 day - No Holiday | C822 | B62 | 01 | 0301 | GD01 | VCCC | 822 | AA | 822_AB_W010 |  |
| 8220A-3420 |  | Vacate Area 7.1 (Shing Mun) | milestone | 0d | 2017-01-01 | 2017-01-01 |  |  |  |  | -599d | 461.57d | finish on or after 2015-05-10 | W7 - 24 Hour - 7 day - No Holiday | C822 | B62 | 01 | 0301 | GD01 | VCCC | 822 | AA |  |  |
| 8220A-3430 |  | Vacate Area 7.2 (Shing Mun) | milestone | 0d | 2017-01-01 | 2017-01-01 |  |  |  |  | -599d | 461.57d | finish on or after 2015-05-10 | W7 - 24 Hour - 7 day - No Holiday | C822 | B62 | 01 | 0301 | GD01 | VCCC | 822 | AA |  |  |
| 8220A-4205 |  | Vacate Area 7.3 (Part - Shing Mun Bus Terminus) | milestone | 0d | 2017-01-01 | 2017-01-01 |  |  |  |  | -599d | 461.57d | finish on or after 2015-05-10 | W7 - 24 Hour - 7 day - No Holiday | C822 | B62 | 01 | 0301 | GD01 | VCCC | 822 | AA |  |  |
| 8220A-3310 |  | Vacate Area 7.4 (Shing Mun - Cheung Shan Estate Rd) | milestone | 0d | 2017-04-22 | 2017-04-22 | 8220D-6800 |  |  |  | -709.75d | 350.82d |  | W7 - 24 Hour - 7 day - No Holiday | C822 | B62 | 01 | 0301 | GD01 | VCCC | 822 | AA |  | 74 |

| ID | WBS | Activity | Type | Duration | Start | Finish | Predecessors | Complete | Planned start | Planned finish | Total float | Free float | Constraint | Calendar | L1 : Project | L2 : Phase | L3 : Area | L4 : Sub-Area | L5 : Element | L6 : Sub-Element | M1: Contracts | M2 : Cost Centre | 822_AB_W010 | L7 : System | M4 : Location |
| --- | --- | --- | --- | --- | --- | --- | --- | --- | --- | --- | --- | --- | --- | --- | --- | --- | --- | --- | --- | --- | --- | --- | --- | --- | --- |
|  | 3 | **Shek Yam** |  |  | 2017-01-01 | 2017-01-01 |  |  |  |  |  |  |  |  |  |  |  |  |  |  |  |  |  |  |  |
| 8220A-3300 |  | 1st Vacate Area 8.2 (Shek Yam) to C830 | milestone | 0d | 2017-01-01 | 2017-01-01 |  |  |  |  | -1304.29d | 461.57d | finish on 2013-06-02 | W7 - 24 Hour - 7 day - No Holiday | C822 | B62 | 01 | 0401 | GD01 | VCCC | 822 | AA |  |  |  |
| 8220A-3370 |  | Vacate Area 8.1 (Shek Yam) | milestone | 0d | 2017-01-01 | 2017-01-01 |  |  |  |  | -716.62d | 0d | mandatory finish 2015-01-12 | W7 - 24 Hour - 7 day - No Holiday | C822 | B62 | 01 | 0401 | GD01 | VCCC | 822 | AA |  |  |  |
| 8220A-3440 |  | 2nd Vacate Area 8.2 (Shek Yam) | milestone | 0d | 2017-01-01 | 2017-01-01 |  |  |  |  | -599d | 461.57d | finish on or after 2015-05-10 | W7 - 24 Hour - 7 day - No Holiday | C822 | B62 | 01 | 0401 | GD01 | VCCC | 822 | AA |  |  |  |
| 8220A-3450 |  | Vacate Area 8.3 (Shek Yam) | milestone | 0d | 2017-01-01 | 2017-01-01 |  |  |  |  | -599d | 461.57d | finish on or after 2015-05-10 | W7 - 24 Hour - 7 day - No Holiday | C822 | B62 | 01 | 0401 | GD01 | VCCC | 822 | AA |  |  |  |
|  | 6 | **So Kwan Wat** |  |  | 2017-01-01 | 2017-01-01 |  |  |  |  |  |  |  |  |  |  |  |  |  |  |  |  |  |  |  |
| 8220A-3410 |  | Vacate Area 6.8 (So Kwan Wat) | milestone | 0d | 2017-01-01 | 2017-01-01 |  |  |  |  | -599d | 461.57d | finish on or after 2015-03-29 | W7 - 24 Hour - 7 day - No Holiday | C822 | B62 | 01 | 0801 | GD01 | VCCC | 822 | AA |  |  |  |
|  | 5 | **Tai Shu Ha** |  |  | 2017-01-01 | 2017-01-01 |  |  |  |  |  |  |  |  |  |  |  |  |  |  |  |  |  |  |  |
| 8220A-3330 |  | Vacate Area 6.11 (Tai Shu Ha) | milestone | 0d | 2017-01-01 | 2017-01-01 |  |  |  |  | -1093.62d | 0d | mandatory finish 2013-12-30 | W7 - 24 Hour - 7 day - No Holiday | C822 | B62 | 01 | 0701 | GD01 | VCCC | 822 | AA |  |  |  |
| 8220A-3340 |  | Vacate Area 6.12 (Tai Shu Ha) | milestone | 0d | 2017-01-01 | 2017-01-01 |  |  |  |  | -1093.62d | 0d | mandatory finish 2013-12-30 | W7 - 24 Hour - 7 day - No Holiday | C822 | B62 | 01 | 0701 | GD01 | VCCC | 822 | AA |  |  |  |
|  | 4 | **Kwai Fong** |  |  | 2010-10-26 | 2017-01-01 |  |  |  |  |  |  |  |  |  |  |  |  |  |  |  |  |  |  |  |
| 8220A-3270 |  | Vacate Area 8.4 (Yau Ma Hom Road - by SLG) | milestone | 0d | 2010-10-26 A | 2010-10-26 A |  | 100% |  |  |  |  |  | W7 - 24 Hour - 7 day - No Holiday | C822 | B62 | 01 | G001 | GD01 | VCCC | 822 | AA | 822_AB_W010 |  |  |
| 8220A-3460 |  | Vacate Area 8.5 (Kwai Fong Compound) | milestone | 0d | 2017-01-01 | 2017-01-01 |  |  |  |  | -599d | 461.57d | finish on or after 2016-05-10 | W7 - 24 Hour - 7 day - No Holiday | C822 | B62 | 01 | G001 | GD01 | VCCC | 822 | AA |  |  |  |
|  | 7 | **Yam O Barging Point** |  |  | 2017-01-01 | 2017-01-01 |  |  |  |  |  |  |  |  |  |  |  |  |  |  |  |  |  |  |  |
| 8220A-3350 |  | Vacate Area 6.13 (Yam O Barging Point) | milestone | 0d | 2017-01-01 | 2017-01-01 |  |  |  |  | -716.62d | 0d | mandatory finish 2015-01-12 | W7 - 24 Hour - 7 day - No Holiday | C822 | B62 | 01 | 0901 | GD01 | VCCC | 822 | AA |  |  |  |
| 8220A-3360 |  | Vacate Area 6.14 (Yam O Barging Point) | milestone | 0d | 2017-01-01 | 2017-01-01 |  |  |  |  | -716.62d | 0d | mandatory finish 2015-01-12 | W7 - 24 Hour - 7 day - No Holiday | C822 | B62 | 01 | 0901 | GD01 | VCCC | 822 | AA |  |  |  |
|  | 2 | **Design** |  |  | 2010-02-07 | 2017-07-01 |  |  |  |  |  |  |  |  |  |  |  |  |  |  |  |  |  |  |  |
|  | 7 | **Permits to Operate** |  |  | 2010-03-24 | 2012-07-14 |  |  |  |  |  |  |  |  |  |  |  |  |  |  |  |  |  |  |  |
|  | 1 | **EPD Permits to Operate** |  |  | 2010-03-24 | 2012-07-14 |  |  |  |  |  |  |  |  |  |  |  |  |  |  |  |  |  |  |  |
| 8220A-2990 |  | EPD - Submit Form - Notification of Commencement of the works |  | 25d | 2010-03-24 A | 2010-03-31 A |  | 100% | 2010-03-24 | 2010-04-18 |  |  |  | W7 - 24 Hour - 7 day - No Holiday | C822 | B64 | 01 | G001 | GD01 | 42 | 822 | AA | 822_AB_W010 |  |  |
| 8220A-3000 |  | EPD - Apply Discharge License for Effluent at Shek Yam |  | 25d | 2010-03-24 A | 2010-05-03 A |  | 100% | 2010-03-24 | 2010-04-18 |  |  |  | W7 - 24 Hour - 7 day - No Holiday | C822 | B64 | 01 | G001 | GD01 | 42 | 822 | AA | 822_AB_W010 |  |  |
| 8220A-3010 |  | EPD - Submit Registration as Chemical Waste Producer |  | 25d | 2010-03-24 A | 2010-03-25 A |  | 100% | 2010-03-24 | 2010-04-18 |  |  |  | W7 - 24 Hour - 7 day - No Holiday | C822 | B64 | 01 | G001 | GD01 | 42 | 822 | AA | 822_AB_W010 |  |  |
| 8220A-9720 |  | EPD - Grant Discharge License for Effluent at Shek Yam |  | 20d | 2010-04-08 A | 2010-06-10 A |  | 100% | 2010-04-08 | 2010-04-28 |  |  |  | W7 - 24 Hour - 7 day - No Holiday | C822 | B64 | 01 | G001 | GD01 | 42 | 822 | AA | 822_AB_W010 |  |  |
| 8220A-5410 |  | EPD - Apply Discharge License at PH |  | 9.33d | 2010-07-03 A | 2010-07-30 A |  | 100% | 2010-07-03 | 2010-07-12 |  |  | as late as possible | W7 - 24 Hour - 7 day - No Holiday | C822 | B64 | 02 | 0201 | GD01 | 42 | 822 | AA | 822_AB_W010 | 00 |  |
| 8220A-5420 |  | EPD - Grant Discharge License at PH |  | 20d | 2010-08-02 A | 2010-09-30 A | 8220A-5410 | 100% | 2010-08-02 | 2010-08-22 |  |  | as late as possible | W7 - 24 Hour - 7 day - No Holiday | C822 | B64 | 02 | 0201 | GD01 | 42 | 822 | AA | 822_AB_W010 | 00 |  |
| 8220A-5370 |  | EPD - Apply and Obtain 24H CNP for Shing Mun Works |  | 9.33d | 2012-07-09 A | 2012-07-14 A | 8220G-5050 | 100% | 2012-08-07 | 2012-08-16 |  |  |  | W7 - 24 Hour - 7 day - No Holiday | C822 | B64 | 03 | G001 | GD01 | 42 | 822 | AA | 822_AB_W010 |  | 2220 |

| ID | WBS | Activity | Duration | Start | Finish | Predecessors | Complete | Planned start | Planned finish | Calendar | L1 : Project | L2 : Phase | L3 : Area | L4 : Sub-Area | L5 : Element | L6 : Sub-Element | M1: Contracts | M2 : Cost Centre |
| --- | --- | --- | --- | --- | --- | --- | --- | --- | --- | --- | --- | --- | --- | --- | --- | --- | --- | --- |
|  | 8 | **Submissions and Approvals** |  | 2010-03-08 | 2017-07-01 |  |  |  |  |  |  |  |  |  |  |  |  |  |
|  | 1 | **Specified Plans** |  | 2010-03-08 | 2010-06-27 |  |  |  |  |  |  |  |  |  |  |  |  |  |
|  | 1 | **Professional Indemnity Insurance** |  | 2010-03-12 | 2010-04-06 |  |  |  |  |  |  |  |  |  |  |  |  |  |
| 8220A-4820 |  | Submit Insurance, Bond, PI & Guarantee | 9.33d | 2010-03-12 A | 2010-04-06 A |  | 100% | 2010-03-12 | 2010-03-21 | W7 - 24 Hour - 7 day - No Holiday | C822 | B60 | 01 | G001 | GD01 | 05 | 822 | AA |
|  | 10 | **Design for Safety and Construction** |  | 2010-03-10 | 2010-06-27 |  |  |  |  |  |  |  |  |  |  |  |  |  |
| 8220A-3630 |  | Prepare & Submit Design for Safety and Construction | 18.67d | 2010-03-10 A | 2010-05-28 A |  | 100% | 2010-03-10 | 2010-03-29 | W7 - 24 Hour - 7 day - No Holiday | C822 | B61 | 01 | G001 | GD02 | 37 | 822 | AA |
| 8220A-3640 |  | Engineer Review & Approve Design for Safety and Construction | 16d | 2010-05-31 A | 2010-06-27 A | 8220A-3630 | 100% | 2010-05-31 | 2010-06-16 | W7 - 24 Hour - 7 day - No Holiday | C822 | B61 | 01 | G001 | GD02 | 37 | 822 | AA |
|  | 11 | **Noise Management Plan** |  | 2010-03-10 | 2010-06-26 |  |  |  |  |  |  |  |  |  |  |  |  |  |
| 8220A-3650 |  | Prepare & Submit Noise Management Plan | 18.67d | 2010-03-10 A | 2010-04-26 A |  | 100% | 2010-03-10 | 2010-03-29 | W7 - 24 Hour - 7 day - No Holiday | C822 | B61 | 01 | G001 | GD02 | 38 | 822 | AA |
| 8220A-3660 |  | Engineer Review & Approve Noise Management Plan | 16d | 2010-04-27 A | 2010-06-26 A | 8220A-3650 | 100% | 2010-04-27 | 2010-05-13 | W7 - 24 Hour - 7 day - No Holiday | C822 | B61 | 01 | G001 | GD02 | 38 | 822 | AA |
|  | 12 | **Monitoring and Emergency Response Plan** |  | 2010-03-10 | 2010-06-26 |  |  |  |  |  |  |  |  |  |  |  |  |  |
| 8220A-3670 |  | Prepare & Submit Monitoring and Emergency Response Plan | 18.67d | 2010-03-10 A | 2010-05-16 A |  | 100% | 2010-03-10 | 2010-03-29 | W7 - 24 Hour - 7 day - No Holiday | C822 | B61 | 01 | G001 | GD02 | 39 | 822 | AA |
| 8220A-3680 |  | Eng Review & Approve Monitoring and Emergency Response Plan | 9.33d | 2010-05-18 A | 2010-06-26 A | 8220A-3670 | 100% | 2010-05-18 | 2010-05-27 | W7 - 24 Hour - 7 day - No Holiday | C822 | B61 | 01 | G001 | GD02 | 39 | 822 | AA |
|  | 13 | **Vibration Monitoring Plan** |  | 2010-03-10 | 2010-06-26 |  |  |  |  |  |  |  |  |  |  |  |  |  |
| 8220A-3690 |  | Prepare & Submit Vibration Management Plan | 18.67d | 2010-03-10 A | 2010-05-28 A |  | 100% | 2010-03-10 | 2010-03-29 | W7 - 24 Hour - 7 day - No Holiday | C822 | B61 | 01 | G001 | GD02 | 40 | 822 | AA |
| 8220A-3700 |  | Eng Review & Approve Vibration Management Plan | 9.33d | 2010-05-28 A | 2010-06-26 A | 8220A-3690 | 100% | 2010-05-28 | 2010-06-06 | W7 - 24 Hour - 7 day - No Holiday | C822 | B61 | 01 | G001 | GD02 | 40 | 822 | AA |
|  | 14 | **Submission Schedule** |  | 2010-03-10 | 2010-06-27 |  |  |  |  |  |  |  |  |  |  |  |  |  |
| 8220A-3710 |  | Prepare & Submit Submission Schedule | 18.67d | 2010-03-10 A | 2010-05-28 A |  | 100% | 2010-03-10 | 2010-03-29 | W7 - 24 Hour - 7 day - No Holiday | C822 | B61 | 01 | G001 | GD02 | 41 | 822 | AA |
| 8220A-3720 |  | Engineer Review & Approve Submission Schedule | 9.33d | 2010-05-31 A | 2010-06-27 A | 8220A-3710 | 100% | 2010-05-31 | 2010-06-09 | W7 - 24 Hour - 7 day - No Holiday | C822 | B61 | 01 | G001 | GD02 | 41 | 822 | AA |
|  | 2 | **Environmental Plans** |  | 2010-03-10 | 2010-06-26 |  |  |  |  |  |  |  |  |  |  |  |  |  |
| 8220A-3470 |  | Prepare & Submit Environmental Management Plan | 18.67d | 2010-03-10 A | 2010-04-26 A |  | 100% | 2010-03-10 | 2010-03-29 | W7 - 24 Hour - 7 day - No Holiday | C822 | B61 | 01 | G001 | GD02 | 08 | 822 | AA |
| 8220A-3480 |  | Engineer Review & Approve Environmental Plan | 16d | 2010-04-27 A | 2010-06-26 A | 8220A-3470 | 100% | 2010-04-27 | 2010-05-13 | W7 - 24 Hour - 7 day - No Holiday | C822 | B61 | 01 | G001 | GD02 | 08 | 822 | AA |
|  | 3 | **Quality Plan** |  | 2010-03-10 | 2010-06-26 |  |  |  |  |  |  |  |  |  |  |  |  |  |
| 8220A-3490 |  | Prepare & Submit Quality Plan | 18.67d | 2010-03-10 A | 2010-04-19 A |  | 100% | 2010-03-10 | 2010-03-29 | W7 - 24 Hour - 7 day - No Holiday | C822 | B61 | 01 | G001 | GD02 | 13 | 822 | AA |
| 8220A-3500 |  | Engineer Review & Approve Quality Plan | 16d | 2010-04-20 A | 2010-06-26 A | 8220A-3490 | 100% | 2010-04-20 | 2010-05-06 | W7 - 24 Hour - 7 day - No Holiday | C822 | B61 | 01 | G001 | GD02 | 13 | 822 | AA |

| ID | WBS | Activity | Duration | Start | Finish | Predecessors | Complete | Planned start | Planned finish | Total float | Free float | Constraint | Calendar | L1 : Project | L2 : Phase | L3 : Area | L4 : Sub-Area | L5 : Element | L6 : Sub-Element | M1: Contracts | M2 : Cost Centre | 822_AB_W010 | L7 : System |
| --- | --- | --- | --- | --- | --- | --- | --- | --- | --- | --- | --- | --- | --- | --- | --- | --- | --- | --- | --- | --- | --- | --- | --- |
|  | 4 | **Safety Plan** |  | 2010-03-10 | 2010-06-26 |  |  |  |  |  |  |  |  |  |  |  |  |  |  |  |  |  |  |
| 8220A-3510 |  | Prepare & Submit Health & Safety Plan | 18.67d | 2010-03-10 A | 2010-04-10 A |  | 100% | 2010-03-10 | 2010-03-29 |  |  |  | W7 - 24 Hour - 7 day - No Holiday | C822 | B61 | 01 | G001 | GD02 | 14 | 822 | AA |  |  |
| 8220A-3520 |  | Engineer Review & Approve Health & Safety Plan | 16d | 2010-04-12 A | 2010-06-26 A | 8220A-3510 | 100% | 2010-04-12 | 2010-04-28 |  |  |  | W7 - 24 Hour - 7 day - No Holiday | C822 | B61 | 01 | G001 | GD02 | 14 | 822 | AA |  |  |
|  | 5 | **Waste Management Plan** |  | 2010-03-08 | 2010-06-26 |  |  |  |  |  |  |  |  |  |  |  |  |  |  |  |  |  |  |
| 8220A-3530 |  | Prepare & Submit Waste Management Plan | 18.67d | 2010-03-08 A | 2010-04-25 A |  | 100% | 2010-03-08 | 2010-03-27 |  |  |  | W7 - 24 Hour - 7 day - No Holiday | C822 | B61 | 01 | G001 | GD02 | 16 | 822 | AA |  |  |
| 8220A-3540 |  | Engineer Review & Approve Waste Management Plan | 16d | 2010-04-27 A | 2010-06-26 A | 8220A-3530 | 100% | 2010-04-27 | 2010-05-13 |  |  |  | W7 - 24 Hour - 7 day - No Holiday | C822 | B61 | 01 | G001 | GD02 | 16 | 822 | AA |  |  |
|  | 6 | **Method of Construction** |  | 2010-03-10 | 2010-06-26 |  |  |  |  |  |  |  |  |  |  |  |  |  |  |  |  |  |  |
| 8220A-3550 |  | Prepare & Submit Method of Construction | 18.67d | 2010-03-10 A | 2010-05-28 A |  | 100% | 2010-03-10 | 2010-03-29 |  |  |  | W7 - 24 Hour - 7 day - No Holiday | C822 | B61 | 01 | G001 | GD02 | 19 | 822 | AA | 822_AB_W010 |  |
| 8220A-3560 |  | Engineer Review & Approve Method of Construction | 16d | 2010-05-31 A | 2010-06-26 A | 8220A-3550 | 100% | 2010-05-31 | 2010-06-16 |  |  |  | W7 - 24 Hour - 7 day - No Holiday | C822 | B61 | 01 | G001 | GD02 | 19 | 822 | AA | 822_AB_W010 |  |
|  | 7 | **System Assurance Plan** |  | 2010-03-10 | 2010-06-26 |  |  |  |  |  |  |  |  |  |  |  |  |  |  |  |  |  |  |
| 8220A-3570 |  | Prepare & Submit System Assurance Plan | 18.67d | 2010-03-10 A | 2010-05-28 A |  | 100% | 2010-03-10 | 2010-03-29 |  |  |  | W7 - 24 Hour - 7 day - No Holiday | C822 | B61 | 01 | G001 | GD02 | 28 | 822 | AA |  |  |
| 8220A-3580 |  | Engineer Review & Approve System Assurance Plan | 16d | 2010-05-31 A | 2010-06-26 A | 8220A-3570 | 100% | 2010-05-31 | 2010-06-16 |  |  |  | W7 - 24 Hour - 7 day - No Holiday | C822 | B61 | 01 | G001 | GD02 | 28 | 822 | AA |  |  |
|  | 8 | **Site Plan** |  | 2010-03-10 | 2010-06-27 |  |  |  |  |  |  |  |  |  |  |  |  |  |  |  |  |  |  |
| 8220A-3590 |  | Prepare & Submit Site Plan | 9.33d | 2010-03-10 A | 2010-05-28 A |  | 100% | 2010-03-10 | 2010-03-19 |  |  |  | W7 - 24 Hour - 7 day - No Holiday | C822 | B61 | 01 | G001 | GD02 | 35 | 822 | AA |  |  |
| 8220A-3600 |  | Engineer Review & Approve Site Plan | 16d | 2010-05-31 A | 2010-06-27 A | 8220A-3590 | 100% | 2010-05-31 | 2010-06-16 |  |  |  | W7 - 24 Hour - 7 day - No Holiday | C822 | B61 | 01 | G001 | GD02 | 35 | 822 | AA |  |  |
|  | 9 | **Sub Contract Management Plan** |  | 2010-03-10 | 2010-06-27 |  |  |  |  |  |  |  |  |  |  |  |  |  |  |  |  |  |  |
| 8220A-3610 |  | Prepare & Submit Sub-contract Management Plan | 18.67d | 2010-03-10 A | 2010-05-28 A |  | 100% | 2010-03-10 | 2010-03-29 |  |  |  | W7 - 24 Hour - 7 day - No Holiday | C822 | B61 | 01 | G001 | GD02 | 36 | 822 | AA |  |  |
| 8220A-3620 |  | Engineer Review & Approve Sub-contract Management Plan | 16d | 2010-05-31 A | 2010-06-27 A | 8220A-3610 | 100% | 2010-05-31 | 2010-06-16 |  |  |  | W7 - 24 Hour - 7 day - No Holiday | C822 | B61 | 01 | G001 | GD02 | 36 | 822 | AA |  |  |
|  | 2 | **Post Award Submissions** |  | 2010-03-10 | 2017-07-01 |  |  |  |  |  |  |  |  |  |  |  |  |  |  |  |  |  |  |
| 8220A-4840 |  | Prepare & Submit Schedule of Design | 4.67d | 2010-03-11 A | 2010-03-23 A |  | 100% | 2010-03-11 | 2010-03-16 |  |  |  | W7 - 24 Hour - 7 day - No Holiday | C822 | B60 | 01 | G001 | GD01 | 05 | 822 | AA |  |  |
|  | 1 | **Preliminary Master Programme** |  | 2010-03-10 | 2010-06-26 |  |  |  |  |  |  |  |  |  |  |  |  |  |  |  |  |  |  |
| 8220A-2850 |  | Prepare & Submit Preliminary Master Programme | 20d | 2010-03-10 A | 2010-05-14 A |  | 100% | 2010-03-10 | 2010-03-30 |  |  |  | W7 - 24 Hour - 7 day - No Holiday | C822 | B55 | 01 | G001 | GD01 | 15 | 822 | AA |  |  |
| 8220A-2860 |  | Engineer Review & Approve Prelim Master Programme | 9.33d | 2010-05-17 A | 2010-06-26 A | 8220A-2850 | 100% | 2010-05-17 | 2010-05-26 |  |  |  | W7 - 24 Hour - 7 day - No Holiday | C822 | B55 | 01 | G001 | GD01 | 15 | 822 | AA |  |  |
|  | 2 | **Project O&M Manuals** |  | 2017-01-02 | 2017-07-01 |  |  |  |  |  |  |  |  |  |  |  |  |  |  |  |  |  |  |
| 8220A-2820 |  | Prepare and Submit Draft Ver of O&M Manuals | 90d | 2017-01-02 | 2017-04-02 |  |  |  |  | -1051.25d | 0d | as late as possible | W7 - 24 Hour - 7 day - No Holiday | C822 | B55 | 01 | G001 | GD01 | 07 | 822 | AA |  | 00 |
| 8220A-2830 |  | Prepare and Submit Final Ver of O&M Manuals | 90d | 2017-01-02 | 2017-04-02 |  |  |  |  | -869.25d | 0d | as late as possible | W7 - 24 Hour - 7 day - No Holiday | C822 | B55 | 01 | G001 | GD01 | 07 | 822 | AA |  | 00 |
| 8220A-2840 |  | Obtain Approval on Final O&M Manuals | 90d | 2017-04-02 | 2017-07-01 | 8220A-2830 |  |  |  | -869.25d | 0d | as late as possible | W7 - 24 Hour - 7 day - No Holiday | C822 | B55 | 01 | G001 | GD01 | 07 | 822 | AA |  | 00 |
| 8220A-2870 |  | Obtain Approval on Draft O&M Manuals | 90d | 2017-04-02 | 2017-07-01 | 8220A-2820 |  |  |  | -1051.25d | 0d | as late as possible | W7 - 24 Hour - 7 day - No Holiday | C822 | B55 | 01 | G001 | GD01 | 07 |  |  |  | 00 |

| ID | WBS | Activity | Duration | Start | Finish | Predecessors | Complete | Planned start | Planned finish | Calendar | L1 : Project | L2 : Phase | L3 : Area | L4 : Sub-Area | L5 : Element | L6 : Sub-Element | M1: Contracts | M2 : Cost Centre | L7 : System | 822_AB_W010 |
| --- | --- | --- | --- | --- | --- | --- | --- | --- | --- | --- | --- | --- | --- | --- | --- | --- | --- | --- | --- | --- |
|  | 3 | **Safety, Quality & Environmental Audits** |  | 2010-03-10 | 2014-01-30 |  |  |  |  |  |  |  |  |  |  |  |  |  |  |  |
| 8220A-2740 |  | Complete Audits on Safety, Envir'tal & Quality | 182d | 2010-03-10 A | 2010-09-26 A |  | 100% | 2010-03-10 | 2010-09-08 | W7 - 24 Hour - 7 day - No Holiday | C822 | B55 | 01 | G001 | GD01 | 04 | 822 | AA | 00 |  |
| 8220A-2750 |  | Complete Audits on Safety, Envir'tal & Quality | 182d | 2010-09-27 A | 2011-01-29 A | 8220A-2740 | 100% | 2010-09-27 | 2011-03-28 | W7 - 24 Hour - 7 day - No Holiday | C822 | B55 | 01 | G001 | GD01 | 04 | 822 | AA | 00 |  |
| 8220A-2760 |  | Complete Audits on Safety, Envir'tal & Quality | 182d | 2011-01-30 A | 2011-07-30 A | 8220A-2750 | 100% | 2011-01-30 | 2011-07-31 | W7 - 24 Hour - 7 day - No Holiday | C822 | B55 | 01 | G001 | GD01 | 04 | 822 | AA | 00 |  |
| 8220A-2770 |  | Complete Audits on Safety, Envir'tal & Quality | 182d | 2011-08-01 A | 2012-01-28 A | 8220A-2760 | 100% | 2011-08-01 | 2012-01-30 | W7 - 24 Hour - 7 day - No Holiday | C822 | B55 | 01 | G001 | GD01 | 04 | 822 | AA | 00 |  |
| 8220A-2780 |  | Complete Audits on Safety, Envir'tal & Quality | 182d | 2012-01-30 A | 2012-07-28 A | 8220A-2770 | 100% | 2012-01-30 | 2012-07-30 | W7 - 24 Hour - 7 day - No Holiday | C822 | B55 | 01 | G001 | GD01 | 04 | 822 | AA | 00 |  |
| 8220A-2790 |  | Complete Audits on Safety, Envir'tal & Quality | 182d | 2012-07-30 A | 2013-01-29 A | 8220A-2780 | 100% | 2012-09-01 | 2013-03-02 | W7 - 24 Hour - 7 day - No Holiday | C822 | B55 | 01 | G001 | GD01 | 04 | 822 | AA | 00 |  |
| 8220A-2800 |  | Complete Audits on Safety, Envir'tal & Quality | 182d | 2013-01-29 A | 2013-07-31 A | 8220A-2790 | 100% | 2013-02-01 | 2013-08-02 | W7 - 24 Hour - 7 day - No Holiday | C822 | B55 | 01 | G001 | GD01 | 04 | 822 | AA | 00 |  |
| 8220A-2810 |  | Complete Audits on Safety, Envir'tal & Quality | 182d | 2013-08-01 A | 2014-01-30 A | 8220A-2800 | 100% |  |  | W7 - 24 Hour - 7 day - No Holiday | C822 | B55 | 01 | G001 | GD01 | 04 | 822 | AA | 00 |  |
|  | 4 | **Independent Checking Engineer** |  | 2010-03-10 | 2010-03-19 |  |  |  |  |  |  |  |  |  |  |  |  |  |  |  |
| 8220A-4830 |  | Appoint Independent Checking Engineer (ICE) | 7d | 2010-03-10 A | 2010-03-19 A |  | 100% | 2010-03-10 | 2010-03-17 | W7 - 24 Hour - 7 day - No Holiday | C822 | B55 | 01 | G001 | GD01 |  | 822 | AA |  |  |
|  | 2 | **BAR Approvals** |  | 2010-03-24 | 2012-05-26 |  |  |  |  |  |  |  |  |  |  |  |  |  |  |  |
|  | 1 | **BAR - Design Principal** |  | 2010-03-24 | 2010-10-29 |  |  |  |  |  |  |  |  |  |  |  |  |  |  |  |
| 8220A-8280 |  | BAR - Prepare & Submit Contractor's Own Blasting | 4.67d | 2010-03-24 A | 2010-04-27 A | 8220-START | 100% | 2010-03-24 | 2010-03-29 | W7 - 24 Hour - 7 day - No Holiday | C822 | B64 | 01 | G001 | GD01 | V01 | 822 | AA |  | 822_AB_W010 |
| 8220A-8290 |  | BAR - Discuss Draft CBAR 01with Mines Department | 9.33d | 2010-04-28 A | 2010-05-16 A | 8220A-8280 | 100% | 2010-04-28 | 2010-05-07 | W7 - 24 Hour - 7 day - No Holiday | C822 | B64 | 01 | G001 | GD01 | V01 | 822 | AA |  | 822_AB_W010 |
| 8220A-8300 |  | BAR - Revise & Resubmit CBAR - Vol. 01 (AIP) | 4.67d | 2010-05-17 A | 2010-05-25 A | 8220A-8290 | 100% | 2010-05-17 | 2010-05-22 | W7 - 24 Hour - 7 day - No Holiday | C822 | B64 | 01 | G001 | GD01 | V01 | 822 | AA |  | 822_AB_W010 |
| 8220A-8320 |  | BAR - Prepare & Submit Blasting Method Statement - Vol 01 | 4.67d | 2010-05-17 A | 2010-05-24 A | 8220A-8310 FF | 100% | 2010-05-17 | 2010-05-22 | W7 - 24 Hour - 7 day - No Holiday | C822 | B64 | 01 | G001 | GD01 | V01 | 822 | AA |  | 822_AB_W010 |
| 8220A-8330 |  | BAR - Mines / Engineer Review & Comment Blasting - Vol 01 | 9.33d | 2010-05-25 A | 2010-06-01 A | 8220A-8320 | 100% | 2010-05-25 | 2010-06-03 | W7 - 24 Hour - 7 day - No Holiday | C822 | B64 | 01 | G001 | GD01 | V01 | 822 | AA |  | 822_AB_W010 |
| 8220A-8310 |  | BAR - Mines Dept Review & Approve - Vol 01 | 9.33d | 2010-05-26 A | 2010-10-01 A | 8220A-8300 | 100% | 2010-05-26 | 2010-06-04 | W7 - 24 Hour - 7 day - No Holiday | C822 | B64 | 01 | G001 | GD01 | V01 | 822 | AA |  | 822_AB_W010 |
| 8220A-8340 |  | BAR - Revise & Resubmit Blasting M/S - Vol 01 | 2.33d | 2010-10-01 A | 2010-10-20 A | 8220A-8330 | 100% | 2010-10-01 | 2010-10-03 | W7 - 24 Hour - 7 day - No Holiday | C822 | B64 | 01 | G001 | GD01 | V01 | 822 | AA |  | 822_AB_W010 |
| 8220A-8350 |  | BAR - Mines/ Engineer Review/Approve M/S - Vol 01 | 9.33d | 2010-10-20 A | 2010-10-29 A | 8220A-8340 | 100% |  |  | W7 - 24 Hour - 7 day - No Holiday | C822 | B64 | 01 | G001 | GD01 | V01 | 822 | AA |  | 822_AB_W010 |
|  | 2 | **BAR2 - Shek Yam Temp Construction Adit** |  | 2010-03-24 | 2010-11-13 |  |  |  |  |  |  |  |  |  |  |  |  |  |  |  |
| 8220A-8360 |  | BAR - Prepare & Submit CBAR Draft - Vol. 02 DDA | 4.67d | 2010-03-24 A | 2010-04-26 A | 8220A-8280 SS | 100% | 2010-03-24 | 2010-03-29 | W7 - 24 Hour - 7 day - No Holiday | C822 | B64 | 01 | G001 | GD01 | V02 | 822 | AA |  | 822_AB_W010 |
| 8220A-8370 |  | BAR - Discuss Draft CBAR with Mines Department - Vol 02 | 9.33d | 2010-04-26 A | 2010-05-14 A | 8220A-8360 | 100% | 2010-04-26 | 2010-05-05 | W7 - 24 Hour - 7 day - No Holiday | C822 | B64 | 01 | G001 | GD01 | V02 | 822 | AA |  | 822_AB_W010 |
| 8220A-8400 |  | BAR - Prepare & Submit Blasting Method Statement - Vol 02 | 4.67d | 2010-05-17 A | 2010-05-24 A | 8220A-8390 FF | 100% | 2010-05-17 | 2010-05-22 | W7 - 24 Hour - 7 day - No Holiday | C822 | B64 | 01 | G001 | GD01 | V02 | 822 | AA |  | 822_AB_W010 |
| 8220A-8380 |  | BAR - Revise & Resubmit CBAR - Vol. 02 (DDA) | 4.67d | 2010-05-18 A | 2010-05-25 A | 8220A-8370 | 100% | 2010-05-18 | 2010-05-23 | W7 - 24 Hour - 7 day - No Holiday | C822 | B64 | 01 | G001 | GD01 | V02 | 822 | AA |  | 822_AB_W010 |
| 8220A-8430 |  | BAR - Mines/ Engineer Review/Approve M/S - Vol 02 | 9.33d | 2010-05-25 A | 2010-10-29 A | 8220A-8400 | 100% | 2010-05-25 | 2010-06-03 | W7 - 24 Hour - 7 day - No Holiday | C822 | B64 | 01 | G001 | GD01 | V02 | 822 | AA |  | 822_AB_W010 |
| 8220A-8390 |  | BAR - Mines Dept Review & Approve BAR - Vol 02 | 9.33d | 2010-05-26 A | 2010-10-29 A | 8220A-8380 | 100% | 2010-05-26 | 2010-06-04 | W7 - 24 Hour - 7 day - No Holiday | C822 | B64 | 01 | G001 | GD01 | V02 | 822 | AA |  | 822_AB_W010 |
| 8220A-8440 |  | Obtain Blasting Permit & License for Shek Yam - Vol 02 | 3.33d | 2010-10-30 A | 2010-11-13 A | 8220A-8430 | 100% | 2010-10-30 | 2010-11-02 | W7 - 24 Hour - 7 day - No Holiday | C822 | B64 | 01 | G001 | GD01 | V02 | 822 | AA |  | 822_AB_W010 |

| ID | WBS | Activity | Duration | Start | Finish | Predecessors | Complete | Planned start | Planned finish | Calendar | L1 : Project | L2 : Phase | L3 : Area | L4 : Sub-Area | L5 : Element | L6 : Sub-Element | M1: Contracts | M2 : Cost Centre | 822_AB_W010 |
| --- | --- | --- | --- | --- | --- | --- | --- | --- | --- | --- | --- | --- | --- | --- | --- | --- | --- | --- | --- |
|  | 3 | **BAR3 - Shing Mun Shaft and EAP Adit** |  | 2010-06-03 | 2012-04-12 |  |  |  |  |  |  |  |  |  |  |  |  |  |  |
| 8220A-8450 |  | BAR - Prep & Submit CBAR Draft - Vol. 03 (DDA) | 4.67d | 2010-06-03 A | 2010-10-08 A | 8220A-8300 | 100% | 2010-06-03 | 2010-06-08 | W7 - 24 Hour - 7 day - No Holiday | C822 | B64 | 01 | G001 | GD01 | V03 | 822 | AA | 822_AB_W010 |
| 8220A-8460 |  | BAR - Discuss Draft CBAR with Mines Department - Vol 03 | 9.33d | 2010-10-08 A | 2010-11-08 A | 8220A-8450 | 100% | 2010-10-08 | 2010-10-17 | W7 - 24 Hour - 7 day - No Holiday | C822 | B64 | 01 | G001 | GD01 | V03 | 822 | AA | 822_AB_W010 |
| 8220A-8470 |  | BAR - Revise & Resubmit CBAR - Vol. 03 (DDA) | 4.67d | 2010-11-11 A | 2010-11-24 A | 8220A-8460 | 100% | 2010-11-11 | 2010-11-16 | W7 - 24 Hour - 7 day - No Holiday | C822 | B64 | 01 | G001 | GD01 | V03 | 822 | AA | 822_AB_W010 |
| 8220A-8480 |  | BAR - Mines Dept Review & Approve BAR - Vol 03 | 9.33d | 2010-11-22 A | 2011-04-07 A | 8220A-8470 | 100% | 2010-11-22 | 2010-12-01 | W7 - 24 Hour - 7 day - No Holiday | C822 | B64 | 01 | G001 | GD01 | V03 | 822 | AA | 822_AB_W010 |
| 8220A-8490 |  | BAR - Prepare & Submit Blasting Method Statement - Vol 03 | 4.67d | 2011-04-07 A | 2011-04-20 A | 8220A-8480 FF | 100% | 2011-04-07 | 2011-04-12 | W7 - 24 Hour - 7 day - No Holiday | C822 | B64 | 01 | G001 | GD01 | V03 | 822 | AA | 822_AB_W010 |
| 8220A-8500 |  | BAR - Mines / Engineer Review & Comment Blasting - Vol 03 | 9.33d | 2011-04-23 A | 2011-05-20 A | 8220A-8490 | 100% | 2011-04-23 | 2011-05-02 | W7 - 24 Hour - 7 day - No Holiday | C822 | B64 | 01 | G001 | GD01 | V03 | 822 | AA | 822_AB_W010 |
| 8220A-8510 |  | BAR - Revise & Resubmit Blasting M/S - Vol 03 | 2.33d | 2011-05-31 A | 2011-06-06 A | 8220A-8500 | 100% | 2011-05-31 | 2011-06-02 | W7 - 24 Hour - 7 day - No Holiday | C822 | B64 | 01 | G001 | GD01 | V03 | 822 | AA | 822_AB_W010 |
| 8220A-8520 |  | BAR - Mines/ Engineer Review/Approve M/S - Vol 03 | 9.33d | 2011-06-11 A | 2012-04-02 A | 8220A-8510 | 100% | 2011-06-11 | 2011-06-20 | W7 - 24 Hour - 7 day - No Holiday | C822 | B64 | 01 | G001 | GD01 | V03 | 822 | AA | 822_AB_W010 |
| 8220A-8530 |  | Obtain Blasting Permit & License for Shing Mun - Vol 03 | 3.33d | 2012-04-03 A | 2012-04-12 A | 8220A-8520 | 100% | 2012-08-13 | 2012-08-16 | W7 - 24 Hour - 7 day - No Holiday | C822 | B64 | 01 | G001 | GD01 | V03 | 822 | AA | 822_AB_W010 |
|  | 4 | **BAR4A - Main Tunnel - Ch132+100 to Ch133+000** |  | 2010-08-24 | 2011-05-20 |  |  |  |  |  |  |  |  |  |  |  |  |  |  |
| 8220A-8540 |  | BAR - Prep & Submit CBAR Draft - Vol. 04A (DDA) | 4.67d | 2010-08-24 A | 2010-10-08 A | 8220A-8300 | 100% | 2010-08-24 | 2010-08-29 | W7 - 24 Hour - 7 day - No Holiday | C822 | B64 | 01 | G001 | GD01 | V04 | 822 | AA | 822_AB_W010 |
| 8220A-8550 |  | BAR - Discuss Draft CBAR with Mines Department - Vol 4A | 9.33d | 2010-10-08 A | 2010-11-05 A | 8220A-8540 | 100% | 2010-10-08 | 2010-10-17 | W7 - 24 Hour - 7 day - No Holiday | C822 | B64 | 01 | G001 | GD01 | V04 | 822 | AA | 822_AB_W010 |
| 8220A-8600 |  | BAR - Revise & Resubmit Blasting M/S - Vol 4A | 2.33d | 2010-10-26 A | 2010-11-05 A | 8220A-8590 | 100% | 2010-10-26 | 2010-10-28 | W7 - 24 Hour - 7 day - No Holiday | C822 | B64 | 01 | G001 | GD01 | V04 | 822 | AA | 822_AB_W010 |
| 8220A-8560 |  | BAR - Revise & Resubmit CBAR - Vol. 04A (DDA) | 4.67d | 2010-11-08 A | 2010-11-21 A | 8220A-8550 | 100% | 2010-11-08 | 2010-11-13 | W7 - 24 Hour - 7 day - No Holiday | C822 | B64 | 01 | G001 | GD01 | V04 | 822 | AA | 822_AB_W010 |
| 8220A-8570 |  | BAR - Mines Dept Review & Approve BAR - Vol 04A | 9.33d | 2010-11-23 A | 2010-12-21 A | 8220A-8560 | 100% | 2010-11-23 | 2010-12-02 | W7 - 24 Hour - 7 day - No Holiday | C822 | B64 | 01 | G001 | GD01 | V04 | 822 | AA | 822_AB_W010 |
| 8220A-8580 |  | BAR - Prepare & Submit Blasting Method Statement - Vol 4A | 4.67d | 2011-01-02 A | 2011-04-16 A | 8220A-8570 FF | 100% | 2011-01-02 | 2011-01-07 | W7 - 24 Hour - 7 day - No Holiday | C822 | B64 | 01 | G001 | GD01 | V04 | 822 | AA | 822_AB_W010 |
| 8220A-8590 |  | BAR - Mines / Engineer Review & Comment Blasting - Vol 4A | 9.33d | 2011-01-14 A | 2011-05-20 A | 8220A-8580 | 100% | 2011-01-14 | 2011-01-23 | W7 - 24 Hour - 7 day - No Holiday | C822 | B64 | 01 | G001 | GD01 | V04 | 822 | AA | 822_AB_W010 |
| 8220A-8620 |  | Obtain Blasting Permit & License - Vol 4A | 3.33d | 2011-02-01 A | 2011-05-20 A | 8220A-8610 | 100% | 2011-02-01 | 2011-02-04 | W7 - 24 Hour - 7 day - No Holiday | C822 | B64 | 01 | G001 | GD01 | V04 | 822 | AA | 822_AB_W010 |
| 8220A-8610 |  | BAR - Mines/ Engineer Review/Approve M/S - Vol 4A | 9.33d | 2011-02-02 A | 2011-05-20 A | 8220A-8600 | 100% | 2011-02-02 | 2011-02-11 | W7 - 24 Hour - 7 day - No Holiday | C822 | B64 | 01 | G001 | GD01 | V04 | 822 | AA | 822_AB_W010 |
|  | 5 | **BAR4B - Main Tunnel - Ch132+100 to Ch130+800** |  | 2010-08-25 | 2012-01-09 |  |  |  |  |  |  |  |  |  |  |  |  |  |  |
| 8220A-8630 |  | BAR - Prep & Submit CBAR Draft - Vol. 04B (DDA) | 4.67d | 2010-08-25 A | 2010-10-08 A | 8220A-8300 | 100% | 2010-08-25 | 2010-08-30 | W7 - 24 Hour - 7 day - No Holiday | C822 | B64 | 01 | G001 | GD01 | V05 | 822 | AA | 822_AB_W010 |
| 8220A-8640 |  | BAR - Discuss Draft CBAR with Mines Department - Vol 4B | 9.33d | 2010-10-08 A | 2010-11-07 A | 8220A-8630 | 100% | 2010-10-08 | 2010-10-17 | W7 - 24 Hour - 7 day - No Holiday | C822 | B64 | 01 | G001 | GD01 | V05 | 822 | AA | 822_AB_W010 |
| 8220A-8650 |  | BAR - Revise & Resubmit CBAR - Vol. 04B (DDA) | 4.67d | 2010-11-03 A | 2010-11-09 A | 8220A-8640 | 100% | 2010-11-03 | 2010-11-08 | W7 - 24 Hour - 7 day - No Holiday | C822 | B64 | 01 | G001 | GD01 | V05 | 822 | AA | 822_AB_W010 |
| 8220A-8660 |  | BAR - Mines Dept Review & Approve BAR - Vol 04B | 9.33d | 2010-11-09 A | 2010-12-31 A | 8220A-8650 | 100% | 2010-11-09 | 2010-11-18 | W7 - 24 Hour - 7 day - No Holiday | C822 | B64 | 01 | G001 | GD01 | V05 | 822 | AA | 822_AB_W010 |
| 8220A-8670 |  | BAR - Prepare & Submit Blasting Method Statement - Vol 4B | 4.67d | 2011-01-02 A | 2011-04-16 A | 8220A-8660 FF | 100% | 2011-01-02 | 2011-01-07 | W7 - 24 Hour - 7 day - No Holiday | C822 | B64 | 01 | G001 | GD01 | V05 | 822 | AA | 822_AB_W010 |
| 8220A-8680 |  | BAR - Mines / Engineer Review & Comment Blasting - Vol 4B | 9.33d | 2011-01-14 A | 2011-06-18 A | 8220A-8670 | 100% | 2011-01-14 | 2011-01-23 | W7 - 24 Hour - 7 day - No Holiday | C822 | B64 | 01 | G001 | GD01 | V05 | 822 | AA | 822_AB_W010 |
| 8220A-8690 |  | BAR - Revise & Resubmit Blasting M/S - Vol 4B | 2.33d | 2011-02-01 A | 2011-03-26 A | 8220A-8680 | 100% | 2011-02-01 | 2011-02-03 | W7 - 24 Hour - 7 day - No Holiday | C822 | B64 | 01 | G001 | GD01 | V05 | 822 | AA | 822_AB_W010 |
| 8220A-8700 |  | BAR - Mines/ Engineer Review/Approve M/S - Vol 4B | 9.33d | 2011-04-17 A | 2012-01-09 A | 8220A-8690 | 100% | 2011-04-17 | 2011-04-26 | W7 - 24 Hour - 7 day - No Holiday | C822 | B64 | 01 | G001 | GD01 | V05 | 822 | AA | 822_AB_W010 |
| 8220A-8710 |  | Obtain Blasting Permit & License - Vol 4B | 3.33d | 2011-12-03 A | 2011-12-12 A | 8220A-8700, 8220A-8700 FF | 100% | 2012-08-01 | 2012-08-04 | W7 - 24 Hour - 7 day - No Holiday | C822 | B64 | 01 | G001 | GD01 | V05 | 822 | AA | 822_AB_W010 |

| ID | WBS | Activity | Duration | Start | Finish | Predecessors | Complete | Planned start | Planned finish | Calendar | L1 : Project | L2 : Phase | L3 : Area | L4 : Sub-Area | L5 : Element | L6 : Sub-Element | M1: Contracts | M2 : Cost Centre | 822_AB_W010 |
| --- | --- | --- | --- | --- | --- | --- | --- | --- | --- | --- | --- | --- | --- | --- | --- | --- | --- | --- | --- |
|  | 6 | **BAR4C - Main Tunnel - Ch130+800 to Ch126+990** |  | 2010-11-10 | 2011-12-10 |  |  |  |  |  |  |  |  |  |  |  |  |  |  |
| 8220A-8720 |  | BAR - Prep & Submit CBAR Draft - Vol. 04C (DDA) | 4.67d | 2010-11-10 A | 2011-03-02 A | 8220A-8300 | 100% | 2010-11-10 | 2010-11-15 | W7 - 24 Hour - 7 day - No Holiday | C822 | B64 | 01 | G001 | GD01 | V06 | 822 | AA | 822_AB_W010 |
| 8220A-8730 |  | BAR - Discuss Draft CBAR with Mines Department - Vol 4C | 9.33d | 2011-03-03 A | 2011-03-30 A | 8220A-8720 | 100% | 2011-03-03 | 2011-03-12 | W7 - 24 Hour - 7 day - No Holiday | C822 | B64 | 01 | G001 | GD01 | V06 | 822 | AA | 822_AB_W010 |
| 8220A-8740 |  | BAR - Revise & Resubmit CBAR - Vol. 04C (DDA) | 4.67d | 2011-04-05 A | 2011-04-18 A | 8220A-8730 | 100% | 2011-04-05 | 2011-04-10 | W7 - 24 Hour - 7 day - No Holiday | C822 | B64 | 01 | G001 | GD01 | V06 | 822 | AA | 822_AB_W010 |
| 8220A-8750 |  | BAR - Mines Dept Review & Approve BAR - Vol 04C | 9.33d | 2011-05-05 A | 2011-06-01 A | 8220A-8740 | 100% | 2011-05-05 | 2011-05-14 | W7 - 24 Hour - 7 day - No Holiday | C822 | B64 | 01 | G001 | GD01 | V06 | 822 | AA | 822_AB_W010 |
| 8220A-8760 |  | BAR - Prepare & Submit Blasting Method Statement - Vol 4C | 4.67d | 2011-05-30 A | 2011-06-12 A | 8220A-8750 FF | 100% | 2011-05-30 | 2011-06-04 | W7 - 24 Hour - 7 day - No Holiday | C822 | B64 | 01 | G001 | GD01 | V06 | 822 | AA | 822_AB_W010 |
| 8220A-8770 |  | BAR - Mines / Engineer Review & Comment Blasting - Vol 4C | 9.33d | 2011-06-11 A | 2011-07-08 A | 8220A-8760 | 100% | 2011-06-11 | 2011-06-20 | W7 - 24 Hour - 7 day - No Holiday | C822 | B64 | 01 | G001 | GD01 | V06 | 822 | AA | 822_AB_W010 |
| 8220A-8780 |  | BAR - Revise & Resubmit Blasting M/S - Vol 4C | 2.33d | 2011-07-12 A | 2011-07-18 A | 8220A-8770 | 100% | 2011-07-12 | 2011-07-14 | W7 - 24 Hour - 7 day - No Holiday | C822 | B64 | 01 | G001 | GD01 | V06 | 822 | AA | 822_AB_W010 |
| 8220A-8790 |  | BAR - Mines/ Engineer Review/Approve M/S - Vol 4C | 9.33d | 2011-08-20 A | 2011-11-10 A | 8220A-8780 | 100% | 2012-08-01 | 2012-08-10 | W7 - 24 Hour - 7 day - No Holiday | C822 | B64 | 01 | G001 | GD01 | V06 | 822 | AA | 822_AB_W010 |
| 8220A-8800 |  | Obtain Blasting Permit & License - Vol 4C | 3.33d | 2011-11-10 A | 2011-12-10 A | 8220A-8790 | 100% | 2012-08-10 | 2012-08-13 | W7 - 24 Hour - 7 day - No Holiday | C822 | B64 | 01 | G001 | GD01 | V06 | 822 | AA | 822_AB_W010 |
|  | 7 | **BAR4D - Main Tunnel - Ch126+100 to Ch126+990** |  | 2010-10-28 | 2012-05-26 |  |  |  |  |  |  |  |  |  |  |  |  |  |  |
| 8220A-8810 |  | BAR - Prep & Submit CBAR Draft - Vol. 04D (DDA) | 4.67d | 2010-10-28 A | 2011-03-31 A | 8220A-8300 | 100% | 2010-10-28 | 2010-11-02 | W7 - 24 Hour - 7 day - No Holiday | C822 | B64 | 01 | G001 | GD01 | V07 | 822 | AA | 822_AB_W010 |
| 8220A-8820 |  | BAR - Discuss Draft CBAR with Mines Department - Vol 4D | 9.33d | 2011-04-01 A | 2011-05-05 A | 8220A-8810 | 100% | 2011-04-01 | 2011-04-10 | W7 - 24 Hour - 7 day - No Holiday | C822 | B64 | 01 | G001 | GD01 | V07 | 822 | AA | 822_AB_W010 |
| 8220A-8830 |  | BAR - Revise & Resubmit CBAR - Vol. 04D (DDA) | 4.67d | 2011-05-06 A | 2011-06-14 A | 8220A-8820 | 100% | 2011-05-06 | 2011-05-11 | W7 - 24 Hour - 7 day - No Holiday | C822 | B64 | 01 | G001 | GD01 | V07 | 822 | AA | 822_AB_W010 |
| 8220A-8840 |  | BAR - Mines Dept Review & Approve BAR - Vol 04D | 9.33d | 2011-06-17 A | 2011-07-14 A | 8220A-8830 | 100% | 2011-06-17 | 2011-06-26 | W7 - 24 Hour - 7 day - No Holiday | C822 | B64 | 01 | G001 | GD01 | V07 | 822 | AA | 822_AB_W010 |
| 8220A-8850 |  | BAR - Prepare & Submit Blasting Method Statement - Vol 4D | 4.67d | 2011-07-15 A | 2011-07-28 A | 8220A-8840 FF | 100% | 2011-07-15 | 2011-07-20 | W7 - 24 Hour - 7 day - No Holiday | C822 | B64 | 01 | G001 | GD01 | V07 | 822 | AA | 822_AB_W010 |
| 8220A-8860 |  | BAR - Mines / Engineer Review & Comment Blasting - Vol 4D | 9.33d | 2011-07-29 A | 2011-08-23 A | 8220A-8850 | 100% | 2011-07-29 | 2011-08-07 | W7 - 24 Hour - 7 day - No Holiday | C822 | B64 | 01 | G001 | GD01 | V07 | 822 | AA | 822_AB_W010 |
| 8220A-8870 |  | BAR - Revise & Resubmit Blasting M/S - Vol 4D | 2.33d | 2011-08-24 A | 2011-08-30 A | 8220A-8860 | 100% | 2011-08-24 | 2011-08-26 | W7 - 24 Hour - 7 day - No Holiday | C822 | B64 | 01 | G001 | GD01 | V07 | 822 | AA | 822_AB_W010 |
| 8220A-8880 |  | BAR - Mines/ Engineer Review/Approve M/S - Vol 4D | 9.33d | 2011-08-31 A | 2012-05-22 A | 8220A-8870 | 100% | 2011-08-31 | 2011-09-09 | W7 - 24 Hour - 7 day - No Holiday | C822 | B64 | 01 | G001 | GD01 | V07 | 822 | AA | 822_AB_W010 |
| 8220A-8890 |  | Obtain Blasting Permit & License - Vol 4D | 3.33d | 2012-05-22 A | 2012-05-26 A | 8220A-8880 | 100% | 2012-06-01 | 2012-06-04 | W7 - 24 Hour - 7 day - No Holiday | C822 | B64 | 01 | G001 | GD01 | V07 | 822 | AA | 822_AB_W010 |
|  | 8 | **BAR4E - Main Tunnel - Ch126+100 to Ch125+360** |  | 2010-09-26 | 2012-05-25 |  |  |  |  |  |  |  |  |  |  |  |  |  |  |
| 8220A-8900 |  | BAR - Prep & Submit CBAR Draft - Vol. 04E (DDA) | 4.67d | 2010-09-26 A | 2010-11-03 A | 8220A-8300 | 100% | 2010-09-26 | 2010-10-01 | W7 - 24 Hour - 7 day - No Holiday | C822 | B64 | 01 | G001 | GD01 | V08 | 822 | AA | 822_AB_W010 |
| 8220A-8910 |  | BAR - Discuss Draft CBAR with Mines Department - Vol 4E | 9.33d | 2010-11-04 A | 2010-11-24 A | 8220A-8900 | 100% | 2010-11-04 | 2010-11-13 | W7 - 24 Hour - 7 day - No Holiday | C822 | B64 | 01 | G001 | GD01 | V08 | 822 | AA | 822_AB_W010 |
| 8220A-8920 |  | BAR - Revise & Resubmit CBAR - Vol. 04E (DDA) | 4.67d | 2010-11-27 A | 2011-03-05 A | 8220A-8910 | 100% | 2010-11-27 | 2010-12-02 | W7 - 24 Hour - 7 day - No Holiday | C822 | B64 | 01 | G001 | GD01 | V08 | 822 | AA | 822_AB_W010 |
| 8220A-8930 |  | BAR - Mines Dept Review & Approve BAR - Vol 04E | 9.33d | 2011-03-05 A | 2011-07-06 A | 8220A-8920 | 100% | 2011-03-05 | 2011-03-14 | W7 - 24 Hour - 7 day - No Holiday | C822 | B64 | 01 | G001 | GD01 | V08 | 822 | AA | 822_AB_W010 |
| 8220A-8940 |  | BAR - Prepare & Submit Blasting Method Statement - Vol 4E | 4.67d | 2011-07-07 A | 2011-07-20 A | 8220A-8930 FF | 100% | 2011-07-07 | 2011-07-12 | W7 - 24 Hour - 7 day - No Holiday | C822 | B64 | 01 | G001 | GD01 | V08 | 822 | AA | 822_AB_W010 |
| 8220A-8950 |  | BAR - Mines / Engineer Review & Comment Blasting - Vol 4E | 9.33d | 2011-07-23 A | 2011-08-19 A | 8220A-8940 | 100% | 2011-07-23 | 2011-08-01 | W7 - 24 Hour - 7 day - No Holiday | C822 | B64 | 01 | G001 | GD01 | V08 | 822 | AA | 822_AB_W010 |
| 8220A-8960 |  | BAR - Revise & Resubmit Blasting M/S - Vol 4E | 2.33d | 2011-08-23 A | 2011-08-29 A | 8220A-8950 | 100% | 2011-08-23 | 2011-08-25 | W7 - 24 Hour - 7 day - No Holiday | C822 | B64 | 01 | G001 | GD01 | V08 | 822 | AA | 822_AB_W010 |
| 8220A-8970 |  | BAR - Mines/ Engineer Review/Approve M/S - Vol 4E | 9.33d | 2011-09-01 A | 2011-09-14 A | 8220A-8960 | 100% | 2011-09-01 | 2011-09-10 | W7 - 24 Hour - 7 day - No Holiday | C822 | B64 | 01 | G001 | GD01 | V08 | 822 | AA | 822_AB_W010 |
| 8220A-8980 |  | Obtain Blasting Permit & License - Vol 4E | 3.33d | 2012-05-22 A | 2012-05-25 A | 8220A-8970 | 100% | 2012-05-18 | 2012-05-21 | W7 - 24 Hour - 7 day - No Holiday | C822 | B64 | 01 | G001 | GD01 | V08 | 822 | AA | 822_AB_W010 |

| ID | WBS | Activity | Type | Duration | Start | Finish | Predecessors | Complete | Planned start | Planned finish | Constraint | Calendar | L1 : Project | L2 : Phase | L3 : Area | L4 : Sub-Area | L5 : Element | L6 : Sub-Element | M1: Contracts | M2 : Cost Centre | 822_AB_W010 | M4 : Location | M6 : Areas/Rooms | L7 : System | M3 : Works Area |
| --- | --- | --- | --- | --- | --- | --- | --- | --- | --- | --- | --- | --- | --- | --- | --- | --- | --- | --- | --- | --- | --- | --- | --- | --- | --- |
|  | 9 | **BAR5 - Pat Heung VA and VAA Adits** |  |  | 2010-09-01 | 2011-05-28 |  |  |  |  |  |  |  |  |  |  |  |  |  |  |  |  |  |  |  |
| 8220A-8990 |  | BAR - Prep & Submit CBAR Draft - Vol. 05 (DDA) |  | 4.67d | 2010-09-01 A | 2010-10-22 A | 8220A-8300 | 100% | 2010-09-01 | 2010-09-06 |  | W7 - 24 Hour - 7 day - No Holiday | C822 | B64 | 02 | 0201 | GD01 | V09 | 822 | AA | 822_AB_W010 |  |  |  |  |
| 8220A-9000 |  | BAR - Discuss Draft CBAR with Mines Department |  | 9.33d | 2010-10-22 A | 2010-11-02 A | 8220A-8990 | 100% | 2010-10-22 | 2010-10-31 |  | W7 - 24 Hour - 7 day - No Holiday | C822 | B64 | 02 | 0201 | GD01 | V09 | 822 | AA | 822_AB_W010 |  |  |  |  |
| 8220A-9010 |  | BAR - Revise & Resubmit CBAR - Vol. 05 (DDA) |  | 4.67d | 2010-11-06 A | 2010-11-24 A | 8220A-9000 | 100% | 2010-11-06 | 2010-11-11 |  | W7 - 24 Hour - 7 day - No Holiday | C822 | B64 | 02 | 0201 | GD01 | V09 | 822 | AA | 822_AB_W010 |  |  |  |  |
| 8220A-9020 |  | BAR - Mines Dept Review & Approve BAR - Vol 05 |  | 9.33d | 2010-11-24 A | 2011-01-04 A | 8220A-9010 | 100% | 2010-11-24 | 2010-12-03 |  | W7 - 24 Hour - 7 day - No Holiday | C822 | B64 | 02 | 0201 | GD01 | V09 | 822 | AA | 822_AB_W010 |  |  |  |  |
| 8220A-9030 |  | BAR - Prepare & Submit Blasting Method Statement |  | 4.67d | 2011-02-01 A | 2011-04-01 A | 8220A-9020 FF | 100% | 2011-02-01 | 2011-02-06 |  | W7 - 24 Hour - 7 day - No Holiday | C822 | B64 | 02 | 0201 | GD01 | V09 | 822 | AA | 822_AB_W010 |  |  |  |  |
| 8220A-9080 |  | Obtain Blasting Permit & License for PHVA/PHVAA |  | 10d | 2011-02-06 A | 2011-05-26 A | 8220A-9050, 8220A-9060 | 100% | 2011-02-06 | 2011-02-16 |  | W7 - 24 Hour - 7 day - No Holiday | C822 | B64 | 02 | 0201 | GD01 | V09 | 822 | AA | 822_AB_W010 | 2270 |  |  |  |
| 8220A-9060 |  | BAR - Mines/ Engineer Review/Approve M/S |  | 9.33d | 2011-02-08 A | 2011-05-28 A | 8220A-9050 | 100% | 2011-02-08 | 2011-02-17 |  | W7 - 24 Hour - 7 day - No Holiday | C822 | B64 | 02 | 0201 | GD01 | V09 | 822 | AA | 822_AB_W010 |  |  |  |  |
| 8220A-9040 |  | BAR - Mines / Engineer Review & Comment Blasting |  | 9.33d | 2011-04-02 A | 2011-05-28 A | 8220A-9030 | 100% | 2011-04-02 | 2011-04-11 |  | W7 - 24 Hour - 7 day - No Holiday | C822 | B64 | 02 | 0201 | GD01 | V09 | 822 | AA | 822_AB_W010 |  |  |  |  |
| 8220A-9050 |  | BAR - Revise & Resubmit Blasting M/S |  | 2.33d | 2011-04-05 A | 2011-04-12 A | 8220A-9040 | 100% | 2011-04-05 | 2011-04-07 |  | W7 - 24 Hour - 7 day - No Holiday | C822 | B64 | 02 | 0201 | GD01 | V09 | 822 | AA | 822_AB_W010 |  |  |  |  |
|  | 3 | **TTM Schemes** |  |  | 2010-03-10 | 2014-02-07 |  |  |  |  |  |  |  |  |  |  |  |  |  |  |  |  |  |  |  |
|  | 1 | **Pat Heung** |  |  | 2010-07-11 | 2010-11-11 |  |  |  |  |  |  |  |  |  |  |  |  |  |  |  |  |  |  |  |
|  | 1 | **Site Access** |  |  | 2010-07-11 | 2010-11-11 |  |  |  |  |  |  |  |  |  |  |  |  |  |  |  |  |  |  |  |
| 8220A-6600 |  | TTM - VB4 - Prepare and Submit to Engineer |  | 9.33d | 2010-07-11 A | 2010-08-07 A |  | 100% | 2010-07-11 | 2010-07-20 | as late as possible | W7 - 24 Hour - 7 day - No Holiday | C822 | B40 | 02 | 0201 | GD01 | GEN | 822 | AA | 822_AB_W010 | 2230 | C040 | T10 |  |
| 8220A-6610 |  | TTM - VB4 - Engineer Review and Approve |  | 10d | 2010-08-07 A | 2010-09-05 A | 8220A-6600 | 100% | 2010-08-07 | 2010-08-17 | as late as possible | W7 - 24 Hour - 7 day - No Holiday | C822 | B40 | 02 | 0201 | GD01 | GEN | 822 | AA | 822_AB_W010 | 2230 | C040 | T10 |  |
| 8220A-6620 |  | TTM - VB4 - Submit to SLG | milestone | 0d | 2010-09-08 A | 2010-09-08 A | 8220A-6610 | 100% |  |  | as late as possible | W7 - 24 Hour - 7 day - No Holiday | C822 | B40 | 02 | 0201 | GD01 | GEN | 822 | AA | 822_AB_W010 | 2230 | C040 | T10 |  |
| 8220A-6630 |  | TTM - VB4 - SLG Review and Approve |  | 9.33d | 2010-09-09 A | 2010-10-06 A | 8220A-6620 | 100% | 2010-09-09 | 2010-09-18 | as late as possible | W7 - 24 Hour - 7 day - No Holiday | C822 | B40 | 02 | 0201 | GD01 | GEN | 822 | AA | 822_AB_W010 | 2230 | C040 | T10 |  |
| 8220A-6640 |  | Gazettal of TTM - VB4 | milestone | 0d | 2010-10-11 A | 2010-10-11 A | 8220A-6630 | 100% |  |  | as late as possible | W7 - 24 Hour - 7 day - No Holiday | C822 | B40 | 02 | 0201 | GD01 | GEN | 822 | AA | 822_AB_W010 | 2230 | C040 | T10 |  |
| 8220A-6650 |  | Implement TTM - VB4 | milestone | 0d | 2010-11-11 A | 2010-11-11 A | 8220A-6640 FF+10d | 100% |  |  | as late as possible | W7 - 24 Hour - 7 day - No Holiday | C822 | B40 | 02 | 0201 | GD01 | GEN | 822 | AA | 822_AB_W010 | 2230 | C040 | T10 |  |
|  | 2 | **Shing Mun** |  |  | 2010-03-10 | 2014-02-07 |  |  |  |  |  |  |  |  |  |  |  |  |  |  |  |  |  |  |  |
| 8220A-6660 |  | TTM - VB5 - Prepare and Submit to SLG |  | 9.33d | 2010-03-10 A | 2010-04-20 A |  | 100% | 2010-03-10 | 2010-03-19 |  | W7 - 24 Hour - 7 day - No Holiday | C822 | B40 | 03 | 0301 | GD01 | GEN | 822 | AA | 822_AB_W010 | 2220 | C040 | T09 | 71 |
| 8220A-6670 |  | TTM - VB5 - SLG Review and Approve |  | 10d | 2010-04-20 A | 2010-04-30 A | 8220A-6660 | 100% |  |  |  | W7 - 24 Hour - 7 day - No Holiday | C822 | B40 | 03 | 0301 | GD01 | GEN | 822 | AA | 822_AB_W010 | 2220 | C040 | T09 | 71 |
| 8220F-0020 |  | Shing Mun - Implementation of TTM Stage 1 |  | 7d | 2010-04-20 A | 2010-04-30 A | 8220F-0010 | 100% | 2010-04-20 | 2010-04-27 |  | W7 - 24 Hour - 7 day - No Holiday | C822 | B40 | 03 | 0301 | GD01 | GEN | 822 | FF | 822_AB_W010 | 2220 | C040 | T09 | 73 |
| 8220F-0010 |  | Shing Mun - Approval of TTM for Bus Stop Re-prov | milestone | 0d | 2010-04-21 A | 2010-04-21 A |  | 100% |  |  |  | W7 - 24 Hour - 7 day - No Holiday | C822 | B40 | 03 | 0301 | GD01 | GEN | 822 | FF | 822_AB_W010 | 2220 | C040 | T09 | 73 |
| 8220F-0030 |  | Shing Mun - Implementation of TTM Stage 2 |  | 14d | 2010-04-30 A | 2010-08-11 A | 8220F-0020 | 100% | 2010-04-30 | 2010-05-14 |  | W7 - 24 Hour - 7 day - No Holiday | C822 | B40 | 03 | 0301 | GD01 | GEN | 822 | FF | 822_AB_W010 | 2220 | C040 | T09 | 73 |
| 8220A-6680 |  | TTM - VB5 - Submit to Engineer | milestone | 0d | 2010-05-01 A | 2010-05-01 A | 8220A-6670 | 100% |  |  |  | W7 - 24 Hour - 7 day - No Holiday | C822 | B40 | 03 | 0301 | GD01 | GEN | 822 | AA | 822_AB_W010 | 2220 | C040 | T09 | 71 |
| 8220A-6690 |  | TTM - VB5 - Engineer Review and Approve |  | 9.33d | 2010-05-01 A | 2010-05-14 A | 8220A-6680 | 100% | 2010-05-01 | 2010-05-10 |  | W7 - 24 Hour - 7 day - No Holiday | C822 | B40 | 03 | 0301 | GD01 | GEN | 822 | AA | 822_AB_W010 | 2220 | C040 | T09 | 71 |
| 8220A-6700 |  | Gazettal of TTM - VB5 | milestone | 0d | 2010-05-14 A | 2010-05-14 A | 8220A-6690 | 100% |  |  |  | W7 - 24 Hour - 7 day - No Holiday | C822 | B40 | 03 | 0301 | GD01 | GEN | 822 | AA | 822_AB_W010 | 2220 | C040 | T09 | 71 |
| 8220A-6710 |  | Implement TTM - VB5 | milestone | 0d | 2010-06-04 A | 2010-06-04 A | 8220A-6700 FF+10d | 100% |  |  |  | W7 - 24 Hour - 7 day - No Holiday | C822 | B40 | 03 | 0301 | GD01 | GEN | 822 | AA | 822_AB_W010 | 2220 | C040 | T09 | 71 |
| 8220F-0040 |  | Shing Mun - Implementation of TTM Stage 3 |  | 15d | 2010-07-10 A | 2010-09-26 A | 8220F-0030 | 100% | 2010-07-10 | 2010-07-25 |  | W7 - 24 Hour - 7 day - No Holiday | C822 | B40 | 03 | 0301 | GD01 | GEN | 822 | FF | 822_AB_W010 | 2220 | C040 | T09 | 73 |
| 8220F-0050 |  | Shing Mun - Implementation of TTM Stage 4 |  | 18.67d | 2010-09-30 A | 2011-01-29 A | 8220F-0040 | 100% | 2010-09-30 | 2010-10-19 |  | W7 - 24 Hour - 7 day - No Holiday | C822 | B40 | 03 | 0301 | GD01 | GEN | 822 | FF | 822_AB_W010 | 2220 | C040 | T09 | 73 |
| 8220F-0060 |  | Shing Mun - Implementation of TTM Stage 5 |  | 4.67d | 2010-10-16 A | 2011-06-14 A | 8220F-0050 | 100% | 2010-10-16 | 2010-10-21 |  | W7 - 24 Hour - 7 day - No Holiday | C822 | B40 | 03 | 0301 | GD01 | GEN | 822 | FF | 822_AB_W010 | 2220 | C040 | T09 | 73 |
| 8220F-0070 |  | Shing Mun - Implementation of TTM Stage 6 |  | 121.67d | 2011-06-15 A | 2014-02-07 A | 8220F-0060 | 100% | 2011-06-15 | 2011-10-15 |  | W7 - 24 Hour - 7 day - No Holiday | C822 | B40 | 03 | 0301 | GD01 | GEN | 822 | FF | 822_AB_W010 | 2220 | C040 | T09 | 73 |

Notes:
- 8220A-6600: P3 Activity Log Info: 820/B/380/ATK/C21/911
- 8220A-6660: P3 Activity Log Info: 820/B/380/ATK/C21/911

| ID | WBS | Activity | Type | Duration | Start | Finish | Predecessors | Complete | Planned start | Planned finish | Calendar | L1 : Project | L2 : Phase | L3 : Area | L4 : Sub-Area | L5 : Element | L6 : Sub-Element | M1: Contracts | M2 : Cost Centre | M4 : Location | M6 : Areas/Rooms | L7 : System | 822_AB_W010 |
| --- | --- | --- | --- | --- | --- | --- | --- | --- | --- | --- | --- | --- | --- | --- | --- | --- | --- | --- | --- | --- | --- | --- | --- |
|  | 3 | **Shek Yam** |  |  | 2010-03-10 | 2010-10-25 |  |  |  |  |  |  |  |  |  |  |  |  |  |  |  |  |  |
|  | 1 | **Shek Yam TTM for Geotechnical Installation** |  |  | 2010-03-10 | 2010-05-07 |  |  |  |  |  |  |  |  |  |  |  |  |  |  |  |  |  |
| 8220A-6720 |  | TTM - Geotech - Prepare and Submit to Engineer |  | 2.33d | 2010-03-10 A | 2010-03-16 A | 8220-START | 100% | 2010-03-10 | 2010-03-12 | W7 - 24 Hour - 7 day - No Holiday | C822 | B40 | 04 | 0401 | GD01 | GEN | 822 | AA | 2240 | C040 | T03 | 822_AB_W010 |
| 8220A-6730 |  | TTM - Geotech - SLG Review and Approve |  | 10d | 2010-03-18 A | 2010-04-16 A | 8220A-6720 | 100% | 2010-03-18 | 2010-03-28 | W7 - 24 Hour - 7 day - No Holiday | C822 | B40 | 04 | 0401 | GD01 | GEN | 822 | AA | 2240 | C040 | T03 | 822_AB_W010 |
| 8220A-6750 |  | TTM - Geotech - SLG Review and Approve |  | 9.33d | 2010-04-16 A | 2010-05-04 A | 8220A-6740 | 100% | 2010-04-16 | 2010-04-25 | W7 - 24 Hour - 7 day - No Holiday | C822 | B40 | 04 | 0401 | GD01 | GEN | 822 | AA | 2240 | C040 | T03 | 822_AB_W010 |
| 8220A-6740 |  | TTM - Geotech - Submit to SLG | milestone | 0d | 2010-04-17 A | 2010-04-17 A | 8220A-6730 | 100% |  |  | W7 - 24 Hour - 7 day - No Holiday | C822 | B40 | 04 | 0401 | GD01 | GEN | 822 | AA | 2240 | C040 | T03 | 822_AB_W010 |
| 8220A-6770 |  | Implement TTM - Geotech | milestone | 0d | 2010-05-07 A | 2010-05-07 A | 8220A-6750 | 100% |  |  | W7 - 24 Hour - 7 day - No Holiday | C822 | B40 | 04 | 0401 | GD01 | GEN | 822 | AA | 2240 | C040 | T03 | 822_AB_W010 |
|  | 2 | **Shek Yam Site Access** |  |  | 2010-03-10 | 2010-05-25 |  |  |  |  |  |  |  |  |  |  |  |  |  |  |  |  |  |
| 8220A-7900 |  | TTM - Access - Prepare and Submit to Engineer |  | 2.33d | 2010-03-10 A | 2010-03-16 A | 8220-START | 100% | 2010-03-10 | 2010-03-12 | W7 - 24 Hour - 7 day - No Holiday | C822 | B40 | 04 | 0401 | GD01 | GEN | 822 | AA | 2240 | C040 | T04 | 822_AB_W010 |
| 8220A-7910 |  | TTM - Access - Engineer Review and Approve |  | 10d | 2010-03-17 A | 2010-04-15 A | 8220A-7900 | 100% | 2010-03-17 | 2010-03-27 | W7 - 24 Hour - 7 day - No Holiday | C822 | B40 | 04 | 0401 | GD01 | GEN | 822 | AA | 2240 | C040 | T04 | 822_AB_W010 |
| 8220A-7920 |  | TTM - Access - Submit to SLG | milestone | 0d | 2010-04-17 A | 2010-04-17 A | 8220A-7910 | 100% |  |  | W7 - 24 Hour - 7 day - No Holiday | C822 | B40 | 04 | 0401 | GD01 | GEN | 822 | AA | 2240 | C040 | T04 | 822_AB_W010 |
| 8220A-7930 |  | TTM - Access - SLG Review and Approve |  | 9.33d | 2010-04-17 A | 2010-05-23 A | 8220A-7920 | 100% | 2010-04-17 | 2010-04-26 | W7 - 24 Hour - 7 day - No Holiday | C822 | B40 | 04 | 0401 | GD01 | GEN | 822 | AA | 2240 | C040 | T04 | 822_AB_W010 |
| 8220A-7940 |  | Implement TTM - Access | milestone | 0d | 2010-05-25 A | 2010-05-25 A | 8220A-7930 | 100% |  |  | W7 - 24 Hour - 7 day - No Holiday | C822 | B40 | 04 | 0401 | GD01 | GEN | 822 | AA | 2240 | C040 | T04 | 822_AB_W010 |
|  | 3 | **Shek Yam Noise Barrier** |  |  | 2010-03-11 | 2010-10-25 |  |  |  |  |  |  |  |  |  |  |  |  |  |  |  |  |  |
| 8220A-9600 |  | TTM - Noise Barrier - Prepare and Submit to Engineer |  | 4.67d | 2010-03-11 A | 2010-03-24 A | 8220-START | 100% | 2010-03-11 | 2010-03-16 | W7 - 24 Hour - 7 day - No Holiday | C822 | B40 | 04 | 0401 | GD01 | GEN | 822 | AA | 2240 | C040 | T11 | 822_AB_W010 |
| 8220A-9610 |  | TTM - Noise Barrier - Engineer Review and Approve |  | 10d | 2010-03-18 A | 2010-04-16 A | 8220A-9600 | 100% | 2010-03-18 | 2010-03-28 | W7 - 24 Hour - 7 day - No Holiday | C822 | B40 | 04 | 0401 | GD01 | GEN | 822 | AA | 2240 | C040 | T11 | 822_AB_W010 |
| 8220A-9620 |  | TTM - Noise Barrier - Submit to SLG | milestone | 0d | 2010-04-18 A | 2010-04-18 A | 8220A-9610 | 100% |  |  | W7 - 24 Hour - 7 day - No Holiday | C822 | B40 | 04 | 0401 | GD01 | GEN | 822 | AA | 2240 | C040 | T11 | 822_AB_W010 |
| 8220A-9630 |  | TTM - Noise Barrier - SLG Review and Approve |  | 10d | 2010-04-18 A | 2010-05-17 A | 8220A-9620 | 100% | 2010-04-18 | 2010-04-28 | W7 - 24 Hour - 7 day - No Holiday | C822 | B40 | 04 | 0401 | GD01 | GEN | 822 | AA | 2240 | C040 | T11 | 822_AB_W010 |
| 8220A-9640 |  | Gazettal for TTM - Noise Barrier | milestone | 0d | 2010-05-19 A | 2010-05-19 A | 8220A-9630 | 100% |  |  | W7 - 24 Hour - 7 day - No Holiday | C822 | B40 | 04 | 0401 | GD01 | GEN | 822 | AA | 2240 | C040 | T11 | 822_AB_W010 |
| 8220A-9650 |  | Implement TTM - Noise Barrier | milestone | 0d | 2010-06-07 A | 2010-06-07 A | 8220A-9640 FF+9.33d | 100% |  |  | W7 - 24 Hour - 7 day - No Holiday | C822 | B40 | 04 | 0401 | GD01 | GEN | 822 | AA | 2240 | C040 | T11 | 822_AB_W010 |
| 8220A-9660 |  | Implementation Period TTM - Noise Barrier |  | 2d | 2010-06-07 A | 2010-10-25 A | 8220A-9650 | 100% | 2010-06-07 | 2010-06-09 | W7 - 24 Hour - 7 day - No Holiday | C822 | B40 | 04 | 0401 | GD01 | GEN | 822 | AA | 2240 | C040 | T11 | 822_AB_W010 |
|  | 4 | **So Kwan Wat** |  |  | 2010-03-10 | 2010-05-14 |  |  |  |  |  |  |  |  |  |  |  |  |  |  |  |  |  |
|  | 1 | **TTM for Site Access** |  |  | 2010-03-10 | 2010-05-14 |  |  |  |  |  |  |  |  |  |  |  |  |  |  |  |  |  |
| 8220A-8000 |  | TTM - SKW - Prepare and Submit to Engineer |  | 2.33d | 2010-03-10 A | 2010-03-16 A | 8220-START | 100% | 2010-03-10 | 2010-03-12 | W7 - 24 Hour - 7 day - No Holiday | C822 | B40 | 08 | 0801 | GD01 | GEN | 822 | AA | 3010 | C040 | T08 | 822_AB_W010 |
| 8220A-8010 |  | TTM - SKW - Engineer Review and Approve |  | 10d | 2010-03-17 A | 2010-04-15 A | 8220A-8000 | 100% | 2010-03-17 | 2010-03-27 | W7 - 24 Hour - 7 day - No Holiday | C822 | B40 | 08 | 0801 | GD01 | GEN | 822 | AA | 3010 | C040 | T08 | 822_AB_W010 |
| 8220A-8020 |  | TTM - SKW - Submit to SLG | milestone | 0d | 2010-04-16 A | 2010-04-16 A | 8220A-8010 | 100% |  |  | W7 - 24 Hour - 7 day - No Holiday | C822 | B40 | 08 | 0801 | GD01 | GEN | 822 | AA | 3010 | C040 | T08 | 822_AB_W010 |
| 8220A-8030 |  | TTM - SKW - SLG Review and Approve |  | 9.33d | 2010-04-16 A | 2010-05-13 A | 8220A-8020 | 100% | 2010-04-16 | 2010-04-25 | W7 - 24 Hour - 7 day - No Holiday | C822 | B40 | 08 | 0801 | GD01 | GEN | 822 | AA | 3010 | C040 | T08 | 822_AB_W010 |
| 8220A-8050 |  | Implement TTM - SKW | milestone | 0d | 2010-05-14 A | 2010-05-14 A | 8220A-8030 | 100% |  |  | W7 - 24 Hour - 7 day - No Holiday | C822 | B40 | 08 | 0801 | GD01 | GEN | 822 | AA | 3010 | C040 | T08 | 822_AB_W010 |

Notes:
- 8220A-6720: P3 Activity Log Info: 820/B/380/ATK/C21/911
- 8220A-7900: P3 Activity Log Info: 820/B/380/ATK/C21/911
- 8220A-9600: P3 Activity Log Info: 820/B/380/ATK/C21/911
- 8220A-8000: P3 Activity Log Info: 820/B/380/ATK/C21/911

| ID | WBS | Activity | Type | Duration | Start | Finish | Predecessors | Complete | Planned start | Planned finish | Constraint | Calendar | L1 : Project | L2 : Phase | L3 : Area | L4 : Sub-Area | L5 : Element | L6 : Sub-Element | M1: Contracts | M2 : Cost Centre | M6 : Areas/Rooms | L7 : System | 822_AB_W010 | M3 : Works Area | M4 : Location |
| --- | --- | --- | --- | --- | --- | --- | --- | --- | --- | --- | --- | --- | --- | --- | --- | --- | --- | --- | --- | --- | --- | --- | --- | --- | --- |
|  | 6 | **Kwai Chung Office** |  |  | 2010-03-28 | 2010-06-27 |  |  |  |  |  |  |  |  |  |  |  |  |  |  |  |  |  |  |  |
|  | 1 | **Foul Sewer** |  |  | 2010-04-13 | 2010-06-27 |  |  |  |  |  |  |  |  |  |  |  |  |  |  |  |  |  |  |  |
| 8220A-6560 |  | TTM - Foul Sewer - Submit to Engineer | milestone | 0d | 2010-04-13 A | 2010-04-13 A |  | 100% |  |  |  | W7 - 24 Hour - 7 day - No Holiday | C822 | B40 | 01 | G001 | GD01 | 11 | 822 | AA | C040 | T02 | 822_AB_W010 |  |  |
| 8220A-6570 |  | TTM - Foul Sewer - Eng Review and Approve |  | 8d | 2010-04-13 A | 2010-05-06 A | 8220A-6560 | 100% | 2010-04-13 | 2010-04-21 |  | W7 - 24 Hour - 7 day - No Holiday | C822 | B40 | 01 | G001 | GD01 | 11 | 822 | AA | C040 | T02 | 822_AB_W010 |  |  |
| 8220A-6550 |  | TTM - Foul Sewer - SLG Review and Approve |  | 10d | 2010-05-07 A | 2010-06-05 A | 8220A-6570 | 100% | 2010-05-07 | 2010-05-17 |  | W7 - 24 Hour - 7 day - No Holiday | C822 | B40 | 01 | G001 | GD01 | 11 | 822 | AA | C040 | T02 | 822_AB_W010 |  |  |
| 8220A-6580 |  | Gazettal of TTM - Foul Sewer | milestone | 0d | 2010-06-07 A | 2010-06-07 A | 8220A-6550 FF | 100% |  |  | as late as possible | W7 - 24 Hour - 7 day - No Holiday | C822 | B40 | 01 | G001 | GD01 | 11 | 822 | AA | C040 | T02 | 822_AB_W010 |  |  |
| 8220A-6590 |  | Implement TTM - Foul Sewer | milestone | 0d | 2010-06-27 A | 2010-06-27 A | 8220A-6580 FF+10d | 100% |  |  |  | W7 - 24 Hour - 7 day - No Holiday | C822 | B40 | 01 | G001 | GD01 | 11 | 822 | AA | C040 | T02 | 822_AB_W010 |  |  |
|  | 2 | **Site Entrance** |  |  | 2010-03-28 | 2010-06-09 |  |  |  |  |  |  |  |  |  |  |  |  |  |  |  |  |  |  |  |
| 8220A-6500 |  | TTM - Site Entrances - Submit to Engineer | milestone | 0d | 2010-03-28 A | 2010-03-28 A |  | 100% |  |  |  | W7 - 24 Hour - 7 day - No Holiday | C822 | B40 | 01 | G001 | GD01 | 11 | 822 | AA | C040 | T01 | 822_AB_W010 |  |  |
| 8220A-6510 |  | TTM - Site Entrances - Eng Review and Approve |  | 7d | 2010-03-28 A | 2010-04-17 A | 8220A-6500 | 100% | 2010-03-28 | 2010-04-04 |  | W7 - 24 Hour - 7 day - No Holiday | C822 | B40 | 01 | G001 | GD01 | 11 | 822 | AA | C040 | T01 | 822_AB_W010 |  |  |
| 8220A-6490 |  | TTM - Site Entrances - SLG Review and Approve |  | 7d | 2010-04-18 A | 2010-05-08 A | 8220A-6510 | 100% | 2010-04-18 | 2010-04-25 |  | W7 - 24 Hour - 7 day - No Holiday | C822 | B40 | 01 | G001 | GD01 | 11 | 822 | AA | C040 | T01 | 822_AB_W010 |  |  |
| 8220A-6520 |  | Gazettal of TTM - Site Entrances | milestone | 0d | 2010-05-09 A | 2010-05-09 A | 8220A-6490 FF | 100% |  |  | as late as possible | W7 - 24 Hour - 7 day - No Holiday | C822 | B40 | 01 | G001 | GD01 | 11 | 822 | AA | C040 | T01 | 822_AB_W010 |  |  |
| 8220A-6530 |  | Implement TTM - Site Entrances | milestone | 0d | 2010-06-09 A | 2010-06-09 A | 8220A-6520 FF+10d | 100% |  |  |  | W7 - 24 Hour - 7 day - No Holiday | C822 | B40 | 01 | G001 | GD01 | 11 | 822 | AA | C040 | T01 | 822_AB_W010 |  |  |
|  | 7 | **Tsing Chau Tsai Barging Point** |  |  | 2010-03-20 | 2010-06-01 |  |  |  |  |  |  |  |  |  |  |  |  |  |  |  |  |  |  |  |
|  | 1 | **TTM for Barging Point Site Access** |  |  | 2010-03-20 | 2010-05-26 |  |  |  |  |  |  |  |  |  |  |  |  |  |  |  |  |  |  |  |
| 8220A-8100 |  | TTM - Site Access - Prepare and Submit to Engineer |  | 4.67d | 2010-03-20 A | 2010-04-02 A |  | 100% | 2010-03-20 | 2010-03-25 | as late as possible | W7 - 24 Hour - 7 day - No Holiday | C822 | B40 | 09 | 0901 | GD01 | GEN | 822 | AA | C040 | T05 | 822_AB_W010 | 613 | 3140 |
| 8220A-8110 |  | TTM - Site Access - Engineer Review and Approve |  | 10d | 2010-04-03 A | 2010-05-05 A | 8220A-8100 | 100% | 2010-04-03 | 2010-04-13 | as late as possible | W7 - 24 Hour - 7 day - No Holiday | C822 | B40 | 09 | 0901 | GD01 | GEN | 822 | AA | C040 | T05 | 822_AB_W010 | 613 | 3140 |
| 8220A-8120 |  | TTM - Site Access - Submit to SLG | milestone | 0d | 2010-04-27 A | 2010-04-27 A | 8220A-8110 | 100% |  |  | as late as possible | W7 - 24 Hour - 7 day - No Holiday | C822 | B40 | 09 | 0901 | GD01 | GEN | 822 | AA | C040 | T05 | 822_AB_W010 | 613 | 3140 |
| 8220A-8130 |  | TTM -Site Access - SLG Review and Approve |  | 9.33d | 2010-04-27 A | 2010-05-24 A | 8220A-8120 | 100% | 2010-04-27 | 2010-05-06 | as late as possible | W7 - 24 Hour - 7 day - No Holiday | C822 | B40 | 09 | 0901 | GD01 | GEN | 822 | AA | C040 | T05 | 822_AB_W010 | 613 | 3140 |
| 8220A-8150 |  | Implement TTM - Site Access | milestone | 0d | 2010-05-26 A | 2010-05-26 A | 8220A-8130 | 100% |  |  | as late as possible | W7 - 24 Hour - 7 day - No Holiday | C822 | B40 | 09 | 0901 | GD01 | GEN | 822 | AA | C040 | T05 | 822_AB_W010 | 613 | 3140 |
|  | 2 | **TTM for Barging Point Access Road - Sunny Bay Road** |  |  | 2010-04-23 | 2010-06-01 |  |  |  |  |  |  |  |  |  |  |  |  |  |  |  |  |  |  |  |
| 8220A-8160 |  | TTM - Sunny Bay Rd - Prepare and Submit to Engineer |  | 9.33d | 2010-04-23 A | 2010-05-04 A |  | 100% | 2010-04-23 | 2010-05-02 | as late as possible | W7 - 24 Hour - 7 day - No Holiday | C822 | B40 | 09 | 0901 | GD01 | GEN | 822 | AA | C040 | T06 | 822_AB_W010 | 613 | 3140 |
| 8220A-8170 |  | TTM - Sunny Bay Rd - Engineer Review and Approve |  | 10d | 2010-05-06 A | 2010-05-19 A | 8220A-8160 | 100% | 2010-05-06 | 2010-05-16 | as late as possible | W7 - 24 Hour - 7 day - No Holiday | C822 | B40 | 09 | 0901 | GD01 | GEN | 822 | AA | C040 | T06 | 822_AB_W010 | 613 | 3140 |
| 8220A-8200 |  | Gazettal of TTM - Sunny Bay Rd | milestone | 0d | 2010-05-09 A | 2010-05-09 A | 8220A-8190 | 100% |  |  | as late as possible | W7 - 24 Hour - 7 day - No Holiday | C822 | B40 | 09 | 0901 | GD01 | GEN | 822 | AA | C040 | T06 | 822_AB_W010 | 613 | 3140 |
| 8220A-8180 |  | TTM - Sunny Bay Rd - Submit to SLG | milestone | 0d | 2010-05-21 A | 2010-05-21 A | 8220A-8170 | 100% |  |  | as late as possible | W7 - 24 Hour - 7 day - No Holiday | C822 | B40 | 09 | 0901 | GD01 | GEN | 822 | AA | C040 | T06 | 822_AB_W010 | 613 | 3140 |
| 8220A-8190 |  | TTM - Sunny Bay Rd - SLG Review and Approve |  | 9.33d | 2010-05-21 A | 2010-06-01 A | 8220A-8180 | 100% | 2010-05-21 | 2010-05-30 | as late as possible | W7 - 24 Hour - 7 day - No Holiday | C822 | B40 | 09 | 0901 | GD01 | GEN | 822 | AA | C040 | T06 | 822_AB_W010 | 613 | 3140 |
| 8220A-8210 |  | Implement TTM - Sunny Bay Rd | milestone | 0d | 2010-05-26 A | 2010-05-26 A | 8220A-8200 FF+10d | 100% |  |  | as late as possible | W7 - 24 Hour - 7 day - No Holiday | C822 | B40 | 09 | 0901 | GD01 | GEN | 822 | AA | C040 | T06 | 822_AB_W010 | 613 | 3140 |

Notes:
- 8220A-8100: P3 Activity Log Info: 820/B/380/ATK/C21/911
- 8220A-8160: P3 Activity Log Info: 820/B/380/ATK/C21/911

| ID | WBS | Activity | Type | Duration | Start | Finish | Predecessors | Complete | Planned start | Planned finish | Constraint | Calendar | L1 : Project | L2 : Phase | L3 : Area | L4 : Sub-Area | L5 : Element | L6 : Sub-Element | M1: Contracts | M2 : Cost Centre | M3 : Works Area | M4 : Location | M6 : Areas/Rooms | L7 : System | 822_AB_W010 |
| --- | --- | --- | --- | --- | --- | --- | --- | --- | --- | --- | --- | --- | --- | --- | --- | --- | --- | --- | --- | --- | --- | --- | --- | --- | --- |
|  | 3 | **TTM for Haulage Route Operations - Sunny Bay Road** |  |  | 2010-04-23 | 2010-06-01 |  |  |  |  |  |  |  |  |  |  |  |  |  |  |  |  |  |  |  |
| 8220A-8220 |  | TTM - Haulage Route - Prepare and Submit to Engineer |  | 9.33d | 2010-04-23 A | 2010-05-04 A |  | 100% | 2010-04-23 | 2010-05-02 | as late as possible | W7 - 24 Hour - 7 day - No Holiday | C822 | B40 | 09 | 0901 | GD01 | GEN | 822 | AA | 613 | 3140 | C040 | T07 | 822_AB_W010 |
| 8220A-8230 |  | TTM - Haulage Route - Engineer Review and Approve |  | 10d | 2010-05-05 A | 2010-05-19 A | 8220A-8220 | 100% | 2010-05-05 | 2010-05-15 | as late as possible | W7 - 24 Hour - 7 day - No Holiday | C822 | B40 | 09 | 0901 | GD01 | GEN | 822 | AA | 613 | 3140 | C040 | T07 | 822_AB_W010 |
| 8220A-8260 |  | Gazettal of TTM - Haulage Route | milestone | 0d | 2010-05-09 A | 2010-05-09 A | 8220A-8250 | 100% |  |  | as late as possible | W7 - 24 Hour - 7 day - No Holiday | C822 | B40 | 09 | 0901 | GD01 | GEN | 822 | AA | 613 | 3140 | C040 | T07 | 822_AB_W010 |
| 8220A-8240 |  | TTM - Haulage Route - Submit to SLG | milestone | 0d | 2010-05-20 A | 2010-05-20 A | 8220A-8230 | 100% |  |  | as late as possible | W7 - 24 Hour - 7 day - No Holiday | C822 | B40 | 09 | 0901 | GD01 | GEN | 822 | AA | 613 | 3140 | C040 | T07 | 822_AB_W010 |
| 8220A-8250 |  | TTM - Haulage Route - SLG Review and Approve |  | 9.33d | 2010-05-21 A | 2010-06-01 A | 8220A-8240 | 100% | 2010-05-21 | 2010-05-30 | as late as possible | W7 - 24 Hour - 7 day - No Holiday | C822 | B40 | 09 | 0901 | GD01 | GEN | 822 | AA | 613 | 3140 | C040 | T07 | 822_AB_W010 |
| 8220A-8270 |  | Implement TTM - Haulage Route | milestone | 0d | 2010-05-26 A | 2010-05-26 A | 8220A-8260 FF+10d | 100% |  |  | as late as possible | W7 - 24 Hour - 7 day - No Holiday | C822 | B40 | 09 | 0901 | GD01 | GEN | 822 | AA | 613 | 3140 | C040 | T07 | 822_AB_W010 |
|  | 4 | **Permanent Works Design and Approval** |  |  | 2010-03-10 | 2014-02-18 |  |  |  |  |  |  |  |  |  |  |  |  |  |  |  |  |  |  |  |
|  | 1 | **Main Tunnels** |  |  | 2010-03-18 | 2014-02-18 |  |  |  |  |  |  |  |  |  |  |  |  |  |  |  |  |  |  |  |
|  | 1 | **P1 : Tunnel Lining** |  |  | 2010-09-24 | 2012-07-12 |  |  |  |  |  |  |  |  |  |  |  |  |  |  |  |  |  |  |  |
|  | 2 | **15 Permanent Lining for Main Tunnel with OHVD** |  |  | 2010-09-24 | 2012-07-12 |  |  |  |  |  |  |  |  |  |  |  |  |  |  |  |  |  |  |  |
|  | 1 | **Design Stage 1 : Approval in Principal** |  |  | 2010-09-24 | 2010-11-26 |  |  |  |  |  |  |  |  |  |  |  |  |  |  |  |  |  |  |  |
| 8220A-1705 |  | OHVD - Prepare, ICE & Submit AIP |  | 4.67d | 2010-09-24 A | 2010-11-05 A |  | 100% | 2010-09-24 | 2010-09-29 |  | W7 - 24 Hour - 7 day - No Holiday | C822 | B50 | 01 | G001 | P1 | P15 | 822 | AA |  |  | C010 | ST1 | 822_AB_W010 |
| 8220A-1715 |  | OHVD - Engineer Review & Comment AIP |  | 9.33d | 2010-11-06 A | 2010-11-26 A | 8220A-1705 | 100% | 2010-11-06 | 2010-11-15 |  | W7 - 24 Hour - 7 day - No Holiday | C822 | B50 | 01 | G001 | P1 | P15 | 822 | AA |  |  | C010 | ST1 | 822_AB_W010 |
| 8220A-1725 |  | OHVD - BD Consultation |  | 9.33d | 2010-11-06 A | 2010-11-26 A | 8220A-1705 | 100% | 2010-11-06 | 2010-11-15 |  | W7 - 24 Hour - 7 day - No Holiday | C822 | B50 | 01 | G001 | P1 | P15 | 822 | AA |  |  | C010 | ST1 | 822_AB_W010 |
| 8220A-1735 |  | OHVD - Revise, ICE & Resubmit AIP |  | 4.67d | 2010-11-06 A | 2010-11-26 A | 8220A-1715, 8220A-1725 | 100% | 2010-11-06 | 2010-11-11 |  | W7 - 24 Hour - 7 day - No Holiday | C822 | B50 | 01 | G001 | P1 | P15 | 822 | AA |  |  | C010 | ST1 | 822_AB_W010 |
| 8220A-1745 |  | OHVD - Engineer Review & Approve AIP |  | 9.33d | 2010-11-06 A | 2010-11-26 A | 8220A-1735 | 100% | 2010-11-06 | 2010-11-15 |  | W7 - 24 Hour - 7 day - No Holiday | C822 | B50 | 01 | G001 | P1 | P15 | 822 | AA |  |  | C010 | ST1 | 822_AB_W010 |
| 8220A-1755 |  | OHVD - BD Consultation |  | 9.33d | 2010-11-06 A | 2010-11-26 A | 8220A-1735 | 100% | 2010-11-06 | 2010-11-15 |  | W7 - 24 Hour - 7 day - No Holiday | C822 | B50 | 01 | G001 | P1 | P15 | 822 | AA |  |  | C010 | ST1 | 822_AB_W010 |
|  | 2 | **Design Stage 2 : Detailed Design Submission** |  |  | 2011-03-30 | 2012-04-24 |  |  |  |  |  |  |  |  |  |  |  |  |  |  |  |  |  |  |  |
| 8220A-1765 |  | OHVD - Prepare, ICE & Submit DDA |  | 4.67d | 2011-03-30 A | 2011-09-21 A | 8220A-1735, 8220A-1745, 8220A-1755 | 100% | 2011-03-30 | 2011-04-04 |  | W7 - 24 Hour - 7 day - No Holiday | C822 | B50 | 01 | G001 | P1 | P15 | 822 | AA |  |  | C010 | ST2 | 822_AB_W010 |
| 8220A-1775 |  | OHVD - Engineer Review & Comment DDA |  | 9.33d | 2011-09-22 A | 2012-03-23 A | 8220A-1765 | 100% | 2011-09-22 | 2011-10-01 |  | W7 - 24 Hour - 7 day - No Holiday | C822 | B50 | 01 | G001 | P1 | P15 | 822 | AA |  |  | C010 | ST2 | 822_AB_W010 |
| 8220A-1785 |  | OHVD - BD Consultation |  | 9.33d | 2011-09-22 A | 2012-03-23 A | 8220A-1765 | 100% | 2011-09-22 | 2011-10-01 |  | W7 - 24 Hour - 7 day - No Holiday | C822 | B50 | 01 | G001 | P1 | P15 | 822 | AA |  |  | C010 | ST2 | 822_AB_W010 |
| 8220A-1795 |  | OHVD - Revise, ICE & Resubmit DDA |  | 4.67d | 2012-03-26 A | 2012-04-02 A | 8220A-1775, 8220A-1785 | 100% | 2012-08-10 | 2012-08-15 |  | W7 - 24 Hour - 7 day - No Holiday | C822 | B50 | 01 | G001 | P1 | P15 | 822 | AA |  |  | C010 | ST2 | 822_AB_W010 |
| 8220A-1805 |  | OHVD - Engineer Review & Approve DDA |  | 9.33d | 2012-04-05 A | 2012-04-13 A | 8220A-1795 | 100% | 2012-08-15 | 2012-08-24 |  | W7 - 24 Hour - 7 day - No Holiday | C822 | B50 | 01 | G001 | P1 | P15 | 822 | AA |  |  | C010 | ST2 | 822_AB_W010 |
| 8220A-1815 |  | OHVD - BD Consultation |  | 9.33d | 2012-04-14 A | 2012-04-24 A | 8220A-1795 | 100% | 2012-08-15 | 2012-08-24 |  | W7 - 24 Hour - 7 day - No Holiday | C822 | B50 | 01 | G001 | P1 | P15 | 822 | AA |  |  | C010 | ST2 | 822_AB_W010 |

Notes:
- 8220A-8220: P3 Activity Log Info: 820/B/380/ATK/C21/911

| ID | WBS | Activity | Type | Duration | Start | Finish | Predecessors | Complete | Planned start | Planned finish | Calendar | L1 : Project | L2 : Phase | L3 : Area | L4 : Sub-Area | L5 : Element | L6 : Sub-Element | M1: Contracts | M2 : Cost Centre | M6 : Areas/Rooms | L7 : System | 822_AB_W010 |
| --- | --- | --- | --- | --- | --- | --- | --- | --- | --- | --- | --- | --- | --- | --- | --- | --- | --- | --- | --- | --- | --- | --- |
|  | 3 | **Design Stage 3 : Issue for Construction** |  |  | 2012-06-24 | 2012-07-12 |  |  |  |  |  |  |  |  |  |  |  |  |  |  |  |  |
| 8220A-1825 |  | OHVD - Prepare Working Docs and Drwgs |  | 9.33d | 2012-06-24 A | 2012-07-07 A | 8220A-1805, 8220A-1815 | 100% | 2012-08-24 | 2012-09-02 | W7 - 24 Hour - 7 day - No Holiday | C822 | B50 | 01 | G001 | P1 | P15 | 822 | AA | C010 | ST3 | 822_AB_W010 |
| 8220A-1835 |  | OHVD - Issue Working Docs and Drawings |  | 2d | 2012-07-09 A | 2012-07-11 A | 8220A-1825 | 100% | 2012-09-02 | 2012-09-04 | W7 - 24 Hour - 7 day - No Holiday | C822 | B50 | 01 | G001 | P1 | P15 | 822 | AA | C010 | ST3 | 822_AB_W010 |
| 8220A-1845 |  | OHVD - Package Issued | milestone | 0d | 2012-07-12 A | 2012-07-12 A | 8220A-1835 FF | 100% | 2012-09-04 | 2012-09-04 | W7 - 24 Hour - 7 day - No Holiday | C822 | B50 | 01 | G001 | P1 | P15 | 822 | AA | C010 | ST3 | 822_AB_W010 |
|  | 1 | **21 Permanent Lining Twin Track Tunnel** |  |  | 2010-09-24 | 2012-07-12 |  |  |  |  |  |  |  |  |  |  |  |  |  |  |  |  |
|  | 1 | **Design Stage 1 : Approval in Principal** |  |  | 2010-09-24 | 2010-11-26 |  |  |  |  |  |  |  |  |  |  |  |  |  |  |  |  |
| 8220A-0010 |  | Lining - Prepare, ICE & Submit AIP |  | 4.67d | 2010-09-24 A | 2010-11-05 A |  | 100% | 2010-09-24 | 2010-09-29 | W7 - 24 Hour - 7 day - No Holiday | C822 | B50 | 01 | G001 | P1 | P01 | 822 | AA | C010 | ST1 | 822_AB_W010 |
| 8220A-0020 |  | Lining - Engineer Review & Comment AIP |  | 9.33d | 2010-11-05 A | 2010-11-26 A | 8220A-0010 | 100% | 2010-11-05 | 2010-11-14 | W7 - 24 Hour - 7 day - No Holiday | C822 | B50 | 01 | G001 | P1 | P01 | 822 | AA | C010 | ST1 | 822_AB_W010 |
| 8220A-0030 |  | Lining - BD Consultation |  | 9.33d | 2010-11-05 A | 2010-11-26 A | 8220A-0010 | 100% | 2010-11-05 | 2010-11-14 | W7 - 24 Hour - 7 day - No Holiday | C822 | B50 | 01 | G001 | P1 | P01 | 822 | AA | C010 | ST1 | 822_AB_W010 |
| 8220A-0040 |  | Lining - Revise, ICE & Resubmit AIP |  | 4.67d | 2010-11-05 A | 2010-11-26 A | 8220A-0020, 8220A-0030 | 100% | 2010-11-05 | 2010-11-10 | W7 - 24 Hour - 7 day - No Holiday | C822 | B50 | 01 | G001 | P1 | P01 | 822 | AA | C010 | ST1 | 822_AB_W010 |
| 8220A-0050 |  | Lining - Engineer Review & Approve AIP |  | 9.33d | 2010-11-05 A | 2010-11-26 A | 8220A-0040 | 100% | 2010-11-05 | 2010-11-14 | W7 - 24 Hour - 7 day - No Holiday | C822 | B50 | 01 | G001 | P1 | P01 | 822 | AA | C010 | ST1 | 822_AB_W010 |
| 8220A-0060 |  | Lining - BD Consultation |  | 9.33d | 2010-11-05 A | 2010-11-26 A | 8220A-0040 | 100% | 2010-11-05 | 2010-11-14 | W7 - 24 Hour - 7 day - No Holiday | C822 | B50 | 01 | G001 | P1 | P01 | 822 | AA | C010 | ST1 | 822_AB_W010 |
|  | 2 | **Design Stage 2 : Detailed Design Submission** |  |  | 2011-04-28 | 2012-04-24 |  |  |  |  |  |  |  |  |  |  |  |  |  |  |  |  |
| 8220A-0070 |  | Lining - Prepare, ICE & Submit DDA |  | 4.67d | 2011-04-28 A | 2011-09-21 A | 8220A-0040, 8220A-0050, 8220A-0060 | 100% | 2011-04-28 | 2011-05-03 | W7 - 24 Hour - 7 day - No Holiday | C822 | B50 | 01 | G001 | P1 | P01 | 822 | AA | C010 | ST2 | 822_AB_W010 |
| 8220A-0080 |  | Lining - Engineer Review & Comment DDA |  | 9.33d | 2011-09-22 A | 2012-03-23 A | 8220A-0070 | 100% | 2012-06-02 | 2012-06-11 | W7 - 24 Hour - 7 day - No Holiday | C822 | B50 | 01 | G001 | P1 | P01 | 822 | AA | C010 | ST2 | 822_AB_W010 |
| 8220A-0090 |  | Lining - BD Consultation |  | 9.33d | 2011-09-22 A | 2012-03-23 A | 8220A-0070 | 100% | 2012-06-02 | 2012-06-11 | W7 - 24 Hour - 7 day - No Holiday | C822 | B50 | 01 | G001 | P1 | P01 | 822 | AA | C010 | ST2 | 822_AB_W010 |
| 8220A-0100 |  | Lining - Revise, ICE & Resubmit DDA |  | 4.67d | 2012-03-26 A | 2012-04-02 A | 8220A-0080, 8220A-0090 | 100% | 2012-08-10 | 2012-08-15 | W7 - 24 Hour - 7 day - No Holiday | C822 | B50 | 01 | G001 | P1 | P01 | 822 | AA | C010 | ST2 | 822_AB_W010 |
| 8220A-0110 |  | Lining - Engineer Review & Approve DDA |  | 9.33d | 2012-04-05 A | 2012-04-13 A | 8220A-0100 | 100% | 2012-08-15 | 2012-08-24 | W7 - 24 Hour - 7 day - No Holiday | C822 | B50 | 01 | G001 | P1 | P01 | 822 | AA | C010 | ST2 | 822_AB_W010 |
| 8220A-0120 |  | Lining - BD Consultation |  | 9.33d | 2012-04-14 A | 2012-04-24 A | 8220A-0100 | 100% | 2012-08-15 | 2012-08-24 | W7 - 24 Hour - 7 day - No Holiday | C822 | B50 | 01 | G001 | P1 | P01 | 822 | AA | C010 | ST2 | 822_AB_W010 |
|  | 3 | **Design Stage 3 : Issue for Construction** |  |  | 2012-06-24 | 2012-07-12 |  |  |  |  |  |  |  |  |  |  |  |  |  |  |  |  |
| 8220A-2660 |  | Prepare Working Docs and Drwgs |  | 9.33d | 2012-06-24 A | 2012-07-07 A | 8220A-0110, 8220A-0120 | 100% | 2012-08-24 | 2012-09-02 | W7 - 24 Hour - 7 day - No Holiday | C822 | B50 | 01 | G001 | P1 | P01 | 822 | AA | C010 | ST3 | 822_AB_W010 |
| 8220A-2670 |  | Issue Working Docs and Drawings |  | 2d | 2012-07-09 A | 2012-07-12 A | 8220A-2660 | 100% | 2012-09-02 | 2012-09-04 | W7 - 24 Hour - 7 day - No Holiday | C822 | B50 | 01 | G001 | P1 | P01 | 822 | AA | C010 | ST3 | 822_AB_W010 |
| 8220A-2710 |  | Package Issued | milestone | 0d | 2012-07-12 A | 2012-07-12 A | 8220A-2670 FF | 100% | 2012-09-04 | 2012-09-04 | W7 - 24 Hour - 7 day - No Holiday | C822 | B50 | 01 | G001 | P1 | P01 | 822 | AA | C010 | ST3 | 822_AB_W010 |
|  | 2 | **P2 : Tunnel Internal Structures** |  |  | 2010-10-20 | 2014-02-18 |  |  |  |  |  |  |  |  |  |  |  |  |  |  |  |  |
|  | 3 | **23 Internal Structure for Typical Main Tunnel** |  |  | 2010-10-21 | 2012-09-02 |  |  |  |  |  |  |  |  |  |  |  |  |  |  |  |  |
|  | 4 | **Design Stage 1 : Approval in Principal** |  |  | 2010-10-21 | 2011-10-21 |  |  |  |  |  |  |  |  |  |  |  |  |  |  |  |  |
| 8220A-6920 |  | OHVD - Prepare, ICE & Submit AIP |  | 4.67d | 2010-10-21 A | 2011-04-13 A |  | 100% | 2010-10-21 | 2010-10-26 | W7 - 24 Hour - 7 day - No Holiday | C822 | B50 | 01 | G001 | P2 | P23 | 822 | AA | C010 | ST1 | 822_AB_W010 |
| 8220A-6930 |  | OHVD - Engineer Review & Comment AIP |  | 4.67d | 2011-04-13 A | 2011-05-03 A | 8220A-6920 | 100% | 2011-04-13 | 2011-04-18 | W7 - 24 Hour - 7 day - No Holiday | C822 | B50 | 01 | G001 | P2 | P23 | 822 | AA | C010 | ST1 | 822_AB_W010 |
| 8220A-6940 |  | OHVD - BD Consultation |  | 4.67d | 2011-04-13 A | 2011-05-04 A | 8220A-6920 | 100% | 2011-04-13 | 2011-04-18 | W7 - 24 Hour - 7 day - No Holiday | C822 | B50 | 01 | G001 | P2 | P23 | 822 | AA | C010 | ST1 | 822_AB_W010 |
| 8220A-6950 |  | OHVD - Revise, ICE & Resubmit AIP |  | 4.67d | 2011-04-20 A | 2011-05-03 A | 8220A-6930, 8220A-6940 | 100% | 2011-04-20 | 2011-04-25 | W7 - 24 Hour - 7 day - No Holiday | C822 | B50 | 01 | G001 | P2 | P23 | 822 | AA | C010 | ST1 | 822_AB_W010 |
| 8220A-6960 |  | OHVD - Engineer Review & Approve AIP |  | 4.67d | 2011-05-07 A | 2011-10-21 A | 8220A-6950 | 100% | 2011-05-07 | 2011-05-12 | W7 - 24 Hour - 7 day - No Holiday | C822 | B50 | 01 | G001 | P2 | P23 | 822 | AA | C010 | ST1 | 822_AB_W010 |
| 8220A-6970 |  | OHVD - BD Consultation |  | 4.67d | 2011-05-08 A | 2011-10-21 A | 8220A-6950, 8220A-6960 FF | 100% | 2011-05-08 | 2011-05-13 | W7 - 24 Hour - 7 day - No Holiday | C822 | B50 | 01 | G001 | P2 | P23 | 822 | AA | C010 | ST1 | 822_AB_W010 |

| ID | WBS | Activity | Type | Duration | Start | Finish | Predecessors | Complete | Planned start | Planned finish | Calendar | L1 : Project | L2 : Phase | L3 : Area | L4 : Sub-Area | L5 : Element | L6 : Sub-Element | M1: Contracts | M2 : Cost Centre | M6 : Areas/Rooms | L7 : System | 822_AB_W010 |
| --- | --- | --- | --- | --- | --- | --- | --- | --- | --- | --- | --- | --- | --- | --- | --- | --- | --- | --- | --- | --- | --- | --- |
|  | 2 | **Design Stage 2 : Detailed Design Submission** |  |  | 2012-03-12 | 2012-09-02 |  |  |  |  |  |  |  |  |  |  |  |  |  |  |  |  |
| 8220A-7010 |  | OHVD - Revise, ICE & Resubmit DDA |  | 4.67d | 2012-03-12 A | 2012-04-16 A | 8220A-6990, 8220A-7000 | 100% | 2012-10-01 | 2012-10-05 | W7 - 24 Hour - 7 day - No Holiday | C822 | B50 | 01 | G001 | P2 | P23 | 822 | AA | C010 | ST2 | 822_AB_W010 |
| 8220A-7000 |  | OHVD - BD Consultation |  | 4.67d | 2012-04-07 A | 2012-04-12 A | 8220A-6980 | 100% | 2012-06-06 | 2012-06-10 | W7 - 24 Hour - 7 day - No Holiday | C822 | B50 | 01 | G001 | P2 | P23 | 822 | AA | C010 | ST2 | 822_AB_W010 |
| 8220A-6980 |  | OHVD - Prepare, ICE & Submit DDA |  | 4.67d | 2012-04-07 A | 2012-04-12 A | 8220A-6950, 8220A-6960, 8220A-6970 | 100% |  |  | W7 - 24 Hour - 7 day - No Holiday | C822 | B50 | 01 | G001 | P2 | P23 | 822 | AA | C010 | ST2 | 822_AB_W010 |
| 8220A-6990 |  | OHVD - Engineer Review & Comment DDA |  | 4.67d | 2012-04-07 A | 2012-04-12 A | 8220A-6980 | 100% |  |  | W7 - 24 Hour - 7 day - No Holiday | C822 | B50 | 01 | G001 | P2 | P23 | 822 | AA | C010 | ST2 | 822_AB_W010 |
| 8220A-7020 |  | OHVD - Engineer Review & Approve DDA |  | 4.67d | 2012-04-17 A | 2012-08-01 A | 8220A-7010 | 100% | 2012-08-05 | 2012-08-10 | W7 - 24 Hour - 7 day - No Holiday | C822 | B50 | 01 | G001 | P2 | P23 | 822 | AA | C010 | ST2 | 822_AB_W010 |
| 8220A-7030 |  | OHVD - BD Consultation |  | 4.67d | 2012-08-02 A | 2012-09-02 A | 8220A-7010 | 100% | 2012-08-05 | 2012-08-10 | W7 - 24 Hour - 7 day - No Holiday | C822 | B50 | 01 | G001 | P2 | P23 | 822 | AA | C010 | ST2 | 822_AB_W010 |
|  | 3 | **Design Stage 3 : Issue for Construction** |  |  | 2012-06-09 | 2012-07-12 |  |  |  |  |  |  |  |  |  |  |  |  |  |  |  |  |
| 8220A-7055 |  | OHVD - Issue Working Docs and Drawings |  | 2d | 2012-06-09 A | 2012-07-11 A | 8220A-7045 | 100% | 2012-08-19 | 2012-08-21 | W7 - 24 Hour - 7 day - No Holiday | C822 | B50 | 01 | G001 | P2 | P23 | 822 | AA | C010 | ST3 | 822_AB_W010 |
| 8220A-7045 |  | OHVD - Prepare Working Docs and Drwgs |  | 9.33d | 2012-06-30 A | 2012-07-07 A | 8220A-7020, 8220A-7030 | 100% | 2012-08-05 | 2012-08-15 | W7 - 24 Hour - 7 day - No Holiday | C822 | B50 | 01 | G001 | P2 | P23 | 822 | AA | C010 | ST3 | 822_AB_W010 |
| 8220A-7065 |  | OHVD - Package Issued | milestone | 0d | 2012-07-12 A | 2012-07-12 A | 8220A-7055 FF | 100% | 2012-08-21 | 2012-08-21 | W7 - 24 Hour - 7 day - No Holiday | C822 | B50 | 01 | G001 | P2 | P23 | 822 | AA | C010 | ST3 | 822_AB_W010 |
|  | 1 | **25 Internal Structure for Bifircation Tunnel** |  |  | 2010-10-20 | 2014-02-01 |  |  |  |  |  |  |  |  |  |  |  |  |  |  |  |  |
|  | 4 | **Design Stage 1 : Approval in Principal** |  |  | 2010-10-20 | 2011-07-01 |  |  |  |  |  |  |  |  |  |  |  |  |  |  |  |  |
| 8220A-1450 |  | Wall - Prepare, ICE & Submit AIP |  | 4.67d | 2010-10-20 A | 2010-11-04 A |  | 100% | 2010-10-20 | 2010-10-25 | W7 - 24 Hour - 7 day - No Holiday | C822 | B50 | 01 | G001 | P2 | P16 | 822 | AA | C010 | ST1 | 822_AB_W010 |
| 8220A-1460 |  | Wall - Engineer Review & Comment AIP |  | 9.33d | 2010-11-05 A | 2010-11-26 A | 8220A-1450 | 100% | 2010-11-05 | 2010-11-14 | W7 - 24 Hour - 7 day - No Holiday | C822 | B50 | 01 | G001 | P2 | P16 | 822 | AA | C010 | ST1 | 822_AB_W010 |
| 8220A-1470 |  | Wall - BD Consultation |  | 9.33d | 2010-11-05 A | 2010-11-26 A | 8220A-1450 | 100% | 2010-11-05 | 2010-11-14 | W7 - 24 Hour - 7 day - No Holiday | C822 | B50 | 01 | G001 | P2 | P16 | 822 | AA | C010 | ST1 | 822_AB_W010 |
| 8220A-1490 |  | Wall - Engineer Review & Approve AIP |  | 9.33d | 2010-11-05 A | 2010-11-26 A | 8220A-1480 | 100% | 2010-11-05 | 2010-11-14 | W7 - 24 Hour - 7 day - No Holiday | C822 | B50 | 01 | G001 | P2 | P16 | 822 | AA | C010 | ST1 | 822_AB_W010 |
| 8220A-1480 |  | Wall - Revise, ICE & Resubmit AIP |  | 4.67d | 2010-11-11 A | 2010-11-26 A | 8220A-1460, 8220A-1470 | 100% | 2010-11-11 | 2010-11-16 | W7 - 24 Hour - 7 day - No Holiday | C822 | B50 | 01 | G001 | P2 | P16 | 822 | AA | C010 | ST1 | 822_AB_W010 |
| 8220A-1500 |  | Wall - BD Consultation |  | 9.33d | 2011-04-13 A | 2011-07-01 A | 8220A-1480 | 100% | 2011-04-13 | 2011-04-22 | W7 - 24 Hour - 7 day - No Holiday | C822 | B50 | 01 | G001 | P2 | P16 | 822 | AA | C010 | ST1 | 822_AB_W010 |
|  | 2 | **Design Stage 2 : Detailed Design Submission** |  |  | 2011-03-02 | 2014-02-01 |  |  |  |  |  |  |  |  |  |  |  |  |  |  |  |  |
| 8220A-1510 |  | Wall - Prepare, ICE & Submit DDA |  | 4.67d | 2011-03-02 A | 2011-04-28 A | 8220A-1480, 8220A-1490, 8220A-1500 | 100% | 2011-03-02 | 2011-03-07 | W7 - 24 Hour - 7 day - No Holiday | C822 | B50 | 01 | G001 | P2 | P16 | 822 | AA | C010 | ST2 | 822_AB_W010 |
| 8220A-1520 |  | Wall - Engineer Review & Comment DDA |  | 9.33d | 2011-04-29 A | 2014-02-01 A | 8220A-1510 | 100% | 2011-04-29 | 2011-05-08 | W7 - 24 Hour - 7 day - No Holiday | C822 | B50 | 01 | G001 | P2 | P16 | 822 | AA | C010 | ST2 | 822_AB_W010 |
| 8220A-1530 |  | Wall - BD Consultation |  | 0d | 2014-02-01 A | 2014-02-01 A | 8220A-1510 | 100% | 2014-02-02 | 2014-02-02 | W7 - 24 Hour - 7 day - No Holiday | C822 | B50 | 01 | G001 | P2 | P16 | 822 | AA | C010 | ST2 | 822_AB_W010 |
| 8220A-1540 |  | Wall - Revise, ICE & Resubmit DDA |  | 0d | 2014-02-01 A | 2014-02-01 A | 8220A-1520, 8220A-1530 | 100% | 2014-02-03 | 2014-02-03 | W7 - 24 Hour - 7 day - No Holiday | C822 | B50 | 01 | G001 | P2 | P16 | 822 | AA | C010 | ST2 | 822_AB_W010 |
| 8220A-1550 |  | Wall - Engineer Review & Approve DDA |  | 0d | 2014-02-01 A | 2014-02-01 A | 8220A-1540 | 100% | 2014-03-15 | 2014-03-15 | W7 - 24 Hour - 7 day - No Holiday | C822 | B50 | 01 | G001 | P2 | P16 | 822 | AA | C010 | ST2 | 822_AB_W010 |
| 8220A-1560 |  | Wall - BD Consultation |  | 0d | 2014-02-01 A | 2014-02-01 A | 8220A-1540 | 100% | 2014-03-15 | 2014-03-15 | W7 - 24 Hour - 7 day - No Holiday | C822 | B50 | 01 | G001 | P2 | P16 | 822 | AA | C010 | ST2 | 822_AB_W010 |

| ID | WBS | Activity | Type | Duration | Start | Finish | Predecessors | Complete | Planned start | Planned finish | Calendar | L1 : Project | L2 : Phase | L3 : Area | L4 : Sub-Area | L5 : Element | L6 : Sub-Element | M1: Contracts | M2 : Cost Centre | M6 : Areas/Rooms | L7 : System | 822_AB_W010 |
| --- | --- | --- | --- | --- | --- | --- | --- | --- | --- | --- | --- | --- | --- | --- | --- | --- | --- | --- | --- | --- | --- | --- |
|  | 3 | **Design Stage 3 : Issue for Construction** |  |  | 2014-02-01 | 2014-02-01 |  |  |  |  |  |  |  |  |  |  |  |  |  |  |  |  |
| 8220A-7100 |  | Prepare Working Docs and Drwgs |  | 0d | 2014-02-01 A | 2014-02-01 A | 8220A-1550, 8220A-1560 | 100% | 2014-02-02 | 2014-02-02 | W7 - 24 Hour - 7 day - No Holiday | C822 | B50 | 01 | G001 | P2 | P16 | 822 | AA | C010 | ST3 | 822_AB_W010 |
| 8220A-7110 |  | Issue Working Docs and Drawings |  | 0d | 2014-02-01 A | 2014-02-01 A | 8220A-7100 | 100% | 2014-04-02 | 2014-04-02 | W7 - 24 Hour - 7 day - No Holiday | C822 | B50 | 01 | G001 | P2 | P16 | 822 | AA | C010 | ST3 | 822_AB_W010 |
| 8220A-7120 |  | Package Issued | milestone | 0d | 2014-02-01 A | 2014-02-01 A | 8220A-7110 FF | 100% | 2014-04-04 | 2014-04-04 | W7 - 24 Hour - 7 day - No Holiday | C822 | B50 | 01 | G001 | P2 | P16 | 822 | AA | C010 | ST3 | 822_AB_W010 |
|  | 2 | **26 Internal Structure for Tunnels with Nozzles** |  |  | 2010-10-20 | 2014-02-18 |  |  |  |  |  |  |  |  |  |  |  |  |  |  |  |  |
|  | 4 | **Design Stage 1 : Approval in Principal** |  |  | 2010-10-20 | 2011-07-01 |  |  |  |  |  |  |  |  |  |  |  |  |  |  |  |  |
| 8220A-3505 |  | Nozzle - Prepare, ICE & Submit AIP |  | 4.67d | 2010-10-20 A | 2010-11-04 A |  | 100% | 2010-10-20 | 2010-10-25 | W7 - 24 Hour - 7 day - No Holiday | C822 | B50 | 01 | G001 | P2 | P18 | 822 | AA | C010 | ST1 | 822_AB_W010 |
| 8220A-3515 |  | Nozzle - Engineer Review & Comment AIP |  | 4.67d | 2010-11-05 A | 2010-11-26 A | 8220A-3505 | 100% | 2010-11-05 | 2010-11-10 | W7 - 24 Hour - 7 day - No Holiday | C822 | B50 | 01 | G001 | P2 | P18 | 822 | AA | C010 | ST1 | 822_AB_W010 |
| 8220A-3525 |  | Nozzle - BD Consultation |  | 4.67d | 2010-11-05 A | 2010-11-26 A | 8220A-3505 | 100% | 2010-11-05 | 2010-11-10 | W7 - 24 Hour - 7 day - No Holiday | C822 | B50 | 01 | G001 | P2 | P18 | 822 | AA | C010 | ST1 | 822_AB_W010 |
| 8220A-3545 |  | Nozzle - Engineer Review & Approve AIP |  | 4.67d | 2010-11-05 A | 2010-11-26 A | 8220A-3535 | 100% | 2010-11-05 | 2010-11-10 | W7 - 24 Hour - 7 day - No Holiday | C822 | B50 | 01 | G001 | P2 | P18 | 822 | AA | C010 | ST1 | 822_AB_W010 |
| 8220A-3535 |  | Nozzle - Revise, ICE & Resubmit AIP |  | 4.67d | 2010-11-11 A | 2010-11-26 A | 8220A-3515, 8220A-3525 | 100% | 2010-11-11 | 2010-11-16 | W7 - 24 Hour - 7 day - No Holiday | C822 | B50 | 01 | G001 | P2 | P18 | 822 | AA | C010 | ST1 | 822_AB_W010 |
| 8220A-3555 |  | Nozzle - BD Consultation |  | 4.67d | 2011-04-28 A | 2011-07-01 A | 8220A-3535 | 100% | 2011-04-28 | 2011-05-03 | W7 - 24 Hour - 7 day - No Holiday | C822 | B50 | 01 | G001 | P2 | P18 | 822 | AA | C010 | ST1 | 822_AB_W010 |
|  | 2 | **Design Stage 2 : Detailed Design Submission** |  |  | 2011-03-02 | 2013-11-15 |  |  |  |  |  |  |  |  |  |  |  |  |  |  |  |  |
| 8220A-3565 |  | Nozzle - Prepare, ICE & Submit DDA |  | 4.67d | 2011-03-02 A | 2011-03-28 A | 8220A-3535, 8220A-3545, 8220A-3555 | 100% | 2011-03-02 | 2011-03-07 | W7 - 24 Hour - 7 day - No Holiday | C822 | B50 | 01 | G001 | P2 | P18 | 822 | AA | C010 | ST2 | 822_AB_W010 |
| 8220A-3575 |  | Nozzle - Engineer Review & Comment DDA |  | 4.67d | 2011-03-29 A | 2011-04-13 A | 8220A-3565 | 100% | 2011-04-29 | 2011-05-04 | W7 - 24 Hour - 7 day - No Holiday | C822 | B50 | 01 | G001 | P2 | P18 | 822 | AA | C010 | ST2 | 822_AB_W010 |
| 8220A-3585 |  | Nozzle - BD Consultation |  | 4.67d | 2011-04-14 A | 2011-04-20 A | 8220A-3565 | 100% | 2012-11-01 | 2012-11-05 | W7 - 24 Hour - 7 day - No Holiday | C822 | B50 | 01 | G001 | P2 | P18 | 822 | AA | C010 | ST2 | 822_AB_W010 |
| 8220A-3595 |  | Nozzle - Revise, ICE & Resubmit DDA |  | 4.67d | 2011-04-21 A | 2011-04-29 A | 8220A-3575, 8220A-3585 | 100% | 2012-11-05 | 2012-11-10 | W7 - 24 Hour - 7 day - No Holiday | C822 | B50 | 01 | G001 | P2 | P18 | 822 | AA | C010 | ST2 | 822_AB_W010 |
| 8220A-3605 |  | Nozzle - Engineer Review & Approve DDA |  | 4.67d | 2011-10-15 A | 2011-10-21 A | 8220A-3595 | 100% | 2012-11-10 | 2012-11-15 | W7 - 24 Hour - 7 day - No Holiday | C822 | B50 | 01 | G001 | P2 | P18 | 822 | AA | C010 | ST2 | 822_AB_W010 |
| 8220A-3615 |  | Nozzle - BD Consultation |  | 4.67d | 2012-10-13 A | 2013-11-15 A | 8220A-3595 | 100% | 2012-11-10 | 2012-11-15 | W7 - 24 Hour - 7 day - No Holiday | C822 | B50 | 01 | G001 | P2 | P18 | 822 | AA | C010 | ST2 | 822_AB_W010 |
|  | 3 | **Design Stage 3 : Issue for Construction** |  |  | 2013-11-15 | 2014-02-18 |  |  |  |  |  |  |  |  |  |  |  |  |  |  |  |  |
| 8220A-3625 |  | Nozzle - Prepare Working Docs and Drwgs |  | 9.33d | 2013-11-15 A | 2014-01-17 A | 8220A-3605, 8220A-3615 | 100% | 2014-03-05 | 2014-03-15 | W7 - 24 Hour - 7 day - No Holiday | C822 | B50 | 01 | G001 | P2 | P18 | 822 | AA | C010 | ST3 | 822_AB_W010 |
| 8220A-3635 |  | Nozzle - Issue Working Docs and Drawings |  | 2d | 2014-01-17 A | 2014-02-18 A | 8220A-3625 | 100% | 2014-03-10 | 2014-03-12 | W7 - 24 Hour - 7 day - No Holiday | C822 | B50 | 01 | G001 | P2 | P18 | 822 | AA | C010 | ST3 | 822_AB_W010 |
| 8220A-3645 |  | Nozzle - Package Issued | milestone | 0d | 2014-02-18 A | 2014-02-18 A | 8220A-3635 FF | 100% | 2014-03-12 | 2014-03-12 | W7 - 24 Hour - 7 day - No Holiday | C822 | B50 | 01 | G001 | P2 | P18 | 822 | AA | C010 | ST3 | 822_AB_W010 |
|  | 3 | **P3 : Tunnel Alternative Design** |  |  | 2010-03-18 | 2010-12-01 |  |  |  |  |  |  |  |  |  |  |  |  |  |  |  |  |
|  | 1 | **91 Tunnel Alternative Ventilation Design** |  |  | 2010-03-18 | 2010-12-01 |  |  |  |  |  |  |  |  |  |  |  |  |  |  |  |  |
|  | 4 | **Design Stage 1 : Approval in Principal** |  |  | 2010-03-18 | 2010-05-18 |  |  |  |  |  |  |  |  |  |  |  |  |  |  |  |  |
| 8220A-4505 |  | Alt Vent - Prepare, ICE & Submit AIP |  | 4.67d | 2010-03-18 A | 2010-03-31 A |  | 100% | 2010-03-18 | 2010-03-23 | W7 - 24 Hour - 7 day - No Holiday | C822 | B50 | 01 | G001 | P3 | P19 | 822 | AA | C010 | ST1 | 822_AB_W010 |
| 8220A-4515 |  | Alt Vent - Engineer Review & Comment AIP |  | 4.67d | 2010-04-02 A | 2010-04-15 A | 8220A-4505 | 100% | 2010-04-02 | 2010-04-07 | W7 - 24 Hour - 7 day - No Holiday | C822 | B50 | 01 | G001 | P3 | P19 | 822 | AA | C010 | ST1 | 822_AB_W010 |
| 8220A-4525 |  | Alt Vent - BD Consultation |  | 4.67d | 2010-04-02 A | 2010-04-15 A | 8220A-4505 | 100% | 2010-04-02 | 2010-04-07 | W7 - 24 Hour - 7 day - No Holiday | C822 | B50 | 01 | G001 | P3 | P19 | 822 | AA | C010 | ST1 | 822_AB_W010 |
| 8220A-4535 |  | Alt Vent - Revise, ICE & Resubmit AIP |  | 4.67d | 2010-04-21 A | 2010-05-04 A | 8220A-4515, 8220A-4525 | 100% | 2010-04-21 | 2010-04-26 | W7 - 24 Hour - 7 day - No Holiday | C822 | B50 | 01 | G001 | P3 | P19 | 822 | AA | C010 | ST1 | 822_AB_W010 |
| 8220A-4545 |  | Alt Vent - Engineer Review & Approve AIP |  | 4.67d | 2010-05-05 A | 2010-05-18 A | 8220A-4535 | 100% | 2010-05-05 | 2010-05-10 | W7 - 24 Hour - 7 day - No Holiday | C822 | B50 | 01 | G001 | P3 | P19 | 822 | AA | C010 | ST1 | 822_AB_W010 |
| 8220A-4555 |  | Alt Vent - BD Consultation |  | 4.67d | 2010-05-05 A | 2010-05-18 A | 8220A-4535 | 100% | 2010-05-05 | 2010-05-10 | W7 - 24 Hour - 7 day - No Holiday | C822 | B50 | 01 | G001 | P3 | P19 | 822 | AA | C010 | ST1 | 822_AB_W010 |

| ID | WBS | Activity | Type | Duration | Start | Finish | Predecessors | Complete | Planned start | Planned finish | Calendar | L1 : Project | L2 : Phase | L3 : Area | L4 : Sub-Area | L5 : Element | L6 : Sub-Element | M1: Contracts | M2 : Cost Centre | M6 : Areas/Rooms | L7 : System | 822_AB_W010 |
| --- | --- | --- | --- | --- | --- | --- | --- | --- | --- | --- | --- | --- | --- | --- | --- | --- | --- | --- | --- | --- | --- | --- |
|  | 2 | **Design Stage 2 : Detailed Design Submission** |  |  | 2010-05-24 | 2010-08-27 |  |  |  |  |  |  |  |  |  |  |  |  |  |  |  |  |
| 8220A-4565 |  | Alt Vent - Prepare, ICE & Submit DDA |  | 4.67d | 2010-05-24 A | 2010-07-29 A | 8220A-4535, 8220A-4545, 8220A-4555 | 100% | 2010-05-24 | 2010-05-29 | W7 - 24 Hour - 7 day - No Holiday | C822 | B50 | 01 | G001 | P3 | P19 | 822 | AA | C010 | ST2 | 822_AB_W010 |
| 8220A-4575 |  | Alt Vent - Engineer Review & Comment DDA |  | 4.67d | 2010-07-30 A | 2010-08-12 A | 8220A-4565 | 100% | 2010-07-30 | 2010-08-04 | W7 - 24 Hour - 7 day - No Holiday | C822 | B50 | 01 | G001 | P3 | P19 | 822 | AA | C010 | ST2 | 822_AB_W010 |
| 8220A-4585 |  | Alt Vent - BD Consultation |  | 4.67d | 2010-07-30 A | 2010-08-12 A | 8220A-4565 | 100% | 2010-07-30 | 2010-08-04 | W7 - 24 Hour - 7 day - No Holiday | C822 | B50 | 01 | G001 | P3 | P19 | 822 | AA | C010 | ST2 | 822_AB_W010 |
| 8220A-4595 |  | Alt Vent - Revise, ICE & Resubmit DDA |  | 2d | 2010-08-11 A | 2010-08-16 A | 8220A-4575, 8220A-4585 | 100% | 2010-08-11 | 2010-08-13 | W7 - 24 Hour - 7 day - No Holiday | C822 | B50 | 01 | G001 | P3 | P19 | 822 | AA | C010 | ST2 | 822_AB_W010 |
| 8220A-4605 |  | Alt Vent - Engineer Review & Approve DDA |  | 3.67d | 2010-08-17 A | 2010-08-27 A | 8220A-4595 | 100% | 2010-08-17 | 2010-08-21 | W7 - 24 Hour - 7 day - No Holiday | C822 | B50 | 01 | G001 | P3 | P19 | 822 | AA | C010 | ST2 | 822_AB_W010 |
| 8220A-4615 |  | Alt Vent - BD Consultation |  | 3.67d | 2010-08-17 A | 2010-08-27 A | 8220A-4595 | 100% | 2010-08-17 | 2010-08-21 | W7 - 24 Hour - 7 day - No Holiday | C822 | B50 | 01 | G001 | P3 | P19 | 822 | AA | C010 | ST2 | 822_AB_W010 |
|  | 3 | **Design Stage 3 : Issue for Construction** |  |  | 2010-10-01 | 2010-12-01 |  |  |  |  |  |  |  |  |  |  |  |  |  |  |  |  |
| 8220A-4625 |  | Alt Vent - Prepare Working Docs and Drwgs |  | 9.33d | 2010-10-01 A | 2010-11-27 A | 8220A-4605, 8220A-4615 | 100% | 2010-10-01 | 2010-10-10 | W7 - 24 Hour - 7 day - No Holiday | C822 | B50 | 01 | G001 | P3 | P19 | 822 | AA | C010 | ST3 | 822_AB_W010 |
| 8220A-4635 |  | Alt Vent - Issue Working Docs and Drawings |  | 2d | 2010-11-27 A | 2010-11-30 A | 8220A-4625 | 100% | 2010-11-27 | 2010-11-29 | W7 - 24 Hour - 7 day - No Holiday | C822 | B50 | 01 | G001 | P3 | P19 | 822 | AA | C010 | ST3 | 822_AB_W010 |
| 8220A-4645 |  | Alt Vent - Package Issued | milestone | 0d | 2010-12-01 A | 2010-12-01 A | 8220A-4635 FF | 100% |  |  | W7 - 24 Hour - 7 day - No Holiday | C822 | B50 | 01 | G001 | P3 | P19 | 822 | AA | C010 | ST3 | 822_AB_W010 |
|  | 2 | **Pat Heung** |  |  | 2010-03-10 | 2012-08-20 |  |  |  |  |  |  |  |  |  |  |  |  |  |  |  |  |
|  | 1 | **17 Connection between PHVAA and Junction PH1** |  |  | 2010-09-11 | 2012-08-20 |  |  |  |  |  |  |  |  |  |  |  |  |  |  |  |  |
|  | 4 | **Design Stage 1 : Approval in Principal** |  |  | 2010-09-11 | 2010-11-28 |  |  |  |  |  |  |  |  |  |  |  |  |  |  |  |  |
| 8220A-0250 |  | Lining - Prepare, ICE & Submit AIP |  | 4.67d | 2010-09-11 A | 2010-11-02 A |  | 100% | 2010-09-11 | 2010-09-16 | W7 - 24 Hour - 7 day - No Holiday | C822 | B50 | 02 | 0201 | GD01 | P03 | 822 | AA | C010 | ST1 | 822_AB_W010 |
| 8220A-0270 |  | Lining - BD Consultation AIP |  | 9.33d | 2010-11-02 A | 2010-11-27 A | 8220A-0250 | 100% | 2010-11-02 | 2010-11-11 | W7 - 24 Hour - 7 day - No Holiday | C822 | B50 | 02 | 0201 | GD01 | P03 | 822 | AA | C010 | ST1 | 822_AB_W010 |
| 8220A-0300 |  | Lining - BD Re-Consultation AIP |  | 9.33d | 2010-11-03 A | 2010-11-27 A | 8220A-0280 | 100% | 2010-11-03 | 2010-11-12 | W7 - 24 Hour - 7 day - No Holiday | C822 | B50 | 02 | 0201 | GD01 | P03 | 822 | AA | C010 | ST1 | 822_AB_W010 |
| 8220A-0260 |  | Lining - Engineer Review & Comment AIP |  | 9.33d | 2010-11-05 A | 2010-11-28 A | 8220A-0250 | 100% | 2010-11-05 | 2010-11-14 | W7 - 24 Hour - 7 day - No Holiday | C822 | B50 | 02 | 0201 | GD01 | P03 | 822 | AA | C010 | ST1 | 822_AB_W010 |
| 8220A-0290 |  | Lining - Engineer Review & Approve AIP |  | 9.33d | 2010-11-05 A | 2010-11-27 A | 8220A-0280 | 100% | 2010-11-05 | 2010-11-14 | W7 - 24 Hour - 7 day - No Holiday | C822 | B50 | 02 | 0201 | GD01 | P03 | 822 | AA | C010 | ST1 | 822_AB_W010 |
| 8220A-0280 |  | Lining - Revise, ICE & Resubmit AIP |  | 4.67d | 2010-11-06 A | 2010-11-27 A | 8220A-0260, 8220A-0270 | 100% | 2010-11-06 | 2010-11-11 | W7 - 24 Hour - 7 day - No Holiday | C822 | B50 | 02 | 0201 | GD01 | P03 | 822 | AA | C010 | ST1 | 822_AB_W010 |
|  | 2 | **Design Stage 2 : Detailed Design Submission** |  |  | 2011-03-31 | 2012-08-20 |  |  |  |  |  |  |  |  |  |  |  |  |  |  |  |  |
| 8220A-0310 |  | Lining - Prepare, ICE & Submit DDS |  | 4.67d | 2011-03-31 A | 2011-04-13 A | 8220A-0290, 8220A-0300 | 100% | 2011-03-31 | 2011-04-05 | W7 - 24 Hour - 7 day - No Holiday | C822 | B50 | 02 | 0201 | GD01 | P03 | 822 | AA | C010 | ST2 | 822_AB_W010 |
| 8220A-0320 |  | Lining - Engineer Review & Comment DDS |  | 9.33d | 2011-04-14 A | 2012-06-12 A | 8220A-0310 | 100% | 2011-04-14 | 2011-04-23 | W7 - 24 Hour - 7 day - No Holiday | C822 | B50 | 02 | 0201 | GD01 | P03 | 822 | AA | C010 | ST2 | 822_AB_W010 |
| 8220A-0330 |  | Lining - BD Consultation - DDS |  | 9.33d | 2011-04-14 A | 2012-06-12 A | 8220A-0310 | 100% | 2011-04-14 | 2011-04-23 | W7 - 24 Hour - 7 day - No Holiday | C822 | B50 | 02 | 0201 | GD01 | P03 | 822 | AA | C010 | ST2 | 822_AB_W010 |
| 8220A-0340 |  | Lining - Revise, ICE & Resubmit DDS |  | 4.67d | 2012-06-13 A | 2012-07-12 A | 8220A-0320, 8220A-0330 | 100% | 2012-09-04 | 2012-09-09 | W7 - 24 Hour - 7 day - No Holiday | C822 | B50 | 02 | 0201 | GD01 | P03 | 822 | AA | C010 | ST2 | 822_AB_W010 |
| 8220A-0350 |  | Lining - Engineer Review & Approve DDS |  | 9.33d | 2012-07-13 A | 2012-07-31 A | 8220A-0340 | 100% | 2012-09-09 | 2012-09-18 | W7 - 24 Hour - 7 day - No Holiday | C822 | B50 | 02 | 0201 | GD01 | P03 | 822 | AA | C010 | ST2 | 822_AB_W010 |
| 8220A-0360 |  | Lining - BD Re-Consultation DDS |  | 9.33d | 2012-08-01 A | 2012-08-20 A | 8220A-0340 | 100% | 2012-09-09 | 2012-09-18 | W7 - 24 Hour - 7 day - No Holiday | C822 | B50 | 02 | 0201 | GD01 | P03 | 822 | AA | C010 | ST2 | 822_AB_W010 |

| ID | WBS | Activity | Type | Duration | Start | Finish | Predecessors | Complete | Planned start | Planned finish | Constraint | Calendar | L1 : Project | L2 : Phase | L3 : Area | L4 : Sub-Area | L5 : Element | L6 : Sub-Element | M1: Contracts | M2 : Cost Centre | M6 : Areas/Rooms | L7 : System | 822_AB_W010 | M4 : Location |
| --- | --- | --- | --- | --- | --- | --- | --- | --- | --- | --- | --- | --- | --- | --- | --- | --- | --- | --- | --- | --- | --- | --- | --- | --- |
|  | 3 | **Design Stage 3 : Issue for Construction** |  |  | 2011-04-28 | 2011-09-03 |  |  |  |  |  |  |  |  |  |  |  |  |  |  |  |  |  |  |
| 8220A-2900 |  | Prepare Working Docs and Drawings |  | 9.33d | 2011-04-28 A | 2011-08-30 A | 8220A-0350, 8220A-0360 | 100% | 2011-09-03 | 2011-09-12 |  | W7 - 24 Hour - 7 day - No Holiday | C822 | B50 | 02 | 0201 | GD01 | P03 | 822 | AA | C010 | ST3 | 822_AB_W010 |  |
| 8220A-2910 |  | Issue Working Docs and Drawings |  | 2d | 2011-08-31 A | 2011-09-03 A | 8220A-2900 | 100% | 2012-06-10 | 2012-06-12 |  | W7 - 24 Hour - 7 day - No Holiday | C822 | B50 | 02 | 0201 | GD01 | P03 | 822 | AA | C010 | ST3 | 822_AB_W010 |  |
| 8220A-2920 |  | Package Issued | milestone | 0d | 2011-09-03 A | 2011-09-03 A | 8220A-2910 FF | 100% | 2012-06-12 | 2012-06-12 |  | W7 - 24 Hour - 7 day - No Holiday | C822 | B50 | 02 | 0201 | GD01 | P03 | 822 | AA | C010 | ST3 | 822_AB_W010 |  |
|  | 2 | **18 Connection between PHVA and Junction PH3A2** |  |  | 2010-09-11 | 2012-06-14 |  |  |  |  |  |  |  |  |  |  |  |  |  |  |  |  |  |  |
|  | 4 | **Design Stage 1 : Approval in Principal** |  |  | 2010-09-11 | 2010-11-27 |  |  |  |  |  |  |  |  |  |  |  |  |  |  |  |  |  |  |
| 8220A-0370 |  | Lining - Prepare, ICE & Submit AIP |  | 4.67d | 2010-09-11 A | 2010-11-02 A |  | 100% | 2010-09-11 | 2010-09-16 |  | W7 - 24 Hour - 7 day - No Holiday | C822 | B50 | 02 | 0201 | GD01 | P04 | 822 | AA | C010 | ST1 | 822_AB_W010 |  |
| 8220A-0380 |  | Lining - Engineer Review & Comment AIP |  | 9.33d | 2010-11-05 A | 2010-11-26 A | 8220A-0370 | 100% | 2010-11-05 | 2010-11-14 |  | W7 - 24 Hour - 7 day - No Holiday | C822 | B50 | 02 | 0201 | GD01 | P04 | 822 | AA | C010 | ST1 | 822_AB_W010 |  |
| 8220A-0390 |  | Lining - BD Consultation AIP |  | 9.33d | 2010-11-05 A | 2010-11-26 A | 8220A-0370 | 100% | 2010-11-05 | 2010-11-14 |  | W7 - 24 Hour - 7 day - No Holiday | C822 | B50 | 02 | 0201 | GD01 | P04 | 822 | AA | C010 | ST1 | 822_AB_W010 |  |
| 8220A-0400 |  | Lining - Revise, ICE & Resubmit AIP |  | 4.67d | 2010-11-05 A | 2010-11-24 A | 8220A-0380, 8220A-0390 | 100% | 2010-11-05 | 2010-11-10 |  | W7 - 24 Hour - 7 day - No Holiday | C822 | B50 | 02 | 0201 | GD01 | P04 | 822 | AA | C010 | ST1 | 822_AB_W010 |  |
| 8220A-0410 |  | Lining - Engineer Review & Approve AIP |  | 9.33d | 2010-11-05 A | 2010-11-26 A | 8220A-0400 | 100% | 2010-11-05 | 2010-11-14 |  | W7 - 24 Hour - 7 day - No Holiday | C822 | B50 | 02 | 0201 | GD01 | P04 | 822 | AA | C010 | ST1 | 822_AB_W010 |  |
| 8220A-0420 |  | Lining - BD Re-Consultation AIP |  | 9.33d | 2010-11-05 A | 2010-11-27 A | 8220A-0400 | 100% | 2010-11-05 | 2010-11-14 |  | W7 - 24 Hour - 7 day - No Holiday | C822 | B50 | 02 | 0201 | GD01 | P04 | 822 | AA | C010 | ST1 | 822_AB_W010 |  |
|  | 2 | **Design Stage 2 : Detailed Design Submission** |  |  | 2011-03-31 | 2012-06-14 |  |  |  |  |  |  |  |  |  |  |  |  |  |  |  |  |  |  |
| 8220A-0430 |  | Lining - Prepare, ICE & Submit DDS |  | 4.67d | 2011-03-31 A | 2011-04-13 A | 8220A-0410, 8220A-0420 | 100% | 2011-03-31 | 2011-04-05 |  | W7 - 24 Hour - 7 day - No Holiday | C822 | B50 | 02 | 0201 | GD01 | P04 | 822 | AA | C010 | ST2 | 822_AB_W010 |  |
| 8220A-0440 |  | Lining - Engineer Review & Comment DDS |  | 9.33d | 2011-04-13 A | 2011-05-27 A | 8220A-0430 | 100% | 2011-04-13 | 2011-04-22 |  | W7 - 24 Hour - 7 day - No Holiday | C822 | B50 | 02 | 0201 | GD01 | P04 | 822 | AA | C010 | ST2 | 822_AB_W010 |  |
| 8220A-0450 |  | Lining - BD Consultation DDS |  | 9.33d | 2011-04-13 A | 2011-05-27 A | 8220A-0430 | 100% | 2011-04-13 | 2011-04-22 |  | W7 - 24 Hour - 7 day - No Holiday | C822 | B50 | 02 | 0201 | GD01 | P04 | 822 | AA | C010 | ST2 | 822_AB_W010 |  |
| 8220A-0460 |  | Lining - Revise, ICE & Resubmit DDS |  | 4.67d | 2011-05-28 A | 2012-05-31 A | 8220A-0440, 8220A-0450 | 100% | 2011-05-28 | 2011-06-02 |  | W7 - 24 Hour - 7 day - No Holiday | C822 | B50 | 02 | 0201 | GD01 | P04 | 822 | AA | C010 | ST2 | 822_AB_W010 |  |
| 8220A-0470 |  | Lining - Engineer Review & Approve DDS |  | 12d | 2011-05-28 A | 2012-06-14 A | 8220A-0460 | 100% | 2011-05-28 | 2011-06-09 |  | W7 - 24 Hour - 7 day - No Holiday | C822 | B50 | 02 | 0201 | GD01 | P04 | 822 | AA | C010 | ST2 | 822_AB_W010 |  |
| 8220A-0480 |  | Lining - BD Re-Consultation DDS |  | 12d | 2011-06-29 A | 2012-06-14 A | 8220A-0460 | 100% | 2012-10-05 | 2012-10-17 |  | W7 - 24 Hour - 7 day - No Holiday | C822 | B50 | 02 | 0201 | GD01 | P04 | 822 | AA | C010 | ST2 | 822_AB_W010 |  |
|  | 3 | **Design Stage 3 : Issue for Construction** |  |  | 2011-06-29 | 2011-10-25 |  |  |  |  |  |  |  |  |  |  |  |  |  |  |  |  |  |  |
| 8220A-2930 |  | Prepare Working Docs and Drawings |  | 9.33d | 2011-06-29 A | 2011-10-19 A | 8220A-0470, 8220A-0480 | 100% | 2011-09-15 | 2011-09-24 |  | W7 - 24 Hour - 7 day - No Holiday | C822 | B50 | 02 | 0201 | GD01 | P04 | 822 | AA | C010 | ST3 | 822_AB_W010 |  |
| 8220A-2940 |  | Issue Working Docs and Drawings |  | 2d | 2011-10-19 A | 2011-10-25 A | 8220A-2930 | 100% | 2012-06-10 | 2012-06-12 |  | W7 - 24 Hour - 7 day - No Holiday | C822 | B50 | 02 | 0201 | GD01 | P04 | 822 | AA | C010 | ST3 | 822_AB_W010 |  |
| 8220A-2950 |  | Package Issued | milestone | 0d | 2011-10-25 A | 2011-10-25 A | 8220A-2940 FF | 100% | 2012-06-12 | 2012-06-12 |  | W7 - 24 Hour - 7 day - No Holiday | C822 | B50 | 02 | 0201 | GD01 | P04 | 822 | AA | C010 | ST3 | 822_AB_W010 |  |
|  | 3 | **Pat Heung Portal including Debri Flow Barrier** |  |  |  |  |  |  |  |  |  |  |  |  |  |  |  |  |  |  |  |  |  |  |
|  | 4 | **Design Stage 1 : Approval in Principal** |  |  |  |  |  |  |  |  |  |  |  |  |  |  |  |  |  |  |  |  |  |  |
|  | 2 | **Design Stage 2 : Detailed Design Submission** |  |  |  |  |  |  |  |  |  |  |  |  |  |  |  |  |  |  |  |  |  |  |
|  | 3 | **Design Stage 3 : Issue for Construction** |  |  |  |  |  |  |  |  |  |  |  |  |  |  |  |  |  |  |  |  |  |  |
|  | 4 | **ABWF Works - Pat Heung VB4** |  |  | 2010-03-10 | 2010-03-10 |  |  |  |  |  |  |  |  |  |  |  |  |  |  |  |  |  |  |
|  | 4 | **Design Stage 1 : Approval in Principal** |  |  | 2010-03-10 | 2010-03-10 |  |  |  |  |  |  |  |  |  |  |  |  |  |  |  |  |  |  |
| 8220A-5110 |  | Pat Heung VB4 - Prepare, ICE & Submit Design,AIP (N/A) |  | 12d | 2010-03-10 A | 2010-03-10 A |  | 100% | 2013-06-01 | 2013-06-15 | start on or after 2012-05-01 |  | C822 | B50 | 02 | 0201 | GD01 | T88 | 822 | AA | C010 | ST1 | 822_AB_W010 | 2230 |
| 8220A-5120 |  | Pat Heung VB4 - Engineer Review & Comment Design AIP (N/A) |  | 24d | 2010-03-10 A | 2010-03-10 A | 8220A-5110 | 100% | 2013-06-17 | 2013-07-15 |  |  | C822 | B50 | 02 | 0201 | GD01 | T88 | 822 | AA | C010 | ST1 | 822_AB_W010 | 2230 |
| 8220A-5140 |  | Pat Heung VB4 - Revise,ICE & Resubmit Design,AIP (N/A) |  | 12d | 2010-03-10 A | 2010-03-10 A | 8220A-5120 | 100% | 2013-07-16 | 2013-07-29 |  |  | C822 | B50 | 02 | 0201 | GD01 | T88 | 822 | AA | C010 | ST1 | 822_AB_W010 | 2230 |
| 8220A-5150 |  | Pat Heung VB4 - Engineer Review & Approve Design AIP (N/A) |  | 24d | 2010-03-10 A | 2010-03-10 A | 8220A-5140 | 100% | 2013-07-30 | 2013-08-26 |  |  | C822 | B50 | 02 | 0201 | GD01 | T88 | 822 | AA | C010 | ST1 | 822_AB_W010 | 2230 |

| ID | WBS | Activity | Type | Duration | Start | Finish | Predecessors | Complete | Planned start | Planned finish | Constraint | L1 : Project | L2 : Phase | L3 : Area | L4 : Sub-Area | L5 : Element | L6 : Sub-Element | M1: Contracts | M2 : Cost Centre | M4 : Location | M6 : Areas/Rooms | L7 : System | 822_AB_W010 |
| --- | --- | --- | --- | --- | --- | --- | --- | --- | --- | --- | --- | --- | --- | --- | --- | --- | --- | --- | --- | --- | --- | --- | --- |
|  | 2 | **Design Stage 2 : Detailed Design Submission** |  |  | 2010-03-10 | 2010-03-10 |  |  |  |  |  |  |  |  |  |  |  |  |  |  |  |  |  |
| 8220A-5170 |  | Pat Heung VB4 - Prepare, ICE & Submit Design,DDS (N/A) |  | 12d | 2010-03-10 A | 2010-03-10 A | 8220A-5150 | 100% | 2013-08-27 | 2013-09-09 |  | C822 | B50 | 02 | 0201 | GD01 | T88 | 822 | AA | 2230 | C010 | ST2 | 822_AB_W010 |
| 8220A-5180 |  | Pat Heung VB4 - Engineer Review & Comment Design DDS (N/A) |  | 24d | 2010-03-10 A | 2010-03-10 A | 8220A-5170 | 100% | 2013-09-10 | 2013-10-09 |  | C822 | B50 | 02 | 0201 | GD01 | T88 | 822 | AA | 2230 | C010 | ST2 | 822_AB_W010 |
| 8220A-5200 |  | Pat Heung VB4 -Revise,ICE & Resubmit Design, DDS (N/A) |  | 12d | 2010-03-10 A | 2010-03-10 A | 8220A-5180 | 100% | 2013-10-10 | 2013-10-24 |  | C822 | B50 | 02 | 0201 | GD01 | T88 | 822 | AA | 2230 | C010 | ST2 | 822_AB_W010 |
| 8220A-5210 |  | Pat Heung VB4 - Engineer Review & Approve Design DDS (N/A) |  | 24d | 2010-03-10 A | 2010-03-10 A | 8220A-5200 | 100% | 2013-10-25 | 2013-11-21 |  | C822 | B50 | 02 | 0201 | GD01 | T88 | 822 | AA | 2230 | C010 | ST2 | 822_AB_W010 |
|  | 3 | **Design Stage 3 : Issue for Construction** |  |  | 2010-03-10 | 2010-03-10 |  |  |  |  |  |  |  |  |  |  |  |  |  |  |  |  |  |
| 8220A-7790 |  | Pat Heung VB4 - Prepare Working Docs and Drawings (N/A) |  | 24d | 2010-03-10 A | 2010-03-10 A | 8220A-5210 | 100% | 2013-11-22 | 2013-12-19 |  | C822 | B50 | 02 | 0201 | GD01 | T88 | 822 | AA |  | C010 | ST3 | 822_AB_W010 |
| 8220A-7800 |  | Pat Heung VB4 - Issue Working Docs and Drawings (N/A) |  | 6d | 2010-03-10 A | 2010-03-10 A | 8220A-7790 | 100% | 2013-12-20 | 2013-12-27 |  | C822 | B50 | 02 | 0201 | GD01 | T88 | 822 | AA |  | C010 | ST3 | 822_AB_W010 |
| 8220A-7810 |  | Pat Heung VB4 - Package Issued (N/A) | milestone | 0d | 2010-03-10 A | 2010-03-10 A | 8220A-7800 FF | 100% | 2013-12-27 | 2013-12-27 |  | C822 | B50 | 02 | 0201 | GD01 | T88 | 822 | AA |  | C010 | ST3 | 822_AB_W010 |
|  | 5 | **ABWF Works - Pat Heung VA and VAA Adirs** |  |  | 2010-03-10 | 2010-03-10 |  |  |  |  |  |  |  |  |  |  |  |  |  |  |  |  |  |
|  | 4 | **Design Stage 1 : Approval in Principal** |  |  |  |  |  |  |  |  |  |  |  |  |  |  |  |  |  |  |  |  |  |
|  | 2 | **Design Stage 2 : Detailed Design Submission** |  |  | 2010-03-10 | 2010-03-10 |  |  |  |  |  |  |  |  |  |  |  |  |  |  |  |  |  |
| 8220A-5230 |  | PHVAA & PHVA - Prepare, ICE & Submit DDS (N/A) |  | 12d | 2010-03-10 A | 2010-03-10 A |  | 100% | 2013-06-01 | 2013-06-15 | start on or after 2012-07-01 | C822 | B50 | 02 | 0201 | GD01 | T89 | 822 | AA | 2270 | C010 | ST1 | 822_AB_W010 |
| 8220A-5240 |  | PHVAA & PHVA - Engineer Review & Comment DDS (N/A) |  | 24d | 2010-03-10 A | 2010-03-10 A | 8220A-5230 | 100% | 2013-06-17 | 2013-07-15 |  | C822 | B50 | 02 | 0201 | GD01 | T89 | 822 | AA | 2270 | C010 | ST1 | 822_AB_W010 |
| 8220A-5260 |  | PHVAA & PHVA - Revise, ICE & Resubmit DDS (N/A) |  | 12d | 2010-03-10 A | 2010-03-10 A | 8220A-5240 | 100% | 2013-07-16 | 2013-07-29 |  | C822 | B50 | 02 | 0201 | GD01 | T89 | 822 | AA | 2270 | C010 | ST1 | 822_AB_W010 |
| 8220A-5270 |  | PHVAA & PHVA - Engineer Review & Approve DDS (N/A) |  | 24d | 2010-03-10 A | 2010-03-10 A | 8220A-5260 | 100% | 2013-07-30 | 2013-08-26 |  | C822 | B50 | 02 | 0201 | GD01 | T89 | 822 | AA | 2270 | C010 | ST1 | 822_AB_W010 |
| 8220A-5290 |  | PHVAA & PHVA - Prepare, ICE & Submit DDA (N/A) |  | 12d | 2010-03-10 A | 2010-03-10 A | 8220A-5270 | 100% | 2013-08-27 | 2013-09-09 |  | C822 | B50 | 02 | 0201 | GD01 | T89 | 822 | AA | 2270 | C010 | ST2 | 822_AB_W010 |
| 8220A-5300 |  | PHVAA & PHVA - Engineer Review & Comment DDA (N/A) |  | 24d | 2010-03-10 A | 2010-03-10 A | 8220A-5290 | 100% | 2013-09-10 | 2013-10-09 |  | C822 | B50 | 02 | 0201 | GD01 | T89 | 822 | AA | 2270 | C010 | ST2 | 822_AB_W010 |
| 8220A-5320 |  | PHVAA & PHVA - Revise, ICE & Resubmit (N/A) |  | 12d | 2010-03-10 A | 2010-03-10 A | 8220A-5300 | 100% | 2013-10-10 | 2013-10-24 |  | C822 | B50 | 02 | 0201 | GD01 | T89 | 822 | AA | 2270 | C010 | ST2 | 822_AB_W010 |
| 8220A-5330 |  | PHVAA & PHVA - Engineer Review & Approve DDA (N/A) |  | 24d | 2010-03-10 A | 2010-03-10 A | 8220A-5320 | 100% | 2013-10-25 | 2013-11-21 |  | C822 | B50 | 02 | 0201 | GD01 | T89 | 822 | AA | 2270 | C010 | ST2 | 822_AB_W010 |
|  | 3 | **Design Stage 3 : Issue for Construction** |  |  | 2010-03-10 | 2010-03-10 |  |  |  |  |  |  |  |  |  |  |  |  |  |  |  |  |  |
| 8220A-7820 |  | PHVAA & PHVA - Prepare Working Docs and Drwgs (N/A) |  | 24d | 2010-03-10 A | 2010-03-10 A | 8220A-5330 | 100% | 2013-11-22 | 2013-12-19 |  | C822 | B50 | 02 | 0201 | GD01 | T89 | 822 | AA |  | C010 | ST3 | 822_AB_W010 |
| 8220A-7830 |  | PHVAA & PHVA - Issue Working Docs and Drawings (N/A) |  | 6d | 2010-03-10 A | 2010-03-10 A | 8220A-7820 | 100% | 2013-12-20 | 2013-12-27 |  | C822 | B50 | 02 | 0201 | GD01 | T89 | 822 | AA |  | C010 | ST3 | 822_AB_W010 |
| 8220A-7840 |  | PHVAA & PHVA - Package Issued (N/A) | milestone | 0d | 2010-03-10 A | 2010-03-10 A | 8220A-7830 FF | 100% | 2013-12-27 | 2013-12-27 |  | C822 | B50 | 02 | 0201 | GD01 | T89 | 822 | AA |  | C010 | ST3 | 822_AB_W010 |

| ID | WBS | Activity | Type | Duration | Start | Finish | Predecessors | Complete | Planned start | Planned finish | Constraint | L1 : Project | L2 : Phase | L3 : Area | L4 : Sub-Area | L5 : Element | L6 : Sub-Element | M1: Contracts | M2 : Cost Centre | M4 : Location | M6 : Areas/Rooms | L7 : System | 822_AB_W010 | M5 :Sub-Location |
| --- | --- | --- | --- | --- | --- | --- | --- | --- | --- | --- | --- | --- | --- | --- | --- | --- | --- | --- | --- | --- | --- | --- | --- | --- |
|  | 6 | **Green Roof Works - Pat Heung VB4** |  |  | 2010-03-10 | 2010-03-10 |  |  |  |  |  |  |  |  |  |  |  |  |  |  |  |  |  |  |
|  | 4 | **Design Stage 1 : Approval in Principal** |  |  |  |  |  |  |  |  |  |  |  |  |  |  |  |  |  |  |  |  |  |  |
|  | 2 | **Design Stage 2 : Detailed Design Submission** |  |  | 2010-03-10 | 2010-03-10 |  |  |  |  |  |  |  |  |  |  |  |  |  |  |  |  |  |  |
| 8220A-7925 |  | VB4 GreenRoof - Prepare, ICE & Submit Design, DDS (N/A) |  | 12d | 2010-03-10 A | 2010-03-10 A |  | 100% | 2013-02-16 | 2013-03-02 | as late as possible | C822 | B50 | 02 | 0201 | GD01 | T90 | 822 | AA | 2230 | C010 | ST2 | 822_AB_W010 |  |
| 8220A-7945 |  | VB4 GreenRoof - Revise, ICE & Resubmit Design, DDS (N/A) |  | 12d | 2010-03-10 A | 2010-03-10 A | 8220A-7935 | 100% | 2013-04-03 | 2013-04-18 | as late as possible | C822 | B50 | 02 | 0201 | GD01 | T90 | 822 | AA | 2230 | C010 | ST2 | 822_AB_W010 |  |
| 8220A-7955 |  | VB4 GreenRoof - Engineer Review & Approve Design DDS (N/A) |  | 24d | 2010-03-10 A | 2010-03-10 A | 8220A-7945 | 100% | 2013-04-18 | 2013-05-17 | as late as possible | C822 | B50 | 02 | 0201 | GD01 | T90 | 822 | AA | 2230 | C010 | ST2 | 822_AB_W010 |  |
| 8220A-7935 |  | VB4 GreenRoof - Engineer Review & Comment Design DDS (N/A) |  | 1d | 2010-03-10 A | 2010-03-10 A | 8220A-7925 | 100% |  |  | as late as possible | C822 | B50 | 02 | 0201 | GD01 | T90 | 822 | AA | 2230 | C010 | ST2 | 822_AB_W010 |  |
|  | 3 | **Design Stage 3 : Issue for Construction** |  |  | 2010-03-10 | 2010-03-10 |  |  |  |  |  |  |  |  |  |  |  |  |  |  |  |  |  |  |
| 8220A-7965 |  | VB4 Green Roof - Prepare Working Docs and Drawings (N/A) |  | 24d | 2010-03-10 A | 2010-03-10 A | 8220A-7955 | 100% | 2013-05-18 | 2013-06-17 | as late as possible | C822 | B50 | 02 | 0201 | GD01 | T90 | 822 | AA |  | C010 | ST3 | 822_AB_W010 |  |
| 8220A-7975 |  | VB4 Green Roof - Issue Working Docs and Drawings (N/A) |  | 6d | 2010-03-10 A | 2010-03-10 A | 8220A-7965 | 100% | 2013-06-17 | 2013-06-24 | as late as possible | C822 | B50 | 02 | 0201 | GD01 | T90 | 822 | AA |  | C010 | ST3 | 822_AB_W010 |  |
| 8220A-7985 |  | VB4 Green Roof - Package Issued (N/A) | milestone | 0d | 2010-03-10 A | 2010-03-10 A | 8220A-7975 FF | 100% | 2013-06-24 | 2013-06-24 | as late as possible | C822 | B50 | 02 | 0201 | GD01 | T90 | 822 | AA |  | C010 | ST3 | 822_AB_W010 |  |
|  | 3 | **Main Tunnels - South Interface** |  |  | 2010-11-05 | 2011-05-27 |  |  |  |  |  |  |  |  |  |  |  |  |  |  |  |  |  |  |
|  | 1 | **14 Interface with C821** |  |  | 2010-11-05 | 2011-05-27 |  |  |  |  |  |  |  |  |  |  |  |  |  |  |  |  |  |  |
|  | 4 | **Design Stage 1 : Approval in Principal** |  |  | 2010-11-05 | 2010-11-26 |  |  |  |  |  |  |  |  |  |  |  |  |  |  |  |  |  |  |
| 8220A-5990 |  | IF821 - Engineer Review & Comment AIP |  | 24d | 2010-11-05 A | 2010-11-26 A |  | 100% | 2010-11-05 | 2010-12-02 |  | C822 | B50 | 06 | 0601 | P1 | P12 | 822 | AA | 2210 | C010 | ST1 | 822_AB_W010 | TUNM |
| 8220A-6000 |  | IF821 - BD Consultation |  | 24d | 2010-11-05 A | 2010-11-26 A | 8220A-5990 SS | 100% | 2010-11-05 | 2010-12-02 |  | C822 | B50 | 06 | 0601 | P1 | P12 | 822 | AA | 2210 | C010 | ST1 | 822_AB_W010 | TUNM |
| 8220A-6010 |  | IF821 - Revise, ICE & Resubmit AIP |  | 12d | 2010-11-05 A | 2010-11-26 A | 8220A-5990, 8220A-6000 | 100% | 2010-11-05 | 2010-11-18 |  | C822 | B50 | 06 | 0601 | P1 | P12 | 822 | AA | 2210 | C010 | ST1 | 822_AB_W010 | TUNM |
| 8220A-6020 |  | IF821 - Engineer Review & Approve AIP |  | 24d | 2010-11-05 A | 2010-11-26 A | 8220A-6010 | 100% | 2010-11-05 | 2010-12-02 |  | C822 | B50 | 06 | 0601 | P1 | P12 | 822 | AA | 2210 | C010 | ST1 | 822_AB_W010 | TUNM |
| 8220A-6030 |  | IF821 - BD Consultation |  | 24d | 2010-11-05 A | 2010-11-26 A | 8220A-6010 | 100% | 2010-11-05 | 2010-12-02 |  | C822 | B50 | 06 | 0601 | P1 | P12 | 822 | AA | 2210 | C010 | ST1 | 822_AB_W010 | TUNM |
|  | 2 | **Design Stage 2 : Detailed Design Submission** |  |  | 2011-02-01 | 2011-05-17 |  |  |  |  |  |  |  |  |  |  |  |  |  |  |  |  |  |  |
| 8220A-6040 |  | IF821 - Prepare, ICE & Submit DDA |  | 12d | 2011-02-01 A | 2011-02-14 A | 8220A-6010, 8220A-6020, 8220A-6030 | 100% | 2011-02-01 | 2011-02-17 |  | C822 | B50 | 06 | 0601 | P1 | P12 | 822 | AA | 2210 | C010 | ST2 | 822_AB_W010 | TUNM |
| 8220A-6050 |  | IF821 - Engineer Review & Comment DDA |  | 24d | 2011-02-14 A | 2011-04-06 A | 8220A-6040 | 100% | 2011-02-14 | 2011-03-12 |  | C822 | B50 | 06 | 0601 | P1 | P12 | 822 | AA | 2210 | C010 | ST2 | 822_AB_W010 | TUNM |
| 8220A-6060 |  | IF821 - BD Consultation |  | 24d | 2011-02-14 A | 2011-04-06 A | 8220A-6040 | 100% | 2011-02-14 | 2011-03-12 |  | C822 | B50 | 06 | 0601 | P1 | P12 | 822 | AA | 2210 | C010 | ST2 | 822_AB_W010 | TUNM |
| 8220A-6070 |  | IF821 - Revise, ICE & Resubmit DDA |  | 12d | 2011-04-06 A | 2011-04-19 A | 8220A-6050, 8220A-6060 | 100% |  |  |  | C822 | B50 | 06 | 0601 | P1 | P12 | 822 | AA | 2210 | C010 | ST2 | 822_AB_W010 | TUNM |
| 8220A-6080 |  | IF821 - Engineer Review & Approve DDA |  | 24d | 2011-04-20 A | 2011-05-17 A | 8220A-6070 | 100% | 2011-04-20 | 2011-05-23 |  | C822 | B50 | 06 | 0601 | P1 | P12 | 822 | AA | 2210 | C010 | ST2 | 822_AB_W010 | TUNM |
| 8220A-6090 |  | IF821 - BD Consultation |  | 24d | 2011-04-20 A | 2011-05-17 A | 8220A-6070 | 100% | 2011-04-20 | 2011-05-23 |  | C822 | B50 | 06 | 0601 | P1 | P12 | 822 | AA | 2210 | C010 | ST2 | 822_AB_W010 | TUNM |

| ID | WBS | Activity | Type | Duration | Start | Finish | Predecessors | Complete | Planned start | Planned finish | L1 : Project | L2 : Phase | L3 : Area | L4 : Sub-Area | L5 : Element | L6 : Sub-Element | M1: Contracts | M2 : Cost Centre | M6 : Areas/Rooms | L7 : System | 822_AB_W010 | M4 : Location | M5 :Sub-Location |
| --- | --- | --- | --- | --- | --- | --- | --- | --- | --- | --- | --- | --- | --- | --- | --- | --- | --- | --- | --- | --- | --- | --- | --- |
|  | 3 | **Design Stage 3 : Issue for Construction** |  |  | 2011-04-20 | 2011-05-27 |  |  |  |  |  |  |  |  |  |  |  |  |  |  |  |  |  |
| 8220A-7670 |  | Prepare Working Docs and Drwgs |  | 24d | 2011-04-20 A | 2011-05-17 A | 8220A-6080, 8220A-6090 | 100% | 2011-04-20 | 2011-05-23 | C822 | B50 | 06 | 0601 | P1 | P12 | 822 | AA | C010 | ST3 | 822_AB_W010 |  |  |
| 8220A-7680 |  | Issue Working Docs and Drawings |  | 6d | 2011-05-20 A | 2011-05-26 A | 8220A-7670 | 100% |  |  | C822 | B50 | 06 | 0601 | P1 | P12 | 822 | AA | C010 | ST3 | 822_AB_W010 |  |  |
| 8220A-7690 |  | Package Issued | milestone | 0d | 2011-05-27 A | 2011-05-27 A | 8220A-7680 FF | 100% |  |  | C822 | B50 | 06 | 0601 | P1 | P12 | 822 | AA | C010 | ST3 | 822_AB_W010 |  |  |
|  | 5 | **Main Tunnels - North Interface** |  |  | 2010-09-11 | 2012-09-29 |  |  |  |  |  |  |  |  |  |  |  |  |  |  |  |  |  |
|  | 4 | **P1 Tunnel Lining** |  |  | 2010-09-11 | 2012-09-29 |  |  |  |  |  |  |  |  |  |  |  |  |  |  |  |  |  |
|  | 1 | **19 Interface with 823A (Undrained Mined Tunnel)** |  |  | 2010-09-11 | 2012-09-29 |  |  |  |  |  |  |  |  |  |  |  |  |  |  |  |  |  |
|  | 4 | **Design Stage 1 : Approval in Principal** |  |  | 2010-09-11 | 2010-11-26 |  |  |  |  |  |  |  |  |  |  |  |  |  |  |  |  |  |
| 8220A-5750 |  | IF823A - Prepare, ICE & Submit AIP |  | 12d | 2010-09-11 A | 2010-11-05 A |  | 100% | 2010-09-11 | 2010-09-25 | C822 | B50 | 05 | 0501 | P1 | P11 | 822 | AA | C010 | ST1 | 822_AB_W010 | 2210 | TUNM |
| 8220A-5760 |  | IF823A - Engineer Review & Comment AIP |  | 24d | 2010-11-05 A | 2010-11-26 A | 8220A-5750 | 100% | 2010-11-05 | 2010-12-02 | C822 | B50 | 05 | 0501 | P1 | P11 | 822 | AA | C010 | ST1 | 822_AB_W010 | 2210 | TUNM |
| 8220A-5770 |  | IF823A - BD Consultation |  | 24d | 2010-11-05 A | 2010-11-26 A | 8220A-5750 | 100% | 2010-11-05 | 2010-12-02 | C822 | B50 | 05 | 0501 | P1 | P11 | 822 | AA | C010 | ST1 | 822_AB_W010 | 2210 | TUNM |
| 8220A-5780 |  | IF823A - Revise, ICE & Resubmit AIP |  | 12d | 2010-11-05 A | 2010-11-26 A | 8220A-5760, 8220A-5770 | 100% | 2010-11-05 | 2010-11-18 | C822 | B50 | 05 | 0501 | P1 | P11 | 822 | AA | C010 | ST1 | 822_AB_W010 | 2210 | TUNM |
| 8220A-5790 |  | IF823A - Engineer Review & Approve AIP |  | 24d | 2010-11-05 A | 2010-11-26 A | 8220A-5780 | 100% | 2010-11-05 | 2010-12-02 | C822 | B50 | 05 | 0501 | P1 | P11 | 822 | AA | C010 | ST1 | 822_AB_W010 | 2210 | TUNM |
| 8220A-5800 |  | IF823A - BD Consultation |  | 24d | 2010-11-05 A | 2010-11-26 A | 8220A-5780 | 100% | 2010-11-05 | 2010-12-02 | C822 | B50 | 05 | 0501 | P1 | P11 | 822 | AA | C010 | ST1 | 822_AB_W010 | 2210 | TUNM |
|  | 2 | **Design Stage 2 : Detailed Design Submission** |  |  | 2011-07-05 | 2012-09-29 |  |  |  |  |  |  |  |  |  |  |  |  |  |  |  |  |  |
| 8220A-5810 |  | IF823A - Prepare, ICE & Submit DDA |  | 12d | 2011-07-05 A | 2011-08-06 A | 8220A-5780, 8220A-5790, 8220A-5800 | 100% | 2011-07-05 | 2011-07-18 | C822 | B50 | 05 | 0501 | P1 | P11 | 822 | AA | C010 | ST2 | 822_AB_W010 | 2210 | TUNM |
| 8220A-5820 |  | IF823A - Engineer Review & Comment DDA |  | 24d | 2011-08-07 A | 2012-05-07 A | 8220A-5810 | 100% | 2011-08-08 | 2011-09-03 | C822 | B50 | 05 | 0501 | P1 | P11 | 822 | AA | C010 | ST2 | 822_AB_W010 | 2210 | TUNM |
| 8220A-5830 |  | IF823A - BD Consultation |  | 24d | 2012-05-08 A | 2012-06-13 A | 8220A-5810 | 100% | 2012-10-03 | 2012-10-31 | C822 | B50 | 05 | 0501 | P1 | P11 | 822 | AA | C010 | ST2 | 822_AB_W010 | 2210 | TUNM |
| 8220A-5840 |  | IF823A - Revise, ICE & Resubmit DDA |  | 12d | 2012-06-14 A | 2012-06-27 A | 8220A-5820, 8220A-5830 | 100% | 2012-10-26 | 2012-11-09 | C822 | B50 | 05 | 0501 | P1 | P11 | 822 | AA | C010 | ST2 | 822_AB_W010 | 2210 | TUNM |
| 8220A-5850 |  | IF823A - Engineer Review & Approve DDA |  | 24d | 2012-06-28 A | 2012-08-02 A | 8220A-5840 | 100% | 2012-11-09 | 2012-12-07 | C822 | B50 | 05 | 0501 | P1 | P11 | 822 | AA | C010 | ST2 | 822_AB_W010 | 2210 | TUNM |
| 8220A-5860 |  | IF823A - BD Consultation |  | 24d | 2012-08-03 A | 2012-09-29 A | 8220A-5840 | 100% | 2012-11-09 | 2012-12-07 | C822 | B50 | 05 | 0501 | P1 | P11 | 822 | AA | C010 | ST2 | 822_AB_W010 | 2210 | TUNM |
|  | 3 | **Design Stage 3 : Issue for Construction** |  |  | 2011-08-20 | 2011-09-20 |  |  |  |  |  |  |  |  |  |  |  |  |  |  |  |  |  |
| 8220A-7230 |  | Prepare Working Docs and Drwgs |  | 24d | 2011-08-20 A | 2011-09-10 A | 8220A-5850, 8220A-5860 | 100% | 2011-09-20 | 2011-10-19 | C822 | B50 | 05 | 0501 | P1 | P11 | 822 | AA | C010 | ST3 | 822_AB_W010 |  |  |
| 8220A-7240 |  | Issue Working Docs and Drawings |  | 6d | 2011-09-11 A | 2011-09-20 A | 8220A-7230 | 100% | 2012-12-12 | 2012-12-19 | C822 | B50 | 05 | 0501 | P1 | P11 | 822 | AA | C010 | ST3 | 822_AB_W010 |  |  |
| 8220A-7250 |  | Package Issued | milestone | 0d | 2011-09-20 A | 2011-09-20 A | 8220A-7240 FF | 100% | 2012-12-19 | 2012-12-19 | C822 | B50 | 05 | 0501 | P1 | P11 | 822 | AA | C010 | ST3 | 822_AB_W010 |  |  |

| ID | WBS | Activity | Type | Duration | Start | Finish | Predecessors | Complete | Planned start | Planned finish | L1 : Project | L2 : Phase | L3 : Area | L4 : Sub-Area | L5 : Element | L6 : Sub-Element | M1: Contracts | M2 : Cost Centre | M6 : Areas/Rooms | L7 : System | 822_AB_W010 | M4 : Location | M5 :Sub-Location |
| --- | --- | --- | --- | --- | --- | --- | --- | --- | --- | --- | --- | --- | --- | --- | --- | --- | --- | --- | --- | --- | --- | --- | --- |
|  | 2 | **25 Internal Structure for Bifircation Tunnel** |  |  | 2010-09-24 | 2012-08-23 |  |  |  |  |  |  |  |  |  |  |  |  |  |  |  |  |  |
|  | 4 | **Design Stage 1 : Approval in Principal** |  |  | 2010-09-24 | 2010-11-26 |  |  |  |  |  |  |  |  |  |  |  |  |  |  |  |  |  |
| 8220A-2715 |  | Bifir - Prepare, ICE & Submit AIP |  | 12d | 2010-09-24 A | 2010-11-04 A |  | 100% | 2010-09-24 | 2010-10-08 | C822 | B50 | 05 | 0501 | P2 | P17 | 822 | AA | C010 | ST1 | 822_AB_W010 |  |  |
| 8220A-2725 |  | Bifir - Engineer Review & Comment AIP |  | 24d | 2010-11-05 A | 2010-11-26 A | 8220A-2715 | 100% | 2010-11-05 | 2010-12-02 | C822 | B50 | 05 | 0501 | P2 | P17 | 822 | AA | C010 | ST1 | 822_AB_W010 |  |  |
| 8220A-2735 |  | Bifir - BD Consultation |  | 24d | 2010-11-05 A | 2010-11-26 A | 8220A-2715 | 100% | 2010-11-05 | 2010-12-02 | C822 | B50 | 05 | 0501 | P2 | P17 | 822 | AA | C010 | ST1 | 822_AB_W010 |  |  |
| 8220A-7275 |  | Bifir - Engineer Review & Comment AIP |  | 24d | 2010-11-05 A | 2010-11-26 A | 8220A-7265 | 100% | 2010-11-05 | 2010-12-02 | C822 | B50 | 05 | 0501 | P1 | P16 | 822 | AA | C010 | ST1 | 822_AB_W010 | 2210 | TUNM |
| 8220A-7285 |  | Bifir - BD Consultation |  | 24d | 2010-11-05 A | 2010-11-26 A | 8220A-7265 | 100% | 2010-11-05 | 2010-12-02 | C822 | B50 | 05 | 0501 | P1 | P16 | 822 | AA | C010 | ST1 | 822_AB_W010 | 2210 | TUNM |
| 8220A-7295 |  | Bifir - Revise, ICE & Resubmit AIP |  | 12d | 2010-11-12 A | 2010-11-26 A | 8220A-7275, 8220A-7285 | 100% | 2010-11-12 | 2010-11-25 | C822 | B50 | 05 | 0501 | P1 | P16 | 822 | AA | C010 | ST1 | 822_AB_W010 | 2210 | TUNM |
|  | 2 | **Design Stage 2 : Detailed Design Submission** |  |  | 2011-04-12 | 2012-08-04 |  |  |  |  |  |  |  |  |  |  |  |  |  |  |  |  |  |
| 8220A-7325 |  | Bifir - Prepare, ICE & Submit DDA |  | 12d | 2011-04-12 A | 2011-04-28 A | 8220A-7295, 8220A-7305, 8220A-7315 | 100% | 2012-08-01 | 2012-08-14 | C822 | B50 | 05 | 0501 | P1 | P16 | 822 | AA | C010 | ST2 | 822_AB_W010 | 2210 | TUNM |
| 8220A-7335 |  | Bifir - Engineer Review & Comment DDA |  | 24d | 2011-04-28 A | 2012-05-30 A | 8220A-7325 | 100% | 2012-08-15 | 2012-09-11 | C822 | B50 | 05 | 0501 | P1 | P16 | 822 | AA | C010 | ST2 | 822_AB_W010 | 2210 | TUNM |
| 8220A-7345 |  | Bifir - BD Consultation |  | 24d | 2011-04-28 A | 2012-05-31 A | 8220A-7325 | 100% | 2012-08-15 | 2012-09-11 | C822 | B50 | 05 | 0501 | P1 | P16 | 822 | AA | C010 | ST2 | 822_AB_W010 | 2210 | TUNM |
| 8220A-7365 |  | Bifir - Engineer Review & Approve DDA |  | 24d | 2012-06-02 A | 2012-07-14 A | 8220A-7355 | 100% | 2013-06-20 | 2013-07-19 | C822 | B50 | 05 | 0501 | P1 | P16 | 822 | AA | C010 | ST2 | 822_AB_W010 | 2210 | TUNM |
| 8220A-7355 |  | Bifir - Revise, ICE & Resubmit DDA |  | 12d | 2012-07-16 A | 2012-08-04 A | 8220A-7335, 8220A-7345 | 100% | 2013-06-05 | 2013-06-20 | C822 | B50 | 05 | 0501 | P1 | P16 | 822 | AA | C010 | ST2 | 822_AB_W010 | 2210 | TUNM |
| 8220A-7375 |  | Bifir - BD Consultation |  | 24d | 2012-07-16 A | 2012-08-03 A | 8220A-7355 | 100% | 2013-06-20 | 2013-07-19 | C822 | B50 | 05 | 0501 | P1 | P16 | 822 | AA | C010 | ST2 | 822_AB_W010 | 2210 | TUNM |
|  | 3 | **Design Stage 3 : Issue for Construction** |  |  | 2012-07-03 | 2012-08-23 |  |  |  |  |  |  |  |  |  |  |  |  |  |  |  |  |  |
| 8220A-2835 |  | Bifir - Prepare Working Docs and Drwgs |  | 24d | 2012-07-03 A | 2012-08-16 A | 8220A-2815, 8220A-2825 | 100% | 2012-10-03 | 2012-10-31 | C822 | B50 | 05 | 0501 | P2 | P17 | 822 | AA | C010 | ST3 | 822_AB_W010 |  |  |
| 8220A-2845 |  | Bifir - Issue Working Docs and Drawings |  | 5.33d | 2012-08-17 A | 2012-08-23 A | 8220A-2835 | 100% | 2012-11-01 | 2012-11-07 | C822 | B50 | 05 | 0501 | P2 | P17 | 822 | AA | C010 | ST3 | 822_AB_W010 |  |  |
| 8220A-2855 |  | Bifir - Package Issued | milestone | 0d | 2012-08-23 A | 2012-08-23 A | 8220A-2845 FF | 100% | 2012-11-07 | 2012-11-07 | C822 | B50 | 05 | 0501 | P2 | P17 | 822 | AA | C010 | ST3 | 822_AB_W010 |  |  |
|  | 5 | **P2 Tunnel Internal Structures** |  |  | 2010-10-20 | 2012-06-11 |  |  |  |  |  |  |  |  |  |  |  |  |  |  |  |  |  |
|  | 3 | **20 Permanent Lining for Bifircation Tunnel** |  |  | 2010-10-20 | 2012-06-11 |  |  |  |  |  |  |  |  |  |  |  |  |  |  |  |  |  |
|  | 4 | **Design Stage 1 : Approval in Principal** |  |  | 2010-10-20 | 2010-11-26 |  |  |  |  |  |  |  |  |  |  |  |  |  |  |  |  |  |
| 8220A-7265 |  | Bifir - Prepare, ICE & Submit AIP |  | 12d | 2010-10-20 A | 2010-11-05 A |  | 100% | 2010-10-20 | 2010-11-02 | C822 | B50 | 05 | 0501 | P1 | P16 | 822 | AA | C010 | ST1 | 822_AB_W010 | 2210 | TUNM |
| 8220A-2745 |  | Bifir - Revise, ICE & Resubmit AIP |  | 12d | 2010-11-05 A | 2010-11-26 A | 8220A-2725, 8220A-2735 | 100% | 2010-11-05 | 2010-11-18 | C822 | B50 | 05 | 0501 | P2 | P17 | 822 | AA | C010 | ST1 | 822_AB_W010 |  |  |
| 8220A-2755 |  | Bifir - Engineer Review & Approve AIP |  | 24d | 2010-11-05 A | 2010-11-26 A | 8220A-2745 | 100% | 2010-11-05 | 2010-12-02 | C822 | B50 | 05 | 0501 | P2 | P17 | 822 | AA | C010 | ST1 | 822_AB_W010 |  |  |
| 8220A-2765 |  | Bifir - BD Consultation |  | 24d | 2010-11-05 A | 2010-11-26 A | 8220A-2745 | 100% | 2010-11-05 | 2010-12-02 | C822 | B50 | 05 | 0501 | P2 | P17 | 822 | AA | C010 | ST1 | 822_AB_W010 |  |  |
| 8220A-7305 |  | Bifir - Engineer Review & Approve AIP |  | 24d | 2010-11-05 A | 2010-11-26 A | 8220A-7295 | 100% | 2010-11-05 | 2010-12-02 | C822 | B50 | 05 | 0501 | P1 | P16 | 822 | AA | C010 | ST1 | 822_AB_W010 | 2210 | TUNM |
| 8220A-7315 |  | Bifir - BD Consultation |  | 24d | 2010-11-05 A | 2010-11-26 A | 8220A-7295 | 100% | 2010-11-05 | 2010-12-02 | C822 | B50 | 05 | 0501 | P1 | P16 | 822 | AA | C010 | ST1 | 822_AB_W010 | 2210 | TUNM |

| ID | WBS | Activity | Type | Duration | Start | Finish | Predecessors | Complete | Planned start | Planned finish | Constraint | L1 : Project | L2 : Phase | L3 : Area | L4 : Sub-Area | L5 : Element | L6 : Sub-Element | M1: Contracts | M2 : Cost Centre | M6 : Areas/Rooms | L7 : System | 822_AB_W010 | M3 : Works Area | M4 : Location |
| --- | --- | --- | --- | --- | --- | --- | --- | --- | --- | --- | --- | --- | --- | --- | --- | --- | --- | --- | --- | --- | --- | --- | --- | --- |
|  | 2 | **Design Stage 2 : Detailed Design Submission** |  |  | 2011-03-30 | 2012-06-11 |  |  |  |  |  |  |  |  |  |  |  |  |  |  |  |  |  |  |
| 8220A-2775 |  | Bifir - Prepare, ICE & Submit DDA |  | 12d | 2011-03-30 A | 2011-04-28 A | 8220A-2745, 8220A-2755, 8220A-2765 | 100% | 2011-03-30 | 2011-04-13 |  | C822 | B50 | 05 | 0501 | P2 | P17 | 822 | AA | C010 | ST2 | 822_AB_W010 |  |  |
| 8220A-2795 |  | Bifir - BD Consultation |  | 24d | 2011-04-29 A | 2011-05-28 A | 8220A-2775 | 100% | 2012-08-01 | 2012-08-28 |  | C822 | B50 | 05 | 0501 | P2 | P17 | 822 | AA | C010 | ST2 | 822_AB_W010 |  |  |
| 8220A-2785 |  | Bifir - Engineer Review & Comment DDA |  | 24d | 2011-04-29 A | 2011-05-28 A | 8220A-2775 | 100% |  |  |  | C822 | B50 | 05 | 0501 | P2 | P17 | 822 | AA | C010 | ST2 | 822_AB_W010 |  |  |
| 8220A-2805 |  | Bifir - Revise, ICE & Resubmit DDA |  | 12d | 2011-05-28 A | 2011-06-07 A | 8220A-2785, 8220A-2795 | 100% | 2012-08-29 | 2012-09-11 |  | C822 | B50 | 05 | 0501 | P2 | P17 | 822 | AA | C010 | ST2 | 822_AB_W010 |  |  |
| 8220A-2815 |  | Bifir - Engineer Review & Approve DDA |  | 24d | 2011-06-08 A | 2011-06-24 A | 8220A-2805 | 100% | 2012-09-12 | 2012-10-11 |  | C822 | B50 | 05 | 0501 | P2 | P17 | 822 | AA | C010 | ST2 | 822_AB_W010 |  |  |
| 8220A-2825 |  | Bifir - BD Consultation |  | 24d | 2012-05-12 A | 2012-06-11 A | 8220A-2805 | 100% | 2012-09-12 | 2012-10-11 |  | C822 | B50 | 05 | 0501 | P2 | P17 | 822 | AA | C010 | ST2 | 822_AB_W010 |  |  |
|  | 3 | **Design Stage 3 : Issue for Construction** |  |  | 2011-07-01 | 2011-08-28 |  |  |  |  |  |  |  |  |  |  |  |  |  |  |  |  |  |  |
| 8220A-7385 |  | Bifir - Prepare Working Docs and Drwgs |  | 24d | 2011-07-01 A | 2011-08-28 A | 8220A-7365, 8220A-7375 | 100% | 2012-08-01 | 2012-08-28 |  | C822 | B50 | 05 | 0501 | P1 | P16 | 822 | AA | C010 | ST3 | 822_AB_W010 |  |  |
| 8220A-7395 |  | Bifir - Issue Working Docs and Drawings |  | 6d | 2011-08-16 A | 2011-08-23 A | 8220A-7385 | 100% | 2012-08-29 | 2012-09-04 |  | C822 | B50 | 05 | 0501 | P1 | P16 | 822 | AA | C010 | ST3 | 822_AB_W010 |  |  |
| 8220A-7405 |  | Bifir - Package Issued | milestone | 0d | 2011-08-23 A | 2011-08-23 A | 8220A-7395 FF | 100% | 2012-09-04 | 2012-09-04 |  | C822 | B50 | 05 | 0501 | P1 | P16 | 822 | AA | C010 | ST3 | 822_AB_W010 |  |  |
|  | 4 | **Shing Mun** |  |  | 2010-03-10 | 2013-04-02 |  |  |  |  |  |  |  |  |  |  |  |  |  |  |  |  |  |  |
|  | 1 | **Green Roof Works** |  |  | 2010-03-10 | 2010-03-10 |  |  |  |  |  |  |  |  |  |  |  |  |  |  |  |  |  |  |
|  | 2 | **Design Stage 2 : Detailed Design Submission** |  |  | 2010-03-10 | 2010-03-10 |  |  |  |  |  |  |  |  |  |  |  |  |  |  |  |  |  |  |
| 8220A-5525 |  | VB5 Green Roof - Prepare, ICE & |  | 12d | 2010-03-10 A | 2010-03-10 A |  | 100% | 2014-11-08 | 2014-11-21 | as late as possible | C822 | B50 | 03 | 0301 | GD01 | T91 | 822 | AA | C010 | ST2 | 822_AB_W010 | 71 | 2220 |
| 8220A-5535 |  | VB5 Green Roof - Engineer Review |  | 24d | 2010-03-10 A | 2010-03-10 A | 8220A-5525 | 100% | 2014-11-22 | 2014-12-19 | as late as possible | C822 | B50 | 03 | 0301 | GD01 | T91 | 822 | AA | C010 | ST2 | 822_AB_W010 | 71 | 2220 |
| 8220A-5545 |  | VB5 Green Roof - Revise, ICE & R |  | 12d | 2010-03-10 A | 2010-03-10 A | 8220A-5535 | 100% | 2014-12-20 | 2015-01-06 | as late as possible | C822 | B50 | 03 | 0301 | GD01 | T91 | 822 | AA | C010 | ST2 | 822_AB_W010 | 71 | 2220 |
| 8220A-5555 |  | VB5 Green Roof - Engineer Review |  | 24d | 2010-03-10 A | 2010-03-10 A | 8220A-5545 | 100% | 2015-01-07 | 2015-02-03 | as late as possible | C822 | B50 | 03 | 0301 | GD01 | T91 | 822 | AA | C010 | ST2 | 822_AB_W010 | 71 | 2220 |
|  | 3 | **Design Stage 3 : Issue for Construction** |  |  | 2010-03-10 | 2010-03-10 |  |  |  |  |  |  |  |  |  |  |  |  |  |  |  |  |  |  |
| 8220A-5565 |  | VB5 Green Roof - Prepare Working Docs and Drwgs |  | 24d | 2010-03-10 A | 2010-03-10 A | 8220A-5555 | 100% | 2015-02-04 | 2015-03-06 | as late as possible | C822 | B50 | 03 | 0301 | GD01 | T91 | 822 | AA | C010 | ST3 | 822_AB_W010 | 71 |  |
| 8220A-5575 |  | VB5 Green Roof - Issue Working Docs and Drawings |  | 6d | 2010-03-10 A | 2010-03-10 A | 8220A-5565 | 100% | 2015-03-07 | 2015-03-13 | as late as possible | C822 | B50 | 03 | 0301 | GD01 | T91 | 822 | AA | C010 | ST3 | 822_AB_W010 | 71 |  |
| 8220A-5585 |  | VB5 Green Roof - Package Issued | milestone | 0d | 2010-03-10 A | 2010-03-10 A | 8220A-5575 FF | 100% | 2015-03-13 | 2015-03-13 | as late as possible | C822 | B50 | 03 | 0301 | GD01 | T91 | 822 | AA | C010 | ST3 | 822_AB_W010 | 71 |  |
|  | 2 | **16: Perm Lining for EAP & Adit Junction** |  |  | 2010-09-11 | 2012-07-14 |  |  |  |  |  |  |  |  |  |  |  |  |  |  |  |  |  |  |
|  | 1 | **Design Stage 1 : Approval in Principal** |  |  | 2010-09-11 | 2010-11-26 |  |  |  |  |  |  |  |  |  |  |  |  |  |  |  |  |  |  |
| 8220A-0610 |  | Lining - Prepare, ICE & Submit AIP |  | 12d | 2010-09-11 A | 2010-09-24 A |  | 100% | 2010-09-11 | 2010-09-25 |  | C822 | B50 | 03 | 0301 | P1 | P06 | 822 | AA | C010 | ST1 | 822_AB_W010 |  |  |
| 8220A-0620 |  | Lining - Engineer Review & Comment AIP |  | 24d | 2010-09-27 A | 2010-11-05 A | 8220A-0610 | 100% | 2010-09-27 | 2010-10-26 |  | C822 | B50 | 03 | 0301 | P1 | P06 | 822 | AA | C010 | ST1 | 822_AB_W010 |  |  |
| 8220A-0630 |  | Lining - BD Consultation |  | 24d | 2010-09-27 A | 2010-11-05 A | 8220A-0610 | 100% | 2010-09-27 | 2010-10-26 |  | C822 | B50 | 03 | 0301 | P1 | P06 | 822 | AA | C010 | ST1 | 822_AB_W010 |  |  |
| 8220A-0640 |  | Lining - Revise, ICE & Resubmit AIP |  | 12d | 2010-10-23 A | 2010-11-05 A | 8220A-0620, 8220A-0630 | 100% |  |  |  | C822 | B50 | 03 | 0301 | P1 | P06 | 822 | AA | C010 | ST1 | 822_AB_W010 |  |  |
| 8220A-0650 |  | Lining - Engineer Review & Approve AIP |  | 24d | 2010-11-07 A | 2010-11-26 A | 8220A-0640 | 100% | 2010-11-08 | 2010-12-04 |  | C822 | B50 | 03 | 0301 | P1 | P06 | 822 | AA | C010 | ST1 | 822_AB_W010 |  |  |
| 8220A-0660 |  | Lining - BD Consultation |  | 24d | 2010-11-07 A | 2010-11-26 A | 8220A-0640 | 100% | 2010-11-08 | 2010-12-04 |  | C822 | B50 | 03 | 0301 | P1 | P06 | 822 | AA | C010 | ST1 | 822_AB_W010 |  |  |

| ID | WBS | Activity | Type | Duration | Start | Finish | Predecessors | Complete | Planned start | Planned finish | L1 : Project | L2 : Phase | L3 : Area | L4 : Sub-Area | L5 : Element | L6 : Sub-Element | M1: Contracts | M2 : Cost Centre | M6 : Areas/Rooms | L7 : System | 822_AB_W010 |
| --- | --- | --- | --- | --- | --- | --- | --- | --- | --- | --- | --- | --- | --- | --- | --- | --- | --- | --- | --- | --- | --- |
|  | 2 | **Design Stage 2 : Detailed Design Submission** |  |  | 2011-03-04 | 2012-07-14 |  |  |  |  |  |  |  |  |  |  |  |  |  |  |  |
| 8220A-0670 |  | Lining - Prepare, ICE & Submit DDA |  | 12d | 2011-03-04 A | 2012-03-06 A |  | 100% | 2011-03-04 | 2011-03-17 | C822 | B50 | 03 | 0301 | P1 | P06 | 822 | AA | C010 | ST2 | 822_AB_W010 |
| 8220A-0680 |  | Lining - Engineer Review & Comment DDA |  | 24d | 2012-03-06 A | 2012-05-01 A | 8220A-0670 | 100% | 2012-06-05 | 2012-07-04 | C822 | B50 | 03 | 0301 | P1 | P06 | 822 | AA | C010 | ST2 | 822_AB_W010 |
| 8220A-0690 |  | Lining - BD Consultation |  | 24d | 2012-03-06 A | 2012-05-01 A | 8220A-0670 | 100% | 2012-06-05 | 2012-07-04 | C822 | B50 | 03 | 0301 | P1 | P06 | 822 | AA | C010 | ST2 | 822_AB_W010 |
| 8220A-0700 |  | Lining - Revise, ICE & Resubmit DDA |  | 12d | 2012-05-03 A | 2012-05-17 A | 8220A-0680, 8220A-0690 | 100% |  |  | C822 | B50 | 03 | 0301 | P1 | P06 | 822 | AA | C010 | ST2 | 822_AB_W010 |
| 8220A-0710 |  | Lining - Engineer Review & Approve DDA |  | 24d | 2012-05-18 A | 2012-07-14 A | 8220A-0700 | 100% | 2012-05-18 | 2012-06-15 | C822 | B50 | 03 | 0301 | P1 | P06 | 822 | AA | C010 | ST2 | 822_AB_W010 |
| 8220A-0720 |  | Lining - BD Consultation |  | 24d | 2012-05-18 A | 2012-07-14 A | 8220A-0700 | 100% | 2012-05-18 | 2012-06-15 | C822 | B50 | 03 | 0301 | P1 | P06 | 822 | AA | C010 | ST2 | 822_AB_W010 |
|  | 3 | **Design Stage 3 : Issue for Construction** |  |  | 2012-03-16 | 2012-04-23 |  |  |  |  |  |  |  |  |  |  |  |  |  |  |  |
| 8220A-6890 |  | Prepare Working Docs and Drwgs |  | 24d | 2012-03-16 A | 2012-04-21 A | 8220A-0720 | 100% | 2012-03-16 | 2012-04-18 | C822 | B50 | 03 | 0301 | P1 | P06 | 822 | AA | C010 | ST3 | 822_AB_W010 |
| 8220A-6900 |  | Issue Working Docs and Drawings |  | 6d | 2012-04-20 A | 2012-04-21 A | 8220A-6890 | 100% | 2012-09-12 | 2012-09-19 | C822 | B50 | 03 | 0301 | P1 | P06 | 822 | AA | C010 | ST3 | 822_AB_W010 |
| 8220A-6910 |  | Package Issued | milestone | 0d | 2012-04-23 A | 2012-04-23 A | 8220A-6900 FF | 100% | 2012-09-19 | 2012-09-19 | C822 | B50 | 03 | 0301 | P1 | P06 | 822 | AA | C010 | ST3 | 822_AB_W010 |
|  | 3 | **24 : Internal Structure for Shing Mun EAP Adit** |  |  | 2010-11-02 | 2013-04-02 |  |  |  |  |  |  |  |  |  |  |  |  |  |  |  |
|  | 1 | **Design Stage 1 : Approval in Principal** |  |  | 2010-11-02 | 2012-05-08 |  |  |  |  |  |  |  |  |  |  |  |  |  |  |  |
| 8220A-2060 |  | Wall - Prepare, ICE & Submit AIP |  | 12d | 2010-11-02 A | 2011-04-12 A |  | 100% | 2010-11-02 | 2010-11-15 | C822 | B50 | 03 | 0301 | P2 | P07 | 822 | AA | C010 | ST1 | 822_AB_W010 |
| 8220A-2070 |  | Wall - Engineer Review & Comment AIP |  | 24d | 2011-04-13 A | 2011-05-11 A | 8220A-2060 | 100% | 2011-04-13 | 2011-05-16 | C822 | B50 | 03 | 0301 | P2 | P07 | 822 | AA | C010 | ST1 | 822_AB_W010 |
| 8220A-2080 |  | Wall - BD Consultation |  | 24d | 2011-04-13 A | 2011-05-11 A | 8220A-2060 | 100% | 2011-04-13 | 2011-05-16 | C822 | B50 | 03 | 0301 | P2 | P07 | 822 | AA | C010 | ST1 | 822_AB_W010 |
| 8220A-2100 |  | Wall - Engineer Review & Approve AIP |  | 24d | 2011-04-13 A | 2012-05-03 A | 8220A-2090 | 100% | 2011-04-13 | 2011-05-16 | C822 | B50 | 03 | 0301 | P2 | P07 | 822 | AA | C010 | ST1 | 822_AB_W010 |
| 8220A-2110 |  | Wall - BD Consultation |  | 24d | 2011-04-13 A | 2012-05-08 A | 8220A-2090 | 100% | 2011-04-13 | 2011-05-16 | C822 | B50 | 03 | 0301 | P2 | P07 | 822 | AA | C010 | ST1 | 822_AB_W010 |
| 8220A-2090 |  | Wall - Revise, ICE & Resubmit AIP |  | 12d | 2011-04-28 A | 2011-05-11 A | 8220A-2070, 8220A-2080 | 100% | 2011-04-28 | 2011-05-13 | C822 | B50 | 03 | 0301 | P2 | P07 | 822 | AA | C010 | ST1 | 822_AB_W010 |
|  | 2 | **Design Stage 2 : Detailed Design Submission** |  |  | 2012-05-01 | 2013-02-09 |  |  |  |  |  |  |  |  |  |  |  |  |  |  |  |
| 8220A-2120 |  | Wall - Prepare, ICE & Submit DDA |  | 12d | 2012-05-01 A | 2012-05-12 A |  | 100% | 2012-05-25 | 2012-06-07 | C822 | B50 | 03 | 0301 | P2 | P07 | 822 | AA | C010 | ST2 | 822_AB_W010 |
| 8220A-2130 |  | Wall - Engineer Review & Comment DDA |  | 24d | 2012-05-14 A | 2012-06-14 A | 8220A-2120 | 100% | 2012-10-11 | 2012-11-08 | C822 | B50 | 03 | 0301 | P2 | P07 | 822 | AA | C010 | ST2 | 822_AB_W010 |
| 8220A-2140 |  | Wall - BD Consultation |  | 24d | 2012-05-14 A | 2012-06-14 A | 8220A-2120 | 100% | 2012-10-11 | 2012-11-08 | C822 | B50 | 03 | 0301 | P2 | P07 | 822 | AA | C010 | ST2 | 822_AB_W010 |
| 8220A-2150 |  | Wall - Revise, ICE & Resubmit DDA |  | 12d | 2012-06-15 A | 2012-06-30 A | 8220A-2130, 8220A-2140 | 100% | 2012-11-09 | 2012-11-22 | C822 | B50 | 03 | 0301 | P2 | P07 | 822 | AA | C010 | ST2 | 822_AB_W010 |
| 8220A-2160 |  | Wall - Engineer Review & Approve DDA |  | 24d | 2012-07-10 A | 2012-08-02 A | 8220A-2150 | 100% | 2012-11-23 | 2012-12-20 | C822 | B50 | 03 | 0301 | P2 | P07 | 822 | AA | C010 | ST2 | 822_AB_W010 |
| 8220A-2170 |  | Wall - BD Consultation |  | 24d | 2012-08-02 A | 2013-02-09 A | 8220A-2150, 8220A-2160 FF | 100% | 2012-11-23 | 2012-12-20 | C822 | B50 | 03 | 0301 | P2 | P07 | 822 | AA | C010 | ST2 | 822_AB_W010 |

| ID | WBS | Activity | Type | Duration | Start | Finish | Predecessors | Complete | Planned start | Planned finish | Constraint | L1 : Project | L2 : Phase | L3 : Area | L4 : Sub-Area | L5 : Element | L6 : Sub-Element | M1: Contracts | M2 : Cost Centre | M6 : Areas/Rooms | L7 : System | 822_AB_W010 | M4 : Location |
| --- | --- | --- | --- | --- | --- | --- | --- | --- | --- | --- | --- | --- | --- | --- | --- | --- | --- | --- | --- | --- | --- | --- | --- |
|  | 3 | **Design Stage 3 : Issue for Construction** |  |  | 2013-02-14 | 2013-04-02 |  |  |  |  |  |  |  |  |  |  |  |  |  |  |  |  |  |
| 8220A-7350 |  | Prepare Working Docs and Drwgs |  | 24d | 2013-02-14 A | 2013-03-25 A | 8220A-2170 | 100% | 2013-06-03 | 2013-07-03 |  | C822 | B50 | 03 | 0301 | P2 | P07 | 822 | AA | C010 | ST3 | 822_AB_W010 |  |
| 8220A-7360 |  | Issue Working Docs and Drawings |  | 6d | 2013-03-21 A | 2013-03-30 A | 8220A-7350 | 100% | 2013-07-03 | 2013-07-10 |  | C822 | B50 | 03 | 0301 | P2 | P07 | 822 | AA | C010 | ST3 | 822_AB_W010 |  |
| 8220A-7370 |  | Package Issued | milestone | 0d | 2013-04-02 A | 2013-04-02 A | 8220A-7360 FF | 100% | 2013-07-10 | 2013-07-10 |  | C822 | B50 | 03 | 0301 | P2 | P07 | 822 | AA | C010 | ST3 | 822_AB_W010 |  |
|  | 5 | **Temporary Works Design and Approval** |  |  | 2010-02-07 | 2011-10-27 |  |  |  |  |  |  |  |  |  |  |  |  |  |  |  |  |  |
|  | 1 | **Shek Yam** |  |  | 2010-02-07 | 2010-10-07 |  |  |  |  |  |  |  |  |  |  |  |  |  |  |  |  |  |
|  | 7 | **1 - Shek Yam - Temp Support for SY Adit Portal** |  |  | 2010-06-02 | 2010-07-19 |  |  |  |  |  |  |  |  |  |  |  |  |  |  |  |  |  |
| 8220A-1205 |  | SY Portal - Prepare, ICE & Submit DDA |  | 12d | 2010-06-02 A | 2010-06-15 A |  | 100% |  |  | as late as possible | C822 | B51 | 04 | 0401 | T3 | T1 | 822 | AA | C010 | ST2 | 822_AB_W010 | 2230 |
| 8220A-1215 |  | SY Portal - Engineer Review & Comment DDA |  | 12d | 2010-06-16 A | 2010-06-30 A | 8220A-1205 | 100% | 2010-06-17 | 2010-06-30 | as late as possible | C822 | B51 | 04 | 0401 | T3 | T1 | 822 | AA | C010 | ST2 | 822_AB_W010 | 2230 |
| 8220A-1235 |  | SY Portal - Revise, ICE & Resubmit DDA |  | 12d | 2010-06-30 A | 2010-07-13 A | 8220A-1215 | 100% | 2010-06-30 | 2010-07-14 | as late as possible | C822 | B51 | 04 | 0401 | T3 | T1 | 822 | AA | C010 | ST2 | 822_AB_W010 | 2230 |
| 8220A-1245 |  | SY Portal - Engineer Review & Approve DDA |  | 12d | 2010-07-09 A | 2010-07-19 A | 8220A-1235 | 100% | 2010-07-09 | 2010-07-22 | as late as possible | C822 | B51 | 04 | 0401 | T3 | T1 | 822 | AA | C010 | ST2 | 822_AB_W010 | 2230 |
|  | 6 | **2 - Temporary Support between Adit and Tunnel** |  |  | 2010-04-22 | 2010-08-09 |  |  |  |  |  |  |  |  |  |  |  |  |  |  |  |  |  |
| 8220A-1255 |  | Tmp Support - Prepare, ICE & Submit DDA |  | 12d | 2010-04-22 A | 2010-07-09 A |  | 100% | 2010-04-22 | 2010-05-05 |  | C822 | B51 | 04 | 0401 | T9 | T2 | 822 | AA | C010 | ST2 | 822_AB_W010 | 2230 |
| 8220A-1265 |  | Tmp Support - Engineer Review & Comment DDA |  | 24d | 2010-07-13 A | 2010-07-19 A | 8220A-1255 | 100% | 2010-07-13 | 2010-08-09 |  | C822 | B51 | 04 | 0401 | T9 | T2 | 822 | AA | C010 | ST2 | 822_AB_W010 | 2230 |
| 8220A-1275 |  | Tmp Support - Revise, ICE & Resubmit DDA |  | 12d | 2010-07-20 A | 2010-07-28 A | 8220A-1265 | 100% | 2010-07-20 | 2010-08-02 |  | C822 | B51 | 04 | 0401 | T9 | T2 | 822 | AA | C010 | ST2 | 822_AB_W010 | 2230 |
| 8220A-1285 |  | Tmp Support - Engineer Review & Approve DDA |  | 24d | 2010-07-25 A | 2010-08-09 A | 8220A-1275 | 100% | 2010-07-26 | 2010-08-21 |  | C822 | B51 | 04 | 0401 | T9 | T2 | 822 | AA | C010 | ST2 | 822_AB_W010 | 2230 |
|  | 1 | **27 - Shek Yam - Temp Site Formation Design** |  |  | 2010-02-07 | 2010-06-10 |  |  |  |  |  |  |  |  |  |  |  |  |  |  |  |  |  |
| 8220A-5680 |  | SY Form - Prepare, ICE & Submit Design |  | 12d | 2010-02-07 A | 2010-04-11 A |  | 100% | 2010-02-08 | 2010-03-01 |  | C822 | B51 | 04 | 0401 | T4 | T32 | 822 | AA | C010 |  | 822_AB_W010 | 2240 |
| 8220A-5690 |  | SY Form - Engineer Review & Comment Design |  | 24d | 2010-04-14 A | 2010-05-10 A | 8220A-5680 | 100% | 2010-04-14 | 2010-05-11 |  | C822 | B51 | 04 | 0401 | T4 | T32 | 822 | AA | C010 |  | 822_AB_W010 | 2240 |
| 8220A-5700 |  | SY Form - RDO Consultation |  | 24d | 2010-04-14 A | 2010-05-10 A | 8220A-5680 | 100% | 2010-04-14 | 2010-05-11 |  | C822 | B51 | 04 | 0401 | T4 | T32 | 822 | AA | C010 |  | 822_AB_W010 | 2240 |
| 8220A-5710 |  | SY Form - Revise, ICE & Resubmit Design |  | 12d | 2010-05-14 A | 2010-06-10 A | 8220A-5690, 8220A-5700 | 100% | 2010-05-14 | 2010-05-28 |  | C822 | B51 | 04 | 0401 | T4 | T32 | 822 | AA | C010 |  | 822_AB_W010 | 2240 |
| 8220A-5720 |  | SY Form - Engineer Review & Approve Design |  | 24d | 2010-05-17 A | 2010-06-10 A | 8220A-5710 | 100% | 2010-05-17 | 2010-06-14 |  | C822 | B51 | 04 | 0401 | T4 | T32 | 822 | AA | C010 |  | 822_AB_W010 | 2240 |
| 8220A-5730 |  | SY Form - RDO Consultation |  | 24d | 2010-05-17 A | 2010-06-10 A | 8220A-5710 | 100% | 2010-05-17 | 2010-06-14 |  | C822 | B51 | 04 | 0401 | T4 | T32 | 822 | AA | C010 |  | 822_AB_W010 | 2240 |
|  | 3 | **28 - Shek Yam - Blast Door Design** |  |  | 2010-03-10 | 2010-10-07 |  |  |  |  |  |  |  |  |  |  |  |  |  |  |  |  |  |
| 8220A-5715 |  | SY Blast - Revise, ICE & Resubmit Design |  | 12d | 2010-03-10 A | 2010-03-10 A | 8220A-5695, 8220A-5705 | 100% | 2010-03-10 | 2010-03-23 |  | C822 | B51 | 04 | 0401 | T4 | T34 | 822 | AA | C010 |  | 822_AB_W010 | 2240 |
| 8220A-5685 |  | SY Blast - Prepare, ICE & Submit Design |  | 12d | 2010-08-20 A | 2010-09-16 A |  | 100% | 2010-08-20 | 2010-09-02 |  | C822 | B51 | 04 | 0401 | T4 | T34 | 822 | AA | C010 |  | 822_AB_W010 | 2240 |
| 8220A-5695 |  | SY Blast - Engineer Review & Comment Design |  | 24d | 2010-09-16 A | 2010-09-29 A | 8220A-5685 | 100% | 2010-09-16 | 2010-10-15 |  | C822 | B51 | 04 | 0401 | T4 | T34 | 822 | AA | C010 |  | 822_AB_W010 | 2240 |
| 8220A-5705 |  | SY Blast - CEDD Consultation |  | 24d | 2010-09-16 A | 2010-09-29 A | 8220A-5685 | 100% | 2010-09-16 | 2010-10-15 |  | C822 | B51 | 04 | 0401 | T4 | T34 | 822 | AA | C010 |  | 822_AB_W010 | 2240 |
| 8220A-5725 |  | SY Blast - Engineer Review & Approve Design |  | 24d | 2010-09-30 A | 2010-10-07 A | 8220A-5715 | 100% | 2010-09-30 | 2010-10-29 |  | C822 | B51 | 04 | 0401 | T4 | T34 | 822 | AA | C010 |  | 822_AB_W010 | 2240 |
| 8220A-5735 |  | SY Blast - CEDD Consultation |  | 24d | 2010-09-30 A | 2010-10-07 A | 8220A-5715 | 100% | 2010-09-30 | 2010-10-29 |  | C822 | B51 | 04 | 0401 | T4 | T34 | 822 | AA | C010 |  | 822_AB_W010 | 2240 |

| ID | WBS | Activity | Duration | Start | Finish | Predecessors | Complete | Planned start | Planned finish | L1 : Project | L2 : Phase | L3 : Area | L4 : Sub-Area | L5 : Element | L6 : Sub-Element | M1: Contracts | M2 : Cost Centre | M4 : Location | M6 : Areas/Rooms | 822_AB_W010 | M3 : Works Area | M8 : Classifica | L7 : System |
| --- | --- | --- | --- | --- | --- | --- | --- | --- | --- | --- | --- | --- | --- | --- | --- | --- | --- | --- | --- | --- | --- | --- | --- |
|  | 4 | **29 - Shek Yam - Temp Steel Decking** |  | 2010-06-23 | 2010-09-15 |  |  |  |  |  |  |  |  |  |  |  |  |  |  |  |  |  |  |
| 8220A-6405 |  | SY Deck - Prepare, ICE & Submit Design | 12d | 2010-06-23 A | 2010-07-06 A |  | 100% | 2010-06-23 | 2010-07-07 | C822 | B51 | 04 | 0401 | T4 | T35 | 822 | AA | 2240 | C010 | 822_AB_W010 |  |  |  |
| 8220A-6415 |  | SY Deck - Eng Review & Comment Design | 24d | 2010-07-06 A | 2010-08-02 A | 8220A-6405 | 100% |  |  | C822 | B51 | 04 | 0401 | T4 | T35 | 822 | AA | 2240 | C010 | 822_AB_W010 |  |  |  |
| 8220A-6435 |  | SY Deck - Revise, ICE & Resubmit Design | 12d | 2010-08-05 A | 2010-08-18 A | 8220A-6405, 8220A-6415 | 100% |  |  | C822 | B51 | 04 | 0401 | T4 | T35 | 822 | AA | 2240 | C010 | 822_AB_W010 |  |  |  |
| 8220A-6445 |  | SY Deck - Eng Review & Approve Design | 24d | 2010-08-19 A | 2010-09-15 A | 8220A-6435 | 100% |  |  | C822 | B51 | 04 | 0401 | T4 | T35 | 822 | AA | 2240 | C010 | 822_AB_W010 |  |  |  |
|  | 2 | **30 - Shek Yam - Noise Barrier** |  | 2010-03-23 | 2010-06-12 |  |  |  |  |  |  |  |  |  |  |  |  |  |  |  |  |  |  |
| 8220A-6400 |  | SY Noise Barrier - Prepare, ICE & Submit Design | 12d | 2010-03-23 A | 2010-05-23 A |  | 100% | 2010-03-23 | 2010-04-09 | C822 | B51 | 04 | 0401 | T4 | T33 | 822 | AA | 2240 | C010 | 822_AB_W010 |  |  |  |
| 8220A-6410 |  | SY Noise Barrier - Eng Review & Comment Design | 24d | 2010-05-24 A | 2010-05-31 A | 8220A-6400 | 100% | 2010-05-24 | 2010-06-21 | C822 | B51 | 04 | 0401 | T4 | T33 | 822 | AA | 2240 | C010 | 822_AB_W010 |  |  |  |
| 8220A-6420 |  | SY Noise Barrier - HyD/EPD Consultation | 24d | 2010-05-24 A | 2010-05-31 A | 8220A-6400 | 100% | 2010-05-24 | 2010-06-21 | C822 | B51 | 04 | 0401 | T4 | T33 | 822 | AA | 2240 | C010 | 822_AB_W010 |  |  |  |
| 8220A-6430 |  | SY Noise Barrier - Revise, ICE & Resubmit Design | 12d | 2010-06-02 A | 2010-06-12 A | 8220A-6410, 8220A-6420 | 100% | 2010-06-02 | 2010-06-15 | C822 | B51 | 04 | 0401 | T4 | T33 | 822 | AA | 2240 | C010 | 822_AB_W010 |  |  |  |
| 8220A-6450 |  | SY Noise Barrier - HyD/EPD Consultation | 24d | 2010-06-02 A | 2010-06-12 A | 8220A-6430 | 100% | 2010-06-02 | 2010-06-30 | C822 | B51 | 04 | 0401 | T4 | T33 | 822 | AA | 2240 | C010 | 822_AB_W010 |  |  |  |
| 8220A-6440 |  | SY Noise Barrier - Eng Review & Approve Design | 24d | 2010-06-03 A | 2010-06-12 A | 8220A-6430 | 100% | 2010-06-03 | 2010-07-02 | C822 | B51 | 04 | 0401 | T4 | T33 | 822 | AA | 2240 | C010 | 822_AB_W010 |  |  |  |
|  | 5 | **Shek Yam CLP Substation** |  | 2010-06-01 | 2010-07-31 |  |  |  |  |  |  |  |  |  |  |  |  |  |  |  |  |  |  |
| 8220H-1400 |  | Substation Design | 32d | 2010-06-01 A | 2010-07-06 A |  | 100% | 2010-06-01 | 2010-07-09 | C822 | B51 | 04 | 0401 | SY09 | T32 |  |  |  |  | 822_AB_W010 |  |  |  |
| 8220H-1410 |  | Substation Design Approval | 21.33d | 2010-07-08 A | 2010-07-31 A | 8220H-1400 | 100% | 2010-07-08 | 2010-08-02 | C822 | B51 | 04 | 0401 | SY09 | T32 | T | P | TX |  | 822_AB_W010 | DG | 0 |  |
|  | 14 | **Pat Heung** |  | 2010-07-20 | 2011-10-27 |  |  |  |  |  |  |  |  |  |  |  |  |  |  |  |  |  |  |
|  | 7 | **6 - Temporary Support Between PHVAA and Soft Ground Tunnel** |  | 2010-08-01 | 2011-04-12 |  |  |  |  |  |  |  |  |  |  |  |  |  |  |  |  |  |  |
| 8220A-1415 |  | Tmp Support - Prepare, ICE & Submit DDA | 12d | 2010-08-01 A | 2011-02-27 A |  | 100% | 2010-08-02 | 2010-08-14 | C822 | B51 | 02 | 0201 | GD01 | T6 | 822 | AA | 2230 | C010 | 822_AB_W010 |  |  | ST2 |
| 8220A-1425 |  | Tmp Support - Engineer Review & Comment DDA | 24d | 2011-02-16 A | 2011-02-28 A | 8220A-1415 | 100% | 2011-02-16 | 2011-03-15 | C822 | B51 | 02 | 0201 | GD01 | T6 | 822 | AA | 2230 | C010 | 822_AB_W010 |  |  | ST2 |
| 8220A-1435 |  | Tmp Support - Revise, ICE & Resubmit DDA | 12d | 2011-02-16 A | 2011-04-12 A | 8220A-1425 | 100% | 2011-02-16 | 2011-03-01 | C822 | B51 | 02 | 0201 | GD01 | T6 | 822 | AA | 2230 | C010 | 822_AB_W010 |  |  | ST2 |
| 8220A-1445 |  | Tmp Support - Engineer Review & Approve DDA | 24d | 2011-02-16 A | 2011-04-12 A | 8220A-1435 | 100% | 2011-02-16 | 2011-03-15 | C822 | B51 | 02 | 0201 | GD01 | T6 | 822 | AA | 2230 | C010 | 822_AB_W010 |  |  | ST2 |
|  | 8 | **7 - Temporary Support Between PHVAA and Tunnel** |  | 2010-07-31 | 2011-04-12 |  |  |  |  |  |  |  |  |  |  |  |  |  |  |  |  |  |  |
| 8220A-1455 |  | Tmp Support - Prepare, ICE & Submit DDA | 12d | 2010-07-31 A | 2011-02-27 A |  | 100% | 2010-07-31 | 2010-08-13 | C822 | B51 | 02 | 0201 | GD01 | T7 | 822 | AA | 2230 | C010 | 822_AB_W010 |  |  | ST2 |
| 8220A-1465 |  | Tmp Support - Engineer Review & Comment DDA | 24d | 2011-02-16 A | 2011-02-28 A | 8220A-1455 | 100% | 2011-02-16 | 2011-03-15 | C822 | B51 | 02 | 0201 | GD01 | T7 | 822 | AA | 2230 | C010 | 822_AB_W010 |  |  | ST2 |
| 8220A-1475 |  | Tmp Support - Revise, ICE & Resubmit DDA | 12d | 2011-02-17 A | 2011-04-12 A | 8220A-1465 | 100% | 2011-02-17 | 2011-03-02 | C822 | B51 | 02 | 0201 | GD01 | T7 | 822 | AA | 2230 | C010 | 822_AB_W010 |  |  | ST2 |
| 8220A-1485 |  | Tmp Support - Engineer Review & Approve DDA | 24d | 2011-02-17 A | 2011-04-12 A | 8220A-1475 | 100% | 2011-02-17 | 2011-03-16 | C822 | B51 | 02 | 0201 | GD01 | T7 | 822 | AA | 2230 | C010 | 822_AB_W010 |  |  | ST2 |

| ID | WBS | Activity | Duration | Start | Finish | Predecessors | Complete | Planned start | Planned finish | L1 : Project | L2 : Phase | L3 : Area | L4 : Sub-Area | L5 : Element | L6 : Sub-Element | M1: Contracts | M2 : Cost Centre | M4 : Location | M6 : Areas/Rooms | L7 : System | 822_AB_W010 |
| --- | --- | --- | --- | --- | --- | --- | --- | --- | --- | --- | --- | --- | --- | --- | --- | --- | --- | --- | --- | --- | --- |
|  | 9 | **8 - Temporary Support Between PHVA and Soft Ground Tunnel** |  | 2010-08-01 | 2011-05-12 |  |  |  |  |  |  |  |  |  |  |  |  |  |  |  |  |
| 8220A-1495 |  | Tmp Support - Prepare, ICE & Submit DDA | 12d | 2010-08-01 A | 2011-03-21 A |  | 100% | 2010-08-02 | 2010-08-14 | C822 | B51 | 02 | 0201 | GD01 | T8 | 822 | AA | 2230 | C010 | ST2 | 822_AB_W010 |
| 8220A-1505 |  | Tmp Support - Engineer Review & Comment DDA | 12d | 2011-03-26 A | 2011-05-12 A | 8220A-1495 | 100% | 2011-03-26 | 2011-04-09 | C822 | B51 | 02 | 0201 | GD01 | T8 | 822 | AA | 2230 | C010 | ST2 | 822_AB_W010 |
| 8220A-1515 |  | Tmp Support - Revise, ICE & Resubmit DDA | 12d | 2011-03-26 A | 2011-03-29 A | 8220A-1505 | 100% | 2011-03-26 | 2011-04-09 | C822 | B51 | 02 | 0201 | GD01 | T8 | 822 | AA | 2230 | C010 | ST2 | 822_AB_W010 |
| 8220A-1525 |  | Tmp Support - Engineer Review & Approve DDA | 12d | 2011-03-26 A | 2011-05-12 A | 8220A-1515 | 100% | 2011-03-26 | 2011-04-09 | C822 | B51 | 02 | 0201 | GD01 | T8 | 822 | AA | 2230 | C010 | ST2 | 822_AB_W010 |
|  | 13 | **9 - Temporary Support Between PHVA and Tunnel** |  | 2010-08-01 | 2011-05-12 |  |  |  |  |  |  |  |  |  |  |  |  |  |  |  |  |
| 8220A-1535 |  | Tmp Support - Prepare, ICE & Submit DDA | 12d | 2010-08-01 A | 2011-03-21 A |  | 100% | 2010-08-02 | 2010-08-14 | C822 | B51 | 02 | 0201 | GD01 | T9 | 822 | AA | 2230 | C010 | ST2 | 822_AB_W010 |
| 8220A-1545 |  | Tmp Support - Engineer Review & Comment DDA | 24d | 2011-03-24 A | 2011-05-12 A | 8220A-1535 | 100% | 2011-03-24 | 2011-04-21 | C822 | B51 | 02 | 0201 | GD01 | T9 | 822 | AA | 2230 | C010 | ST2 | 822_AB_W010 |
| 8220A-1555 |  | Tmp Support - Revise, ICE & Resubmit DDA | 12d | 2011-03-24 A | 2011-04-06 A | 8220A-1545 | 100% | 2011-03-24 | 2011-04-07 | C822 | B51 | 02 | 0201 | GD01 | T9 | 822 | AA | 2230 | C010 | ST2 | 822_AB_W010 |
| 8220A-1565 |  | Tmp Support - Engineer Review & Approve DDA | 24d | 2011-03-24 A | 2011-05-12 A | 8220A-1555 | 100% | 2011-03-24 | 2011-04-21 | C822 | B51 | 02 | 0201 | GD01 | T9 | 822 | AA | 2230 | C010 | ST2 | 822_AB_W010 |
|  | 1 | **38 - Pat Heung - Site Formation** |  | 2010-07-20 | 2011-01-13 |  |  |  |  |  |  |  |  |  |  |  |  |  |  |  |  |
| 8220A-5050 |  | PH Setup - Prepare, ICE & Submit DDA | 12d | 2010-07-20 A | 2010-11-24 A |  | 100% | 2010-07-20 | 2010-08-02 | C822 | B51 | 02 | 0201 | GD01 | T43 | 822 | AA | 2230 | C010 | ST2 | 822_AB_W010 |
| 8220A-5060 |  | PH Setup - Engineer Review & Comment DDA | 12d | 2010-11-25 A | 2010-12-17 A | 8220A-5050 | 100% | 2010-11-25 | 2010-12-08 | C822 | B51 | 02 | 0201 | GD01 | T43 | 822 | AA | 2230 | C010 | ST2 | 822_AB_W010 |
| 8220A-5090 |  | PH Setup - Engineer Review & Approve DDA | 12d | 2010-12-17 A | 2011-01-13 A | 8220A-5080 | 100% | 2010-12-17 | 2011-01-04 | C822 | B51 | 02 | 0201 | GD01 | T43 | 822 | AA | 2230 | C010 | ST2 | 822_AB_W010 |
| 8220A-5080 |  | PH Setup - Revise, ICE & Resubmit DDA | 12d | 2010-12-18 A | 2010-12-31 A | 8220A-5060 | 100% | 2010-12-18 | 2011-01-05 | C822 | B51 | 02 | 0201 | GD01 | T43 | 822 | AA | 2230 | C010 | ST2 | 822_AB_W010 |
|  | 2 | **38A - Pat Heung - Stream Course Diversion** |  | 2010-09-29 | 2010-11-30 |  |  |  |  |  |  |  |  |  |  |  |  |  |  |  |  |
| 8220A-5055 |  | PH Stream - Prepare, ICE & Submit DDA | 12d | 2010-09-29 A | 2010-10-12 A |  | 100% | 2010-09-29 | 2010-10-13 | C822 | B51 | 02 | 0201 | GD01 | T45 | 822 | AA | 2230 | C010 | ST2 | 822_AB_W010 |
| 8220A-5065 |  | PH Stream - Engineer Review & Comment DDA | 24d | 2010-10-12 A | 2010-11-07 A | 8220A-5055 | 100% | 2010-10-12 | 2010-11-09 | C822 | B51 | 02 | 0201 | GD01 | T45 | 822 | AA | 2230 | C010 | ST2 | 822_AB_W010 |
| 8220A-5075 |  | PH Stream - DSD Consultation | 24d | 2010-10-12 A | 2010-11-07 A | 8220A-5055 | 100% | 2010-10-12 | 2010-11-09 | C822 | B51 | 02 | 0201 | GD01 | T45 | 822 | AA | 2230 | C010 | ST2 | 822_AB_W010 |
| 8220A-5085 |  | PH Stream - Revise, ICE & Resubmit DDA | 12d | 2010-10-31 A | 2010-11-13 A | 8220A-5065, 8220A-5075 | 100% | 2010-11-01 | 2010-11-13 | C822 | B51 | 02 | 0201 | GD01 | T45 | 822 | AA | 2230 | C010 | ST2 | 822_AB_W010 |
| 8220A-5095 |  | PH Stream - Engineer Review & Approve DDA | 24d | 2010-11-14 A | 2010-11-30 A | 8220A-5085 | 100% | 2010-11-15 | 2010-12-11 | C822 | B51 | 02 | 0201 | GD01 | T45 | 822 | AA | 2230 | C010 | ST2 | 822_AB_W010 |
| 8220A-5105 |  | PH Stream - DSD Consultation | 24d | 2010-11-15 A | 2010-11-30 A | 8220A-5085 | 100% | 2010-11-15 | 2010-12-11 | C822 | B51 | 02 | 0201 | GD01 | T45 | 822 | AA | 2230 | C010 | ST2 | 822_AB_W010 |
|  | 5 | **39 - Pat Heung - Cofferdam and ELS** |  | 2010-10-16 | 2011-01-24 |  |  |  |  |  |  |  |  |  |  |  |  |  |  |  |  |
| 8220A-8235 |  | PH ELS - Prepare, ICE & Submit DDA | 12d | 2010-10-16 A | 2010-12-11 A |  | 100% | 2010-10-18 | 2010-10-30 | C822 | B51 | 02 | 0201 | GD01 | T48 | 822 | AA | 2230 | C010 | ST2 | 822_AB_W010 |
| 8220A-8245 |  | PH ELS - Engineer Review & Comment DDA | 24d | 2010-12-13 A | 2011-01-13 A | 8220A-8235 | 100% |  |  | C822 | B51 | 02 | 0201 | GD01 | T48 | 822 | AA | 2230 | C010 | ST2 | 822_AB_W010 |
| 8220A-8265 |  | PH ELS - Revise, ICE & Resubmit DDA | 12d | 2011-01-02 A | 2011-01-13 A | 8220A-8245 | 100% | 2011-01-03 | 2011-01-15 | C822 | B51 | 02 | 0201 | GD01 | T48 | 822 | AA | 2230 | C010 | ST2 | 822_AB_W010 |
| 8220A-8275 |  | PH ELS - Engineer Review & Approve DDA | 24d | 2011-01-14 A | 2011-01-24 A | 8220A-8265 | 100% | 2011-01-14 | 2011-02-14 | C822 | B51 | 02 | 0201 | GD01 | T48 | 822 | AA | 2230 | C010 | ST2 | 822_AB_W010 |

| ID | WBS | Activity | Duration | Start | Finish | Predecessors | Complete | Planned start | Planned finish | L1 : Project | L2 : Phase | L3 : Area | L4 : Sub-Area | L5 : Element | L6 : Sub-Element | M1: Contracts | M2 : Cost Centre | M4 : Location | M6 : Areas/Rooms | L7 : System | 822_AB_W010 |
| --- | --- | --- | --- | --- | --- | --- | --- | --- | --- | --- | --- | --- | --- | --- | --- | --- | --- | --- | --- | --- | --- |
|  | 6 | **40 - Pat Heung - Noise Barrier** |  | 2010-11-04 | 2011-08-09 |  |  |  |  |  |  |  |  |  |  |  |  |  |  |  |  |
| 8220A-8295 |  | PH Noise - Prepare, ICE & Submit DDA | 24d | 2010-11-04 A | 2011-02-16 A |  | 100% | 2010-11-04 | 2010-12-01 | C822 | B51 | 02 | 0201 | GD01 | T49 | 822 | AA | 2230 | C010 | ST2 | 822_AB_W010 |
| 8220A-8315 |  | PH Noise - EPD Consultation | 12d | 2011-02-17 A | 2011-03-14 A | 8220A-8295 | 100% | 2011-02-17 | 2011-03-02 | C822 | B51 | 02 | 0201 | GD01 | T49 | 822 | AA | 2230 | C010 | ST2 | 822_AB_W010 |
| 8220A-8305 |  | PH Noise - Engineer Review & Comment DDA | 12d | 2011-02-19 A | 2011-03-15 A | 8220A-8295 | 100% | 2011-02-19 | 2011-03-04 | C822 | B51 | 02 | 0201 | GD01 | T49 | 822 | AA | 2230 | C010 | ST2 | 822_AB_W010 |
| 8220A-8325 |  | PH Noise - Revise, ICE & Resubmit DDA | 12d | 2011-03-15 A | 2011-07-08 A | 8220A-8305, 8220A-8315 | 100% | 2011-03-15 | 2011-03-28 | C822 | B51 | 02 | 0201 | GD01 | T49 | 822 | AA | 2230 | C010 | ST2 | 822_AB_W010 |
| 8220A-8335 |  | PH Noise - Engineer Review & Approve DDA | 12d | 2011-07-09 A | 2011-08-09 A | 8220A-8325 | 100% | 2011-07-09 | 2011-07-22 | C822 | B51 | 02 | 0201 | GD01 | T49 | 822 | AA | 2230 | C010 | ST2 | 822_AB_W010 |
| 8220A-8345 |  | PH Noise - EPD Consultation | 12d | 2011-07-09 A | 2011-08-09 A | 8220A-8325, 8220A-8335 FF | 100% | 2011-07-09 | 2011-07-22 | C822 | B51 | 02 | 0201 | GD01 | T49 | 822 | AA | 2230 | C010 | ST2 | 822_AB_W010 |
|  | 3 | **41 - Pat Heung - Working Platform** |  | 2010-11-05 | 2010-12-16 |  |  |  |  |  |  |  |  |  |  |  |  |  |  |  |  |
| 8220A-5115 |  | PH Platform - Prepare, ICE & Submit DDA | 12d | 2010-11-05 A | 2010-11-20 A |  | 100% | 2010-11-05 | 2010-11-18 | C822 | B51 | 02 | 0201 | GD01 | T46 | 822 | AA | 2230 | C010 | ST2 | 822_AB_W010 |
| 8220A-5125 |  | PH Platform - Engineer Review & Comment DDA | 24d | 2010-11-21 A | 2010-12-16 A | 8220A-5115 | 100% | 2010-11-22 | 2010-12-18 | C822 | B51 | 02 | 0201 | GD01 | T46 | 822 | AA | 2230 | C010 | ST2 | 822_AB_W010 |
| 8220A-5155 |  | PH Platform - Engineer Review & Approve DDA | 24d | 2010-11-21 A | 2010-12-16 A | 8220A-5145 | 100% | 2010-11-22 | 2010-12-18 | C822 | B51 | 02 | 0201 | GD01 | T46 | 822 | AA | 2230 | C010 | ST2 | 822_AB_W010 |
| 8220A-5145 |  | PH Platform - Revise, ICE & Resubmit DDA | 12d | 2010-12-01 A | 2010-12-16 A | 8220A-5125 | 100% | 2010-12-01 | 2010-12-14 | C822 | B51 | 02 | 0201 | GD01 | T46 | 822 | AA | 2230 | C010 | ST2 | 822_AB_W010 |
|  | 4 | **42 - Pat Heung - Permanent Access Road** |  | 2010-10-17 | 2011-01-27 |  |  |  |  |  |  |  |  |  |  |  |  |  |  |  |  |
| 8220A-5175 |  | PH Access - Prepare, ICE & Submit DDA | 12d | 2010-10-17 A | 2010-12-12 A |  | 100% | 2010-10-18 | 2010-10-30 | C822 | B51 | 02 | 0201 | GD01 | T47 | 822 | AA | 2230 | C010 | ST2 | 822_AB_W010 |
| 8220A-5185 |  | PH Access - Engineer Review & Comment DDA | 12d | 2010-12-14 A | 2011-01-04 A | 8220A-5175 | 100% | 2010-12-14 | 2010-12-30 | C822 | B51 | 02 | 0201 | GD01 | T47 | 822 | AA | 2230 | C010 | ST2 | 822_AB_W010 |
| 8220A-5205 |  | PH Access - Revise, ICE & Resubmit DDA | 12d | 2011-01-05 A | 2011-01-18 A | 8220A-5185 | 100% |  |  | C822 | B51 | 02 | 0201 | GD01 | T47 | 822 | AA | 2230 | C010 | ST2 | 822_AB_W010 |
| 8220A-5215 |  | PH Access - Engineer Review & Approve DDA | 12d | 2011-01-05 A | 2011-01-27 A | 8220A-5205 | 100% | 2011-01-05 | 2011-01-18 | C822 | B51 | 02 | 0201 | GD01 | T47 | 822 | AA | 2230 | C010 | ST2 | 822_AB_W010 |
|  | 12 | **42A - Excavation and ELS for Drainage** |  | 2010-12-20 | 2011-01-26 |  |  |  |  |  |  |  |  |  |  |  |  |  |  |  |  |
| 8220A-8475 |  | Drainage - Prepare & Submit DDA | 12d | 2010-12-20 A | 2011-01-05 A |  | 100% | 2010-12-20 | 2011-01-06 | C822 | B51 | 02 | 0201 | GD01 | T84 | 822 | AA | 2230 | C010 | ST2 | 822_AB_W010 |
| 8220A-8485 |  | Drainage - Engineer Review & Comment DDA | 24d | 2011-01-06 A | 2011-01-26 A | 8220A-8475 | 100% | 2011-01-06 | 2011-02-02 | C822 | B51 | 02 | 0201 | GD01 | T84 | 822 | AA | 2230 | C010 | ST2 | 822_AB_W010 |
| 8220A-8515 |  | Drainage - Engineer Review & Approve DDA | 24d | 2011-01-06 A | 2011-01-26 A | 8220A-8505 | 100% | 2011-01-06 | 2011-02-02 | C822 | B51 | 02 | 0201 | GD01 | T84 | 822 | AA | 2230 | C010 | ST2 | 822_AB_W010 |
| 8220A-8505 |  | Drainage - Revise Resubmit DDA | 12d | 2011-01-17 A | 2011-01-26 A | 8220A-8485 | 100% | 2011-01-17 | 2011-01-29 | C822 | B51 | 02 | 0201 | GD01 | T84 | 822 | AA | 2230 | C010 | ST2 | 822_AB_W010 |
|  | 10 | **43 - Blast Door/Screen at PHVA** |  | 2011-01-02 | 2011-05-04 |  |  |  |  |  |  |  |  |  |  |  |  |  |  |  |  |
| 8220A-8415 |  | Blast - Prepare, ICE & Submit DDA | 12d | 2011-01-02 A | 2011-03-23 A |  | 100% | 2011-01-03 | 2011-01-15 | C822 | B51 | 02 | 0201 | GD01 | T83 | 822 | AA | 2230 | C010 | ST2 | 822_AB_W010 |
| 8220A-8425 |  | Blast - Engineer Review & Comment DDA | 12d | 2011-03-24 A | 2011-03-28 A | 8220A-8415 | 100% | 2011-03-24 | 2011-04-07 | C822 | B51 | 02 | 0201 | GD01 | T83 | 822 | AA | 2230 | C010 | ST2 | 822_AB_W010 |
| 8220A-8435 |  | Blast - Mines Consultation | 12d | 2011-03-24 A | 2011-03-29 A | 8220A-8415 | 100% | 2011-03-24 | 2011-04-07 | C822 | B51 | 02 | 0201 | GD01 | T83 | 822 | AA | 2230 | C010 | ST2 | 822_AB_W010 |
| 8220A-8445 |  | Blast - Revise, ICE & Resubmit DDA | 12d | 2011-03-24 A | 2011-03-29 A | 8220A-8425, 8220A-8435 | 100% | 2011-03-24 | 2011-04-07 | C822 | B51 | 02 | 0201 | GD01 | T83 | 822 | AA | 2230 | C010 | ST2 | 822_AB_W010 |
| 8220A-8455 |  | Blast - Engineer Review & Approve DDA | 12d | 2011-04-13 A | 2011-05-04 A | 8220A-8445 | 100% | 2011-04-13 | 2011-04-29 | C822 | B51 | 02 | 0201 | GD01 | T83 | 822 | AA | 2230 | C010 | ST2 | 822_AB_W010 |
| 8220A-8465 |  | Blast - Mines Consultation | 12d | 2011-04-13 A | 2011-05-04 A | 8220A-8445, 8220A-8455 FF | 100% | 2011-04-13 | 2011-04-29 | C822 | B51 | 02 | 0201 | GD01 | T83 | 822 | AA | 2230 | C010 | ST2 | 822_AB_W010 |

| ID | WBS | Activity | Duration | Start | Finish | Predecessors | Complete | Planned start | Planned finish | L1 : Project | L2 : Phase | L3 : Area | L4 : Sub-Area | L5 : Element | L6 : Sub-Element | M1: Contracts | M2 : Cost Centre | M4 : Location | M6 : Areas/Rooms | L7 : System | 822_AB_W010 | M3 : Works Area |
| --- | --- | --- | --- | --- | --- | --- | --- | --- | --- | --- | --- | --- | --- | --- | --- | --- | --- | --- | --- | --- | --- | --- |
|  | 11 | **44 - Blast Door/Screen at PHVAA** |  | 2011-04-21 | 2011-10-27 |  |  |  |  |  |  |  |  |  |  |  |  |  |  |  |  |  |
| 8220A-8355 |  | Blast - Prepare, ICE & Submit DDA | 12d | 2011-04-21 A | 2011-09-23 A |  | 100% | 2011-04-21 | 2011-05-09 | C822 | B51 | 02 | 0201 | GD01 | T82 | 822 | AA | 2230 | C010 | ST2 | 822_AB_W010 |  |
| 8220A-8365 |  | Blast - Engineer Review & Comment DDA | 24d | 2011-09-28 A | 2011-10-10 A | 8220A-8355 | 100% | 2011-09-28 | 2011-10-27 | C822 | B51 | 02 | 0201 | GD01 | T82 | 822 | AA | 2230 | C010 | ST2 | 822_AB_W010 |  |
| 8220A-8395 |  | Blast - Engineer Review & Approve DDA | 24d | 2011-10-11 A | 2011-10-18 A | 8220A-8385 | 100% | 2012-07-16 | 2012-08-13 | C822 | B51 | 02 | 0201 | GD01 | T82 | 822 | AA | 2230 | C010 | ST2 | 822_AB_W010 |  |
| 8220A-8405 |  | Blast - Mines Consultation | 24d | 2011-10-11 A | 2011-10-19 A | 8220A-8385, 8220A-8395 FF | 100% | 2012-07-16 | 2012-08-13 | C822 | B51 | 02 | 0201 | GD01 | T82 | 822 | AA | 2230 | C010 | ST2 | 822_AB_W010 |  |
| 8220A-8385 |  | Blast - Revise, ICE & Resubmit DDA | 12.44d | 2011-10-17 A | 2011-10-27 A | 8220A-8365, 8220A-8375 | 100% | 2012-06-29 | 2012-07-16 | C822 | B51 | 02 | 0201 | GD01 | T82 | 822 | AA | 2230 | C010 | ST2 | 822_AB_W010 |  |
| 8220A-8375 |  | Blast - Mines Consultation | 24d | 2011-10-18 A | 2011-10-27 A | 8220A-8355 | 100% | 2012-06-01 | 2012-06-28 | C822 | B51 | 02 | 0201 | GD01 | T82 | 822 | AA | 2230 | C010 | ST2 | 822_AB_W010 |  |
|  | 15 | **Shing Mun** |  | 2010-04-04 | 2011-10-22 |  |  |  |  |  |  |  |  |  |  |  |  |  |  |  |  |  |
|  | 1 | **5 - Shing Mun - Temp Support Between EAP and Main Tunnel** |  | 2011-07-28 | 2011-10-22 |  |  |  |  |  |  |  |  |  |  |  |  |  |  |  |  |  |
| 8220A-1375 |  | Tmp Support - Prepare, ICE & Submit DDA | 12d | 2011-07-28 A | 2011-08-16 A |  | 100% | 2011-07-28 | 2011-08-10 | C822 | B51 | 03 | 0301 | T9 | T5 | 822 | AA | 2230 | C010 | ST2 | 822_AB_W010 |  |
| 8220A-1385 |  | Tmp Support - Engineer Review & Comment DDA | 24d | 2011-08-17 A | 2011-10-20 A | 8220A-1375 | 100% | 2011-08-17 | 2011-09-14 | C822 | B51 | 03 | 0301 | T9 | T5 | 822 | AA | 2230 | C010 | ST2 | 822_AB_W010 |  |
| 8220A-1405 |  | Tmp Support - Engineer Review & Approve DDA | 24d | 2011-08-17 A | 2011-10-20 A | 8220A-1395 | 100% | 2011-08-17 | 2011-09-14 | C822 | B51 | 03 | 0301 | T9 | T5 | 822 | AA | 2230 | C010 | ST2 | 822_AB_W010 |  |
| 8220A-1395 |  | Tmp Support - Revise, ICE & Resubmit DDA | 12d | 2011-10-04 A | 2011-10-22 A | 8220A-1385 | 100% | 2012-06-16 | 2012-06-30 | C822 | B51 | 03 | 0301 | T9 | T5 | 822 | AA | 2230 | C010 | ST2 | 822_AB_W010 |  |
|  | 17 | **31 - Shing Mun - Cofferdam and ELS Design** |  | 2010-08-07 | 2010-12-15 |  |  |  |  |  |  |  |  |  |  |  |  |  |  |  |  |  |
| 8220A-5465 |  | SM ELS - Prepare, ICE & Submit DDA | 24d | 2010-08-07 A | 2010-09-13 A |  | 100% | 2010-08-07 | 2010-09-03 | C822 | B51 | 03 | 0301 | T4 | T44 | 822 | AA | 2220 | C010 | ST2 | 822_AB_W010 | 71 |
| 8220A-5475 |  | SM ELS - Engineer Review & Comment DDA | 24d | 2010-09-13 A | 2010-09-27 A | 8220A-5465 | 100% | 2010-09-13 | 2010-10-12 | C822 | B51 | 03 | 0301 | T4 | T44 | 822 | AA | 2220 | C010 | ST2 | 822_AB_W010 | 71 |
| 8220A-5485 |  | SM ELS - CLP, HyD Consultation | 24d | 2010-09-13 A | 2010-09-27 A | 8220A-5465 | 100% | 2010-09-13 | 2010-10-12 | C822 | B51 | 03 | 0301 | T4 | T44 | 822 | AA | 2220 | C010 | ST2 | 822_AB_W010 | 71 |
| 8220A-5495 |  | SM ELS - Revise, ICE & Resubmit DDA | 12d | 2010-09-28 A | 2010-10-11 A | 8220A-5475, 8220A-5485 | 100% | 2010-09-28 | 2010-10-12 | C822 | B51 | 03 | 0301 | T4 | T44 | 822 | AA | 2220 | C010 | ST2 | 822_AB_W010 | 71 |
| 8220A-5505 |  | SM ELS - Engineer Review & Approve DDA | 24d | 2010-10-13 A | 2010-12-15 A | 8220A-5495 | 100% | 2010-10-13 | 2010-11-10 | C822 | B51 | 03 | 0301 | T4 | T44 | 822 | AA | 2220 | C010 | ST2 | 822_AB_W010 | 71 |
| 8220A-5515 |  | SM ELS - CLP, HyD Consultation | 24d | 2010-10-13 A | 2010-12-15 A | 8220A-5495 | 100% | 2010-10-13 | 2010-11-10 | C822 | B51 | 03 | 0301 | T4 | T44 | 822 | AA | 2220 | C010 | ST2 | 822_AB_W010 | 71 |
|  | 18 | **32 - Shing Mun - Temp Support for Circular Shaft** |  | 2010-08-23 | 2011-02-02 |  |  |  |  |  |  |  |  |  |  |  |  |  |  |  |  |  |
| 8220A-5520 |  | SM Setup - Prepare, ICE & Submit DDA | 12d | 2010-08-23 A | 2010-11-18 A |  | 100% | 2010-08-23 | 2010-09-04 | C822 | B51 | 03 | 0301 | T4 | T85 | 822 | AA | 2220 | C010 | ST2 | 822_AB_W010 | 71 |
| 8220A-5530 |  | SM Setup - Engineer Review & Comment DDA | 24d | 2010-11-18 A | 2010-12-15 A | 8220A-5520 | 100% |  |  | C822 | B51 | 03 | 0301 | T4 | T85 | 822 | AA | 2220 | C010 | ST2 | 822_AB_W010 | 71 |
| 8220A-5550 |  | SM Setup - Hyd Consultation | 12d | 2010-11-18 A | 2010-12-15 A | 8220A-5530 | 100% | 2010-11-18 | 2010-12-01 | C822 | B51 | 03 | 0301 | T4 | T85 | 822 | AA | 2220 | C010 | ST2 | 822_AB_W010 | 71 |
| 8220A-5560 |  | SM Setup - Revise, ICE & Resubmit DDA | 24d | 2010-12-17 A | 2011-01-01 A | 8220A-5550 | 100% | 2010-12-17 | 2011-01-18 | C822 | B51 | 03 | 0301 | T4 | T85 | 822 | AA | 2220 | C010 | ST2 | 822_AB_W010 | 71 |
| 8220A-5580 |  | SM Setup - Engineer Review & Approve DDA | 12d | 2010-12-17 A | 2011-02-02 A | 8220A-5560 | 100% | 2010-12-17 | 2011-01-04 | C822 | B51 | 03 | 0301 | T4 | T85 | 822 | AA | 2220 | C010 | ST2 | 822_AB_W010 | 71 |
| 8220A-5590 |  | SM Setup - Hyd Consultation | 24d | 2010-12-17 A | 2011-02-02 A | 8220A-5580 | 100% | 2010-12-17 | 2011-01-18 | C822 | B51 | 03 | 0301 | T4 | T85 | 822 | AA | 2220 | C010 | ST2 | 822_AB_W010 | 71 |

| ID | WBS | Activity | Duration | Start | Finish | Predecessors | Complete | Planned start | Planned finish | L1 : Project | L2 : Phase | L3 : Area | L4 : Sub-Area | L5 : Element | L6 : Sub-Element | M1: Contracts | M2 : Cost Centre | M3 : Works Area | M4 : Location | M6 : Areas/Rooms | L7 : System | 822_AB_W010 |
| --- | --- | --- | --- | --- | --- | --- | --- | --- | --- | --- | --- | --- | --- | --- | --- | --- | --- | --- | --- | --- | --- | --- |
|  | 19 | **35 - Shing Mun - Temp Noise Enclosure and Blast Door** |  | 2010-10-01 | 2010-11-24 |  |  |  |  |  |  |  |  |  |  |  |  |  |  |  |  |  |
| 8220A-5875 |  | SM Noise - Prepare, ICE & Submit DDA | 24d | 2010-10-01 A | 2010-10-28 A |  | 100% | 2010-10-02 | 2010-10-30 | C822 | B51 | 03 | 0301 | T4 | T86 | 822 | AA | 71 | 2220 | C010 | ST2 | 822_AB_W010 |
| 8220A-5885 |  | SM Noise - Engineer Review & Comment DDA | 24d | 2010-10-30 A | 2010-11-09 A | 8220A-5875 | 100% | 2010-10-30 | 2010-11-26 | C822 | B51 | 03 | 0301 | T4 | T86 | 822 | AA | 71 | 2220 | C010 | ST2 | 822_AB_W010 |
| 8220A-5895 |  | SM Noise - CEDD/EPD Consultation | 24d | 2010-10-30 A | 2010-11-10 A | 8220A-5875 | 100% | 2010-10-30 | 2010-11-26 | C822 | B51 | 03 | 0301 | T4 | T86 | 822 | AA | 71 | 2220 | C010 | ST2 | 822_AB_W010 |
| 8220A-5905 |  | SM Noise - Revise, ICE & Resubmit DDA | 12d | 2010-11-10 A | 2010-11-20 A | 8220A-5885, 8220A-5895 | 100% | 2010-11-10 | 2010-11-23 | C822 | B51 | 03 | 0301 | T4 | T86 | 822 | AA | 71 | 2220 | C010 | ST2 | 822_AB_W010 |
| 8220A-5915 |  | SM Noise - Engineer Review & Approve DDA | 24d | 2010-11-19 A | 2010-11-24 A | 8220A-5905 | 100% | 2010-11-19 | 2010-12-16 | C822 | B51 | 03 | 0301 | T4 | T86 | 822 | AA | 71 | 2220 | C010 | ST2 | 822_AB_W010 |
| 8220A-5925 |  | SM Noise - CEDD/EPD Consultation | 24d | 2010-11-19 A | 2010-11-24 A | 8220A-5905, 8220A-5915 FF | 100% | 2010-11-19 | 2010-12-16 | C822 | B51 | 03 | 0301 | T4 | T86 | 822 | AA | 71 | 2220 | C010 | ST2 | 822_AB_W010 |
|  | 20 | **36 - Shing Mun - Tower Crane Foundations** |  | 2011-02-04 | 2011-06-25 |  |  |  |  |  |  |  |  |  |  |  |  |  |  |  |  |  |
| 8220A-5935 |  | SM Cranes - Prepare, ICE & Submit DDA | 12d | 2011-02-04 A | 2011-05-04 A |  | 100% | 2011-02-07 | 2011-02-19 | C822 | B51 | 03 | 0301 | T4 | T87 | 822 | AA | 71 | 2220 | C010 | ST2 | 822_AB_W010 |
| 8220A-5945 |  | SM Cranes - Engineer Review & Comment DDA | 24d | 2011-05-04 A | 2011-05-31 A | 8220A-5935 | 100% | 2011-05-04 | 2011-06-01 | C822 | B51 | 03 | 0301 | T4 | T87 | 822 | AA | 71 | 2220 | C010 | ST2 | 822_AB_W010 |
| 8220A-5965 |  | SM Cranes - Revise, ICE & Resubmit DDA | 24d | 2011-05-17 A | 2011-06-13 A | 8220A-5945 | 100% | 2011-05-17 | 2011-06-14 | C822 | B51 | 03 | 0301 | T4 | T87 | 822 | AA | 71 | 2220 | C010 | ST2 | 822_AB_W010 |
| 8220A-5975 |  | SM Cranes - Engineer Review & Approve DDA | 12d | 2011-06-12 A | 2011-06-25 A | 8220A-5965 | 100% | 2011-06-13 | 2011-06-25 | C822 | B51 | 03 | 0301 | T4 | T87 | 822 | AA | 71 | 2220 | C010 | ST2 | 822_AB_W010 |
|  | 16 | **37 - Shing Mun - Site Formation (Slope and Butress)** |  | 2010-04-04 | 2010-11-24 |  |  |  |  |  |  |  |  |  |  |  |  |  |  |  |  |  |
| 8220A-5460 |  | SM Form - Prepare, ICE & Submit DDA | 24d | 2010-04-04 A | 2010-09-30 A |  | 100% | 2010-04-07 | 2010-05-04 | C822 | B51 | 03 | 0301 | T4 | T42 | 822 | AA | 71 | 2220 | C010 | ST2 | 822_AB_W010 |
| 8220A-5470 |  | SM Form - Engineer Review & Comment DDA | 24d | 2010-10-03 A | 2010-10-30 A | 8220A-5460 | 100% | 2010-10-04 | 2010-11-01 | C822 | B51 | 03 | 0301 | T4 | T42 | 822 | AA | 71 | 2220 | C010 | ST2 | 822_AB_W010 |
| 8220A-5480 |  | SM Form - RDO Consultation | 24d | 2010-10-05 A | 2010-11-01 A | 8220A-5460 | 100% | 2010-10-05 | 2010-11-02 | C822 | B51 | 03 | 0301 | T4 | T42 | 822 | AA | 71 | 2220 | C010 | ST2 | 822_AB_W010 |
| 8220A-5490 |  | SM Form - Revise, ICE & Resubmit DDA | 12d | 2010-11-02 A | 2010-11-15 A | 8220A-5470, 8220A-5480 | 100% |  |  | C822 | B51 | 03 | 0301 | T4 | T42 | 822 | AA | 71 | 2220 | C010 | ST2 | 822_AB_W010 |
| 8220A-5500 |  | SM Form - Engineer Review & Approve DDA | 24d | 2010-11-14 A | 2010-11-24 A | 8220A-5490 | 100% | 2010-11-15 | 2010-12-11 | C822 | B51 | 03 | 0301 | T4 | T42 | 822 | AA | 71 | 2220 | C010 | ST2 | 822_AB_W010 |
| 8220A-5510 |  | SM Form - RDO Consultation | 24d | 2010-11-15 A | 2010-11-24 A | 8220A-5490 | 100% | 2010-11-15 | 2010-12-11 | C822 | B51 | 03 | 0301 | T4 | T42 | 822 | AA | 71 | 2220 | C010 | ST2 | 822_AB_W010 |
|  | 2 | **Main Tunnels** |  | 2010-11-29 | 2011-06-16 |  |  |  |  |  |  |  |  |  |  |  |  |  |  |  |  |  |
|  | 1 | **Northern Tunnel Section** |  | 2010-12-02 | 2011-06-16 |  |  |  |  |  |  |  |  |  |  |  |  |  |  |  |  |  |
|  | 1 | **10 Temporary Support between Tunnel, 823A and Cross Passage** |  | 2010-12-02 | 2011-06-16 |  |  |  |  |  |  |  |  |  |  |  |  |  |  |  |  |  |
| 8220A-1575 |  | Tmp Support - Prepare, ICE & Submit DDA | 12d | 2010-12-02 A | 2011-02-16 A |  | 100% | 2010-12-02 | 2010-12-15 | C822 | B51 | 05 | 0501 | T9 | T10 | 822 | AA |  | 2230 | C010 | ST2 | 822_AB_W010 |
| 8220A-1585 |  | Tmp Support - Engineer Review & Comment DDA | 24d | 2011-02-17 A | 2011-06-03 A | 8220A-1575 | 100% | 2011-02-17 | 2011-03-16 | C822 | B51 | 05 | 0501 | T9 | T10 | 822 | AA |  | 2230 | C010 | ST2 | 822_AB_W010 |
| 8220A-1595 |  | Tmp Support - Revise, ICE & Resubmit DDA | 12d | 2011-05-18 A | 2011-06-03 A | 8220A-1585 | 100% | 2011-05-18 | 2011-05-31 | C822 | B51 | 05 | 0501 | T9 | T10 | 822 | AA |  | 2230 | C010 | ST2 | 822_AB_W010 |
| 8220A-1605 |  | Tmp Support - Engineer Review & Approve DDA | 24d | 2011-06-04 A | 2011-06-16 A | 8220A-1595 | 100% | 2011-06-04 | 2011-07-04 | C822 | B51 | 05 | 0501 | T9 | T10 | 822 | AA |  | 2230 | C010 | ST2 | 822_AB_W010 |

| ID | WBS | Activity | Duration | Start | Finish | Predecessors | Complete | Planned start | Planned finish | L1 : Project | L2 : Phase | L3 : Area | L4 : Sub-Area | L5 : Element | L6 : Sub-Element | M1: Contracts | M2 : Cost Centre | M4 : Location | M6 : Areas/Rooms | L7 : System | 822_AB_W010 |
| --- | --- | --- | --- | --- | --- | --- | --- | --- | --- | --- | --- | --- | --- | --- | --- | --- | --- | --- | --- | --- | --- |
|  | 2 | **11 Temporary Support - Bifircation and Nozzle** |  | 2010-12-02 | 2011-06-16 |  |  |  |  |  |  |  |  |  |  |  |  |  |  |  |  |
| 8220A-1615 |  | Tmp Support - Prepare, ICE & Submit DDA | 12d | 2010-12-02 A | 2011-02-16 A |  | 100% | 2010-12-02 | 2010-12-15 | C822 | B51 | 05 | 0501 | T9 | T11 | 822 | AA | 2230 | C010 | ST2 | 822_AB_W010 |
| 8220A-1625 |  | Tmp Support - Engineer Review & Comment DDA | 24d | 2011-02-17 A | 2011-06-03 A | 8220A-1615 | 100% | 2011-02-17 | 2011-03-16 | C822 | B51 | 05 | 0501 | T9 | T11 | 822 | AA | 2230 | C010 | ST2 | 822_AB_W010 |
| 8220A-1635 |  | Tmp Support - Revise, ICE & Resubmit DDA | 12d | 2011-05-18 A | 2011-06-03 A | 8220A-1625 | 100% | 2011-05-18 | 2011-05-31 | C822 | B51 | 05 | 0501 | T9 | T11 | 822 | AA | 2230 | C010 | ST2 | 822_AB_W010 |
| 8220A-1645 |  | Tmp Support - Engineer Review & Approve DDA | 24d | 2011-06-04 A | 2011-06-16 A | 8220A-1635 | 100% | 2011-06-04 | 2011-07-04 | C822 | B51 | 05 | 0501 | T9 | T11 | 822 | AA | 2230 | C010 | ST2 | 822_AB_W010 |
|  | 3 | **12 Temporary Support - Twin Track Crossover** |  | 2010-12-02 | 2011-06-16 |  |  |  |  |  |  |  |  |  |  |  |  |  |  |  |  |
| 8220A-1655 |  | Tmp Support - Prepare, ICE & Submit DDA | 12d | 2010-12-02 A | 2011-02-16 A |  | 100% | 2010-12-02 | 2010-12-15 | C822 | B51 | 05 | 0501 | T9 | T12 | 822 | AA | 2230 | C010 | ST2 | 822_AB_W010 |
| 8220A-1665 |  | Tmp Support - Engineer Review & Comment DDA | 24d | 2011-02-17 A | 2011-06-03 A | 8220A-1655 | 100% | 2011-02-17 | 2011-03-16 | C822 | B51 | 05 | 0501 | T9 | T12 | 822 | AA | 2230 | C010 | ST2 | 822_AB_W010 |
| 8220A-1675 |  | Tmp Support - Revise, ICE & Resubmit DDA | 12d | 2011-05-18 A | 2011-06-03 A | 8220A-1665 | 100% | 2011-05-18 | 2011-05-31 | C822 | B51 | 05 | 0501 | T9 | T12 | 822 | AA | 2230 | C010 | ST2 | 822_AB_W010 |
| 8220A-1685 |  | Tmp Support - Engineer Review & Approve DDA | 24d | 2011-06-04 A | 2011-06-16 A | 8220A-1675 | 100% | 2011-06-04 | 2011-07-04 | C822 | B51 | 05 | 0501 | T9 | T12 | 822 | AA | 2230 | C010 | ST2 | 822_AB_W010 |
|  | 4 | **Southern Tunnel Section** |  | 2010-11-29 | 2011-06-16 |  |  |  |  |  |  |  |  |  |  |  |  |  |  |  |  |
|  | 1 | **13 Design of 823 and 821 Bulkheads** |  | 2010-11-29 | 2011-06-16 |  |  |  |  |  |  |  |  |  |  |  |  |  |  |  |  |
| 8220A-1885 |  | Bulkhead - Prepare, ICE & Submit DDA | 18d | 2010-11-29 A | 2011-02-08 A |  | 100% | 2010-11-29 | 2010-12-18 | C822 | B51 | 06 | 0601 | T2 | T13 | 822 | AA | 2230 | C010 | ST2 | 822_AB_W010 |
| 8220A-1895 |  | Bulkhead - Engineer Review & Comment DDA | 24d | 2011-02-14 A | 2011-05-30 A | 8220A-1885 | 100% | 2011-02-14 | 2011-03-12 | C822 | B51 | 06 | 0601 | T2 | T13 | 822 | AA | 2230 | C010 | ST2 | 822_AB_W010 |
| 8220A-1905 |  | Bulkhead - Revise, ICE & Resubmit DDA | 20.76d | 2011-05-18 A | 2011-06-03 A | 8220A-1895 | 100% | 2011-05-18 | 2011-06-13 | C822 | B51 | 06 | 0601 | T2 | T13 | 822 | AA | 2230 | C010 | ST2 | 822_AB_W010 |
| 8220A-1915 |  | Bulkhead - Engineer Review & Approve DDA | 24d | 2011-06-04 A | 2011-06-16 A | 8220A-1905 | 100% | 2011-06-04 | 2011-07-04 | C822 | B51 | 06 | 0601 | T2 | T13 | 822 | AA | 2230 | C010 | ST2 | 822_AB_W010 |
|  | 2 | **3 Temporary Support Between Tunnel and C821** |  | 2010-12-01 | 2011-06-16 |  |  |  |  |  |  |  |  |  |  |  |  |  |  |  |  |
| 8220A-1295 |  | Tmp Support - Prepare, ICE & Submit DDA | 12d | 2010-12-01 A | 2011-02-16 A |  | 100% | 2010-12-01 | 2010-12-14 | C822 | B51 | 06 | 0601 | T9 | T3 | 822 | AA | 2230 | C010 | ST2 | 822_AB_W010 |
| 8220A-1305 |  | Tmp Support - Engineer Review & Comment DDA | 24d | 2011-02-17 A | 2011-06-03 A | 8220A-1295 | 100% | 2011-02-17 | 2011-03-16 | C822 | B51 | 06 | 0601 | T9 | T3 | 822 | AA | 2230 | C010 | ST2 | 822_AB_W010 |
| 8220A-1315 |  | Tmp Support - Revise, ICE & Resubmit DDA | 12d | 2011-05-18 A | 2011-06-03 A | 8220A-1305 | 100% | 2011-05-18 | 2011-05-31 | C822 | B51 | 06 | 0601 | T9 | T3 | 822 | AA | 2230 | C010 | ST2 | 822_AB_W010 |
| 8220A-1325 |  | Tmp Support - Engineer Review & Approve DDA | 24d | 2011-06-04 A | 2011-06-16 A | 8220A-1315 | 100% | 2011-06-04 | 2011-07-04 | C822 | B51 | 06 | 0601 | T9 | T3 | 822 | AA | 2230 | C010 | ST2 | 822_AB_W010 |
|  | 3 | **4 Temporary Support for Tunnel with OHVD** |  | 2010-12-02 | 2011-06-16 |  |  |  |  |  |  |  |  |  |  |  |  |  |  |  |  |
| 8220A-1335 |  | Tmp Support - Prepare, ICE & Submit DDA | 12d | 2010-12-02 A | 2011-02-16 A |  | 100% | 2010-12-02 | 2010-12-15 | C822 | B51 | 06 | 0601 | T9 | T4 | 822 | AA | 2230 | C010 | ST2 | 822_AB_W010 |
| 8220A-1345 |  | Tmp Support - Engineer Review & Comment DDA | 24d | 2011-02-17 A | 2011-06-03 A | 8220A-1335 | 100% | 2011-02-17 | 2011-03-16 | C822 | B51 | 06 | 0601 | T9 | T4 | 822 | AA | 2230 | C010 | ST2 | 822_AB_W010 |
| 8220A-1355 |  | Tmp Support - Revise, ICE & Resubmit DDA | 12d | 2011-05-18 A | 2011-06-03 A | 8220A-1345 | 100% | 2011-05-18 | 2011-05-31 | C822 | B51 | 06 | 0601 | T9 | T4 | 822 | AA | 2230 | C010 | ST2 | 822_AB_W010 |
| 8220A-1365 |  | Tmp Support - Engineer Review & Approve DDA | 24d | 2011-06-04 A | 2011-06-16 A | 8220A-1355 | 100% | 2011-06-04 | 2011-07-04 | C822 | B51 | 06 | 0601 | T9 | T4 | 822 | AA | 2230 | C010 | ST2 | 822_AB_W010 |

| ID | WBS | Activity | Duration | Start | Finish | Predecessors | Complete | Planned start | Planned finish | L1 : Project | L2 : Phase | L3 : Area | L4 : Sub-Area | L5 : Element | L6 : Sub-Element | M1: Contracts | M2 : Cost Centre | M3 : Works Area | M4 : Location | M6 : Areas/Rooms | 822_AB_W010 |
| --- | --- | --- | --- | --- | --- | --- | --- | --- | --- | --- | --- | --- | --- | --- | --- | --- | --- | --- | --- | --- | --- |
|  | 3 | **Tai Shu Ha Magazine** |  | 2010-08-21 | 2010-11-23 |  |  |  |  |  |  |  |  |  |  |  |  |  |  |  |  |
|  | 1 | **46 Tai Shu Ha - Site Formation Design** |  | 2010-08-21 | 2010-10-22 |  |  |  |  |  |  |  |  |  |  |  |  |  |  |  |  |
| 8220A-6225 |  | Formation - Prepare, ICE & Submit Design | 12d | 2010-08-21 A | 2010-09-24 A |  | 100% | 2010-08-21 | 2010-09-03 | C822 | B51 | 07 | 0701 | GD01 | T65 | 822 | AA | 613 | 3140 | C010 | 822_AB_W010 |
| 8220A-6235 |  | Formation - Engineer Review & Comment Design | 12d | 2010-09-16 A | 2010-09-29 A | 8220A-6225 | 100% | 2010-09-16 | 2010-09-30 | C822 | B51 | 07 | 0701 | GD01 | T65 | 822 | AA | 613 | 3140 | C010 | 822_AB_W010 |
| 8220A-6245 |  | Formation - Mines Consultation | 12d | 2010-09-16 A | 2010-09-29 A | 8220A-6225 | 100% | 2010-09-16 | 2010-09-30 | C822 | B51 | 07 | 0701 | GD01 | T65 | 822 | AA | 613 | 3140 | C010 | 822_AB_W010 |
| 8220A-6255 |  | Formation - Revise, ICE & Resubmit Design | 12d | 2010-09-30 A | 2010-10-13 A | 8220A-6235, 8220A-6245 | 100% | 2010-09-30 | 2010-10-14 | C822 | B51 | 07 | 0701 | GD01 | T65 | 822 | AA | 613 | 3140 | C010 | 822_AB_W010 |
| 8220A-6265 |  | Formation - Engineer Review & Approve Design | 12d | 2010-10-14 A | 2010-10-22 A | 8220A-6255 | 100% | 2010-10-14 | 2010-10-28 | C822 | B51 | 07 | 0701 | GD01 | T65 | 822 | AA | 613 | 3140 | C010 | 822_AB_W010 |
| 8220A-6275 |  | Formation - Mines Consultation & Approval | 12d | 2010-10-14 A | 2010-10-22 A | 8220A-6255, 8220A-6265 FF | 100% | 2010-10-14 | 2010-10-28 | C822 | B51 | 07 | 0701 | GD01 | T65 | 822 | AA | 613 | 3140 | C010 | 822_AB_W010 |
|  | 2 | **46A Tai Shu Ha - Structural and BS Design** |  | 2010-08-21 | 2010-10-18 |  |  |  |  |  |  |  |  |  |  |  |  |  |  |  |  |
| 8220A-6285 |  | Structure - Prepare, ICE & Submit Design | 12d | 2010-08-21 A | 2010-09-16 A | 8220A-6225 SS | 100% | 2010-08-21 | 2010-09-03 | C822 | B51 | 07 | 0701 | GD01 | T66 | 822 | AA | 613 | 3140 | C010 | 822_AB_W010 |
| 8220A-6295 |  | Structure - Engineer Review & Comment Design | 12d | 2010-09-16 A | 2010-09-29 A | 8220A-6285 | 100% | 2010-09-16 | 2010-09-30 | C822 | B51 | 07 | 0701 | GD01 | T66 | 822 | AA | 613 | 3140 | C010 | 822_AB_W010 |
| 8220A-6305 |  | Structure - Mines Consultation | 12d | 2010-09-16 A | 2010-09-29 A | 8220A-6285 | 100% | 2010-09-16 | 2010-09-30 | C822 | B51 | 07 | 0701 | GD01 | T66 | 822 | AA | 613 | 3140 | C010 | 822_AB_W010 |
| 8220A-6315 |  | Structure - Revise, ICE & Resubmit Design | 12d | 2010-09-30 A | 2010-10-13 A | 8220A-6295, 8220A-6305 | 100% | 2010-09-30 | 2010-10-14 | C822 | B51 | 07 | 0701 | GD01 | T66 | 822 | AA | 613 | 3140 | C010 | 822_AB_W010 |
| 8220A-6325 |  | Structure - Engineer Review & Approve Design | 12d | 2010-10-14 A | 2010-10-18 A | 8220A-6315 | 100% | 2010-10-14 | 2010-10-28 | C822 | B51 | 07 | 0701 | GD01 | T66 | 822 | AA | 613 | 3140 | C010 | 822_AB_W010 |
| 8220A-6705 |  | Structure - Mines Consultation & Approval | 12d | 2010-10-14 A | 2010-10-18 A | 8220A-6315, 8220A-6325 FF | 100% | 2010-10-14 | 2010-10-28 | C822 | B51 | 07 | 0701 | GD01 | T66 | 822 | AA | 613 | 3140 | C010 | 822_AB_W010 |
|  | 3 | **46B Tai Shu Ha - Fire Service Design** |  | 2010-08-31 | 2010-11-23 |  |  |  |  |  |  |  |  |  |  |  |  |  |  |  |  |
| 8220A-6715 |  | FSD - Prepare, ICE & Submit Design | 12d | 2010-08-31 A | 2010-10-19 A |  | 100% | 2010-08-31 | 2010-09-13 | C822 | B51 | 07 | 0701 | GD01 | T67 | 822 | AA | 613 | 3140 | C010 | 822_AB_W010 |
| 8220A-6725 |  | FSD - Engineer Review & Comment Design | 12d | 2010-10-22 A | 2010-11-07 A | 8220A-6715 | 100% | 2010-10-22 | 2010-11-04 | C822 | B51 | 07 | 0701 | GD01 | T67 | 822 | AA | 613 | 3140 | C010 | 822_AB_W010 |
| 8220A-6735 |  | FSD - FSD Consultation | 12d | 2010-10-23 A | 2010-11-07 A | 8220A-6715 | 100% | 2010-10-23 | 2010-11-05 | C822 | B51 | 07 | 0701 | GD01 | T67 | 822 | AA | 613 | 3140 | C010 | 822_AB_W010 |
| 8220A-6745 |  | FSD - Revise, ICE & Resubmit Design | 12d | 2010-10-31 A | 2010-11-14 A | 8220A-6725, 8220A-6735 | 100% | 2010-11-01 | 2010-11-13 | C822 | B51 | 07 | 0701 | GD01 | T67 | 822 | AA | 613 | 3140 | C010 | 822_AB_W010 |
| 8220A-6755 |  | FSD - Engineer Review & Approve Design | 6d | 2010-11-08 A | 2010-11-23 A | 8220A-6745 | 100% | 2010-11-08 | 2010-11-13 | C822 | B51 | 07 | 0701 | GD01 | T67 | 822 | AA | 613 | 3140 | C010 | 822_AB_W010 |
| 8220A-6765 |  | FSD - FSD Consultation & Approval | 12d | 2010-11-09 A | 2010-11-23 A | 8220A-6745, 8220A-6755 FF | 100% | 2010-11-09 | 2010-11-22 | C822 | B51 | 07 | 0701 | GD01 | T67 | 822 | AA | 613 | 3140 | C010 | 822_AB_W010 |
|  | 4 | **So Kwan Wat Magazine** |  | 2010-03-10 | 2010-07-31 |  |  |  |  |  |  |  |  |  |  |  |  |  |  |  |  |
|  | 1 | **45 So Kwan Wat - Site Formation Design** |  | 2010-04-05 | 2010-06-08 |  |  |  |  |  |  |  |  |  |  |  |  |  |  |  |  |
| 8220A-6105 |  | Formation - Prepare, ICE & Submit Design | 12d | 2010-04-05 A | 2010-04-18 A |  | 100% | 2010-04-07 | 2010-04-20 | C822 | B51 | 08 | 0801 | GD01 | T63 | 822 | AA | 613 | 3140 | C010 | 822_AB_W010 |
| 8220A-6115 |  | Formation - Engineer Review & Comment Design | 12d | 2010-04-19 A | 2010-05-10 A | 8220A-6105 | 100% | 2010-04-19 | 2010-05-01 | C822 | B51 | 08 | 0801 | GD01 | T63 | 822 | AA | 613 | 3140 | C010 | 822_AB_W010 |
| 8220A-6125 |  | Formation - Mines Consultation | 12d | 2010-04-19 A | 2010-05-10 A | 8220A-6105 | 100% | 2010-04-19 | 2010-05-01 | C822 | B51 | 08 | 0801 | GD01 | T63 | 822 | AA | 613 | 3140 | C010 | 822_AB_W010 |
| 8220A-6135 |  | Formation - Revise, ICE & Resubmit Design | 12d | 2010-05-11 A | 2010-05-24 A | 8220A-6115, 8220A-6125 | 100% | 2010-05-11 | 2010-05-25 | C822 | B51 | 08 | 0801 | GD01 | T63 | 822 | AA | 613 | 3140 | C010 | 822_AB_W010 |
| 8220A-6145 |  | Formation - Engineer Review & Approve Design | 12d | 2010-05-26 A | 2010-06-08 A | 8220A-6135 | 100% |  |  | C822 | B51 | 08 | 0801 | GD01 | T63 | 822 | AA | 613 | 3140 | C010 | 822_AB_W010 |
| 8220A-6155 |  | Formation - Mines Consultation & Approval | 12d | 2010-05-26 A | 2010-06-08 A | 8220A-6135 | 100% |  |  | C822 | B51 | 08 | 0801 | GD01 | T63 | 822 | AA | 613 | 3140 | C010 | 822_AB_W010 |

| ID | WBS | Activity | Duration | Start | Finish | Predecessors | Complete | Planned start | Planned finish | Calendar | L1 : Project | L2 : Phase | L3 : Area | L4 : Sub-Area | L5 : Element | L6 : Sub-Element | M1: Contracts | M2 : Cost Centre | M3 : Works Area | M4 : Location | M6 : Areas/Rooms | 822_AB_W010 | L7 : System |
| --- | --- | --- | --- | --- | --- | --- | --- | --- | --- | --- | --- | --- | --- | --- | --- | --- | --- | --- | --- | --- | --- | --- | --- |
|  | 2 | **45A So Kwan Wat - Structural and BS Design** |  | 2010-03-10 | 2010-06-30 |  |  |  |  |  |  |  |  |  |  |  |  |  |  |  |  |  |  |
| 8220A-6195 |  | Structure - Revise, ICE & Resubmit Design | 12d | 2010-03-10 A | 2010-03-10 A | 8220A-6175, 8220A-6185 | 100% | 2010-03-10 | 2010-03-23 |  | C822 | B51 | 08 | 0801 | GD01 | T64 | 822 | AA | 613 | 3140 | C010 | 822_AB_W010 |  |
| 8220A-6205 |  | Structure - Engineer Review & Approve Design | 12d | 2010-03-10 A | 2010-03-10 A | 8220A-6195 | 100% | 2010-03-10 | 2010-03-23 |  | C822 | B51 | 08 | 0801 | GD01 | T64 | 822 | AA | 613 | 3140 | C010 | 822_AB_W010 |  |
| 8220A-6215 |  | Structure - Mines Consultation & Approval | 12d | 2010-03-10 A | 2010-03-10 A | 8220A-6195 | 100% | 2010-03-10 | 2010-03-23 |  | C822 | B51 | 08 | 0801 | GD01 | T64 | 822 | AA | 613 | 3140 | C010 | 822_AB_W010 |  |
| 8220A-6165 |  | Structure - Prepare, ICE & Submit Design | 12d | 2010-05-26 A | 2010-06-08 A | 8220A-6105 SS | 100% |  |  |  | C822 | B51 | 08 | 0801 | GD01 | T64 | 822 | AA | 613 | 3140 | C010 | 822_AB_W010 |  |
| 8220A-6175 |  | Structure - Engineer Review & Comment Design | 12d | 2010-06-09 A | 2010-06-30 A | 8220A-6165 | 100% | 2010-06-09 | 2010-06-23 |  | C822 | B51 | 08 | 0801 | GD01 | T64 | 822 | AA | 613 | 3140 | C010 | 822_AB_W010 |  |
| 8220A-6185 |  | Structure - Mines Consultation | 12d | 2010-06-09 A | 2010-06-30 A | 8220A-6165 | 100% | 2010-06-09 | 2010-06-23 |  | C822 | B51 | 08 | 0801 | GD01 | T64 | 822 | AA | 613 | 3140 | C010 | 822_AB_W010 |  |
|  | 3 | **46B So Kwan Wat - Fire Service Design** |  | 2010-07-03 | 2010-07-31 |  |  |  |  |  |  |  |  |  |  |  |  |  |  |  |  |  |  |
| 8220A-6775 |  | FSD - Prepare, ICE & Submit Design | 12d | 2010-07-03 A | 2010-07-16 A |  | 100% |  |  |  | C822 | B51 | 08 | 0801 | GD01 | T68 | 822 | AA | 613 | 3140 | C010 | 822_AB_W010 |  |
| 8220A-6785 |  | FSD - Engineer Review & Comment Design | 12d | 2010-07-16 A | 2010-07-21 A | 8220A-6775 | 100% | 2010-07-16 | 2010-07-29 |  | C822 | B51 | 08 | 0801 | GD01 | T68 | 822 | AA | 613 | 3140 | C010 | 822_AB_W010 |  |
| 8220A-6795 |  | FSD - FSDConsultation | 12d | 2010-07-16 A | 2010-07-21 A | 8220A-6775 | 100% | 2010-07-16 | 2010-07-29 |  | C822 | B51 | 08 | 0801 | GD01 | T68 | 822 | AA | 613 | 3140 | C010 | 822_AB_W010 |  |
| 8220A-6805 |  | FSD - Revise, ICE & Resubmit Design | 12d | 2010-07-22 A | 2010-07-27 A | 8220A-6785, 8220A-6795 | 100% | 2010-07-22 | 2010-08-04 |  | C822 | B51 | 08 | 0801 | GD01 | T68 | 822 | AA | 613 | 3140 | C010 | 822_AB_W010 |  |
| 8220A-6815 |  | FSD - Engineer Review & Approve Design | 12d | 2010-07-27 A | 2010-07-31 A | 8220A-6805 | 100% | 2010-07-27 | 2010-08-09 |  | C822 | B51 | 08 | 0801 | GD01 | T68 | 822 | AA | 613 | 3140 | C010 | 822_AB_W010 |  |
| 8220A-6825 |  | FSD - FSD Consultation & Approval | 12d | 2010-07-27 A | 2010-07-31 A | 8220A-6805, 8220A-6815 FF | 100% | 2010-07-27 | 2010-08-09 |  | C822 | B51 | 08 | 0801 | GD01 | T68 | 822 | AA | 613 | 3140 | C010 | 822_AB_W010 |  |
|  | 5 | **Kwai Chung Site Offices** |  | 2010-03-10 | 2010-05-18 |  |  |  |  |  |  |  |  |  |  |  |  |  |  |  |  |  |  |
|  | 1 | **Engineers Site Office** |  | 2010-03-10 | 2010-05-18 |  |  |  |  |  |  |  |  |  |  |  |  |  |  |  |  |  |  |
| 8220A-2680 |  | ENG - Prepare, ICE & Submit Design | 10.67d | 2010-03-10 A | 2010-03-18 A |  | 100% | 2010-03-10 | 2010-03-22 |  | C822 | B51 | 10 | G001 | GD01 | 11 | 822 | AA | 85 |  | C010 | 822_AB_W010 |  |
| 8220A-2690 |  | ENG - Engineer Review & Comment Design | 16d | 2010-03-19 A | 2010-03-26 A | 8220A-2680 | 100% | 2010-03-19 | 2010-04-10 |  | C822 | B51 | 10 | G001 | GD01 | 11 | 822 | AA | 85 |  | C010 | 822_AB_W010 |  |
| 8220A-2700 |  | ENG - BD Consultation | 16d | 2010-03-19 A | 2010-04-27 A | 8220A-2680 | 100% | 2010-03-19 | 2010-04-10 |  | C822 | B51 | 10 | G001 | GD01 | 11 | 822 | AA | 85 |  | C010 | 822_AB_W010 |  |
| 8220A-2720 |  | ENG - Engineer Review & Approve Design | 16d | 2010-04-28 A | 2010-05-18 A | 8220A-2690, 8220A-2700 | 100% | 2010-04-28 | 2010-05-15 |  | C822 | B51 | 10 | G001 | GD01 | 11 | 822 | AA | 85 |  | C010 | 822_AB_W010 |  |
| 8220A-2730 |  | ENG - BD Consultation | 16d | 2010-04-28 A | 2010-05-18 A | 8220A-2690, 8220A-2700 | 100% | 2010-04-28 | 2010-05-15 |  | C822 | B51 | 10 | G001 | GD01 | 11 | 822 | AA | 85 |  | C010 | 822_AB_W010 |  |
|  | 3 | **Major Procurement Items** |  | 2010-03-10 | 2014-02-18 |  |  |  |  |  |  |  |  |  |  |  |  |  |  |  |  |  |  |
|  | 1 | **Pat Heung** |  | 2010-07-31 | 2010-12-24 |  |  |  |  |  |  |  |  |  |  |  |  |  |  |  |  |  |  |
| 8220A-4960 |  | PH - Procurement & Delivery Pipe Pile | 41d | 2010-07-31 A | 2010-12-24 A |  | 100% | 2010-07-31 | 2010-09-10 | W7 - 24 Hour - 7 day - No Holiday | C822 | C10 | 02 | 0201 | GD01 | 67 |  |  |  |  |  | 822_AB_W010 | EQB |

| ID | WBS | Activity | Duration | Start | Finish | Predecessors | Complete | Planned start | Planned finish | Calendar | L1 : Project | L2 : Phase | L3 : Area | L4 : Sub-Area | L5 : Element | L6 : Sub-Element | 822_AB_W010 | Stef Temp A1 | M1: Contracts | M2 : Cost Centre | M6 : Areas/Rooms | L7 : System |
| --- | --- | --- | --- | --- | --- | --- | --- | --- | --- | --- | --- | --- | --- | --- | --- | --- | --- | --- | --- | --- | --- | --- |
|  | 11 | **Shing Mun** |  | 2010-03-10 | 2014-02-18 |  |  |  |  |  |  |  |  |  |  |  |  |  |  |  |  |  |
| 8220A-9770 |  | Associated Works on Ground Level Design Delivery (incl ICE) | 17.78d | 2011-10-12 A | 2011-11-01 A |  | 100% |  |  |  | C822 | C10 | 03 | G001 | GD01 | 67 | 822_AB_W010 |  |  |  |  |  |
| 8220A-9790 |  | Utilities (Elec and Water Pipe) Design Delivery (incl ICE) | 17.78d | 2011-11-01 A | 2012-08-04 A |  | 100% | 2011-12-01 | 2011-12-21 |  | C822 | C10 | 03 | G001 | GD01 | 67 | 822_AB_W010 | SM |  |  |  |  |
| 8220A-5310 |  | Procure & Deliver Steel Post and Plate for Stockpiling | 12.56d | 2012-04-02 A | 2012-05-18 A | 8220A-9860 | 100% | 2012-08-03 | 2012-08-18 |  | C822 | C10 | 03 | G001 | GD01 | 67 | 822_AB_W010 | SM |  |  |  |  |
| 8220A-5340 |  | Procure & Deliver Associated Works on Ground Level | 25d | 2012-04-02 A | 2012-08-18 A | 8220A-9770 | 100% | 2012-08-01 | 2012-08-29 |  | C822 | C10 | 03 | G001 | GD01 | 67 | 822_AB_W010 | SM |  |  |  |  |
| 8220A-9860 |  | Steel Post and Plate for Stockpiling Design Delivery (incl ICE) | 12.44d | 2012-05-07 A | 2012-08-17 A |  | 100% | 2012-08-01 | 2012-08-15 |  | C822 | C10 | 03 | G001 | GD01 | 67 | 822_AB_W010 | SM |  |  |  |  |
| 8220A-5220 |  | Procure & Deliver Utilities (Elec and Water Pipe) | 17.78d | 2012-09-03 A | 2012-12-07 A | 8220A-9790 | 100% | 2013-01-02 | 2013-01-22 |  | C822 | C10 | 03 | G001 | GD01 | 67 | 822_AB_W010 | SM |  |  |  |  |
|  | 1 | **Pipe Piles** |  | 2010-09-03 | 2010-12-17 |  |  |  |  |  |  |  |  |  |  |  |  |  |  |  |  |  |
| 8220A-4740 |  | SM - Procurement & Delivery of Pipe Piles | 46d | 2010-09-03 A | 2010-12-17 A |  | 100% | 2010-09-03 | 2010-10-19 | W7 - 24 Hour - 7 day - No Holiday | C822 | C10 | 03 | G001 | GD01 | 67 | 822_AB_W010 |  | 822 | AA | C030 | EQB |
|  | 2 | **Mucking Skip/Gantry Crane** |  | 2011-10-01 | 2012-02-04 |  |  |  |  |  |  |  |  |  |  |  |  |  |  |  |  |  |
| 8220A-9840 |  | Mucking Skip Gantry Crane Design Delivery (incl ICE) | 17.78d | 2011-10-01 A | 2011-11-21 A |  | 100% | 2011-10-27 | 2011-11-16 |  | C822 | C10 | 03 | G001 | GD01 | 67 | 822_AB_W010 |  |  |  |  |  |
| 8220A-4760 |  | Procure & Deliver Mucking Skip Gantry Crane | 17.78d | 2011-11-22 A | 2012-02-04 A | 8220A-9840 | 100% | 2011-12-01 | 2011-12-21 |  | C822 | C10 | 03 | G001 | GD01 | 67 | 822_AB_W010 |  |  |  |  |  |
|  | 3 | **Blast Cover & Blast Cage** |  | 2011-11-01 | 2012-08-09 |  |  |  |  |  |  |  |  |  |  |  |  |  |  |  |  |  |
| 8220A-9830 |  | Blast Cage Design Delivery (incl ICE) | 17.78d | 2011-11-01 A | 2012-08-08 A |  | 100% | 2011-12-01 | 2011-12-21 |  | C822 | C10 | 03 | G001 | GD01 | 67 | 822_AB_W010 | SM |  |  |  |  |
| 8220A-4920 |  | Procure & Deliver Blast Cage | 20d | 2012-03-28 A | 2012-04-24 A | 8220A-9830 | 100% |  |  |  | C822 | C10 | 03 | G001 | GD01 | 67 | 822_AB_W010 | SM |  |  |  |  |
| 8220A-4910 |  | Procure & Deliver Blast Cover with Ring Beam | 75d | 2012-04-25 A | 2012-08-09 A | 8220A-9760, 8220A-4920 | 100% | 2012-04-25 | 2012-07-25 |  | C822 | C10 | 03 | G001 | GD01 | 67 | 822_AB_W010 | SM |  |  |  |  |
| 8220A-9760 |  | Blast Cover with Ring Beam Design Delivery (incl ICE) | 24d | 2012-05-08 A | 2012-08-09 A |  | 100% | 2012-08-01 | 2012-08-28 |  | C822 | C10 | 03 | G001 | GD01 | 67 | 822_AB_W010 | SM |  |  |  |  |
|  | 4 | **Access Starircase** |  | 2011-11-10 | 2012-10-10 |  |  |  |  |  |  |  |  |  |  |  |  |  |  |  |  |  |
| 8220A-9810 |  | Secondary Access Staircase Design Delivery (incl ICE) | 17.78d | 2011-11-10 A | 2011-11-30 A | 8220A-9770 | 100% |  |  |  | C822 | C10 | 03 | G001 | GD01 | 67 | 822_AB_W010 | SM |  |  |  |  |
| 8220A-9820 |  | Primary Access Staircase Design Delivery (incl ICE) | 17.78d | 2011-11-10 A | 2011-11-30 A |  | 100% |  |  |  | C822 | C10 | 03 | G001 | GD01 | 67 | 822_AB_W010 | SM |  |  |  |  |
| 8220A-5070 |  | Procure & Deliver Primary Access Staircase | 13d | 2012-02-03 A | 2012-10-06 A | 8220A-9820 | 100% | 2012-08-01 | 2012-08-15 |  | C822 | C10 | 03 | G001 | GD01 | 67 | 822_AB_W010 | SM |  |  |  |  |
| 8220A-5100 |  | Procure & Deliver Secondary Access Staircase | 13d | 2012-05-14 A | 2012-10-10 A | 8220A-9810 | 100% | 2012-08-01 | 2012-08-15 |  | C822 | C10 | 03 | G001 | GD01 | 67 | 822_AB_W010 | SM |  |  |  |  |
|  | 5 | **Man Cage & Rescue Cage** |  | 2012-05-23 | 2012-10-19 |  |  |  |  |  |  |  |  |  |  |  |  |  |  |  |  |  |
| 8220A-9850 |  | Man Cage and Rescue Cage Design Delivery (incl ICE) | 13d | 2012-05-23 A | 2012-10-13 A |  | 100% | 2012-08-01 | 2012-08-15 |  | C822 | C10 | 03 | G001 | GD01 | 67 | 822_AB_W010 |  |  |  |  |  |
| 8220A-5280 |  | Procure & Deliver Man Cage and Rescue Cage | 12d | 2012-06-11 A | 2012-10-19 A | 8220A-9850 | 100% | 2012-08-06 | 2012-08-20 |  | C822 | C10 | 03 | G001 | GD01 | 67 | 822_AB_W010 |  |  |  |  |  |

| ID | WBS | Activity | Type | Duration | Start | Finish | Predecessors | Complete | Planned start | Planned finish | Constraint | Calendar | L1 : Project | L2 : Phase | L3 : Area | L4 : Sub-Area | L5 : Element | L6 : Sub-Element | 822_AB_W010 | M1: Contracts | M2 : Cost Centre | M6 : Areas/Rooms | L7 : System | M4 : Location | M5 :Sub-Location |
| --- | --- | --- | --- | --- | --- | --- | --- | --- | --- | --- | --- | --- | --- | --- | --- | --- | --- | --- | --- | --- | --- | --- | --- | --- | --- |
|  | 6 | **Crash Deck** |  |  | 2010-03-10 | 2010-03-10 |  |  |  |  |  |  |  |  |  |  |  |  |  |  |  |  |  |  |  |
| 8220A-9730 |  | Procure & Deliver Crash Deck (N/A) |  | 25d | 2010-03-10 A | 2010-03-10 A | 8220A-5350 | 100% | 2013-04-03 | 2013-05-03 |  |  | C822 | C10 | 03 | G001 | GD01 | 67 | 822_AB_W010 |  |  |  |  |  |  |
| 8220A-5350 |  | Crash Deck Design Delivery (incl ICE) (N/A) |  | 1d | 2010-03-10 A | 2010-03-10 A |  | 100% |  |  |  |  | C822 | C10 | 03 | G001 | GD01 | 67 | 822_AB_W010 |  |  |  |  |  |  |
|  | 7 | **Vent Ducting and Vent Fan Support** |  |  | 2011-11-01 | 2012-06-08 |  |  |  |  |  |  |  |  |  |  |  |  |  |  |  |  |  |  |  |
| 8220A-9800 |  | Ventilation Fan Support x 2 Design Delivery (incl ICE) |  | 17.78d | 2011-11-01 A | 2012-01-04 A |  | 100% | 2011-12-01 | 2011-12-21 |  |  | C822 | C10 | 03 | G001 | GD01 | 67 | 822_AB_W010 |  |  |  |  |  |  |
| 8220A-5190 |  | Procure & Deliver Ventilation Fan Support x 2 |  | 26d | 2012-02-04 A | 2012-04-13 A |  | 100% | 2012-08-01 | 2012-08-30 |  |  | C822 | C10 | 03 | G001 | GD01 | 67 | 822_AB_W010 |  |  |  |  |  |  |
| 8220A-4900 |  | Procure & Deliver Vent Ducting and Cable for Fan+Bracket |  | 7d | 2012-04-14 A | 2012-05-17 A | 8220A-9740, 8220A-5190 | 100% | 2012-08-09 | 2012-08-17 |  |  | C822 | C10 | 03 | G001 | GD01 | 67 | 822_AB_W010 |  |  |  |  |  |  |
| 8220A-9740 |  | Vent Ducting and Cable for Fan+Bracket Design Delivery (incl ICE) |  | 30d | 2012-04-14 A | 2012-06-08 A |  | 100% | 2012-08-01 | 2012-09-04 |  |  | C822 | C10 | 03 | G001 | GD01 | 67 | 822_AB_W010 |  |  |  |  |  |  |
|  | 8 | **Cat Ladders** |  |  | 2012-05-01 | 2012-11-20 |  |  |  |  |  |  |  |  |  |  |  |  |  |  |  |  |  |  |  |
| 8220A-9750 |  | Cat Ladder to Shaft at decline Design Delivery (incl ICE) |  | 24d | 2012-05-01 A | 2012-08-25 A |  | 100% | 2012-08-01 | 2012-08-28 |  |  | C822 | C10 | 03 | G001 | GD01 | 67 | 822_AB_W010 |  |  |  |  |  |  |
| 8220A-5160 |  | Procure & Deliver Cat Ladder to Shaft at decline |  | 75d | 2012-08-22 A | 2012-11-20 A | 8220A-9750 | 100% | 2013-01-24 | 2013-04-26 |  |  | C822 | C10 | 03 | G001 | GD01 | 67 | 822_AB_W010 |  |  |  |  |  |  |
|  | 9 | **Derrick Crane** |  |  | 2011-11-01 | 2012-02-07 |  |  |  |  |  |  |  |  |  |  |  |  |  |  |  |  |  |  |  |
| 8220A-9780 |  | Derrick Crane Footings Design Delivery (incl ICE) |  | 17.78d | 2011-11-01 A | 2012-01-28 A |  | 100% | 2011-12-01 | 2011-12-21 |  |  | C822 | C10 | 03 | G001 | GD01 | 67 | 822_AB_W010 |  |  |  |  |  |  |
| 8220A-5250 |  | Procure & Deliver Derrick Crane Footings |  | 7d | 2012-01-30 A | 2012-02-07 A | 8220A-9780 | 100% |  |  |  |  | C822 | C10 | 03 | G001 | GD01 | 67 | 822_AB_W010 |  |  |  |  |  |  |
|  | 10 | **Moving Formwork/ Shutters** |  |  | 2012-12-11 | 2014-02-18 |  |  |  |  |  |  |  |  |  |  |  |  |  |  |  |  |  |  |  |
| 8220A9800 |  | SM Shaft - Place order for moving formwork | milestone | 0d | 2012-12-11 A | 2012-12-11 A |  | 100% | 2013-07-22 | 2013-07-22 | as late as possible | W7 - 24 Hour - 7 day - No Holiday | C822 | C10 | 03 | 0301 | GD01 | 67 | 822_AB_W010 |  |  |  |  |  |  |
| 8220A9810 |  | SM Shaft - Fabrication of moving formwork |  | 140d | 2012-12-12 A | 2014-02-14 A | 8220A9800 | 100% | 2013-07-22 | 2013-12-09 |  | W7 - 24 Hour - 7 day - No Holiday | C822 | C10 | 03 | 0301 | GD01 | 67 | 822_AB_W010 |  |  |  |  |  |  |
| 8220A9820 |  | SM Shaft - Delivery of moving formwork components to site |  | 4d | 2014-02-15 A | 2014-02-18 A | 8220A9810 | 100% | 2014-03-08 | 2014-03-12 |  | W7 - 24 Hour - 7 day - No Holiday | C822 | C10 | 03 | 0301 | GD01 | 67 | 822_AB_W010 |  |  |  |  |  |  |
|  | 10 | **Main Tunnels** |  |  | 2010-03-10 | 2011-11-17 |  |  |  |  |  |  |  |  |  |  |  |  |  |  |  |  |  |  |  |
|  | 1 | **Drilling Jumbos** |  |  | 2010-03-10 | 2011-04-05 |  |  |  |  |  |  |  |  |  |  |  |  |  |  |  |  |  |  |  |
| 8220A-4680 |  | Place Order of Jumbo, Major Plant & Equipment |  | 15.67d | 2010-03-10 A | 2010-04-25 A |  | 100% | 2010-03-10 | 2010-03-26 |  | W7 - 24 Hour - 7 day - No Holiday | C822 | C10 | 01 | G001 | GD01 | 67 | 822_AB_W010 | 822 | AA | C030 | EQ4 |  |  |
| 8220A-4690 |  | Procurement & Delivery of T8 Jumbo (SY Adit) |  | 11.67d | 2010-04-26 A | 2010-05-29 A | 8220A-4680 | 100% | 2010-04-26 | 2010-05-08 |  | W7 - 24 Hour - 7 day - No Holiday | C822 | C10 | 01 | G001 | GD01 | 67 | 822_AB_W010 | 822 | AA | C030 | EQ4 | 2240 |  |
| 8220A-4780 |  | Procurement & Delivery of T12 Jumbos X2 |  | 73d | 2010-04-26 A | 2011-04-04 A | 8220A-4690 SS | 100% | 2010-04-26 | 2010-07-08 |  | W7 - 24 Hour - 7 day - No Holiday | C822 | C10 | 01 | G001 | GD01 | 67 | 822_AB_W010 | 822 | AA | C030 | EQ4 | 2210 | TUNM |
| 8220A-4790 |  | Procurement & Delivery of T13 Jumbos X2 |  | 113d | 2010-04-26 A | 2011-04-05 A | 8220A-4780 SS | 100% | 2010-04-26 | 2010-08-17 |  | W7 - 24 Hour - 7 day - No Holiday | C822 | C10 | 01 | G001 | GD01 | 67 | 822_AB_W010 | 822 | AA | C030 | EQ4 | 2210 | TUNM |

| ID | WBS | Activity | Duration | Start | Finish | Predecessors | Complete | Planned start | Planned finish | Calendar | L1 : Project | L2 : Phase | L3 : Area | L4 : Sub-Area | L5 : Element | L6 : Sub-Element | M1: Contracts | M2 : Cost Centre | M4 : Location | M6 : Areas/Rooms | L7 : System | 822_AB_W010 | M5 :Sub-Location |
| --- | --- | --- | --- | --- | --- | --- | --- | --- | --- | --- | --- | --- | --- | --- | --- | --- | --- | --- | --- | --- | --- | --- | --- |
|  | 2 | **Excavators** |  | 2010-03-26 | 2011-05-26 |  |  |  |  |  |  |  |  |  |  |  |  |  |  |  |  |  |  |
| 8220A-7590 |  | Procure & Deliver Excavators x 1 for Shek Yam | 113.33d | 2010-03-26 A | 2011-05-26 A | 8220A-4680 | 100% | 2010-03-26 | 2010-07-17 | W7 - 24 Hour - 7 day - No Holiday | C822 | C10 | 01 | G001 | GD01 | 67 | 822 | AA | 2240 | C030 | EQA | 822_AB_W010 |  |
| 8220A-7560 |  | Procure & Deliver Excavators x 2 for Shing Mun | 113.33d | 2010-04-26 A | 2011-03-30 A | 8220A-4680 | 100% | 2010-04-26 | 2010-08-17 | W7 - 24 Hour - 7 day - No Holiday | C822 | C10 | 01 | G001 | GD01 | 67 | 822 | AA | 2220 | C030 | EQA | 822_AB_W010 |  |
| 8220A-7570 |  | Procure & Deliver Excavators x 1 for Shek Yam | 32.33d | 2010-04-26 A | 2010-12-05 A | 8220A-4680 | 100% | 2010-04-26 | 2010-05-28 | W7 - 24 Hour - 7 day - No Holiday | C822 | C10 | 01 | G001 | GD01 | 67 | 822 | AA | 2240 | C030 | EQA | 822_AB_W010 |  |
| 8220A-7580 |  | Procure & Deliver Excavators x 1 for Shek Yam | 42.33d | 2010-04-26 A | 2010-12-03 A | 8220A-4680 | 100% | 2010-04-26 | 2010-06-07 | W7 - 24 Hour - 7 day - No Holiday | C822 | C10 | 01 | G001 | GD01 | 67 | 822 | AA | 2240 | C030 | EQA | 822_AB_W010 |  |
| 8220A-7600 |  | Procure & Deliver Excavators x 1 for Shek Yam | 42.33d | 2010-04-26 A | 2010-12-13 A | 8220A-4680 | 100% | 2010-04-26 | 2010-06-07 | W7 - 24 Hour - 7 day - No Holiday | C822 | C10 | 01 | G001 | GD01 | 67 | 822 | AA | 2240 | C030 | EQA | 822_AB_W010 |  |
| 8220A-7610 |  | Procure & Deliver Excavators x 1 for Shek Yam | 73d | 2010-04-26 A | 2010-12-04 A | 8220A-4680 | 100% | 2010-04-26 | 2010-07-08 | W7 - 24 Hour - 7 day - No Holiday | C822 | C10 | 01 | G001 | GD01 | 67 | 822 | AA | 2240 | C030 | EQA | 822_AB_W010 |  |
| 8220A-7625 |  | Procure & Deliver Excavators x 4 for Pat Heung | 93.33d | 2010-04-27 A | 2010-12-10 A | 8220A-4680 | 100% | 2010-04-27 | 2010-07-29 | W7 - 24 Hour - 7 day - No Holiday | C822 | C10 | 01 | G001 | GD01 | 67 | 822 | AA | 2230 | C030 | EQA | 822_AB_W010 |  |
|  | 3 | **Wheel Loaders** |  | 2010-04-26 | 2011-05-13 |  |  |  |  |  |  |  |  |  |  |  |  |  |  |  |  |  |  |
| 8220A-4700 |  | Procure & Deliver Tunnel Loader (Cat966) SY/PH | 12d | 2010-04-26 A | 2010-09-18 A | 8220A-4680 | 100% | 2010-04-26 | 2010-05-08 | W7 - 24 Hour - 7 day - No Holiday | C822 | C10 | 01 | G001 | GD01 | 67 | 822 | AA | 2240 | C030 | EQ5 | 822_AB_W010 |  |
| 8220A-7450 |  | Procure & Deliver Tunnel Loader (Cat980) Tunnel | 73d | 2010-04-26 A | 2010-12-04 A | 8220A-4700 SS | 100% | 2010-04-26 | 2010-07-08 | W7 - 24 Hour - 7 day - No Holiday | C822 | C10 | 01 | G001 | GD01 | 67 | 822 | AA | 2210 | C030 | EQ5 | 822_AB_W010 | TUNM |
| 8220A-7460 |  | Procure & Deliver Tunnel Loader (Cat988) Tunnel | 82.67d | 2010-04-26 A | 2010-11-12 A | 8220A-7450 SS | 100% | 2010-04-26 | 2010-07-18 | W7 - 24 Hour - 7 day - No Holiday | C822 | C10 | 01 | G001 | GD01 | 67 | 822 | AA | 2210 | C030 | EQ5 | 822_AB_W010 | TUNM |
| 8220A-7470 |  | Procure & Deliver Tunnel Loader (Cat988) PHVAA | 94.33d | 2010-04-26 A | 2011-05-13 A | 8220A-7460 SS | 100% | 2010-04-26 | 2010-07-29 | W7 - 24 Hour - 7 day - No Holiday | C822 | C10 | 01 | G001 | GD01 | 67 | 822 | AA | 2280 | C030 | EQ5 | 822_AB_W010 |  |
|  | 4 | **Shotcrete Plant** |  | 2010-04-26 | 2010-09-09 |  |  |  |  |  |  |  |  |  |  |  |  |  |  |  |  |  |  |
| 8220A-4710 |  | Procurement & Delivery of Shotcrete Batching | 38.33d | 2010-04-26 A | 2010-09-09 A | 8220A-4680 | 100% | 2010-04-26 | 2010-06-03 | W7 - 24 Hour - 7 day - No Holiday | C822 | C10 | 04 | 0401 | GD01 | 67 | 822 | AA | 2240 | C030 | EQ6 | 822_AB_W010 |  |
|  | 5 | **Crusher/Conveyor** |  | 2010-06-01 | 2011-04-07 |  |  |  |  |  |  |  |  |  |  |  |  |  |  |  |  |  |  |
| 8220A-4670 |  | Procurement & Delivery of Conveyor System | 62.67d | 2010-06-01 A | 2011-04-07 A | 8220A-4690 SS | 100% | 2010-06-01 | 2010-08-03 | W7 - 24 Hour - 7 day - No Holiday | C822 | C10 | 01 | G001 | GD01 | 67 | 822 | AA | 2240 | C030 | EQ3 | 822_AB_W010 |  |
| 8220A-4730 |  | SY - Procure & Delivery of Crushing Plant | 40d | 2010-08-01 A | 2011-03-06 A | 8220A-4680 | 100% | 2010-08-01 | 2010-09-10 | W7 - 24 Hour - 7 day - No Holiday | C822 | C10 | 04 | 0401 | GD01 | 67 | 822 | AA | 2240 | C030 | EQ8 | 822_AB_W010 |  |
|  | 6 | **Dump Trucks** |  | 2010-04-26 | 2011-07-28 |  |  |  |  |  |  |  |  |  |  |  |  |  |  |  |  |  |  |
| 8220A-7480 |  | Procure & Deliver Dump Trucks x 3 for Shek Yam | 62.67d | 2010-04-26 A | 2010-12-03 A | 8220A-4690 SS | 100% | 2010-04-26 | 2010-06-28 | W7 - 24 Hour - 7 day - No Holiday | C822 | C10 | 01 | G001 | GD01 | 67 | 822 | AA | 2240 | C030 | EQ9 | 822_AB_W010 |  |
| 8220A-7490 |  | Procure & Deliver Dump Trucks x 1 for Shek Yam | 73d | 2010-04-26 A | 2010-12-05 A | 8220A-7480 SS | 100% | 2010-04-26 | 2010-07-08 | W7 - 24 Hour - 7 day - No Holiday | C822 | C10 | 01 | G001 | GD01 | 67 | 822 | AA | 2240 | C030 | EQ9 | 822_AB_W010 |  |
| 8220A-7530 |  | Procure & Deliver Dump Trucks x 4 for Pat Heung | 83d | 2010-04-26 A | 2010-12-26 A |  | 100% | 2010-04-26 | 2010-07-18 | W7 - 24 Hour - 7 day - No Holiday | C822 | C10 | 01 | G001 | GD01 | 67 | 822 | AA | 2230 | C030 | EQ9 | 822_AB_W010 |  |
| 8220A-7540 |  | Procure & Deliver Dump Trucks x 3 for Pat Heung | 164.33d | 2010-04-26 A | 2011-07-28 A | 8220A-7530 SS | 100% | 2010-04-26 | 2010-10-07 | W7 - 24 Hour - 7 day - No Holiday | C822 | C10 | 01 | G001 | GD01 | 67 | 822 | AA | 2230 | C030 | EQ9 | 822_AB_W010 |  |
| 8220A-7550 |  | Procure & Deliver Dump Trucks x 1 for Shek Yam | 93.67d | 2010-04-27 A | 2011-02-23 A |  | 100% | 2010-04-27 | 2010-07-30 | W7 - 24 Hour - 7 day - No Holiday | C822 | C10 | 01 | G001 | GD01 | 67 | 822 | AA | 2240 | C030 | EQ9 | 822_AB_W010 |  |

| ID | WBS | Activity | Type | Duration | Start | Finish | Predecessors | Complete | Planned start | Planned finish | Total float | Free float | Constraint | Calendar | L1 : Project | L2 : Phase | L3 : Area | L4 : Sub-Area | L5 : Element | L6 : Sub-Element | M1: Contracts | M2 : Cost Centre | M4 : Location | M6 : Areas/Rooms | L7 : System | 822_AB_W010 | Stef Temp A1 | M5 :Sub-Location |
| --- | --- | --- | --- | --- | --- | --- | --- | --- | --- | --- | --- | --- | --- | --- | --- | --- | --- | --- | --- | --- | --- | --- | --- | --- | --- | --- | --- | --- |
|  | 7 | **Waste Water Treatment Plant** |  |  | 2010-05-20 | 2010-10-30 |  |  |  |  |  |  |  |  |  |  |  |  |  |  |  |  |  |  |  |  |  |  |
| 8220A-4650 |  | SY - Proc & Delivery Waste Water Treatment |  | 20d | 2010-05-20 A | 2010-06-19 A | 8220A-4690 SS | 100% | 2010-05-20 | 2010-06-09 |  |  |  | W7 - 24 Hour - 7 day - No Holiday | C822 | C10 | 04 | 0401 | GD01 | 67 | 822 | AA | 2240 | C030 | EQ1 | 822_AB_W010 |  |  |
| 8220A-9670 |  | PH - Proc & Delivery Waste Water Treatment |  | 20d | 2010-09-23 A | 2010-10-30 A |  | 100% | 2010-05-20 | 2010-06-09 |  |  |  | W7 - 24 Hour - 7 day - No Holiday | C822 | C10 | 04 | 0401 | GD01 | 67 | 822 | AA | 2240 | C030 | EQ1 | 822_AB_W010 |  |  |
|  | 8 | **Tunnel Ventilation System** |  |  | 2010-08-01 | 2011-11-17 |  |  |  |  |  |  |  |  |  |  |  |  |  |  |  |  |  |  |  |  |  |  |
| 8220A-4720 |  | SY - Procure & Delivery of Ventilation System |  | 40d | 2010-08-01 A | 2011-01-06 A | 8220A-4680 | 100% | 2010-08-01 | 2010-09-10 |  |  |  | W7 - 24 Hour - 7 day - No Holiday | C822 | C10 | 04 | 0401 | PH07 | 67 | 822 | AA | 2240 | C030 | EQ7 | 822_AB_W010 |  |  |
| 8220A-9680 |  | SY - Procure & Delivery of Ventilation System |  | 40d | 2011-07-28 A | 2011-11-17 A |  | 100% | 2010-08-01 | 2010-09-10 |  |  |  | W7 - 24 Hour - 7 day - No Holiday | C822 | C10 | 04 | 0401 | PH07 | 67 | 822 | AA | 2240 | C030 | EQ7 | 822_AB_W010 |  |  |
|  | 5 | **Interfacing Works Contractors** |  |  | 2010-04-12 | 2017-12-26 |  |  |  |  |  |  |  |  |  |  |  |  |  |  |  |  |  |  |  |  |  |  |
|  | 1 | **C8203 - Construction Stage Mobile Phone Network** |  |  | 2017-01-02 | 2017-01-02 |  |  |  |  |  |  |  |  |  |  |  |  |  |  |  |  |  |  |  |  |  |  |
| 8220A-3770 |  | 8203 Construction Stage Mobile Phone Net - PHVAA | milestone | 0d | 2017-01-02 | 2017-01-02 |  |  |  |  | -1304.67d | 461.57d | start on or after 2013-06-02; start on or before 2013-06-02 | W7 - 24 Hour - 7 day - No Holiday | C822 | B65 | 02 | 0203 | GD01 |  | 822 | AA | 2280 |  | 203 |  |  |  |
| 8220A-3780 |  | 8203 Construction Stage Mobile Phone Net - PHVA | milestone | 0d | 2017-01-02 | 2017-01-02 |  |  |  |  | -1213.67d | 461.57d | start on or after 2013-09-01; start on or before 2013-09-01 | W7 - 24 Hour - 7 day - No Holiday | C822 | B65 | 01 | G001 | GD01 |  | 822 | AA | 2270 |  | 203 |  |  |  |
| 8220A-3790 |  | 8203 Construction Stage Mobile Phone Net - SM | milestone | 0d | 2017-01-02 | 2017-01-02 |  |  |  |  | -1213.67d | 461.57d | start on or after 2013-09-01; start on or before 2013-09-01 | W7 - 24 Hour - 7 day - No Holiday | C822 | B65 | 01 | G001 | GD01 |  | 822 | AA |  |  | 203 |  | SM |  |
| 8220A-3800 |  | 8203 Construction Stage Mobile Phone Net-Tunnels | milestone | 0d | 2017-01-02 | 2017-01-02 |  |  |  |  | -1213.67d | 461.57d | start on or after 2013-09-01; start on or before 2013-09-01 | W7 - 24 Hour - 7 day - No Holiday | C822 | B65 | 01 | G001 | GD01 |  | 822 | AA |  |  | 203 |  |  |  |
|  | 18 | **C821 - Shek Yam to Mei Lai Road Tunnels (Dragages - Bouygues JV)** |  |  |  |  |  |  |  |  |  |  |  |  |  |  |  |  |  |  |  |  |  |  |  |  |  |  |
|  | 2 | **C801 - Tree Transplanting / Felling** |  |  | 2010-04-12 | 2010-07-17 |  |  |  |  |  |  |  |  |  |  |  |  |  |  |  |  |  |  |  |  |  |  |
| 8220A-3810 |  | 801 - Confirm Planned Start Date, Lifting Prog |  | 4.67d | 2010-04-12 A | 2010-04-25 A |  | 100% | 2010-04-12 | 2010-04-17 |  |  |  | W7 - 24 Hour - 7 day - No Holiday | C822 | B65 | 01 | G001 | GD01 |  | 801 | AA |  |  | 801 | 822_AB_W010 |  |  |
| 8220A-3820 |  | 801 - Complete Tree Transplant from Shing Mun | milestone | 0d | 2010-07-17 A | 2010-07-17 A |  | 100% |  |  |  |  |  | W7 - 24 Hour - 7 day - No Holiday | C822 | B65 | 01 | G001 | GD01 |  | 801 | AA |  |  | 801 | 822_AB_W010 |  |  |
|  | 19 | **C823 - Tai Kong Po to Tse Uk Tsuen Tunnels (Maeda - China State JV)** |  |  | 2012-11-26 | 2012-11-26 |  |  |  |  |  |  |  |  |  |  |  |  |  |  |  |  |  |  |  |  |  |  |
| 8220A-3840 |  | 823A Complete Tse Uk Tsuen Shaft (Tentative from C823) | milestone | 0d | 2012-11-26 A | 2012-11-26 A |  | 100% | 2013-01-01 | 2013-01-01 |  |  | start on 2012-10-31 | W7 - 24 Hour - 7 day - No Holiday | C822 | B50 | 01 | 0501 | GD01 |  | 822 | AA |  | C010 | 823 | 822_AB_W010 |  |  |
|  | 3 | **C827 - Cross Passage Doors and Frames** |  |  | 2017-01-02 | 2017-01-02 |  |  |  |  |  |  |  |  |  |  |  |  |  |  |  |  |  |  |  |  |  |  |
| 8220A-3860 |  | 827 Cross Passage Door Frame- All Cross Passages | milestone | 0d | 2017-01-02 | 2017-01-02 |  |  |  |  | -1248.67d | 461.57d | start on or after 2013-07-28; start on or before 2013-07-28 | W7 - 24 Hour - 7 day - No Holiday | C822 | B65 | 01 | G001 | GD01 |  | 822 | AA |  |  | 827 |  |  |  |
| 8220A-3870 |  | 827 Cross Passage Door - All Cross Passages | milestone | 0d | 2017-01-02 | 2017-01-02 |  |  |  |  | -878.67d | 461.57d | start on or after 2014-08-03; start on or before 2014-08-03 | W7 - 24 Hour - 7 day - No Holiday | C822 | B65 | 01 | G001 | GD01 |  | 822 | AA |  |  | 827 |  |  |  |
|  | 4 | **C830 Trackwork and OHL System (Chun Wo-CRGL-QR Joint Venture)** |  |  | 2014-03-27 | 2017-04-29 |  |  |  |  |  |  |  |  |  |  |  |  |  |  |  |  |  |  |  |  |  |  |
| 8220A-4130 |  | 830 Trackwork and OHL System - Tunnel Type C South Partly | milestone | 0d | 2014-03-27 A | 2014-03-27 A |  | 100% |  |  |  |  |  | M |  |  |  |  |  |  |  |  |  |  |  | 822_AB_W010 |  |  |
| 8220A-3900 |  | 830 Trackwork and OHL System - SM Adit & EAP | milestone | 0d | 2017-01-02 | 2017-01-02 |  |  |  |  | -1094.67d | 461.57d | start on or after 2013-12-29; start on or before 2013-12-29 | W7 - 24 Hour - 7 day - No Holiday | C822 | B65 | 01 | G001 | GD01 |  | 822 | AA | 2260 |  | 830 |  | EAP |  |
| 8220A-3910 |  | 830 Trackwork and OHL System - PHVA | milestone | 0d | 2017-01-02 | 2017-01-02 |  |  |  |  | -1094.67d | 461.57d | start on or after 2013-12-29; start on or before 2013-12-29 | W7 - 24 Hour - 7 day - No Holiday | C822 | B65 | 01 | G001 | GD01 |  | 822 | AA | 2270 |  | 830 |  |  |  |
| 8220A-3920 |  | 830 Trackwork and OHL System - PHVAA | milestone | 0d | 2017-01-02 | 2017-01-02 |  |  |  |  | -1032.67d | 461.57d | start on or after 2014-03-02; start on or before 2014-03-02 | W7 - 24 Hour - 7 day - No Holiday | C822 | B65 | 02 | 0203 | GD01 |  | 822 | AA | 2280 |  | 830 |  |  |  |
| 8220A-3880 |  | 830 Trackwork and OHL System - Tunnels | milestone | 0d | 2017-01-30 | 2017-01-30 | 8220X-0010, 8220X-0010 SS |  |  |  | -627.33d | 433.23d |  | W7 - 24 Hour - 7 day - No Holiday | C822 | B65 | 01 | G001 | GD01 |  | 822 | AA | 2210 |  | 830 |  |  | TUNM |
| 8220A-3890 |  | 830 Trackwork and OHL System - VB5 TSC | milestone | 0d | 2017-04-29 | 2017-04-29 | 8220G1860 |  |  |  | -1303.35d | 343.88d | start on or after 2013-09-29; start on or before 2013-09-29 | W7 - 24 Hour - 7 day - No Holiday | C822 | B65 | 01 | G001 | GD01 |  | 822 | AA | 2220 |  | 830 |  |  |  |

| ID | WBS | Activity | Type | Duration | Start | Finish | Predecessors | Complete | Planned start | Planned finish | Total float | Free float | Constraint | Calendar | L1 : Project | L2 : Phase | L3 : Area | L4 : Sub-Area | L5 : Element | M1: Contracts | M2 : Cost Centre | M4 : Location | L7 : System | Stef Temp A1 | M5 :Sub-Location | 822_AB_W010 |
| --- | --- | --- | --- | --- | --- | --- | --- | --- | --- | --- | --- | --- | --- | --- | --- | --- | --- | --- | --- | --- | --- | --- | --- | --- | --- | --- |
|  | 5 | **C841A - Signalling System Trackside Equipment** |  |  | 2017-01-02 | 2017-01-02 |  |  |  |  |  |  |  |  |  |  |  |  |  |  |  |  |  |  |  |  |
| 8220A-3930 |  | 841A Signalling System Trackside Equip - VB5 | milestone | 0d | 2017-01-02 | 2017-01-02 |  |  |  |  | -1122.67d | 461.57d | start on or after 2013-12-01; start on or before 2013-12-01 | W7 - 24 Hour - 7 day - No Holiday | C822 | B65 | 01 | G001 | GD01 | 822 | AA | 2220 | 841 | SM |  |  |
| 8220A-3950 |  | 841A Signalling System Trackside Equip - VB4 | milestone | 0d | 2017-01-02 | 2017-01-02 |  |  |  |  | -1032.67d | 461.57d | start on or after 2014-03-02; start on or before 2014-03-02 | W7 - 24 Hour - 7 day - No Holiday | C822 | B65 | 01 | G001 | GD01 | 822 | AA | 2230 | 841 |  |  |  |
| 8220A-3960 |  | 841A Signalling System Trackside Equip - SMEAP | milestone | 0d | 2017-01-02 | 2017-01-02 |  |  |  |  | -1032.67d | 461.57d | start on or after 2014-03-02; start on or before 2014-03-02 | W7 - 24 Hour - 7 day - No Holiday | C822 | B65 | 01 | G001 | GD01 | 822 | AA | 2260 | 841 | EAP |  |  |
| 8220A-3970 |  | 841A Signalling System Trackside Equip - PH | milestone | 0d | 2017-01-02 | 2017-01-02 |  |  |  |  | -1032.67d | 461.57d | start on or after 2014-03-02; start on or before 2014-03-02 | W7 - 24 Hour - 7 day - No Holiday | C822 | B65 | 01 | G001 | GD01 | 822 | AA | 2230 | 841 |  |  |  |
| 8220A-4010 |  | 841A Signalling System Trackside Equip - PHVAA | milestone | 0d | 2017-01-02 | 2017-01-02 |  |  |  |  | -997.67d | 461.57d | start on or after 2014-04-06; start on or before 2014-04-06 | W7 - 24 Hour - 7 day - No Holiday | C822 | B65 | 02 | 0203 | GD01 | 822 | AA | 2280 | 841 |  |  |  |
| 8220A-4020 |  | 841A Signalling SysTrackside Equip - Tunnels | milestone | 0d | 2017-01-02 | 2017-01-02 |  |  |  |  | -997.67d | 461.57d | start on or after 2014-04-06; start on or before 2014-04-06 | W7 - 24 Hour - 7 day - No Holiday | C822 | B65 | 01 | G001 | GD01 | 822 | AA | 2210 | 841 |  | TUNM |  |
|  | 6 | **C841B - Signalling System Trainborne Equipment** |  |  | 2017-01-02 | 2017-01-02 |  |  |  |  |  |  |  |  |  |  |  |  |  |  |  |  |  |  |  |  |
| 8220A-3940 |  | 841B Signalling System Train Borne Equip - VB5 | milestone | 0d | 2017-01-02 | 2017-01-02 |  |  |  |  | -1122.67d | 461.57d | start on or after 2013-12-01; start on or before 2013-12-01 | W7 - 24 Hour - 7 day - No Holiday | C822 | B65 | 01 | G001 | GD01 | 822 | AA | 2220 | 842 | SM |  |  |
| 8220A-3980 |  | 841B Signalling System Train Borne Equip - VB4 | milestone | 0d | 2017-01-02 | 2017-01-02 |  |  |  |  | -1032.67d | 461.57d | start on or after 2014-03-02; start on or before 2014-03-02 | W7 - 24 Hour - 7 day - No Holiday | C822 | B65 | 01 | G001 | GD01 | 822 | AA | 2230 | 842 |  |  |  |
| 8220A-3990 |  | 841B Signalling System Train Borne Equip - SMEAP | milestone | 0d | 2017-01-02 | 2017-01-02 |  |  |  |  | -1032.67d | 461.57d | start on or after 2014-03-02; start on or before 2014-03-02 | W7 - 24 Hour - 7 day - No Holiday | C822 | B65 | 01 | G001 | GD01 | 822 | AA | 2260 | 842 | EAP |  |  |
| 8220A-4000 |  | 841B Signalling System Train Borne Equip - PHVA | milestone | 0d | 2017-01-02 | 2017-01-02 |  |  |  |  | -1032.67d | 461.57d | start on or after 2014-03-02; start on or before 2014-03-02 | W7 - 24 Hour - 7 day - No Holiday | C822 | B65 | 01 | G001 | GD01 | 822 | AA | 2270 | 842 |  |  |  |
| 8220A-4030 |  | 841B Signalling System Train Borne Equip - PHVAA | milestone | 0d | 2017-01-02 | 2017-01-02 |  |  |  |  | -997.67d | 461.57d | start on or after 2014-04-06; start on or before 2014-04-06 | W7 - 24 Hour - 7 day - No Holiday | C822 | B65 | 02 | 0203 | GD01 | 822 | AA | 2280 | 842 |  |  |  |
| 8220A-4040 |  | 841B Signalling Sys Train Borne Equip - Tunnels | milestone | 0d | 2017-01-02 | 2017-01-02 |  |  |  |  | -997.67d | 461.57d | start on or after 2014-04-06; start on or before 2014-04-06 | W7 - 24 Hour - 7 day - No Holiday | C822 | B65 | 01 | G001 | GD01 | 822 | AA | 2210 | 842 |  | TUNM |  |
|  | 7 | **C843 - Tunnel Environmental Control System (GAS Joint Venture)** |  |  | 2013-12-02 | 2017-12-26 |  |  |  |  |  |  |  |  |  |  |  |  |  |  |  |  |  |  |  |  |
| 8220A-4060 |  | 843 Tunnel Environmental Control System - VB4 | milestone | 0d | 2013-12-02 A | 2013-12-02 A |  | 100% | 2014-01-01 | 2014-01-01 |  |  | start on or after 2013-12-29; start on or before 2013-12-29 | W7 - 24 Hour - 7 day - No Holiday | C822 | B65 | 01 | G001 | GD01 | 822 | AA | 2230 | 843 |  |  | 822_AB_W010 |
| 8220A-4070 |  | 843 Tunnel Environmental Control System - SM EAP | milestone | 0d | 2017-01-02 | 2017-01-02 |  |  |  |  | -1094.67d | 461.57d | start on or after 2013-12-29; start on or before 2013-12-29 | W7 - 24 Hour - 7 day - No Holiday | C822 | B65 | 01 | G001 | GD01 | 822 | AA | 2260 | 843 | EAP |  |  |
| 8220A-4080 |  | 843 Tunnel Environmental Control System - PHVA | milestone | 0d | 2017-01-02 | 2017-01-02 |  |  |  |  | -1094.67d | 461.57d | start on or after 2013-12-29; start on or before 2013-12-29 | W7 - 24 Hour - 7 day - No Holiday | C822 | B65 | 01 | G001 | GD01 | 822 | AA | 2270 | 843 |  |  |  |
| 8220A-4090 |  | 843 Tunnel Environmental Control System - PHVAA | milestone | 0d | 2017-01-02 | 2017-01-02 |  |  |  |  | -1032.67d | 461.57d | start on or after 2014-03-02; start on or before 2014-03-02 | W7 - 24 Hour - 7 day - No Holiday | C822 | B65 | 02 | 0203 | GD01 | 822 | AA | 2280 | 843 |  |  |  |
| 8220A-4100 |  | 843 - Delivery of Equipment/Materials at VB5 & VB4 (DIS) |  | 49d | 2017-01-02 | 2017-02-27 |  |  |  |  | -863d | 0d | start on 2014-03-05 | W822 - 1 - 6D+ All Holidays |  |  |  |  |  |  |  |  |  |  |  |  |
| 8220A-4110 |  | 843 - Complete all Installation, Testing and Commissioning for TECS at VB5 & VB4 (DIS) |  | 142d | 2017-02-28 | 2017-08-11 | 8220A-4100 |  |  |  | -821d | 0d |  | W822 - 1 - 6D+ All Holidays |  |  |  |  |  |  |  |  |  |  |  |  |
| 8220A-4050 |  | 843 Tunnel Environmental Control System - VB5 | milestone | 0d | 2017-04-29 | 2017-04-29 | 8220G1820 |  |  |  | -1303.35d | 343.88d | start on or after 2013-09-29; start on or before 2013-09-29 | W7 - 24 Hour - 7 day - No Holiday | C822 | B65 | 01 | G001 | GD01 | 822 | AA | 2220 | 843 | SM |  |  |
| 8220A-4120 |  | 843 - Complete Integrated T&C with DC's at VB5 & VB4 (DIS) |  | 116d | 2017-08-12 | 2017-12-26 | 8220A-4110 |  |  |  | -821d | 78.88d |  | W822 - 1 - 6D+ All Holidays |  |  |  |  |  |  |  |  |  |  |  |  |
|  | 8 | **C844 - Power Supply (China Light and Power)** |  |  | 2017-01-02 | 2017-04-29 |  |  |  |  |  |  |  |  |  |  |  |  |  |  |  |  |  |  |  |  |
| 8220A-4190 |  | 844 Power Supply by CLP - VB4 | milestone | 0d | 2017-01-02 | 2017-01-02 |  |  |  |  | -1094.67d | 461.57d | start on or after 2013-12-29; start on or before 2013-12-29 | W7 - 24 Hour - 7 day - No Holiday | C822 | B65 | 01 | G001 | GD01 | 822 | AA | 2230 | 844 |  |  |  |
| 8220A-4200 |  | 844 Power Supply by CLP - SMEAP | milestone | 0d | 2017-01-02 | 2017-01-02 |  |  |  |  | -1094.67d | 461.57d | start on or after 2013-12-29; start on or before 2013-12-29 | W7 - 24 Hour - 7 day - No Holiday | C822 | B65 | 01 | G001 | GD01 | 822 | AA | 2260 | 844 | EAP |  |  |
| 8220A-4210 |  | 844 Power Supply by CLP - PHVA | milestone | 0d | 2017-01-02 | 2017-01-02 |  |  |  |  | -1094.67d | 461.57d | start on or after 2013-12-29; start on or before 2013-12-29 | W7 - 24 Hour - 7 day - No Holiday | C822 | B65 | 01 | G001 | GD01 | 822 | AA | 2270 | 844 |  |  |  |
| 8220A-4220 |  | 844 Power Supply by CLP - PHVAA | milestone | 0d | 2017-01-02 | 2017-01-02 |  |  |  |  | -1032.67d | 461.57d | start on or after 2014-03-02; start on or before 2014-03-02 | W7 - 24 Hour - 7 day - No Holiday | C822 | B65 | 02 | 0203 | GD01 | 822 | AA | 2280 | 844 |  |  |  |
| 8220A-4230 |  | 844 Power Supply by CLP - Tunnels, both NB & SB | milestone | 0d | 2017-01-02 | 2017-01-02 |  |  |  |  | -997.67d | 461.57d | start on or after 2014-04-06; start on or before 2014-04-06 | W7 - 24 Hour - 7 day - No Holiday | C822 | B65 | 01 | G001 | GD01 | 822 | AA |  | 844 |  |  |  |
| 8220A-4180 |  | 844 Power Supply by CLP - VB5 | milestone | 0d | 2017-04-29 | 2017-04-29 | 8220G1830 |  |  |  | -1303.35d | 343.88d | start on or after 2013-09-29; start on or before 2013-09-29 | W7 - 24 Hour - 7 day - No Holiday | C822 | B65 | 01 | G001 | GD01 | 822 | AA | 2220 | 844 | SM |  |  |

| ID | WBS | Activity | Type | Duration | Start | Finish | Predecessors | Total float | Free float | Constraint | Calendar | L1 : Project | L2 : Phase | L3 : Area | L4 : Sub-Area | L5 : Element | M1: Contracts | M2 : Cost Centre | M4 : Location | L7 : System | Stef Temp A1 | M5 :Sub-Location |
| --- | --- | --- | --- | --- | --- | --- | --- | --- | --- | --- | --- | --- | --- | --- | --- | --- | --- | --- | --- | --- | --- | --- |
|  | 9 | **C845 - Power Supply System** |  |  | 2017-01-02 | 2017-04-29 |  |  |  |  |  |  |  |  |  |  |  |  |  |  |  |  |
| 8220A-4250 |  | 845 Power Supply System - VB4 | milestone | 0d | 2017-01-02 | 2017-01-02 |  | -1094.67d | 461.57d | start on or after 2013-12-29; start on or before 2013-12-29 | W7 - 24 Hour - 7 day - No Holiday | C822 | B65 | 01 | G001 | GD01 | 822 | AA | 2230 | 845 |  |  |
| 8220A-4260 |  | 845 Power Supply System - SM Adit & EAP | milestone | 0d | 2017-01-02 | 2017-01-02 |  | -1094.67d | 461.57d | start on or after 2013-12-29; start on or before 2013-12-29 | W7 - 24 Hour - 7 day - No Holiday | C822 | B65 | 01 | G001 | GD01 | 822 | AA | 2260 | 845 | EAP |  |
| 8220A-4270 |  | 845 Power Supply System - PHVA | milestone | 0d | 2017-01-02 | 2017-01-02 |  | -1094.67d | 461.57d | start on or after 2013-12-29; start on or before 2013-12-29 | W7 - 24 Hour - 7 day - No Holiday | C822 | B65 | 01 | G001 | GD01 | 822 | AA | 2270 | 845 |  |  |
| 8220A-4280 |  | 845 Power Supply System - PHVAA | milestone | 0d | 2017-01-02 | 2017-01-02 |  | -1032.67d | 461.57d | start on or after 2014-03-02; start on or before 2014-03-02 | W7 - 24 Hour - 7 day - No Holiday | C822 | B65 | 02 | 0203 | GD01 | 822 | AA | 2280 | 845 |  |  |
| 8220A-4240 |  | 845 Power Supply System - VB5 | milestone | 0d | 2017-04-29 | 2017-04-29 | 8220G1840 | -1303.35d | 343.88d | start on or after 2013-09-29; start on or before 2013-09-29 | W7 - 24 Hour - 7 day - No Holiday | C822 | B65 | 01 | G001 | GD01 | 822 | AA | 2220 | 845 | SM |  |
|  | 10 | **C846 - Trackside Auxiliaries (Shinryo Corporation)** |  |  | 2017-01-02 | 2017-04-29 |  |  |  |  |  |  |  |  |  |  |  |  |  |  |  |  |
| 8220A-4300 |  | 846 Trackside Auxiliaries - Tunnels, Up & Dn | milestone | 0d | 2017-01-02 | 2017-01-02 |  | -1213.67d | 461.57d | start on or after 2013-09-01; start on or before 2013-09-01 | W7 - 24 Hour - 7 day - No Holiday | C822 | B65 | 01 | G001 | GD01 | 822 | AA |  | 846 |  |  |
| 8220A-4310 |  | 846 Trackside Auxiliaries - PHVAA | milestone | 0d | 2017-01-02 | 2017-01-02 |  | -976.67d | 461.57d | start on or after 2014-04-27; start on or before 2014-04-27 | W7 - 24 Hour - 7 day - No Holiday | C822 | B65 | 02 | 0203 | GD01 | 822 | AA | 2280 | 846 |  |  |
| 8220A-4290 |  | 846 Trackside Auxiliaries - VB5 - LV & TX | milestone | 0d | 2017-04-29 | 2017-04-29 | 8220G1800 | -1303.35d | 343.88d | start on or after 2013-09-29; start on or before 2013-09-29 | W7 - 24 Hour - 7 day - No Holiday | C822 | B65 | 01 | G001 | GD01 | 822 | AA | 2220 | 846 | SM |  |
|  | 11 | **C847 - Lifts (KONE Elevator (HK) Ltd)** |  |  | 2017-09-11 | 2017-09-11 |  |  |  |  |  |  |  |  |  |  |  |  |  |  |  |  |
| 8220A-4320 |  | 847 Lifts - Shing Mun Ventilation Building (VB5) | milestone | 0d | 2017-09-11 | 2017-09-11 | 8220G1850 | -1438d | 209.23d | start on or after 2013-09-29; start on or before 2013-09-29 | W7 - 24 Hour - 7 day - No Holiday | C822 | B65 | 01 | G001 | GD01 | 822 | AA | 2220 | 847 | SM |  |
|  | 12 | **C849 - Radio Communications System** |  |  | 2017-01-02 | 2017-01-02 |  |  |  |  |  |  |  |  |  |  |  |  |  |  |  |  |
| 8220A-4330 |  | 849 Radio Communications System - VB5 | milestone | 0d | 2017-01-02 | 2017-01-02 |  | -1122.67d | 461.57d | start on or after 2013-12-01; start on or before 2013-12-01 | W7 - 24 Hour - 7 day - No Holiday | C822 | B65 | 01 | G001 | GD01 | 822 | AA | 2220 | 849 | SM |  |
| 8220A-4340 |  | 849 Radio Communications System - VB4 | milestone | 0d | 2017-01-02 | 2017-01-02 |  | -1032.67d | 461.57d | start on or after 2014-03-02; start on or before 2014-03-02 | W7 - 24 Hour - 7 day - No Holiday | C822 | B65 | 01 | G001 | GD01 | 822 | AA | 2230 | 849 |  |  |
| 8220A-4350 |  | 849 Radio Communications System - SMVA & EAP | milestone | 0d | 2017-01-02 | 2017-01-02 |  | -1032.67d | 461.57d | start on or after 2014-03-02; start on or before 2014-03-02 | W7 - 24 Hour - 7 day - No Holiday | C822 | B65 | 01 | G001 | GD01 | 822 | AA | 2260 | 849 | EAP |  |
| 8220A-4360 |  | 849 Radio Communications System - PHVA | milestone | 0d | 2017-01-02 | 2017-01-02 |  | -1032.67d | 461.57d | start on or after 2014-03-02; start on or before 2014-03-02 | W7 - 24 Hour - 7 day - No Holiday | C822 | B65 | 01 | G001 | GD01 | 822 | AA | 2270 | 849 |  |  |
| 8220A-4370 |  | 849 Radio Communications System - PHVAA | milestone | 0d | 2017-01-02 | 2017-01-02 |  | -997.67d | 461.57d | start on or after 2014-04-06; start on or before 2014-04-06 | W7 - 24 Hour - 7 day - No Holiday | C822 | B65 | 02 | 0203 | GD01 | 822 | AA | 2280 | 849 |  |  |
| 8220A-4380 |  | 849 Radio Communications System - Tunnels, both | milestone | 0d | 2017-01-02 | 2017-01-02 |  | -997.67d | 461.57d | start on or after 2014-04-06; start on or before 2014-04-06 | W7 - 24 Hour - 7 day - No Holiday | C822 | B65 | 01 | G001 | GD01 | 822 | AA | 2210 | 849 |  | TUNM |
|  | 13 | **C850 Train-Track Radio Communications** |  |  | 2017-01-02 | 2017-01-02 |  |  |  |  |  |  |  |  |  |  |  |  |  |  |  |  |
| 8220A-4390 |  | 850 Train-Track Radio Comms - VB5 | milestone | 0d | 2017-01-02 | 2017-01-02 |  | -1122.67d | 461.57d | start on or after 2013-12-01; start on or before 2013-12-01 | W7 - 24 Hour - 7 day - No Holiday | C822 | B65 | 01 | G001 | GD01 | 822 | AA | 2220 | 850 | SM |  |
| 8220A-4400 |  | 850 Train-Track Radio Comms - VB4 | milestone | 0d | 2017-01-02 | 2017-01-02 |  | -1032.67d | 461.57d | start on or after 2014-03-02; start on or before 2014-03-02 | W7 - 24 Hour - 7 day - No Holiday | C822 | B65 | 01 | G001 | GD01 | 822 | AA | 2230 | 850 |  |  |
| 8220A-4410 |  | 850 Train-Track Radio Comms - SMVA & EAP | milestone | 0d | 2017-01-02 | 2017-01-02 |  | -1032.67d | 461.57d | start on or after 2014-03-02; start on or before 2014-03-02 | W7 - 24 Hour - 7 day - No Holiday | C822 | B65 | 01 | G001 | GD01 | 822 | AA | 2260 | 850 | EAP |  |
| 8220A-4420 |  | 850 Train-Track Radio Comms - PHVA | milestone | 0d | 2017-01-02 | 2017-01-02 |  | -1032.67d | 461.57d | start on or after 2014-03-02; start on or before 2014-03-02 | W7 - 24 Hour - 7 day - No Holiday | C822 | B65 | 01 | G001 | GD01 | 822 | AA | 2270 | 850 |  |  |
| 8220A-4430 |  | 850 Train-Track Radio Comms - PHVAA | milestone | 0d | 2017-01-02 | 2017-01-02 |  | -997.67d | 461.57d | start on or after 2014-04-06; start on or before 2014-04-06 | W7 - 24 Hour - 7 day - No Holiday | C822 | B65 | 02 | 0203 | GD01 | 822 | AA | 2280 | 850 |  |  |
| 8220A-4440 |  | 850 Train-Track Radio Comms - Tunnels | milestone | 0d | 2017-01-02 | 2017-01-02 |  | -997.67d | 461.57d | start on or after 2014-04-06; start on or before 2014-04-06 | W7 - 24 Hour - 7 day - No Holiday | C822 | B65 | 01 | G001 | GD01 | 822 | AA |  | 850 |  |  |

| ID | WBS | Activity | Type | Duration | Start | Finish | Predecessors | Complete | Planned start | Planned finish | Total float | Free float | Constraint | Calendar | L1 : Project | L2 : Phase | L3 : Area | L4 : Sub-Area | L5 : Element | M1: Contracts | M2 : Cost Centre | M4 : Location | L7 : System | Stef Temp A1 | M5 :Sub-Location | 822_AB_W010 | L6 : Sub-Element |
| --- | --- | --- | --- | --- | --- | --- | --- | --- | --- | --- | --- | --- | --- | --- | --- | --- | --- | --- | --- | --- | --- | --- | --- | --- | --- | --- | --- |
|  | 14 | **C851 Fixed Communications System** |  |  | 2017-01-02 | 2017-01-02 |  |  |  |  |  |  |  |  |  |  |  |  |  |  |  |  |  |  |  |  |  |
| 8220A-4450 |  | 851 Fixed Communications System - VB5 | milestone | 0d | 2017-01-02 | 2017-01-02 |  |  |  |  | -1122.67d | 461.57d | start on or after 2013-12-01; start on or before 2013-12-01 | W7 - 24 Hour - 7 day - No Holiday | C822 | B65 | 01 | G001 | GD01 | 822 | AA | 2220 | 851 | SM |  |  |  |
| 8220A-4460 |  | 851 Fixed Communications System - VB4 | milestone | 0d | 2017-01-02 | 2017-01-02 |  |  |  |  | -1032.67d | 461.57d | start on or after 2014-03-02; start on or before 2014-03-02 | W7 - 24 Hour - 7 day - No Holiday | C822 | B65 | 01 | G001 | GD01 | 822 | AA | 2230 | 851 |  |  |  |  |
| 8220A-4470 |  | 851 Fixed Communications System - SMVA & EAP | milestone | 0d | 2017-01-02 | 2017-01-02 |  |  |  |  | -1032.67d | 461.57d | start on or after 2014-03-02; start on or before 2014-03-02 | W7 - 24 Hour - 7 day - No Holiday | C822 | B65 | 01 | G001 | GD01 | 822 | AA | 2260 | 851 | EAP |  |  |  |
| 8220A-4480 |  | 851 Fixed Communications System - PHVA | milestone | 0d | 2017-01-02 | 2017-01-02 |  |  |  |  | -1032.67d | 461.57d | start on or after 2014-03-02; start on or before 2014-03-02 | W7 - 24 Hour - 7 day - No Holiday | C822 | B65 | 01 | G001 | GD01 | 822 | AA | 2270 | 851 |  |  |  |  |
| 8220A-4490 |  | 851 Fixed Communications System - PHVAA | milestone | 0d | 2017-01-02 | 2017-01-02 |  |  |  |  | -997.67d | 461.57d | start on or after 2014-04-06; start on or before 2014-04-06 | W7 - 24 Hour - 7 day - No Holiday | C822 | B65 | 02 | 0203 | GD01 | 822 | AA | 2280 | 851 |  |  |  |  |
| 8220A-4500 |  | 851 Fixed Communications System - Tunnels, both | milestone | 0d | 2017-01-02 | 2017-01-02 |  |  |  |  | -997.67d | 461.57d | start on or after 2014-04-06; start on or before 2014-04-06 | W7 - 24 Hour - 7 day - No Holiday | C822 | B65 | 01 | G001 | GD01 | 822 | AA | 2210 | 851 |  | TUNM |  |  |
|  | 15 | **C853 - Main Control System** |  |  | 2017-01-02 | 2017-01-02 |  |  |  |  |  |  |  |  |  |  |  |  |  |  |  |  |  |  |  |  |  |
| 8220A-4510 |  | 853 Main Control System - VB5 | milestone | 0d | 2017-01-02 | 2017-01-02 |  |  |  |  | -1122.67d | 461.57d | start on or after 2013-12-01; start on or before 2013-12-01 | W7 - 24 Hour - 7 day - No Holiday | C822 | B65 | 01 | G001 | GD01 | 822 | AA | 2220 | 853 | SM |  |  |  |
| 8220A-4520 |  | 853 Main Control System - VB4 | milestone | 0d | 2017-01-02 | 2017-01-02 |  |  |  |  | -1032.67d | 461.57d | start on or after 2014-03-02; start on or before 2014-03-02 | W7 - 24 Hour - 7 day - No Holiday | C822 | B65 | 01 | G001 | GD01 | 822 | AA | 2230 | 853 |  |  |  |  |
|  | 16 | **C854 - Security Access Management System** |  |  | 2017-01-02 | 2017-01-02 |  |  |  |  |  |  |  |  |  |  |  |  |  |  |  |  |  |  |  |  |  |
| 8220A-4530 |  | 854 Security Access Management System - VB5 | milestone | 0d | 2017-01-02 | 2017-01-02 |  |  |  |  | -913.67d | 461.57d | start on or after 2014-06-29; start on or before 2014-06-29 | W7 - 24 Hour - 7 day - No Holiday | C822 | B65 | 01 | G001 | GD01 | 822 | AA | 2220 | 854 | SM |  |  |  |
| 8220A-4540 |  | 854 Security Access Management System - VB4 | milestone | 0d | 2017-01-02 | 2017-01-02 |  |  |  |  | -913.67d | 461.57d | start on or after 2014-06-29; start on or before 2014-06-29 | W7 - 24 Hour - 7 day - No Holiday | C822 | B65 | 01 | G001 | GD01 | 822 | AA | 2230 | 854 |  |  |  |  |
|  | 17 | **C855 - Building Services (ATAL Engineering Limited)** |  |  | 2013-07-28 | 2017-04-29 |  |  |  |  |  |  |  |  |  |  |  |  |  |  |  |  |  |  |  |  |  |
| 8220A-4570 |  | 855 - Building Services Installation - VB4 | milestone | 0d | 2013-07-28 A | 2013-07-28 A |  | 100% | 2013-09-01 | 2013-09-01 |  |  | start on or after 2013-09-01; start on or before 2013-09-01 | W7 - 24 Hour - 7 day - No Holiday | C822 | B65 | 01 | G001 | GD01 | 822 | AA | 2230 | 855 |  |  | 822_AB_W010 |  |
| 8220A-4560 |  | 855 - Building Services Installation - PHVAA Common Areas | milestone | 0d | 2017-01-02 | 2017-01-02 |  |  |  |  | -1276.67d | 461.57d | start on or after 2013-06-30; start on or before 2013-06-30 | W7 - 24 Hour - 7 day - No Holiday | C822 | B65 | 01 | G001 | GD01 | 822 | AA | 2270 | 855 |  |  |  |  |
| 8220A-4590 |  | 855 - Building Services Installation - PHVA common Areas | milestone | 0d | 2017-01-02 | 2017-01-02 |  |  |  |  | -1185.67d | 461.57d | start on or after 2013-09-29; start on or before 2013-09-29 | W7 - 24 Hour - 7 day - No Holiday | C822 | B65 | 01 | G001 | GD01 | 822 | AA | 2270 | 855 |  |  |  |  |
| 8220A-4600 |  | 855 - Building Services Installation - PHVAA All Areas (Plant Rooms) | milestone | 0d | 2017-03-24 | 2017-03-24 | 8220C-0240 |  |  |  | -1086.12d | 380.11d | start on or after 2014-03-30; start on or before 2014-03-30 | W7 - 24 Hour - 7 day - No Holiday | C822 | B65 | 02 | 0203 | GD01 | 822 | AA | 2280 | 855 |  |  |  |  |
| 8220A-4580 |  | 855 - Building Services Installation - SMEAP | milestone | 0d | 2017-03-25 | 2017-03-25 | 8220EE0110 |  |  |  | -1268.42d | 378.82d | start on or after 2013-09-29; start on or before 2013-09-29 | W7 - 24 Hour - 7 day - No Holiday | C822 | B65 | 01 | G001 | GD01 | 822 | AA |  | 855 | EAP |  |  |  |
| 8220A-4550 |  | 855 - Building Services Installation - VB5 | milestone | 0d | 2017-04-29 | 2017-04-29 | 8220G1870 |  |  |  | -1422.35d | 343.88d | start on or after 2013-06-02; start on or before 2013-06-02 | W7 - 24 Hour - 7 day - No Holiday | C822 | B65 | 01 | G001 | GD01 | 822 | AA | 2220 | 855 | SM |  |  |  |
|  | 4 | **Enabling Works** |  |  | 2010-04-07 | 2012-04-05 |  |  |  |  |  |  |  |  |  |  |  |  |  |  |  |  |  |  |  |  |  |
|  | 1 | **Monitoring Instrumentation** |  |  | 2010-04-07 | 2012-04-05 |  |  |  |  |  |  |  |  |  |  |  |  |  |  |  |  |  |  |  |  |  |
| 8220A-6470 |  | Installation of standpipe / piezometer (37Nos) |  | 238.22d | 2010-04-07 A | 2012-04-05 A |  | 100% | 2010-04-07 | 2011-01-21 |  |  |  |  | C822 | C12 | 01 | G001 | GD01 | 822 | AA |  |  |  |  |  | 20 |
| 8220A-4750 |  | Installation of BSP Monitoring Point (111 Nos) |  | 265.78d | 2010-05-05 A | 2011-09-19 A |  | 100% | 2010-05-05 | 2011-03-25 |  |  |  |  | C822 | C12 | 01 | G001 | GD01 | 822 | AA |  |  |  |  |  | 20 |
| 8220A-6840 |  | Installation of PGWMP Monitoring Point (12 Nos) |  | 80d | 2010-05-05 A | 2011-07-30 A |  | 100% | 2010-05-05 | 2010-08-09 |  |  |  |  | C822 | C12 | 01 | G001 | GD01 | 822 | AA |  |  |  |  |  | 20 |
| 8220A-6480 |  | Installation of UMP Monitoring Point (30 Nos) |  | 216d | 2010-05-12 A | 2011-08-15 A |  | 100% | 2010-05-12 | 2011-01-29 |  |  |  |  | C822 | C12 | 01 | G001 | GD01 | 822 | AA |  |  |  |  |  | 20 |
| 8220A-6760 |  | Installation of GSP Monitoring Point (148 Nos) |  | 241.78d | 2010-05-15 A | 2011-07-02 A |  | 100% | 2010-05-15 | 2011-03-08 |  |  |  |  | C822 | C12 | 01 | G001 | GD01 | 822 | AA |  |  |  |  |  | 20 |
| 8220A-6540 |  | Installation of TM Monitoring Point (110 Nos) |  | 245.33d | 2010-05-20 A | 2011-10-24 A |  | 100% | 2010-05-20 | 2011-03-17 |  |  |  |  | C822 | C12 | 01 | G001 | GD01 | 822 | AA |  |  |  |  |  | 20 |

| ID | WBS | Activity | Type | Duration | Start | Finish | Predecessors | Complete | Planned start | Planned finish | Calendar | 822_AB_W010 |
| --- | --- | --- | --- | --- | --- | --- | --- | --- | --- | --- | --- | --- |
|  | 2 | **Area 2 : Pat Heung** |  |  | 2010-06-15 | 2018-04-10 |  |  |  |  |  |  |
|  | 4 | **Enabling Works** |  |  | 2010-06-15 | 2011-12-20 |  |  |  |  |  |  |
| 8220D-5040 |  | Prepare Method Statement for Portal Works |  | 20d | 2010-06-15 A | 2010-08-24 A |  | 100% | 2010-06-15 | 2010-07-05 | W7 - 24 Hour - 7 day - No Holiday | 822_AB_W010 |
| 8220D-5050 |  | MTR Approve Method Statement |  | 9.33d | 2010-08-25 A | 2010-09-27 A | 8220D-5040 | 100% | 2010-08-25 | 2010-09-03 | W7 - 24 Hour - 7 day - No Holiday | 822_AB_W010 |
| 8220A-3060 |  | PH - Notification to Divert FW201 |  | 15.33d | 2010-09-01 A | 2010-12-30 A |  | 100% | 2010-09-01 | 2010-09-16 | W7 - 24 Hour - 7 day - No Holiday | 822_AB_W010 |
| 8220D-0150 |  | PH - Initial Survey & Record |  | 30.22d | 2010-09-15 A | 2010-11-20 A |  | 100% | 2010-09-15 | 2010-10-23 |  | 822_AB_W010 |
| 8220A-5400 |  | PH - Obtain TRA7 for Tree Felling Works |  | 8.67d | 2010-09-22 A | 2010-09-30 A |  | 100% | 2010-09-22 | 2010-10-01 | W7 - 24 Hour - 7 day - No Holiday | 822_AB_W010 |
| 8220D-0160 |  | PH - Erect Site Hoarding & Fencing |  | 42.67d | 2010-09-22 A | 2010-12-23 A | 8220A-3210, 8220A-3220, 8220A-4870 | 100% | 2010-09-22 | 2010-11-13 |  | 822_AB_W010 |
| 8220D-0010 |  | PH - Site Entrance Preparation |  | 20.44d | 2010-09-25 A | 2010-11-09 A | 8220D-0150 | 100% | 2010-09-25 | 2010-10-21 |  | 822_AB_W010 |
| 8220D-5020 |  | PH - Prepare Temp Drainage Management Plan |  | 4.67d | 2010-09-25 A | 2010-10-12 A | 8220D-5040 | 100% | 2010-09-25 | 2010-09-30 | W7 - 24 Hour - 7 day - No Holiday | 822_AB_W010 |
| 8220D-5030 |  | PH - Prepare Flooding Action Plan |  | 4.67d | 2010-09-25 A | 2010-10-12 A | 8220D-5020 SS | 100% | 2010-09-25 | 2010-09-30 | W7 - 24 Hour - 7 day - No Holiday | 822_AB_W010 |
| 8220D-0040 |  | PHVAA - Mobilisation for slope cutting |  | 10.67d | 2010-09-27 A | 2010-11-29 A | 8220D-0010 SS+10.67d | 100% | 2010-09-27 | 2010-10-09 |  | 822_AB_W010 |
| 8220D-0180 |  | PHVAA - Form Temp Access Road to Slope |  | 24.89d | 2010-09-29 A | 2010-11-05 A | 8220D-0150, 8220D-0040, 8220D-1670 | 100% | 2010-09-29 | 2010-10-29 |  | 822_AB_W010 |
| 8220D-1270 |  | PH - Mobilisation for SI and Pre Drill |  | 8.89d | 2010-10-02 A | 2010-10-13 A |  | 100% | 2010-10-02 | 2010-10-12 |  | 822_AB_W010 |
| 8220D-1120 |  | PH - Pre Drilling and SI |  | 14.22d | 2010-10-12 A | 2010-11-25 A | 8220D-1270 | 100% | 2010-10-12 | 2010-10-29 |  | 822_AB_W010 |
| 8220D-5280 |  | PH - North Stockpile : Preperation |  | 10.67d | 2010-10-12 A | 2010-10-29 A |  | 100% | 2010-10-12 | 2010-10-25 |  | 822_AB_W010 |
| 8220D-0140 |  | PH - Pat Heung Install Instrumentation |  | 21.33d | 2010-10-15 A | 2010-11-10 A | 8220D-1120 SS | 100% |  |  |  | 822_AB_W010 |
| 8220D-0080 |  | PH - Preparation for Divert Existing OHL CLP203 |  | 10.67d | 2010-10-28 A | 2011-01-12 A |  | 100% | 2010-10-28 | 2010-11-09 |  | 822_AB_W010 |
| 8220D-5300 |  | PH - North Stockpile : Install Conc Blocks |  | 5.33d | 2010-10-28 A | 2010-11-09 A | 8220D-5280 | 100% | 2010-10-28 | 2010-11-03 |  | 822_AB_W010 |
| 8220D-5310 |  | PH - North Stockpile : Complete | milestone | 0d | 2010-11-11 A | 2010-11-11 A | 8220D-5300 | 100% |  |  |  | 822_AB_W010 |
| 8220D-0050 |  | PH - Divert Irrigation Main FW201 |  | 17.78d | 2011-01-03 A | 2011-01-25 A |  | 100% | 2011-01-03 | 2011-01-22 |  | 822_AB_W010 |
| 8220D-0090 |  | PH - CLP Divert Existing Low Voltage OHL CLP203 |  | 10.67d | 2011-01-11 A | 2011-01-24 A | 8220D-0080 | 100% | 2011-01-11 | 2011-01-22 |  | 822_AB_W010 |
|  | 2 | **General** |  |  |  |  |  |  |  |  |  |  |
|  | 1 | **Waste Water Management System (Aquaset)** |  |  | 2010-10-06 | 2011-01-05 |  |  |  |  |  |  |
| 8220D-5200 |  | PH - South Aquased : Preparation Works |  | 10.67d | 2010-10-06 A | 2010-10-20 A |  | 100% | 2010-10-06 | 2010-10-19 |  | 822_AB_W010 |
| 8220D-5240 |  | PH - North Aquased : Preparation Works |  | 16d | 2010-10-09 A | 2010-10-30 A |  | 100% | 2010-10-09 | 2010-10-28 |  | 822_AB_W010 |
| 8220D-5210 |  | PH - South Aquased : Arrival of Pre-fabricated |  | 0.89d | 2010-10-25 A | 2010-10-25 A | 8220D-5200 | 100% |  |  |  | 822_AB_W010 |
| 8220D-5250 |  | PH - North Aquased : Arrival of Pre-fabricated |  | 0.89d | 2010-11-01 A | 2010-11-01 A | 8220D-5240 | 100% |  |  |  | 822_AB_W010 |
| 8220D-5220 |  | PH - South Aquased : Connect/Install |  | 4.44d | 2010-11-02 A | 2010-11-06 A | 8220D-5210 | 100% |  |  |  | 822_AB_W010 |
| 8220D-5260 |  | PH - North Aquased : Connect/Install |  | 4.44d | 2010-11-03 A | 2011-01-04 A | 8220D-5250 | 100% | 2010-11-03 | 2010-11-08 |  | 822_AB_W010 |
| 8220D-5230 |  | PH - South Aquased : Complete | milestone | 0d | 2010-11-06 A | 2010-11-06 A | 8220D-5220 | 100% |  |  |  | 822_AB_W010 |
| 8220C-1400 |  | PH - Recycle Water Settlement Pit : Construction |  | 10.67d | 2010-11-30 A | 2010-12-30 A |  | 100% | 2010-11-30 | 2010-12-11 |  | 822_AB_W010 |
| 8220D-5270 |  | PH - North Aquased : Complete | milestone | 0d | 2011-01-01 A | 2011-01-01 A | 8220D-5260 | 100% |  |  |  | 822_AB_W010 |
| 8220C-1410 |  | PH - Recycle Water Settlement Pit: Connect pipes |  | 1.78d | 2011-01-03 A | 2011-01-04 A | 8220C-1400 | 100% |  |  |  | 822_AB_W010 |
| 8220C-1420 |  | PH - Recycle Water Settlement Pit : Complete | milestone | 0d | 2011-01-05 A | 2011-01-05 A | 8220C-1410 FF | 100% |  |  |  | 822_AB_W010 |

Notes:
- 8220D-0160: P3 Activity Log Info: 1,400m
- 8220D-0010: P3 Activity Log Info: 300m2 + 10m + ??400m3 + 150m2
- 8220D-0050: P3 Activity Log Info: 120m

| ID | WBS | Activity | Type | Duration | Start | Finish | Predecessors | Complete | Planned start | Planned finish | Constraint | Calendar | 822_AB_W010 |
| --- | --- | --- | --- | --- | --- | --- | --- | --- | --- | --- | --- | --- | --- |
|  | 5 | **Wheelwash** |  |  | 2010-12-24 | 2011-01-25 |  |  |  |  |  |  |  |
| 8220D-5460 |  | PH - Wheel Wash Facility: Preparation Works |  | 10.67d | 2010-12-24 A | 2011-01-10 A |  | 100% | 2010-12-24 | 2011-01-08 |  |  | 822_AB_W010 |
| 8220D-5470 |  | PH - Wheel Wash Facility: Cast Surface Slab |  | 10.67d | 2010-12-31 A | 2011-01-14 A | 8220D-5460 | 100% | 2010-12-31 | 2011-01-13 |  |  | 822_AB_W010 |
| 8220D-5480 |  | PH - Wheel Wash : Install Conduits |  | 2.67d | 2011-01-15 A | 2011-01-18 A | 8220D-5470 | 100% |  |  |  |  | 822_AB_W010 |
| 8220D-5490 |  | PH - Wheel Wash : Connect Pipes to North Aquased |  | 1.78d | 2011-01-20 A | 2011-01-21 A | 8220D-5480 | 100% |  |  |  |  | 822_AB_W010 |
| 8220D-5500 |  | PH - Wheel Wash : Complete | milestone | 0d | 2011-01-25 A | 2011-01-25 A | 8220D-5490 FF | 100% |  |  |  |  | 822_AB_W010 |
|  | 4 | **Workshop** |  |  | 2011-07-04 | 2011-09-01 |  |  |  |  |  |  |  |
| 8220D-5530 |  | PH - Workshop: Preparation works |  | 5.33d | 2011-07-04 A | 2011-07-06 A | 8220D-5500 | 100% | 2011-07-04 | 2011-07-09 |  |  | 822_AB_W010 |
| 8220D-5540 |  | PH - Workshop : Concrete Slab |  | 10.67d | 2011-07-07 A | 2011-07-12 A | 8220D-5530 | 100% | 2011-07-07 | 2011-07-19 |  |  | 822_AB_W010 |
| 8220D-5550 |  | PH - Workshop: Columns / Roof/ Cladding |  | 10.67d | 2011-07-27 A | 2011-08-31 A | 8220D-5540 | 100% | 2011-07-27 | 2011-08-08 |  |  | 822_AB_W010 |
| 8220D-5560 |  | PH - Workshop: Complete | milestone | 0d | 2011-09-01 A | 2011-09-01 A | 8220D-5550 | 100% |  |  |  |  | 822_AB_W010 |
|  | 3 | **Ventilation System** |  |  | 2010-10-02 | 2011-12-20 |  |  |  |  |  |  |  |
| 8220A-4990 |  | PH - Procure & Delivery of Ventilation System |  | 60d | 2010-10-02 A | 2011-01-06 A |  | 100% | 2010-10-02 | 2010-12-01 | as late as possible | W7 - 24 Hour - 7 day - No Holiday | 822_AB_W010 |
| 8220D-5570 |  | PH - Ventilation System: Steel Support off deck |  | 10.67d | 2011-09-19 A | 2011-10-05 A | 8220A-4990 | 100% | 2011-09-19 | 2011-09-30 | as late as possible |  | 822_AB_W010 |
| 8220D-5580 |  | PH - Ventilation System: Install Twin Vents |  | 7.11d | 2011-10-06 A | 2011-10-21 A | 8220D-5570 | 100% | 2011-10-06 | 2011-10-14 | as late as possible |  | 822_AB_W010 |
| 8220D-5610 |  | PH - Ventilation System Complete | milestone | 0d | 2011-11-05 A | 2011-11-05 A | 8220D-5600 FF | 100% | 2012-06-09 | 2012-06-09 |  |  | 822_AB_W010 |
| 8220D-5590 |  | PH - Ventilation System: Test & Commission |  | 5.33d | 2011-12-12 A | 2011-12-17 A | 8220D-5580 | 100% | 2012-06-01 | 2012-06-07 |  |  | 822_AB_W010 |
| 8220D-5600 |  | PH - Ventilation System : Approval |  | 2.67d | 2011-12-17 A | 2011-12-20 A | 8220D-5590 | 100% | 2012-06-07 | 2012-06-09 |  |  | 822_AB_W010 |
|  | 5 | **Surface Works** |  |  | 2010-09-30 | 2011-10-08 |  |  |  |  |  |  |  |
| 8220C-1680 |  | PH - Tree Transport by C801 |  | 50.67d | 2010-09-30 A | 2010-12-17 A | 8220A-5400 | 100% | 2010-09-30 | 2010-11-30 |  |  | 822_AB_W010 |
| 8220D-0920 |  | PH - Condition Survey & Record |  | 5.33d | 2010-09-30 A | 2010-10-07 A | 8220A-3230 | 100% |  |  |  |  | 822_AB_W010 |
| 8220D-0960 |  | PH - MTR to Approve Condition Survey |  | 10.67d | 2010-10-08 A | 2010-10-22 A | 8220D-0920 | 100% | 2010-10-08 | 2010-10-21 |  |  | 822_AB_W010 |
| 8220D-0710 |  | PH - Construct Storm Drain at site entrance |  | 10.67d | 2010-10-14 A | 2010-10-28 A |  | 100% | 2010-10-14 | 2010-10-27 |  |  | 822_AB_W010 |
| 8220D-1280 |  | PH - Excavate Trial Holes at Kam Shung Road Entr |  | 5.33d | 2010-11-11 A | 2010-11-17 A |  | 100% |  |  |  |  | 822_AB_W010 |
| 8220D-1300 |  | PH - Excavate for Retaining walls |  | 32d | 2010-11-19 A | 2011-04-07 A | 8220D-1280 | 100% | 2010-11-19 | 2010-12-29 |  |  | 822_AB_W010 |
| 8220C-1690 |  | PH - 801 complete all tree removal | milestone | 0d | 2010-12-15 A | 2010-12-15 A | 8220C-1680 FF | 100% |  |  |  |  | 822_AB_W010 |

| ID | WBS | Activity | Type | Duration | Start | Finish | Predecessors | Complete | Planned start | Planned finish | 822_AB_W010 |
| --- | --- | --- | --- | --- | --- | --- | --- | --- | --- | --- | --- |
|  | 1 | **Stream Diversion** |  |  | 2010-12-28 | 2011-03-13 |  |  |  |  |  |
| 8220D-1310 |  | PHVA - Install Pipe Piles for Stream Divert 6 No |  | 8d | 2010-12-28 A | 2011-01-15 A | 8220A-4960, 8220D-1120 | 100% | 2010-12-28 | 2011-01-06 | 822_AB_W010 |
| 8220D-1330 |  | PHVA - Install Pipe Piles at PHVA Portal Access |  | 21.33d | 2011-01-08 A | 2011-02-08 A | 8220D-1150, 8220D-5050 | 100% | 2011-01-08 | 2011-02-02 | 822_AB_W010 |
| 8220D-1150 |  | PHVA - Perm Divert Stream onto Pipe Pile Wall |  | 12.44d | 2011-01-15 A | 2011-03-13 A | 8220D-1310 | 100% | 2011-01-15 | 2011-01-29 | 822_AB_W010 |
|  | 2 | **Access Slope** |  |  | 2011-02-21 | 2011-06-11 |  |  |  |  |  |
| 8220D-1340 |  | PHVA - Install remaining Pipe Piles 8 No. |  | 12.44d | 2011-02-21 A | 2011-03-08 A | 8220D-1330 | 100% | 2011-02-21 | 2011-03-07 | 822_AB_W010 |
| 8220D-1400 |  | PHVA - Open Cut Soft 2000m³ Entrance |  | 8.89d | 2011-03-01 A | 2011-04-15 A | 8220D-1340 FS-10.67d, 8220D-1290 | 100% | 2011-03-01 | 2011-03-10 | 822_AB_W010 |
| 8220D-1470 |  | PHVA - Open Cut Soft 619m³ Access Road |  | 3.56d | 2011-03-15 A | 2011-03-18 A | 8220D-1670 | 100% |  |  | 822_AB_W010 |
| 8220D-1460 |  | PHVA - Open Cut Soft 232m³ Access Road |  | 2.67d | 2011-03-19 A | 2011-03-22 A | 8220D-1470 | 100% |  |  | 822_AB_W010 |
| 8220D-1670 |  | PHVA - Open Cut Soft 1827m³ Entrance |  | 16.89d | 2011-03-19 A | 2011-04-21 A | 8220D-1400 | 100% | 2011-03-19 | 2011-04-08 | 822_AB_W010 |
| 8220D-1680 |  | PHVA - Install Soil Nails and Support |  | 16.89d | 2011-03-19 A | 2011-05-17 A | 8220D-1670 SS | 100% | 2011-03-19 | 2011-04-08 | 822_AB_W010 |
| 8220D-1480 |  | PHVA - Open Cut Soft 1999m³ Cut Road Slope Left |  | 8.89d | 2011-03-23 A | 2011-04-02 A | 8220D-1470 | 100% | 2011-03-23 | 2011-04-01 | 822_AB_W010 |
| 8220D-1510 |  | PHVA - Open Cut Rock 1196m³ Entrance |  | 10.67d | 2011-03-30 A | 2011-05-25 A | 8220D-1670, 8220D-1680 | 100% | 2011-03-30 | 2011-04-12 | 822_AB_W010 |
| 8220D-1490 |  | PHVA - Open Cut Soft 1173m³ Cut Road Slope Right |  | 5.33d | 2011-04-04 A | 2011-04-11 A | 8220D-1480 | 100% |  |  | 822_AB_W010 |
| 8220D-1550 |  | PHVA - Construct Temp Ramp Invert Ch+0 to Ch57 |  | 5.33d | 2011-04-11 A | 2011-05-25 A | 8220D-1530 | 100% | 2011-04-11 | 2011-04-16 | 822_AB_W010 |
| 8220D-1520 |  | PHVA - Open Cut Rock 727m³ Access Road |  | 6.22d | 2011-04-13 A | 2011-04-20 A | 8220D-1460, 8220D-1510 | 100% |  |  | 822_AB_W010 |
| 8220D-1530 |  | PHVA - Open Cut Rock 199m³ Cut Road Slope Left |  | 3.56d | 2011-04-22 A | 2011-05-24 A | 8220D-1520 SS | 100% | 2011-04-26 | 2011-04-29 | 822_AB_W010 |
| 8220D-1540 |  | PHVA - Open Cut Rock 218m³ Cut Road Slope Right |  | 4.44d | 2011-04-27 A | 2011-05-26 A | 8220D-1490, 8220D-1530 | 100% | 2011-04-27 | 2011-05-03 | 822_AB_W010 |
| 8220D-1690 |  | PHVA - Cut and Form Vent Portal |  | 10.67d | 2011-04-27 A | 2011-05-14 A | 8220D-1510 FS-6.22d | 100% | 2011-04-27 | 2011-05-11 | 822_AB_W010 |
| 8220D-2270 |  | PH - Ramp Drainage Works |  | 7.11d | 2011-05-24 A | 2011-06-11 A | 8220D-1520 SS | 100% | 2011-05-24 | 2011-06-01 | 822_AB_W010 |
|  | 3 | **East Noise Barrier** |  |  | 2011-08-09 | 2011-09-23 |  |  |  |  |  |
| 8220C-1340 |  | PH - East Noise Barrier: Excavation |  | 6.22d | 2011-08-09 A | 2011-08-09 A |  | 100% | 2011-08-09 | 2011-08-16 | 822_AB_W010 |
| 8220C-1350 |  | PH - East Noise Barrier: Footing |  | 12.44d | 2011-08-10 A | 2011-08-19 A | 8220C-1340 | 100% | 2011-08-10 | 2011-08-24 | 822_AB_W010 |
| 8220C-1360 |  | PH - East Noise Barrier: Install UC Truss |  | 17.78d | 2011-09-07 A | 2011-09-12 A | 8220C-1350 | 100% | 2011-09-07 | 2011-09-28 | 822_AB_W010 |
| 8220C-1370 |  | PH - East Noise Barrier : UC Struts |  | 8.89d | 2011-09-15 A | 2011-09-19 A | 8220C-1360 | 100% | 2011-09-15 | 2011-09-24 | 822_AB_W010 |
| 8220C-1380 |  | PH - East Noise Barrier : Acoustic Panels |  | 10.67d | 2011-09-20 A | 2011-09-22 A | 8220C-1370 | 100% | 2011-09-20 | 2011-10-03 | 822_AB_W010 |
| 8220C-1390 |  | PH - East Noise Barrier : Complete | milestone | 0d | 2011-09-23 A | 2011-09-23 A | 8220C-1380 FF | 100% |  |  | 822_AB_W010 |

| ID | WBS | Activity | Type | Duration | Start | Finish | Predecessors | Complete | Planned start | Planned finish | Constraint | Calendar | 822_AB_W010 |
| --- | --- | --- | --- | --- | --- | --- | --- | --- | --- | --- | --- | --- | --- |
|  | 5 | **Retaining Wall for Access Road** |  |  | 2011-01-14 | 2011-07-30 |  |  |  |  |  |  |  |
| 8220D-1320 |  | PH - Retaining Wall for Access Road - Bay 1/11 |  | 13.33d | 2011-01-14 A | 2011-01-31 A | 8220D-1300 | 100% | 2011-01-14 | 2011-01-29 |  |  | 822_AB_W010 |
| 8220D-1350 |  | PH - Retaining Wall for Access Road - Bay 2/11 |  | 10.67d | 2011-01-20 A | 2011-02-26 A | 8220D-1320 FS-8d | 100% | 2011-01-20 | 2011-02-01 |  |  | 822_AB_W010 |
| 8220D-1360 |  | PH - Retaining Wall for Access Road - Bay 3/11 |  | 10.67d | 2011-02-02 A | 2011-03-10 A | 8220D-1350 FS-5.33d | 100% | 2011-02-02 | 2011-02-17 |  |  | 822_AB_W010 |
| 8220D-1290 |  | PH - Construct Access Road to PHVA Ramp |  | 32d | 2011-02-09 A | 2011-04-12 A | 8220D-1610 | 100% | 2011-02-09 | 2011-03-17 |  |  | 822_AB_W010 |
| 8220D-1370 |  | PH - Retaining Wall for Access Road - Bay 4/11 |  | 10.67d | 2011-02-12 A | 2011-03-22 A | 8220D-1360 FS-5.33d | 100% | 2011-02-12 | 2011-02-24 |  |  | 822_AB_W010 |
| 8220D-1500 |  | PH - Retaining Wall for Access Road - Bay 5/11 |  | 10.67d | 2011-02-19 A | 2011-03-15 A | 8220D-1370 FS-5.33d | 100% | 2011-02-19 | 2011-03-03 |  |  | 822_AB_W010 |
| 8220D-1610 |  | PH - Retaining Wall for Access Road - Bay 6/11 |  | 10.67d | 2011-02-26 A | 2011-04-12 A | 8220D-1500 FS-5.33d | 100% | 2011-02-26 | 2011-03-10 |  |  | 822_AB_W010 |
| 8220D-1620 |  | PH - Retaining Wall for Access Road - Bay 7/11 |  | 10.67d | 2011-03-04 A | 2011-04-02 A | 8220D-1610 FS-5.33d | 100% | 2011-03-04 | 2011-03-16 |  |  | 822_AB_W010 |
| 8220D-1640 |  | PH - Retaining Wall for Access Road - Bay 9/11 |  | 10.67d | 2011-03-12 A | 2011-04-09 A | 8220D-1630 FS-5.33d | 100% | 2011-03-12 | 2011-03-24 |  |  | 822_AB_W010 |
| 8220D-1630 |  | PH - Retaining Wall for Access Road - Bay 8/11 |  | 10.67d | 2011-03-16 A | 2011-04-21 A | 8220D-1620 FS-5.33d | 100% | 2011-03-16 | 2011-03-28 |  |  | 822_AB_W010 |
| 8220D-1650 |  | PH - Retaining Wall for Access Road - Bay 10/11 |  | 10.67d | 2011-04-20 A | 2011-05-09 A | 8220D-1640 FS-5.33d | 100% | 2011-04-20 | 2011-05-06 |  |  | 822_AB_W010 |
| 8220D-1660 |  | PH - Retaining Wall for Access Road - Bay 11/11 |  | 10.67d | 2011-07-05 A | 2011-07-30 A | 8220D-1650 FS-5.33d | 100% | 2011-07-05 | 2011-07-16 |  |  | 822_AB_W010 |
|  | 4 | **West Noise Barrier** |  |  | 2011-09-16 | 2011-10-08 |  |  |  |  |  |  |  |
| 8220D-1200 |  | PH - West Noise Barrier: Excavation |  | 6.22d | 2011-09-16 A | 2011-09-21 A | 8220C-1350 | 100% | 2011-09-16 | 2011-09-23 |  |  | 822_AB_W010 |
| 8220D-1210 |  | PH - West Noise Barrier: Footing |  | 12.44d | 2011-09-17 A | 2011-09-24 A | 8220D-1200 | 100% | 2011-09-17 | 2011-10-03 |  |  | 822_AB_W010 |
| 8220D-1220 |  | PH - West Noise Barrier: Install UC Truss |  | 17.78d | 2011-09-22 A | 2011-09-27 A | 8220D-1210 | 100% | 2011-09-22 | 2011-10-14 |  |  | 822_AB_W010 |
| 8220D-1230 |  | PH - West Noise Barrier : UC Struts |  | 8.89d | 2011-09-28 A | 2011-09-30 A | 8220D-1220 | 100% | 2011-09-28 | 2011-10-10 |  |  | 822_AB_W010 |
| 8220D-1240 |  | PH - West Noise Barrier : Acoustic Panels |  | 10.67d | 2011-09-30 A | 2011-10-07 A | 8220D-1230 | 100% | 2011-09-30 | 2011-10-14 |  |  | 822_AB_W010 |
| 8220D-1250 |  | PH - West Noise Barrier : Complete | milestone | 0d | 2011-10-08 A | 2011-10-08 A | 8220C-1390 FF, 8220D-1240 FF | 100% |  |  |  |  | 822_AB_W010 |
|  | 1 | **Pat Heung Ventilation Adit** |  |  | 2011-04-10 | 2018-04-10 |  |  |  |  |  |  |  |
|  | 1 | **PHVA Excavation** |  |  | 2011-04-10 | 2017-02-07 |  |  |  |  |  |  |  |
|  | 1 | **Noise Permit** |  |  | 2011-04-10 | 2012-02-13 |  |  |  |  |  |  |  |
| 8220D-5750 |  | PHVA - Award Blast Door Fabrication Contract | milestone | 0d | 2011-04-10 A | 2011-04-10 A | 8220A-8405 | 100% |  |  | as late as possible |  | 822_AB_W010 |
| 8220D-5760 |  | PHVA - Fabrication of Blast Doors |  | 10.67d | 2011-04-12 A | 2011-05-04 A | 8220D-5750 | 100% | 2011-04-12 | 2011-04-27 | as late as possible |  | 822_AB_W010 |
| 8220C-1430 |  | PHVA - Erect Blast Door |  | 5.33d | 2011-05-11 A | 2011-05-17 A | 8220D-1550, 8220D-5770 | 100% |  |  |  |  | 822_AB_W010 |
| 8220D-5770 |  | PHVA - Delivery of Blast Doors |  | 1.78d | 2011-05-13 A | 2011-05-14 A | 8220D-5760 | 100% |  |  | as late as possible |  | 822_AB_W010 |
| 8220D-1390 |  | PHVA - Relocate Blast Doors inside Tunnel at Ch61 |  | 25.33d | 2011-09-20 A | 2011-10-14 A | 8220D-1420 | 100% | 2011-09-20 | 2011-10-21 |  |  | 822_AB_W010 |
| 8220C-0420 |  | Obtain CNP for 16 Hour working | milestone | 0d | 2011-12-21 A | 2011-12-21 A | 8220C-0320 | 100% |  |  |  | W7 - 24 Hour - 7 day - No Holiday | 822_AB_W010 |
| 8220C-0430 |  | Noise Measuring |  | 6d | 2011-12-30 A | 2012-01-07 A | 8220C-0320 FS+6d | 100% |  |  |  |  | 822_AB_W010 |
| 8220C-0440 |  | EPD Noise Assesment |  | 18d | 2012-01-07 A | 2012-02-11 A | 8220C-0430 | 100% | 2012-01-07 | 2012-02-01 |  |  | 822_AB_W010 |
| 8220C-0450 |  | EPD Grant CNP for 24 hour operations | milestone | 0d | 2012-02-13 A | 2012-02-13 A | 8220C-0440 | 100% | 2012-02-01 | 2012-02-01 |  |  | 822_AB_W010 |

| ID | WBS | Activity | Type | Duration | Start | Finish | Predecessors | Complete | Planned start | Planned finish | Total float | Free float | Constraint | 822_AB_W010 | Stef Temp A1 |
| --- | --- | --- | --- | --- | --- | --- | --- | --- | --- | --- | --- | --- | --- | --- | --- |
|  | 2 | **Single Shift** |  |  | 2011-05-30 | 2012-01-05 |  |  |  |  |  |  |  |  |  |
| 8220D-1380 |  | PHVA - D&B Excavation Ch55 to Ch70 Day Shift |  | 15.11d | 2011-05-30 A | 2011-08-10 A | 8220C-1430, 8220D-0140 | 100% | 2011-05-30 | 2011-06-17 |  |  |  | 822_AB_W010 |  |
| 8220C-0300 |  | PHVA - 70m - 90.5m D&B Day Shift |  | 11.56d | 2011-08-10 A | 2011-08-26 A | 8220D-1380 | 100% | 2011-08-10 | 2011-08-23 |  |  |  | 822_AB_W010 |  |
| 8220D-1410 |  | PHVA - Fire 17th Shot in the VA heading at CH90.5 | milestone | 0d | 2011-08-26 A | 2011-08-26 A | 8220C-0300 | 100% | 2011-12-01 | 2011-12-01 |  |  |  | 822_AB_W010 |  |
| 8220D-1420 |  | PHVA - Remove bench from Ch88.5 to Ch55.5 |  | 19.89d | 2011-08-27 A | 2011-09-20 A | 8220D-1410 | 100% |  |  |  |  |  | 822_AB_W010 |  |
| 8220C-0310 |  | PHVA - 90.5m - 150m D&B Day Shift |  | 10.67d | 2011-10-14 A | 2011-11-30 A | 8220D-1390 | 100% | 2011-10-14 | 2011-10-27 |  |  |  | 822_AB_W010 |  |
| 8220C-0320 |  | PHVA - 150m - 200m D&B Day Shift (50m) (53.6m²) (90% rate = 2.78/d) |  | 17.98d | 2011-12-01 A | 2012-01-05 A | 8220C-0310 | 100% | 2011-12-01 | 2011-12-21 |  |  |  | 822_AB_W010 |  |
|  | 3 | **16 Hour Working** |  |  | 2012-01-06 | 2012-02-11 |  |  |  |  |  |  |  |  |  |
| 8220C-0330 |  | PHVA - 200m - 250m D&B 16H (50m) (53.6m²) (90% rate = 3m/d) |  | 16.6d | 2012-01-06 A | 2012-01-20 A | 8220C-0420, 8220C-0320, 8220D-5610 | 100% | 2011-12-21 | 2012-01-13 |  |  |  | 822_AB_W010 |  |
| 8220C-0340 |  | PHVA - 250m - 300m D&B 16H (50m) (53.6m²) (90% rate = 3m/d) |  | 16.6d | 2012-01-21 A | 2012-02-11 A | 8220C-0330 | 100% | 2012-01-13 | 2012-02-06 |  |  |  | 822_AB_W010 |  |
|  | 4 | **24 Hour Working** |  |  | 2012-02-13 | 2012-05-16 |  |  |  |  |  |  |  |  |  |
| 8220C-0350 |  | PHVA - 300m - 350m D&B 24H (50m) (53.6m²) ( rate = 5m/d) |  | 10d | 2012-02-13 A | 2012-02-24 A | 8220C-0340, 8220C-0450 | 100% | 2012-02-06 | 2012-02-17 |  |  |  | 822_AB_W010 |  |
| 8220C-0360 |  | PHVA - 350m - 368m D&B 24H (18m) (53.6m²) (rate = 5m/d) |  | 3.6d | 2012-02-25 A | 2012-03-06 A | 8220C-0350 | 100% | 2012-02-17 | 2012-02-21 |  |  |  | 822_AB_W010 |  |
| 8220C-0370 |  | PHVA - 368m - 400m D&B 24H (32m) (53.6m²) ( rate = 5m/d) |  | 6.4d | 2012-03-06 A | 2012-03-13 A | 8220C-0360 | 100% | 2012-06-05 | 2012-06-12 |  |  |  | 822_AB_W010 |  |
| 8220C-0380 |  | PHVA - 400m - 450m D&B 24H (50m) (53.6m²) (rate = 5m/d) |  | 10d | 2012-03-13 A | 2012-03-24 A | 8220C-0370 | 100% | 2012-06-13 | 2012-06-23 |  |  |  | 822_AB_W010 |  |
| 8220C-1440 |  | PHVA - 450m - 500m D&B 24H (50m) (53.6m²) (rate = 5m/d) |  | 10d | 2012-03-24 A | 2012-04-12 A | 8220C-0380 | 100% | 2012-06-25 | 2012-07-06 |  |  |  | 822_AB_W010 |  |
| 8220C-0390 |  | PHVA - 500m - 550m D&B 24H (50m) (53.6m²) (rate = 5m/d) |  | 10d | 2012-04-12 A | 2012-04-27 A |  | 100% | 2012-07-17 | 2012-07-27 |  |  |  | 822_AB_W010 |  |
| 8220C-0400 |  | PHVA - 550m - 611m D&B 24H (61m) (53.6m²) (rate = 5m/d) |  | 12.2d | 2012-04-25 A | 2012-05-16 A | 8220C-0390 | 100% | 2012-07-28 | 2012-08-11 |  |  |  | 822_AB_W010 |  |
|  | 6 | **Type L Ventilation Ducts** |  |  | 2012-05-16 | 2012-08-13 |  |  |  |  |  |  |  |  |  |
| 8220C-1740 |  | Type L - Connect to Northbound Damper D&B (28.7m²) (20m) (rate = 3m/d) |  | 8d | 2012-05-16 A | 2012-05-31 A | 8220C-0400 | 100% | 2012-06-01 | 2012-06-09 |  |  |  | 822_AB_W010 |  |
| 8220C-1750 |  | Type L - Connect to Southbound Damper D&B (28.7m²) (20m) (rate = 3m/d) |  | 8d | 2012-05-16 A | 2012-08-13 A | 8220C-1740 | 100% | 2012-06-11 | 2012-06-19 |  |  |  | 822_AB_W010 |  |
|  | 5 | **Temporary Access Adit** |  |  | 2013-06-06 | 2017-02-07 |  |  |  |  |  |  |  |  |  |
| 8220C-5000 |  | PHBA2 - Erect RC Bulkhead wall in Main Tunnel |  | 8d | 2013-06-06 A | 2013-06-14 A |  | 100% | 2013-12-10 | 2013-12-19 |  |  | as late as possible | 822_AB_W010 |  |
| 8220C-5010 |  | Backfill Temp Adit |  | 0d | 2017-01-02 | 2017-01-02 | 8220C-5000 |  |  |  | -861.44d | 0d | as late as possible |  | NEW |
| 8220C-5020 |  | PHBA2 - Erect RC Bulkhead wall at Ch611 |  | 8d | 2017-01-02 | 2017-01-10 | 8220C-5010 |  |  |  | -861.44d | 0d | as late as possible |  | NEW |
| 8220C-5030 |  | Complete Main Tunnel lining at Ch126.193 to Ch126.204 |  | 12d | 2017-01-11 | 2017-01-24 | 8220C-5020 |  |  |  | -861.44d | 0d | as late as possible |  | NEW |
| 8220C-5040 |  | Complete PHVA Lining at Ch.611 Junction |  | 12d | 2017-01-25 | 2017-02-07 | 8220C-5030 |  |  |  | -861.44d | 0d | as late as possible |  | NEW |

Notes:
- 8220C-0300: P3 Activity Log Info: Includes 1 day time adjustment (Total 80 days)
- 8220C-0310: P3 Activity Log Info: Includes 1 day time adjustment (Total 80 days)
- 8220C-0320: P3 Activity Log Info: Includes 1 day time adjustment (Total 80 days)
- 8220C-0330: P3 Activity Log Info: Includes 1 day time adjustment (Total 80 days)
- 8220C-0340: P3 Activity Log Info: Includes 1 day time adjustment (Total 80 days)
- 8220C-0350: P3 Activity Log Info: Includes 1 day time adjustment (Total 80 days)
- 8220C-0360: P3 Activity Log Info: Includes 1 day time adjustment (Total 80 days)

| ID | WBS | Activity | Duration | Start | Finish | Predecessors | Complete | Planned start | Planned finish | Total float | Free float | Constraint | Stef Temp A1 | 822_AB_W010 |
| --- | --- | --- | --- | --- | --- | --- | --- | --- | --- | --- | --- | --- | --- | --- |
|  | 3 | **PHVA Permanent Lining - Type J Shutter** |  | 2014-05-09 | 2017-06-16 |  |  |  |  |  |  |  |  |  |
|  | 1 | **Kicker/Membrane** |  | 2014-05-09 | 2017-01-17 |  |  |  |  |  |  |  |  |  |
| 8220C-0930 |  | PHVA - Kicker, Membrane Ch140 - 237m (rate = 6m/d) (97m) | 16.6d | 2014-05-09 A | 2014-06-01 A | 8220C-0940 | 100% | 2014-07-04 | 2014-07-24 |  |  |  | NEW | 822_AB_W010 |
| 8220C-5080 |  | PHVA - Remove and re-mobilise Waterproofing gantry from PHVAA (Deleted - using K shutter) | 6d | 2014-05-09 A | 2014-05-09 A | 8220C-1530 | 100% | 2014-06-09 | 2014-06-17 |  |  |  | NEW | 822_AB_W010 |
| 8220C-0940 |  | PHVA - Kicker, Membrane Ch55 - 140m (rate = 6m/d) (85m) | 14d | 2017-01-02 | 2017-01-17 | 8220C-5080 |  |  |  | -1179.07d | 0d |  | NEW |  |
|  | 2 | **Lining** |  | 2014-05-17 | 2017-06-16 |  |  |  |  |  |  |  |  |  |
| 8220C-0980 |  | PHVA - Perm Lining Ch140 - Ch237 (rate = 6m/d) (97m) | 16.6d | 2014-05-17 A | 2014-06-01 A | 8220C-0990, 8220C-0930 FF | 100% | 2014-10-14 | 2014-11-03 |  |  |  | NEW | 822_AB_W010 |
| 8220C-5090 |  | PHVA - Remove and re-mobilise Lining Shutter from PHVAA (Deleted - using K shutter) | 12d | 2014-05-17 A | 2014-05-17 A | 8220C-1540 | 100% | 2014-09-12 | 2014-09-26 |  |  |  | NEW | 822_AB_W010 |
| 8220C-0990 |  | PHVA - Perm Lining Ch55 - 140m (rate = 6m/d) (85m) | 14d | 2017-03-22 | 2017-04-06 | 8220C-5090 |  |  |  | -1266.07d | 0d |  | NEW |  |
| 8220C-5100 |  | PHVA - De-mobilise Type J Shutter | 12d | 2017-04-07 | 2017-04-20 | 8220C-0980 |  |  |  | -1247.07d | 0d |  | NEW |  |
| 8220C-5170 |  | PHVA - Backfill Invert to Type K Level | 6d | 2017-04-21 | 2017-04-27 | 8220C-5100 |  |  |  | -1247.07d | 19d |  | NEW |  |
| 8220C-5110 |  | PHVA - Construct Head wall at Ch237 | 12d | 2017-06-03 | 2017-06-16 | 8220C-5100, 8220C-5120 |  |  |  | -1137d | 129.07d |  | NEW |  |
|  | 3 | **Invert Prep and Drainage** |  | 2017-04-07 | 2017-05-10 |  |  |  |  |  |  |  |  |  |
| 8220C-5190 |  | PHVA - Invert Prep, Drainage Ch55 - Ch111 (rate = 6m/d) (56m) | 8d | 2017-04-07 | 2017-04-15 | 8220C-0990 |  |  |  | -1266.07d | 0d |  | NEW |  |
| 8220C-5180 |  | PHVA - Invert Prep, Drainage Ch111 - Ch237 (rate = 6m/d) (127m) | 21d | 2017-04-17 | 2017-05-10 | 8220C-5190 |  |  |  | -1258.07d | 8d |  | NEW |  |
|  | 4 | **Invert Slab** |  | 2017-04-17 | 2017-05-19 |  |  |  |  |  |  |  |  |  |
| 8220C-5210 |  | PHVA - Invert Slab Ch55 - Ch111m (rate = 6m/d) (56m) | 8d | 2017-04-17 | 2017-04-25 | 8220C-5190 |  |  |  | -1266.07d | 0d |  | NEW |  |
| 8220C-5200 |  | PHVA - Invert Slab Ch111 - Ch237 (rate = 6m/d) (127m) | 21d | 2017-04-26 | 2017-05-19 | 8220C-5210, 8220C-5180 FF |  |  |  | -1266.07d | 0d |  | NEW |  |
|  | 2 | **PHVA Permanent Lining - Type K Shutter** |  | 2013-07-02 | 2018-04-10 |  |  |  |  |  |  |  |  |  |
| 8220C-1450 |  | PHVA - Civil Works Mobilisation | 6d | 2013-07-02 A | 2013-07-08 A |  | 100% | 2013-12-20 | 2013-12-28 |  |  | as late as possible | NEW | 822_AB_W010 |
| 8220C-2200 |  | PHVA - Vent Connection Lining, Wall & Slab | 41d | 2013-07-09 A | 2014-01-09 A | 8220C-1450 | 100% | 2014-03-01 | 2014-04-18 |  |  |  | NEW | 822_AB_W010 |
| 8220C-1470 |  | PHVA - Set Up PHVA Lining Shutter | 26d | 2014-01-10 A | 2014-02-18 A | 8220C-5100, 8220C-5170, 8220C-5200, 8220C-2200 | 100% | 2014-08-26 | 2014-09-26 |  |  |  | NEW | 822_AB_W010 |
|  | 1 | **Kicker/Membrane** |  | 2014-02-18 | 2014-06-01 |  |  |  |  |  |  |  |  |  |
| 8220C-0920 |  | PHVA - Kicker, Membrane Ch311 - 237m (rate = 6m/d) (74m) | 12d | 2014-02-18 A | 2014-06-01 A | 8220C-0910 | 100% | 2014-11-26 | 2014-12-10 |  |  |  | NEW | 822_AB_W010 |
| 8220C-0910 |  | PHVA - Kicker, Membrane Ch411 - 311m (rate = 6m/d) (100m) | 16.6d | 2014-03-05 A | 2014-03-28 A | 8220C-0900 | 100% | 2014-05-31 | 2014-06-23 |  |  |  | NEW | 822_AB_W010 |
| 8220C-0900 |  | PHVA - Kicker, Membrane Ch511 - 411m (rate = 6m/d) (100m) | 16.6d | 2014-03-28 A | 2014-04-19 A | 8220C-1480 | 100% | 2014-05-13 | 2014-05-31 |  |  |  | NEW | 822_AB_W010 |
| 8220C-1480 |  | PHVA - Kicker, Membrane Ch611 - 511m (rate = 3m/d)(100m) (Learning) | 34d | 2014-04-19 A | 2014-05-31 A | 8220C-1470 FS-16d | 100% | 2014-05-02 | 2014-06-11 |  |  |  | NEW | 822_AB_W010 |

Notes:
- 8220C-0930: P3 Activity Log Info: ??????????610 m / 6m/d??
- 8220C-5080: P3 Activity Log Info: ??????????610 m / 6m/d??
- 8220C-0940: P3 Activity Log Info: ??????????610 m / 6m/d??
- 8220C-0980: P3 Activity Log Info: ?????????? ??
- 8220C-5090: P3 Activity Log Info: ??????????610 m / 6m/d??
- 8220C-0990: P3 Activity Log Info: ?????????? ??
- 8220C-5100: P3 Activity Log Info: ??????????610 m / 6m/d??
- 8220C-5170: P3 Activity Log Info: ??????????610 m / 6m/d??
- 8220C-5110: P3 Activity Log Info: ??????????610 m / 6m/d??
- 8220C-0920: P3 Activity Log Info: ??????????610 m / 6m/d??
- 8220C-0910: P3 Activity Log Info: ??????????610 m / 6m/d??
- 8220C-0900: P3 Activity Log Info: ??????????610 m / 6m/d??
- 8220C-1480: P3 Activity Log Info: ??????????610 m / 6m/d??

| ID | WBS | Activity | Duration | Start | Finish | Predecessors | Complete | Planned start | Planned finish | Total float | Free float | Stef Temp A1 | 822_AB_W010 |
| --- | --- | --- | --- | --- | --- | --- | --- | --- | --- | --- | --- | --- | --- |
|  | 2 | **Lining** |  | 2014-02-26 | 2017-06-02 |  |  |  |  |  |  |  |  |
| 8220C-0970 |  | PHVA - Perm Lining Ch311 - 237m (rate = 6m/d) (74m) | 12d | 2014-02-26 A | 2014-05-15 A | 8220C-0960, 8220C-0920 FF | 100% | 2014-05-21 | 2014-06-05 |  |  | NEW | 822_AB_W010 |
| 8220C-0960 |  | PHVA - Perm Lining Ch411 - 311m (rate = 6m/d) (100m) | 16.6d | 2014-03-14 A | 2014-04-07 A | 8220C-0950 | 100% | 2014-05-31 | 2014-06-23 |  |  | NEW | 822_AB_W010 |
| 8220C-0950 |  | PHVA - Perm Lining Ch511 - 411m (rate = 6m/d) (100m) | 16.6d | 2014-04-07 A | 2014-04-26 A | 8220C-1490 | 100% | 2014-06-13 | 2014-07-03 |  |  | NEW | 822_AB_W010 |
| 8220C-1490 |  | PHVA - Perm Lining Ch611 - 511m (rate = 3m/d) (100m) (Learning) | 34d | 2014-04-26 A | 2014-06-01 A | 8220C-1470 | 100% | 2014-05-02 | 2014-06-11 |  |  | NEW | 822_AB_W010 |
| 8220C-5120 |  | PHVA - De-mobilise Type K Shutter | 12d | 2017-05-20 | 2017-06-02 | 8220C-0970, 8220C-5100 |  |  |  | -1137d | 0d | NEW |  |
|  | 3 | **Invert Preperation and Drainage** |  | 2017-05-20 | 2017-08-21 |  |  |  |  |  |  |  |  |
| 8220C-0460 |  | PHVA - Invert Prep, Drainage Ch611 - 511 (rate = 3m/d) (100m) (Learning) | 34d | 2017-05-20 | 2017-06-28 | 8220C-1490 FS-17d |  |  |  | -1266.07d | 0d | NEW |  |
| 8220C-1000 |  | PHVA - Invert Prep, Drainage Ch511 - 411 (rate = 6m/d) (100m) | 16.6d | 2017-06-29 | 2017-07-18 | 8220C-0460 |  |  |  | -1202.87d | 0d | NEW |  |
| 8220C-1010 |  | PHVA - Invert Prep, Drainage Ch411 - 311 (rate = 6m/d) (100m) | 16.6d | 2017-07-18 | 2017-08-07 | 8220C-1000 |  |  |  | -1202.87d | 0d | NEW |  |
| 8220C-1040 |  | PHVA - Invert Prep, Drainage Ch311 - 237 (rate = 6m/d) (74m) | 12d | 2017-08-07 | 2017-08-21 | 8220C-0970 FF, 8220C-1010 |  |  |  | -1202.87d | 17d | NEW |  |
|  | 4 | **Invert Slab** |  | 2017-06-09 | 2017-09-09 |  |  |  |  |  |  |  |  |
| 8220C-0470 |  | PHVA - Invert Slab Ch611 - 511m (rate = 3m/d) (100m) (Learning) | 34d | 2017-06-09 | 2017-07-18 | 8220C-0460 FS-17d |  |  |  | -1266.07d | 0d | NEW |  |
| 8220C-1050 |  | PHVA - Invert Slab Ch511 - 411m (rate = 6m/d) (100m) | 16.6d | 2017-07-19 | 2017-08-07 | 8220C-0470 |  |  |  | -1219.87d | 0d | NEW |  |
| 8220C-1060 |  | PHVA - Invert Slab Ch411 - 311m (rate = 6m/d) (100m) | 16.6d | 2017-08-07 | 2017-08-26 | 8220C-1050 |  |  |  | -1219.87d | 0d | NEW |  |
| 8220C-1090 |  | PHVA - Invert Slab Ch311 - 237m (rate = 6m/d) (74m) | 12d | 2017-08-26 | 2017-09-09 | 8220C-1040 FF, 8220C-1060 |  |  |  | -1219.87d | 46.2d | NEW |  |
|  | 5 | **Centre Wall** |  | 2017-06-29 | 2017-11-15 |  |  |  |  |  |  |  |  |
| 8220C-0500 |  | PHVA - Duct Dividing Wall Ch611 - 511m (rate = 3m/d) (100m) (Learning) | 34d | 2017-06-29 | 2017-08-07 | 8220C-0470 FS-17d |  |  |  | -1266.07d | 0d | NEW |  |
| 8220C-1200 |  | PHVA - Duct Dividing Wall Ch511 - 411m (rate = 6m/d) (100m) | 16.6d | 2017-08-08 | 2017-08-26 | 8220C-0500 |  |  |  | -1266.07d | 0d | NEW |  |
| 8220C-1210 |  | PHVA - Duct Dividing Wall Ch411 - 311m (rate = 6m/d) (100m) | 16.6d | 2017-08-26 | 2017-09-15 | 8220C-1200 |  |  |  | -1266.07d | 0d | NEW |  |
| 8220C-1220 |  | PHVA - Duct Dividing Wall Ch311 - 211m (rate = 6m/d) (100m) | 16.6d | 2017-09-15 | 2017-10-04 | 8220C-1210 |  |  |  | -1266.07d | 0d | NEW |  |
| 8220C-1230 |  | PHVA - Duct Dividing Wall Ch211 - 111m (rate = 6m/d) (100m) | 16.6d | 2017-10-04 | 2017-10-24 | 8220C-1220 |  |  |  | -1266.07d | 0d | NEW |  |
| 8220C-1240 |  | PHVA - Duct Dividing Wall Ch111 - 55m (rate = 6m/d) (56m) | 8d | 2017-10-24 | 2017-11-02 | 8220C-1230, 8220C-1090 FF |  |  |  | -1266.07d | 0d | NEW |  |
| 8220C-0510 |  | PHVA - Cat Ladders & Metal Grills | 10.67d | 2017-11-02 | 2017-11-15 | 8220C-1240 |  |  |  | -1266.07d | 0d | NEW |  |

Notes:
- 8220C-0970: P3 Activity Log Info: ?????????? ??
- 8220C-0960: P3 Activity Log Info: ?????????? ??
- 8220C-0950: P3 Activity Log Info: ?????????? ??
- 8220C-1490: P3 Activity Log Info: ?????????? ??
- 8220C-5120: P3 Activity Log Info: ??????????610 m / 6m/d??

| ID | WBS | Activity | Duration | Start | Finish | Predecessors | Complete | Planned start | Planned finish | Total float | Free float | 822_AB_W010 | Stef Temp A1 |
| --- | --- | --- | --- | --- | --- | --- | --- | --- | --- | --- | --- | --- | --- |
|  | 6 | **Designated Contractor Installation** |  | 2017-11-15 | 2018-04-10 |  |  |  |  |  |  |  |  |
| 8220C-520 |  | Designated Contractor Degree 2 Works | 74d | 2017-11-15 | 2018-02-12 | 8220-KD4F1 |  |  |  | -1266.07d | 0d |  |  |
| 8220C-530 |  | Designated Contractor Degree 3 Works | 49.44d | 2018-02-12 | 2018-04-10 | 8220-KD4F2 |  |  |  | -1264.51d | 0d |  |  |
|  | 2 | **Pat Heung Vehicular Access Adit** |  | 2011-11-14 | 2017-05-11 |  |  |  |  |  |  |  |  |
|  | 4 | **Temporary Construction Adit 1** |  | 2011-12-01 | 2017-03-13 |  |  |  |  |  |  |  |  |
| 8220C-0415 |  | PHTCA1 - Ch130 > Ch150 D&B (20m) (91.8m²) (90% rate = 3m/d) | 6.6d | 2011-12-01 A | 2011-12-09 A | 8220C-0320 SS | 100% | 2011-12-01 | 2011-12-08 |  |  | 822_AB_W010 |  |
| 8220C-0425 |  | PHTCA1 - Ch150 > Ch170 D&B (20m) (91.8m²) (90% rate = 3m/d) | 6.6d | 2011-12-10 A | 2011-12-23 A | 8220C-0415 | 100% | 2011-12-08 | 2011-12-16 |  |  | 822_AB_W010 |  |
| 8220C-0445 |  | PHTCA1 - Ch190 > Ch205 D&B (15m) (91.8m²) (90% rate = 3m/d) | 5d | 2011-12-23 A | 2011-12-31 A | 8220C-0435 | 100% |  |  |  |  | 822_AB_W010 |  |
| 8220C-0435 |  | PHTCA1 - Ch170 > Ch190 D&B (20m) (91.8m²) (90% rate = 3m/d) | 6.6d | 2011-12-24 A | 2012-01-04 A | 8220C-0425 | 100% | 2011-12-16 | 2011-12-23 |  |  | 822_AB_W010 |  |
| 8220C-0455 |  | PHTCA1 - Square up the connection between PHBA and PHVAA | 12d | 2012-01-05 A | 2012-01-14 A | 8220C-0445 | 100% | 2011-12-31 | 2012-01-16 |  |  | 822_AB_W010 |  |
|  | 1 | **Backfill and Reinstate Bypass Adit** |  | 2017-01-02 | 2017-03-13 |  |  |  |  |  |  |  |  |
| 8220C-475 |  | PHTCA1 - Erect RC Bulkhead wall in PHVA side | 8d | 2017-01-02 | 2017-01-10 | 8220C-1500 SS |  |  |  | -1266.07d | 0d |  |  |
| 8220C-485 |  | PHTCA1 - Backfill Temp Bypass Adit | 45d | 2017-01-11 | 2017-03-03 | 8220C-475 |  |  |  | -1266.07d | 0d |  |  |
| 8220C-495 |  | PHTCA1 - Erect RC Bulkhead wall in PHVAA side | 8d | 2017-03-04 | 2017-03-13 | 8220C-485 |  |  |  | -1266.07d | 0d |  |  |
|  | 5 | **Temporary Construction Adit 2** |  | 2017-01-06 | 2017-04-14 |  |  |  |  |  |  |  |  |
|  | 1 | **Backfill and Reinstate Bypass Adit** |  | 2017-01-06 | 2017-04-14 |  |  |  |  |  |  |  |  |
| 8220C-2220 |  | PHTCA2 - Erect RC Bulkhead wall in Bifircation side | 8d | 2017-01-06 | 2017-01-14 | 8220B-11230 |  |  |  | -603d | 0d |  | NEW |
| 8220C-2230 |  | PHTCA2 - Backfill Temp Bypass Adit | 45d | 2017-01-16 | 2017-03-08 | 8220C-2220 |  |  |  | -603d | 0d |  | NEW |
| 8220C-5060 |  | PHVAA - Complete Steelwork and Portal Haunch | 52d | 2017-01-27 | 2017-03-28 | 8220C-2070 |  |  |  | -588d | 321.51d |  | NEW |
| 8220C-5070 |  | Hammerhead - Complete Steelwork and Portal Haunch | 52d | 2017-01-27 | 2017-03-28 | 8220C-2070 |  |  |  | -588d | 321.51d |  | NEW |
| 8220C-2240 |  | PHTCA2 - Erect RC Bulkhead wall in PHVAA side | 8d | 2017-03-09 | 2017-03-17 | 8220C-2230 |  |  |  | -603d | 0d |  | NEW |
| 8220C-2250 |  | Complete Bifircation Lining | 12d | 2017-03-18 | 2017-03-31 | 8220C-2240 |  |  |  | -603d | 0d |  | NEW |
| 8220C-2260 |  | Complete PHVAA Lining | 12d | 2017-04-01 | 2017-04-14 | 8220C-2250 |  |  |  | -603d | 306.51d |  | NEW |
|  | 1 | **PHVAA Excavation** |  | 2011-11-14 | 2012-08-15 |  |  |  |  |  |  |  |  |
|  | 1 | **Drill and Blast Excavation** |  | 2012-01-16 | 2012-05-24 |  |  |  |  |  |  |  |  |
| 8220C-0060 |  | PHVAA - Excavation CH202 - CH233 D&B (31m) (91.8m²) (90% rate = 3m/d) | 16.6d | 2012-01-16 A | 2012-02-04 A | 8220C-0455 | 100% | 2012-01-16 | 2012-02-08 |  |  | 822_AB_W010 |  |
| 8220C-0070 |  | PHVAA - Excavation CH233 - CH283 D&B (50m) (91.8m²) (90% rate = 3m/d) | 16.6d | 2012-02-05 A | 2012-02-27 A | 8220C-0060 | 100% | 2012-02-08 | 2012-02-27 |  |  | 822_AB_W010 |  |
| 8220C-2300 |  | PHVAA - Excavation CH283 - CH313 D&B (25m) (91.8m²) (90% rate = 5m/d) | 5d | 2012-02-27 A | 2012-03-08 A | 8220C-0070 | 100% | 2012-06-05 | 2012-06-09 |  |  | 822_AB_W010 |  |
| 8220C-2390 |  | PHVAA - Excavation Blast 1 to 9 - CH313 - CH358 D&B (45m) (91.8m²) (rate = 5m/d) | 9d | 2012-03-09 A | 2012-03-22 A | 8220C-2300 | 100% | 2012-06-11 | 2012-06-20 |  |  | 822_AB_W010 |  |

Notes:
- 8220C-0060: P3 Activity Log Info: Includes 1 day time adjustment (Total 48 days)
- 8220C-0070: P3 Activity Log Info: Includes 1 day time adjustment (Total 48 days)

| ID | WBS | Activity | Duration | Start | Finish | Predecessors | Complete | Planned start | Planned finish | 822_AB_W010 |
| --- | --- | --- | --- | --- | --- | --- | --- | --- | --- | --- |
|  | 1 | **Dogleg** |  | 2012-03-26 | 2012-04-06 |  |  |  |  |  |
| 8220C-2400 |  | PHJBA - Excavation Blast 10 - CH333 - CH334.5 D&B (5m) | 1d | 2012-03-26 A | 2012-03-26 A | 8220C-2390 | 100% | 2012-06-21 | 2012-06-21 | 822_AB_W010 |
| 8220C-2410 |  | PHJBA - Excavation Blast 11 - CH334.5 - CH337.5 D&B (5m) | 1d | 2012-03-27 A | 2012-03-27 A | 8220C-2400 | 100% | 2012-06-22 | 2012-06-22 | 822_AB_W010 |
| 8220C-2420 |  | PHJBA - Excavation Blast 12 - CH337.5 - CH340 D&B (5m) | 1d | 2012-03-28 A | 2012-03-28 A | 8220C-2410 | 100% | 2012-06-23 | 2012-06-23 | 822_AB_W010 |
| 8220C-2430 |  | PHJBA - Excavation Blast 13 - CH340 - CH343 D&B (5m) | 1d | 2012-03-29 A | 2012-03-29 A | 8220C-2420 | 100% | 2012-06-25 | 2012-06-25 | 822_AB_W010 |
| 8220C-2440 |  | PHJBA - Complete Hammerhead Excavation Blast 1 | 1.5d | 2012-03-30 A | 2012-03-30 A | 8220C-2430 | 100% | 2012-06-26 | 2012-06-27 | 822_AB_W010 |
| 8220C-2450 |  | PHJBA - Complete Hammerhead Excavation Blast 2 | 1.5d | 2012-03-31 A | 2012-03-31 A | 8220C-2440 | 100% | 2012-06-27 | 2012-06-28 | 822_AB_W010 |
| 8220C-2460 |  | PHJBA - Complete Hammerhead Excavation Blast 3 | 1.5d | 2012-04-02 A | 2012-04-03 A | 8220C-2450 | 100% | 2012-06-29 | 2012-06-30 | 822_AB_W010 |
| 8220C-2470 |  | PHJBA - Excavation Blast 14 - CH343 - CH346.5 D&B (5m) | 1d | 2012-04-04 A | 2012-04-04 A | 8220C-2460 | 100% | 2012-06-30 | 2012-07-03 | 822_AB_W010 |
| 8220C-2480 |  | PHJBA - Excavation Blast 15 - CH346.5 - CH350 D&B (5m) | 1d | 2012-04-05 A | 2012-04-05 A | 8220C-2470 | 100% | 2012-07-03 | 2012-07-04 | 822_AB_W010 |
| 8220C-2490 |  | PHJBA - Excavation Blast 16 - CH350 - CH353 D&B (5m) | 1d | 2012-04-06 A | 2012-04-06 A | 8220C-2480 | 100% | 2012-07-04 | 2012-07-05 | 822_AB_W010 |
|  | 2 | **Remaining PHVAA** |  | 2012-03-23 | 2012-05-24 |  |  |  |  |  |
| 8220C-2210 |  | PHVAA - Excavation CH360 - CH403 D&B (29m) (91.8m²) ( = 2b/w) (9 blasts x 5m) | 27d | 2012-03-23 A | 2012-04-26 A | 8220C-2390 | 100% | 2012-06-21 | 2012-07-23 | 822_AB_W010 |
| 8220B-0600 |  | Square up Main Tunnel (16 x 11m) D&B Ch125.794 to Ch125.783 | 12d | 2012-04-27 A | 2012-05-05 A | 8220C-1710 | 100% | 2012-07-27 | 2012-08-09 | 822_AB_W010 |
| 8220B-10110 |  | Main - Ch125.794 to Ch125.825 D&B (31m) (rate = 2.5m/d) | 13.4d | 2012-05-07 A | 2012-05-15 A | 8220B-0600 | 100% | 2012-08-10 | 2012-08-25 | 822_AB_W010 |
| 8220B-10270 |  | Main - Ch125.825 to Ch125.841Slash blasts to breakthrough D&B (16m) (rate = 4m/d) | 4d | 2012-05-16 A | 2012-05-24 A | 8220B-10110 | 100% | 2012-08-25 | 2012-08-30 | 822_AB_W010 |
|  | 3 | **PHJBA** |  | 2012-04-07 | 2012-04-19 |  |  |  |  |  |
| 8220C-2700 |  | PHJBA - Excavation Blast 17 - CH353 - CH358 D&B (5m) | 1d | 2012-04-07 A | 2012-04-07 A | 8220C-2490 | 100% | 2012-07-05 | 2012-07-06 | 822_AB_W010 |
| 8220C-2500 |  | PHJBA - Excavation Blast 18 - CH358 - CH363 D&B (5m) | 1d | 2012-04-09 A | 2012-04-09 A | 8220C-2700 | 100% | 2012-07-06 | 2012-07-07 | 822_AB_W010 |
| 8220C-2510 |  | PHJBA - Excavation Blast 19 - CH363 - CH368 D&B (5m) | 1d | 2012-04-10 A | 2012-04-10 A | 8220C-2500 | 100% | 2012-07-07 | 2012-07-09 | 822_AB_W010 |
| 8220C-2520 |  | PHJBA - Excavation Blast 20 - CH368 - CH373 D&B (5m) | 1d | 2012-04-11 A | 2012-04-11 A | 8220C-2510 | 100% | 2012-07-09 | 2012-07-10 | 822_AB_W010 |
| 8220C-2530 |  | PHJBA - Excavation Blast 21 - CH373 - CH378 D&B (5m) | 1d | 2012-04-12 A | 2012-04-12 A | 8220C-2520 | 100% | 2012-07-10 | 2012-07-11 | 822_AB_W010 |
| 8220C-2540 |  | PHJBA - Excavation Blast 22 - CH378 - CH383 D&B (5m) | 1d | 2012-04-13 A | 2012-04-13 A | 8220C-2530 | 100% | 2012-07-11 | 2012-07-12 | 822_AB_W010 |
| 8220C-2550 |  | PHJBA - Excavation Blast 23 - CH383 - CH388 D&B (5m) | 1d | 2012-04-14 A | 2012-04-14 A | 8220C-2540 | 100% | 2012-07-12 | 2012-07-13 | 822_AB_W010 |
| 8220C-2560 |  | PHJBA - Excavation Blast 24 - CH388 - CH393 D&B (5m) | 1d | 2012-04-16 A | 2012-04-16 A | 8220C-2550 | 100% | 2012-07-13 | 2012-07-14 | 822_AB_W010 |
| 8220C-2580 |  | PHJBA - Excavation Blast 26 - CH395 - CH399 D&B (4m) | 1d | 2012-04-17 A | 2012-04-17 A | 8220C-2570 | 100% | 2012-07-16 | 2012-07-17 | 822_AB_W010 |
| 8220C-2590 |  | PHJBA - Excavation Blast 27 - CH399 - CH403 D&B (4m) | 1d | 2012-04-18 A | 2012-04-18 A | 8220C-2580 | 100% | 2012-07-17 | 2012-07-18 | 822_AB_W010 |
| 8220C-2570 |  | PHJBA - Excavation Strip Blast 25 - CH393 - CH395 D&B (2m) | 1d | 2012-04-19 A | 2012-04-19 A | 8220C-2560 | 100% | 2012-07-14 | 2012-07-16 | 822_AB_W010 |

Notes:
- 8220B-10110: P3 Activity Log Info: Includes +1 day time adjustment (Total 36 days)
- 8220B-10270: P3 Activity Log Info: Includes +1 day time adjustment (Total 36 days)

| ID | WBS | Activity | Type | Duration | Start | Finish | Predecessors | Complete | Planned start | Planned finish | 822_AB_W010 |
| --- | --- | --- | --- | --- | --- | --- | --- | --- | --- | --- | --- |
|  | 4 | **Square up in main tunnel** |  |  | 2012-04-20 | 2012-05-01 |  |  |  |  |  |
| 8220C-2600 |  | PHJBA - Excavation Blast 28 - CH403 - CH407 D&B (4m) |  | 1d | 2012-04-20 A | 2012-04-20 A | 8220C-2590 | 100% | 2012-07-18 | 2012-07-19 | 822_AB_W010 |
| 8220C-2610 |  | PHJBA - Excavation Blast 29 - CH407 - CH411 D& (4m) |  | 1d | 2012-04-21 A | 2012-04-21 A | 8220C-2600 | 100% | 2012-07-19 | 2012-07-20 | 822_AB_W010 |
| 8220C-2620 |  | PHJBA - Excavation Blast 30 - CH411 - CH415D&B (4m) |  | 1d | 2012-04-23 A | 2012-04-23 A | 8220C-2610 | 100% | 2012-07-20 | 2012-07-21 | 822_AB_W010 |
| 8220C-2630 |  | PHJBA - Excavation Blast 31 - CH419 - CH423 D&B (4m) |  | 1d | 2012-04-24 A | 2012-04-24 A | 8220C-2620 | 100% | 2012-07-21 | 2012-07-23 | 822_AB_W010 |
| 8220C-2640 |  | PHJBA - Excavation Blast 32 - CH423 - CH427 D&B (4m) |  | 1d | 2012-04-25 A | 2012-04-25 A | 8220C-2630 | 100% | 2012-07-23 | 2012-07-24 | 822_AB_W010 |
| 8220C-2650 |  | PHJBA - Excavation Blast 33 - CH427 - CH431 D&B (4m) |  | 1d | 2012-04-26 A | 2012-04-26 A | 8220C-2640 | 100% | 2012-07-24 | 2012-07-25 | 822_AB_W010 |
| 8220C-2660 |  | PHJBA - Excavation Strip Blast 34 |  | 1d | 2012-04-27 A | 2012-04-27 A | 8220C-2650 | 100% | 2012-07-25 | 2012-07-26 | 822_AB_W010 |
| 8220C-2670 |  | PHJBA - Excavation Strip Blast 35 |  | 1d | 2012-04-28 A | 2012-04-28 A | 8220C-2660 | 100% | 2012-07-26 | 2012-07-27 | 822_AB_W010 |
| 8220C-2680 |  | PHJBA - Excavation Strip Blast 36 |  | 1d | 2012-04-30 A | 2012-04-30 A | 8220C-2670 | 100% | 2012-07-27 | 2012-07-28 | 822_AB_W010 |
| 8220C-2690 |  | PHJBA - Excavation Strip Blast 37 |  | 1d | 2012-05-01 A | 2012-05-01 A | 8220C-2680 | 100% | 2012-07-28 | 2012-07-30 | 822_AB_W010 |
|  | 2 | **Soft Ground Mechanical Excavation** |  |  | 2011-11-14 | 2012-08-15 |  |  |  |  |  |
|  | 1 | **Access Deck Construction** |  |  | 2011-11-14 | 2012-02-27 |  |  |  |  |  |
| 8220C-0640 |  | PHVAA -Mobilise Sub-Contractor |  | 16d | 2011-11-14 A | 2011-12-01 A | 8220C-0620 | 100% |  |  | 822_AB_W010 |
| 8220C-0620 |  | PHVAA -Issue the VEP to resolve the CA Issue | milestone | 0d | 2011-11-14 A | 2011-11-14 A |  | 100% | 2011-12-01 | 2011-12-01 | 822_AB_W010 |
| 8220C-0650 |  | PHVAA -Rock Slope Breaking |  | 18d | 2011-11-21 A | 2011-12-12 A | 8220C-0640 SS | 100% |  |  | 822_AB_W010 |
| 8220C-0660 |  | PHVAA -Construct Column Footings |  | 18d | 2011-12-12 A | 2012-01-05 A | 8220C-0650 | 100% |  |  | 822_AB_W010 |
| 8220C-0670 |  | PHVAA -Erection of Columns |  | 6d | 2012-01-05 A | 2012-01-12 A | 8220C-0660 | 100% |  |  | 822_AB_W010 |
| 8220C-0680 |  | PHVAA -Install longitudinal beam |  | 12d | 2012-01-12 A | 2012-01-30 A | 8220C-0670 | 100% |  |  | 822_AB_W010 |
| 8220C-0690 |  | PHVAA - Install column bracing |  | 12d | 2012-01-12 A | 2012-01-30 A | 8220C-0670 | 100% |  |  | 822_AB_W010 |
| 8220C-0700 |  | PHVAA - Install Transverse beam and Horizontal Bracing |  | 12d | 2012-01-30 A | 2012-02-13 A | 8220C-0690, 8220C-0680 | 100% |  |  | 822_AB_W010 |
| 8220C-0710 |  | PHVAA - Install Sheetpile Decking to Access Deck |  | 6d | 2012-02-13 A | 2012-02-20 A | 8220C-0700 | 100% |  |  | 822_AB_W010 |
| 8220C-0720 |  | PHVAA - Apply Concrete Finish to Access Deck |  | 6d | 2012-02-20 A | 2012-02-27 A | 8220C-0710 | 100% |  |  | 822_AB_W010 |
|  | 2 | **Approach Ramp** |  |  | 2012-01-05 | 2012-02-27 |  |  |  |  |  |
| 8220C-0750 |  | PHVAA - Excavate and Construct Ramp Footing |  | 18d | 2012-01-05 A | 2012-01-30 A | 8220C-0660 | 100% |  |  | 822_AB_W010 |
| 8220C-0760 |  | PHVAA - Construct Column Footings |  | 18d | 2012-01-05 A | 2012-01-30 A | 8220C-0660 | 100% |  |  | 822_AB_W010 |
| 8220C-0770 |  | PHVAA - Install Longitudinal Beam |  | 6d | 2012-01-30 A | 2012-02-06 A | 8220C-0750, 8220C-0760 | 100% |  |  | 822_AB_W010 |
| 8220C-0780 |  | PHVAA - Install Bracings |  | 6d | 2012-02-06 A | 2012-02-13 A | 8220C-0770 | 100% |  |  | 822_AB_W010 |
| 8220C-0790 |  | PHVAA - Install Sheetpile Decking to Approach Ramp |  | 6d | 2012-02-13 A | 2012-02-20 A | 8220C-0780 | 100% |  |  | 822_AB_W010 |
| 8220C-0800 |  | PHVAA - Apply Concrete Finish to Approach Ramp |  | 6d | 2012-02-20 A | 2012-02-27 A | 8220C-0790 | 100% |  |  | 822_AB_W010 |

| ID | WBS | Activity | Type | Duration | Start | Finish | Predecessors | Complete | Planned start | Planned finish | Constraint | 822_AB_W010 |
| --- | --- | --- | --- | --- | --- | --- | --- | --- | --- | --- | --- | --- |
|  | 3 | **From Inside the Adit** |  |  | 2012-02-09 | 2012-08-15 |  |  |  |  |  |  |
| 8220C-0050 |  | PHVAA - Excavation CH183 - CH134 D&B (49m) (91.8m²) (90% rate = 3m/d) |  | 16.6d | 2012-02-09 A | 2012-03-16 A | 8220C-0455 | 100% | 2012-02-25 | 2012-03-15 |  | 822_AB_W010 |
| 8220C-0120 |  | PHVAA - Spile 1st Set & Grout, Excav & Arch (9m) (91.8m²) (75% rate = 0.63m/d) |  | 15d | 2012-03-15 A | 2012-05-03 A | 8220C-0050 | 100% | 2012-06-11 | 2012-06-27 |  | 822_AB_W010 |
| 8220C-0560 |  | PHVAA - Spile 2nd Set & Grout, Excav & Arch (9m) (91.8m²) (75% rate = 0.63m/d) |  | 15d | 2012-05-03 A | 2012-06-05 A | 8220C-0120 | 100% | 2012-06-01 | 2012-06-18 |  | 822_AB_W010 |
| 8220C-0570 |  | PHVAA - Spile 3rd Set & Grout, Excav & Arch (9m) (91.8m²) (75% rate = 0.63m/d) |  | 15d | 2012-06-06 A | 2012-06-29 A | 8220C-0560 | 100% | 2012-08-06 | 2012-08-22 |  | 822_AB_W010 |
| 8220C-0580 |  | PHVAA - Spile 4th Set & Grout, Excav & Arch (9m) (91.8m²) (75% rate = 0.63m/d) |  | 15d | 2012-06-30 A | 2012-07-21 A | 8220C-0570 | 100% | 2012-08-23 | 2012-09-08 |  | 822_AB_W010 |
| 8220C-0730 |  | Commence Haulage via top portal | milestone | 0d | 2012-08-15 A | 2012-08-15 A | 8220C-0740 FF, 8220C-0580 | 100% | 2012-09-04 | 2012-09-04 |  | 822_AB_W010 |
|  | 4 | **From the Portal** |  |  | 2012-03-16 | 2012-08-14 |  |  |  |  |  |  |
| 8220C-0590 |  | PHVAA - Spile 5th Set & Grout, Excav & Arch (9m) (91.8m²) (75% rate = 0.63m/d) |  | 15d | 2012-03-16 A | 2012-04-30 A | 8220C-0720 | 100% | 2012-06-01 | 2012-06-18 |  | 822_AB_W010 |
| 8220C-0630 |  | PHVAA - Spile 8th Set & Grout, Excav & Arch (9m) (91.8m²) (75% rate = 0.63m/d) |  | 15d | 2012-03-16 A | 2012-04-30 A | 8220C-0610 | 100% | 2012-08-07 | 2012-08-23 |  | 822_AB_W010 |
| 8220C-0600 |  | PHVAA - Spile 6th Set & Grout, Excav & Arch (9m) (91.8m²) (75% rate = 0.63m/d) |  | 15d | 2012-04-30 A | 2012-05-25 A | 8220C-0590 | 100% | 2012-06-19 | 2012-07-06 |  | 822_AB_W010 |
| 8220C-0610 |  | PHVAA - Spile 7th Set & Grout, Excav & Arch (9m) (91.8m²) (75% rate = 0.63m/d) |  | 15d | 2012-04-30 A | 2012-05-25 A | 8220C-0600 | 100% | 2012-07-07 | 2012-07-24 |  | 822_AB_W010 |
| 8220C-0740 |  | Install Blast Door inside Tunnel Portal |  | 12d | 2012-07-24 A | 2012-08-14 A | 8220C-0630 | 100% | 2012-09-01 | 2012-09-14 |  | 822_AB_W010 |
|  | 3 | **Junction PH1 Undertrack Passage** |  |  | 2012-08-25 | 2017-02-02 |  |  |  |  |  |  |
| 8220C-1710 |  | PH1 - D&B Staircase Pocket |  | 3d | 2012-08-25 A | 2012-08-29 A |  | 100% | 2012-10-03 | 2012-10-05 | start on 2012-08-27 | 822_AB_W010 |
| 8220C-1720 |  | PH1 - D&B Underpass Excluding Sump (3 Blasts x 3day) |  | 9d | 2012-08-30 A | 2012-09-15 A | 8220B-10270, 8220C-1710 | 100% | 2012-10-06 | 2012-10-16 |  | 822_AB_W010 |
| 8220C-5150 |  | PH1 - Install temp protection measures |  | 3d | 2012-09-05 A | 2012-09-20 A | 8220C-1720 | 100% | 2012-10-17 | 2012-10-19 |  | 822_AB_W010 |
| 8220C-1810 |  | PH1 - Removal of Pre-Blast Spoil Part 1 and pour blinding |  | 6d | 2012-09-21 A | 2012-10-27 A | 8220C-1720 | 100% | 2012-10-17 | 2012-10-24 |  | 822_AB_W010 |
|  | 3 | **Downtrack** |  |  | 2012-10-17 | 2012-12-14 |  |  |  |  |  |  |
| 8220C-2080 |  | PH1 - Waterproof membrane Part 1 |  | 3d | 2012-10-17 A | 2012-10-20 A | 8220C-1810, 8220C-5150 | 100% | 2012-11-03 | 2012-11-06 |  | 822_AB_W010 |
| 8220C-1830 |  | PH1 - Construct Base slab part 1 |  | 6d | 2012-10-20 A | 2012-10-27 A | 8220C-2080 | 100% | 2012-11-07 | 2012-11-13 |  | 822_AB_W010 |
| 8220C-1890 |  | PH1 - Apply Waterproofing to external Walls Part 1 |  | 2d | 2012-11-13 A | 2012-11-17 A | 8220C-1880 | 100% | 2012-11-20 | 2012-11-22 |  | 822_AB_W010 |
| 8220C-1880 |  | PH1 - Construct External Walls Part 1 |  | 6d | 2012-11-19 A | 2012-12-14 A | 8220C-1830 | 100% | 2012-11-14 | 2012-11-20 |  | 822_AB_W010 |
| 8220C-1920 |  | PH1 - Construct Internal Wall in Underpass Part 1 |  | 3d | 2012-11-22 A | 2012-12-14 A | 8220C-1890 | 100% | 2013-01-02 | 2013-01-04 |  | 822_AB_W010 |
| 8220C-1940 |  | PH1 - Construct Suspended Slab Part 1 |  | 10d | 2012-11-24 A | 2012-12-14 A | 8220C-1920 | 100% | 2013-01-05 | 2013-01-16 |  | 822_AB_W010 |

Notes:
- 8220C-0050: P3 Activity Log Info: Includes 1 day time adjustment (Total 48 days)
- 8220C-0120: P3 Activity Log Info: ??????????107.8m2 10m in ??Portal 64m / 0.6m/d + / 7d lag for rock bench??
- 8220C-0560: P3 Activity Log Info: ??????????107.8m2 10m in ??Portal 64m / 0.6m/d + / 7d lag for rock bench??
- 8220C-0570: P3 Activity Log Info: ??????????107.8m2 10m in ??Portal 64m / 0.6m/d + / 7d lag for rock bench??
- 8220C-0580: P3 Activity Log Info: ??????????107.8m2 10m in ??Portal 64m / 0.6m/d + / 7d lag for rock bench??
- 8220C-0590: P3 Activity Log Info: ??????????107.8m2 10m in ??Portal 64m / 0.6m/d + / 7d lag for rock bench??
- 8220C-0630: P3 Activity Log Info: ??????????107.8m2 10m in ??Portal 64m / 0.6m/d + / 7d lag for rock bench??
- 8220C-0600: P3 Activity Log Info: ??????????107.8m2 10m in ??Portal 64m / 0.6m/d + / 7d lag for rock bench??
- 8220C-0610: P3 Activity Log Info: ??????????107.8m2 10m in ??Portal 64m / 0.6m/d + / 7d lag for rock bench??

| ID | WBS | Activity | Duration | Start | Finish | Predecessors | Complete | Planned start | Planned finish | Total float | Free float | 822_AB_W010 | Stef Temp A1 |
| --- | --- | --- | --- | --- | --- | --- | --- | --- | --- | --- | --- | --- | --- |
|  | 1 | **Sump** |  | 2012-09-22 | 2013-03-13 |  |  |  |  |  |  |  |  |
| 8220C-1800 |  | PH1 - Excavate Foul Sump | 6d | 2012-09-22 A | 2012-09-29 A | 8220C-1810 | 100% | 2012-10-05 | 2012-10-11 |  |  | 822_AB_W010 |  |
| 8220C-1970 |  | PH1 - Remove Spoil and Pour Blinding Conc | 4d | 2012-10-03 A | 2012-11-12 A | 8220C-1800 | 100% | 2012-11-03 | 2012-11-07 |  |  | 822_AB_W010 |  |
| 8220C-1910 |  | PH1 - Install Waterproof membrane | 2d | 2012-12-17 A | 2012-12-21 A | 8220C-1970 | 100% | 2012-11-08 | 2012-11-09 |  |  | 822_AB_W010 |  |
| 8220C-1900 |  | PH1 - Construct Base Slab and plinths in Sump | 6d | 2012-12-21 A | 2013-02-26 A | 8220C-1910 | 100% | 2013-01-02 | 2013-01-08 |  |  | 822_AB_W010 |  |
| 8220C-1930 |  | PH1 - Construct External Walls within Sump | 6d | 2013-02-15 A | 2013-03-13 A | 8220C-1900 | 100% | 2013-04-01 | 2013-04-09 |  |  | 822_AB_W010 |  |
|  | 4 | **Downtrack Stairwell** |  | 2013-03-05 | 2017-01-26 |  |  |  |  |  |  |  |  |
| 8220C-2100 |  | PH1 - Construct External Walls | 12d | 2013-03-05 A | 2013-03-22 A | 8220C-1880 | 100% | 2013-06-01 | 2013-06-15 |  |  | 822_AB_W010 |  |
| 8220C-1820 |  | PH1 - Construct Staircase and Internal walls | 16d | 2017-01-02 | 2017-01-19 | 8220C-2100 |  |  |  | -1098d | 0d |  |  |
| 8220C-2150 |  | PH1 - Lighting / E&M Works | 6d | 2017-01-20 | 2017-01-26 | 8220C-2130 FS-6d, 8220C-2130 FF |  |  |  | -1098d | 0d |  | 3MRP |
| 8220C-2160 |  | PH1 - Apply Sealant / ABWF Works | 6d | 2017-01-20 | 2017-01-26 | 8220C-2130 FS-6d, 8220C-2150 FF |  |  |  | -1098d | 0d |  | 3MRP |
|  | 2 | **Uptrack** |  | 2013-01-14 | 2017-01-26 |  |  |  |  |  |  |  |  |
| 8220C-5140 |  | PH1 - Removal of Pre-Blast Spoil Part 2 and pour blinding | 6d | 2013-01-14 A | 2013-01-23 A | 8220C-1940 | 100% | 2013-01-02 | 2013-01-08 |  |  | 822_AB_W010 |  |
| 8220C-1990 |  | PH1 - Waterproof membrane Part 2 | 3d | 2013-01-23 A | 2013-02-18 A | 8220C-5140 | 100% | 2013-02-02 | 2013-02-05 |  |  | 822_AB_W010 |  |
| 8220C-2000 |  | PH1 - Construct Base slab part 2 | 6d | 2013-02-20 A | 2013-03-09 A | 8220C-1990 | 100% | 2013-06-01 | 2013-06-07 |  |  | 822_AB_W010 |  |
| 8220C-2010 |  | PH1 - Construct External Walls Part 2 | 6d | 2013-03-13 A | 2013-03-23 A | 8220C-2000 | 100% | 2013-06-08 | 2013-06-15 |  |  | 822_AB_W010 |  |
| 8220C-2020 |  | PH1 - Apply Waterproofing to external Walls Part 2 | 2d | 2013-03-26 A | 2013-04-03 A | 8220C-2010 | 100% | 2013-06-17 | 2013-06-18 |  |  | 822_AB_W010 |  |
| 8220C-2030 |  | PH1 - Construct Internal Wall in Underpass Part 2 | 3d | 2013-04-04 A | 2013-04-12 A | 8220C-2020 | 100% | 2013-06-19 | 2013-06-21 |  |  | 822_AB_W010 |  |
| 8220C-2040 |  | PH1 - Construct Suspended Slab Part 2 | 10d | 2013-04-13 A | 2013-04-30 A | 8220C-2030 | 100% | 2013-06-22 | 2013-07-04 |  |  | 822_AB_W010 |  |
| 8220C-5130 |  | PH1 - Underpass ABWF | 20d | 2017-01-02 | 2017-01-24 | 8220C-2040 |  |  |  | -1090d | 8d |  | NEW |
| 8220C-2130 |  | PH1 - Install Metalworks/Handrails | 6d | 2017-01-20 | 2017-01-26 | 8220C-1820 |  |  |  | -1098d | 0d |  | NEW |
| 8220C-2070 |  | PH1 - Backfill and compact | 3d | 2017-01-24 | 2017-01-26 | 8220C-2160 FF, 8220C-2040, 8220C-1930 FF |  |  |  | -1098d | 0d |  | NEW |
|  | 5 | **Uptrack Stairwell** |  | 2013-05-08 | 2017-02-02 |  |  |  |  |  |  |  |  |
| 8220C-2110 |  | PH1 - Construct External Walls | 12d | 2013-05-08 A | 2013-05-23 A | 8220C-2010 | 100% | 2013-06-17 | 2013-06-29 |  |  | 822_AB_W010 | NEW |
| 8220C-2090 |  | PH1 - Construct Staircase and Internal walls | 16d | 2017-01-02 | 2017-01-19 | 8220C-2110 |  |  |  | -1092d | 6d |  | NEW |
| 8220C-2120 |  | PH1 - Install Metalworks/Handrails | 6d | 2017-01-27 | 2017-02-02 | 8220C-2090, 8220C-2070 FF, 8220C-2070, 8220C-5130 FF |  |  |  | -1098d | 0d |  | NEW |
| 8220C-2170 |  | PH1 - Apply Sealant / ABWF Works | 6d | 2017-01-27 | 2017-02-02 | 8220C-2120 FS-6d |  |  |  | -1098d | 0d |  | NEW |
| 8220C-2180 |  | PH1 - Building Services/E&M Works | 6d | 2017-01-27 | 2017-02-02 | 8220C-2120 FS-6d, 8220C-2170 FF |  |  |  | -1098d | 84d |  | NEW |

| ID | WBS | Activity | Duration | Start | Finish | Predecessors | Complete | Planned start | Planned finish | Total float | Free float | Constraint | Stef Temp A1 | 822_AB_W010 |
| --- | --- | --- | --- | --- | --- | --- | --- | --- | --- | --- | --- | --- | --- | --- |
|  | 2 | **PHVAA Permanent Lining** |  | 2013-05-21 | 2017-05-11 |  |  |  |  |  |  |  |  |  |
| 8220C-0220 |  | PHVAA - Close Tunnel Wall Opening | 18.67d | 2017-01-02 | 2017-01-23 |  |  |  |  | -868d | 13.33d | start on 2014-03-04 | NEW |  |
| 8220C-0890 |  | PHVAA - Install Tunnel Access Sliding Door | 4.44d | 2017-02-08 | 2017-02-13 | 8220C-0220, 8220C-5040 |  |  |  | -861.44d | 30.33d |  | NEW |  |
|  | 1 | **Kicker/Membrane** |  | 2013-05-21 | 2014-06-01 |  |  |  |  |  |  |  |  |  |
| 8220C-1500 |  | PHVAA - Kicker and Membrane CH387 - CH300 (rate = 3m/d) (87m) (Learning) | 34d | 2013-05-21 A | 2014-06-01 A | 8220C-0140 SS | 100% | 2013-06-24 | 2013-08-02 |  |  |  | NEW | 822_AB_W010 |
| 8220C-1510 |  | PHVAA - Kicker and Membrane CH300 - CH200 (rate = 6m/d) (100m) | 16.6d | 2013-10-10 A | 2014-05-27 A | 8220C-1500 | 100% | 2014-02-13 | 2014-03-05 |  |  |  | NEW | 822_AB_W010 |
| 8220C-1520 |  | PHVAA - Kicker and Membrane CH200 - CH100 (rate = 6m/d) (100m) | 16.6d | 2014-03-01 A | 2014-05-31 A | 8220C-1510 | 100% | 2014-04-02 | 2014-04-23 |  |  |  | NEW | 822_AB_W010 |
| 8220C-1530 |  | PHVAA - Kicker and Membrane CH100 - CH60 (rate = 6m/d)(40m) | 7d | 2014-04-14 A | 2014-05-17 A | 8220C-1520 | 100% | 2014-05-06 | 2014-05-14 |  |  |  | NEW | 822_AB_W010 |
|  | 2 | **Lining** |  | 2013-10-05 | 2017-03-21 |  |  |  |  |  |  |  |  |  |
| 8220C-0140 |  | PHVAA - Erect Lining Formwork | 26d | 2013-10-05 A | 2013-12-10 A | 8220A-2920 | 100% | 2013-11-01 | 2013-11-30 |  |  | start on 2012-11-15 | NEW | 822_AB_W010 |
| 8220C-0160 |  | PHVAA - Lining CH387 - CH300 & Hammer Head (rate = 3m/d) (87m) (Learning) | 34d | 2013-12-11 A | 2014-06-01 A | 8220C-0140, 8220C-1500 FS-17d | 100% | 2014-01-22 | 2014-03-04 |  |  |  | NEW | 822_AB_W010 |
| 8220C-0290 |  | PHVAA - Lining CH300 - CH200 (rate = 6m/d) (100m) | 16.6d | 2014-04-22 A | 2014-06-01 A | 8220C-0160 | 100% | 2014-05-14 | 2014-06-04 |  |  |  | NEW | 822_AB_W010 |
| 8220C-0550 |  | PHVAA - Lining CH200 - CH100 (rate = 6m/d) (100m) | 16.6d | 2014-05-15 A | 2014-06-01 A | 8220C-0290, 8220C-495 | 100% | 2014-08-15 | 2014-09-03 |  |  |  | NEW | 822_AB_W010 |
| 8220C-1540 |  | PHVAA - Lining CH100 - CH60 (rate = 6m/d) (40m) | 7d | 2017-03-14 | 2017-03-21 | 8220C-0550, 8220C-1530 FF |  |  |  | -1266.07d | 0d |  | NEW |  |
|  | 3 | **Invert Preperation and Drainage** |  | 2014-05-02 | 2017-03-21 |  |  |  |  |  |  |  |  |  |
| 8220C-1640 |  | PHVAA - Invert Prep, Drainage Ch387 - Ch300 (rate = 3m/d)(87m) (Learning) | 34d | 2014-05-02 A | 2014-06-01 A | 8220C-0160 FS-17d | 100% | 2014-06-03 | 2014-07-14 |  |  |  | NEW | 822_AB_W010 |
| 8220C-1650 |  | PHVAA - Invert Prep, Drainage Ch300 - Ch200 (rate = 6m/d)(100m) | 16.6d | 2017-01-02 | 2017-01-20 | 8220C-1640 |  |  |  | -1154.2d | 0d |  | NEW |  |
| 8220C-1660 |  | PHVAA - Invert Prep, Drainage Ch200 - Ch100 (rate = 6m/d)(100m) | 16.6d | 2017-01-20 | 2017-02-09 | 8220C-1650 |  |  |  | -1154.2d | 27.8d |  | NEW |  |
| 8220C-1670 |  | PHVAA - Invert Prep, Drainage Ch100 - Ch60 (rate = 6m/d)(40m) | 7d | 2017-03-14 | 2017-03-21 | 8220C-1660, 8220C-1540 FF |  |  |  | -1182d | 0d |  | NEW |  |
|  | 4 | **Invert Slab** |  | 2014-05-08 | 2017-03-21 |  |  |  |  |  |  |  |  |  |
| 8220C-0170 |  | PHVAA - Invert Slab Ch387 to Ch300 (rate = 3m/d) (87m) (Learning) | 34d | 2014-05-08 A | 2014-06-01 A | 8220C-1640 FS-17d | 100% | 2014-06-24 | 2014-08-02 |  |  |  | NEW | 822_AB_W010 |
| 8220C-0190 |  | PHVAA - Invert Slab CH300 - CH200 (rate = 6m/d) (100m) | 16.6d | 2017-01-02 | 2017-01-20 | 8220C-0170 |  |  |  | -1154.2d | 0d |  | NEW |  |
| 8220C-1550 |  | PHVAA - Invert Slab CH200 - CH100 (rate = 6m/d) (100m) | 16.6d | 2017-01-20 | 2017-02-09 | 8220C-0190 |  |  |  | -1154.2d | 27.8d |  | NEW |  |
| 8220C-1560 |  | PHVAA - Invert Slab CH100 - CH60 (rate = 6m/d)(40m) | 7d | 2017-03-14 | 2017-03-21 | 8220C-1550, 8220C-1670 FF |  |  |  | -1182d | 0d |  | NEW |  |

Notes:
- 8220C-0220: P3 Activity Log Info: ????????4rooms ??18mx5.2m??
- 8220C-0160: P3 Activity Log Info: ????????74m??
- 8220C-1640: P3 Activity Log Info: ????????278m??
- 8220C-1650: P3 Activity Log Info: ????????74m??
- 8220C-0170: P3 Activity Log Info: ????????278m??
- 8220C-0190: P3 Activity Log Info: ????????74m??

| ID | WBS | Activity | Type | Duration | Start | Finish | Predecessors | Complete | Planned start | Planned finish | Total float | Free float | Constraint | Calendar | Stef Temp A1 | 822_AB_W010 |
| --- | --- | --- | --- | --- | --- | --- | --- | --- | --- | --- | --- | --- | --- | --- | --- | --- |
|  | 5 | **ABWF** |  |  | 2017-01-09 | 2017-05-11 |  |  |  |  |  |  |  |  |  |  |
| 8220C-0820 |  | PHVAA - Construct Bottom Vertical Duct Walls |  | 35.56d | 2017-02-08 | 2017-03-21 | 8220C-0170 FS-17d, 8220C-1560 FF |  |  |  | -1182d | 0d |  |  | NEW |  |
| 8220C-0830 |  | PHVAA - Construct Bottom Duct Slab |  | 35.56d | 2017-02-21 | 2017-04-03 | 8220C-0820 SS+10.67d |  |  |  | -1182d | 0d |  |  | NEW |  |
| 8220C-0840 |  | PHVAA - Construct Top Vertical Duct Walls |  | 35.56d | 2017-03-04 | 2017-04-15 | 8220C-0830 SS+10.67d |  |  |  | -1182d | 0d |  |  | NEW |  |
| 8220C-0850 |  | PHVAA - Construct Duct Slab |  | 35.56d | 2017-03-17 | 2017-04-27 | 8220C-0840 SS+10.67d |  |  |  | -1182d | 0d |  |  | NEW |  |
| 8220C-1570 |  | PHVAA - Erect RC Collision Barrier |  | 35.56d | 2017-03-17 | 2017-04-27 | 8220C-0850 SS |  |  |  | -1182d | 0d |  |  | NEW |  |
| 8220C-1580 |  | PHVAA - Construct Walkway Ch387 to Ch60 |  | 35.56d | 2017-03-17 | 2017-04-27 | 8220C-1570 SS |  |  |  | -1182d | 0d |  |  | NEW |  |
| 8220C-5160 |  | PHVAA - Snagging Remedials and Repairs prior to KD achievement |  | 12d | 2017-04-28 | 2017-05-11 | 8220C-1570, 8220C-1580, 8220C-0850 |  |  |  | -1182d | 0d |  |  | NEW |  |
|  | 1 | **Plant Rooms** |  |  | 2017-01-09 | 2017-03-24 |  |  |  |  |  |  |  |  |  |  |
| 8220C-1620 |  | PHVAA - Erect Blockwork Walls for Plant Rooms |  | 23.11d | 2017-01-09 | 2017-02-04 | 8220B-5730 |  |  |  | -915.33d | 0d | as late as possible |  | NEW |  |
| 8220C-1630 |  | PHVAA - Complete Wet Trades Within Rooms |  | 43d | 2017-01-28 | 2017-03-20 | 8220C-1620 FS-5.33d |  |  |  | -915.33d | 0d | as late as possible |  | NEW |  |
| 8220C-0240 |  | PHVAA - Doors, Metal Works |  | 3.56d | 2017-03-20 | 2017-03-24 | 8220C-1630 |  |  |  | -915.33d | 0d | as late as possible |  | NEW |  |
|  | 6 | **Designated Contractor Installation** |  |  |  |  |  |  |  |  |  |  |  |  |  |  |
|  | 3 | **Ventilation Building No.4** |  |  | 2012-03-02 | 2017-11-16 |  |  |  |  |  |  |  |  |  |  |
|  | 8 | **Enabling Works** |  |  | 2012-03-02 | 2012-03-25 |  |  |  |  |  |  |  |  |  |  |
| 8220D-6660 |  | VB4 - Relocate Tally Hut |  | 2d | 2012-03-02 A | 2012-03-07 A | 8220C-0800, 8220C-0720 | 100% | 2012-06-01 | 2012-06-02 |  |  |  |  |  | 822_AB_W010 |
| 8220D-6670 |  | VB4 - Excavate for realigned Access road |  | 7d | 2012-03-08 A | 2012-03-16 A | 8220D-6660 | 100% | 2012-06-04 | 2012-06-11 |  |  |  |  |  | 822_AB_W010 |
| 8220D-6680 |  | VB4 - Construct Access Ramp |  | 7d | 2012-03-16 A | 2012-03-24 A | 8220D-6670 | 100% | 2012-06-12 | 2012-06-19 |  |  |  |  |  | 822_AB_W010 |
| 8220D-6700 |  | VB4 - Shift Haulage Route to new Access Road Alignment | milestone | 0d | 2012-03-25 A | 2012-03-25 A | 8220D-6680 | 100% | 2012-06-20 | 2012-06-20 |  |  |  | M |  | 822_AB_W010 |
|  | 1 | **Excavation** |  |  | 2012-03-27 | 2012-09-03 |  |  |  |  |  |  |  |  |  |  |
| 8220D-1180 |  | VB4 - Excavate 1000m³ Soil (rate = 333m³/d) |  | 3d | 2012-03-27 A | 2012-03-30 A | 8220D-6700, 8220A-6470 | 100% | 2012-06-20 | 2012-06-22 |  |  |  |  |  | 822_AB_W010 |
| 8220D-2180 |  | VB4 - Excavate 1000m³ Soil (rate = 333m³/d) |  | 3d | 2012-03-31 A | 2012-04-03 A | 8220D-1180 | 100% | 2012-06-23 | 2012-06-26 |  |  |  |  |  | 822_AB_W010 |
| 8220D-5800 |  | VB4 - Excavate 1000m³ Soil (rate = 333m³/d) |  | 3d | 2012-04-04 A | 2012-04-07 A | 8220D-2180 | 100% | 2012-06-27 | 2012-06-29 |  |  |  |  |  | 822_AB_W010 |
| 8220D-5810 |  | VB4 - Excavate 1000m³ Soil (rate = 200m³/d) |  | 5d | 2012-04-09 A | 2012-04-14 A | 8220D-5800 | 100% | 2012-06-30 | 2012-07-06 |  |  |  |  |  | 822_AB_W010 |
| 8220D-2190 |  | VB4 - Excavate 1000m³ Soil (rate = 200m³/d) |  | 5d | 2012-04-16 A | 2012-04-21 A | 8220D-5810 | 100% | 2012-07-07 | 2012-07-12 |  |  |  |  |  | 822_AB_W010 |
| 8220D-2250 |  | VB4 - Install Soil Nails/Slope Protection |  | 62d | 2012-04-23 A | 2012-05-15 A | 8220D-1180 | 100% | 2012-06-23 | 2012-08-23 |  |  |  | M |  | 822_AB_W010 |
| 8220D-5820 |  | VB4 - Excavate 491m³ Soil (rate = 100m³/d) |  | 5d | 2012-04-23 A | 2012-04-28 A | 8220D-2190 | 100% | 2012-07-13 | 2012-07-18 |  |  |  |  |  | 822_AB_W010 |
| 8220D-2220 |  | VB4 - Excavate 500m³ Rock (rate = 50m³/d) |  | 10d | 2012-04-27 A | 2012-05-09 A | 8220D-5820 | 100% | 2012-07-19 | 2012-07-30 |  |  |  |  |  | 822_AB_W010 |
| 8220D-2210 |  | VB4 - Excavate 500m³ Rock (rate = 50m³/d) |  | 10d | 2012-05-10 A | 2012-05-17 A | 8220D-2220 | 100% | 2012-07-31 | 2012-08-10 |  |  |  |  |  | 822_AB_W010 |
| 8220D-2240 |  | VB4 - Excavate 310m³ Rock (rate = 31m³/d) |  | 10d | 2012-05-19 A | 2012-09-03 A | 8220D-2210 | 100% | 2012-08-11 | 2012-08-22 |  |  |  |  |  | 822_AB_W010 |

Notes:
- 8220D-6660: P3 Activity Log Info: 9,362m3 soft ??+ 1,783m3 rock + 292nr soil nail
- 8220D-6670: P3 Activity Log Info: 9,362m3 soft ??+ 1,783m3 rock + 292nr soil nail
- 8220D-6680: P3 Activity Log Info: 9,362m3 soft ??+ 1,783m3 rock + 292nr soil nail
- 8220D-1180: P3 Activity Log Info: 9,362m3 soft ??+ 1,783m3 rock + 292nr soil nail
- 8220D-2180: P3 Activity Log Info: 9,362m3 soft ??+ 1,783m3 rock + 292nr soil nail
- 8220D-5800: P3 Activity Log Info: 9,362m3 soft ??+ 1,783m3 rock + 292nr soil nail
- 8220D-5810: P3 Activity Log Info: 9,362m3 soft ??+ 1,783m3 rock + 292nr soil nail
- 8220D-2190: P3 Activity Log Info: 9,362m3 soft ??+ 1,783m3 rock + 292nr soil nail
- 8220D-5820: P3 Activity Log Info: 9,362m3 soft ??+ 1,783m3 rock + 292nr soil nail
- 8220D-2220: P3 Activity Log Info: 9,362m3 soft ??+ 1,783m3 rock + 292nr soil nail
- 8220D-2210: P3 Activity Log Info: 9,362m3 soft ??+ 1,783m3 rock + 292nr soil nail
- 8220D-2240: P3 Activity Log Info: 9,362m3 soft ??+ 1,783m3 rock + 292nr soil nail

| ID | WBS | Activity | Duration | Start | Finish | Predecessors | Complete | Planned start | Planned finish | Stef Temp A1 | 822_AB_W010 |
| --- | --- | --- | --- | --- | --- | --- | --- | --- | --- | --- | --- |
|  | 2 | **VB4 Sub-Structure** |  | 2012-08-27 | 2013-07-13 |  |  |  |  |  |  |
| 8220D-0250 |  | VB4 - Construct Partial Building Foundations | 26d | 2012-08-27 A | 2012-09-23 A | 8220D-2240, 8220D-2250, 8220C-0730 | 100% | 2012-09-15 | 2012-10-17 | NEW | 822_AB_W010 |
| 8220D-0260 |  | VB4 - Construct Partial L1 Base Slab | 26d | 2012-09-24 A | 2012-10-16 A | 8220D-0250 FS-10d | 100% | 2012-10-16 | 2012-11-15 | NEW | 822_AB_W010 |
| 8220D-0270 |  | VB4 - Level L1 to Ground Floor Columns | 26d | 2012-09-24 A | 2012-12-08 A | 8220D-0260 FS-10d | 100% | 2012-11-01 | 2012-11-30 | NEW | 822_AB_W010 |
| 8220D-0280 |  | VB4 - Level L1 to Ground Floor External Walls | 26d | 2012-10-06 A | 2013-01-14 A | 8220D-0270 FS-10d | 100% | 2012-12-06 | 2013-01-09 | NEW | 822_AB_W010 |
| 8220D-0370 |  | VB4 - Construct Ground Floor Suspended Slab | 26d | 2013-01-15 A | 2013-02-16 A | 8220D-0280 FS-10d | 100% | 2013-02-01 | 2013-03-06 | NEW | 822_AB_W010 |
| 8220D-0330 |  | VB4 - Ground Level to U1 / Lower Roof Columns | 26d | 2013-02-18 A | 2013-06-26 A | 8220D-0370 FS-10d | 100% | 2013-02-01 | 2013-03-06 | NEW | 822_AB_W010 |
| 8220D-0800 |  | VB4 - Ground Level to U1 / Lower Roof Walls | 26d | 2013-03-18 A | 2013-06-26 A | 8220D-0330 FF, 8220D-0330 FS-10d | 100% | 2013-05-11 | 2013-06-10 | NEW | 822_AB_W010 |
| 8220D-0340 |  | VB4 - Building Water Tank at Ground Level | 18d | 2013-04-18 A | 2013-05-25 A | 8220D-0330, 8220D-0800, 8220D-0810 | 100% | 2013-07-06 | 2013-07-26 | NEW | 822_AB_W010 |
| 8220D-0810 |  | VB4 - Ground Level to U1 / Lower Roof Slab | 26d | 2013-05-28 A | 2013-07-13 A | 8220D-0800 FF, 8220D-0800 FS-10d | 100% | 2013-06-04 | 2013-07-05 | NEW | 822_AB_W010 |
|  | 3 | **VB4 Super Structure** |  | 2013-04-01 | 2013-10-09 |  |  |  |  |  |  |
| 8220D-0350 |  | VB4 - Building Mass Concrete Fill to GL | 12d | 2013-04-01 A | 2013-04-12 A | 8220D-0330 FS+10.67d, 8220D-0360, 8220D-0800 FS+10.67d, 8220D-0810 FS+10.67d, 8220D-0820, 8220D-0830 | 100% | 2013-08-31 | 2013-09-14 | NEW | 822_AB_W010 |
| 8220D-0360 |  | VB4 - U1/ Lower Roof to Upper Roof Columns | 28d | 2013-07-08 A | 2013-09-02 A | 8220D-0810 | 100% | 2013-07-05 | 2013-08-06 | NEW | 822_AB_W010 |
| 8220D-0820 |  | VB4 - U1/ Lower Roof to Upper Roof Walls | 28d | 2013-07-17 A | 2013-09-14 A | 8220D-0360 SS+10.67d | 100% | 2013-07-17 | 2013-08-19 | NEW | 822_AB_W010 |
| 8220D-0830 |  | VB4 - U1/ Lower Roof to Upper Roof Slab | 24d | 2013-08-19 A | 2013-09-30 A | 8220D-0340 FF, 8220D-0820 SS+10.67d | 100% | 2013-08-27 | 2013-09-24 | NEW | 822_AB_W010 |
| 8220D-0380 |  | VB4 - Roof Mansafe Anchor System / Access Hatch | 12d | 2013-09-30 A | 2013-10-09 A | 8220D-0360, 8220D-0820, 8220D-0830 | 100% | 2013-11-01 | 2013-11-14 | NEW | 822_AB_W010 |
|  | 4 | **VB4 ABWF** |  | 2013-06-17 | 2017-02-11 |  |  |  |  |  |  |
|  | 1 | **L1 Level +32.150mPD** |  | 2013-06-17 | 2014-06-01 |  |  |  |  |  |  |
|  | 1 | **Major Plant Rooms** |  | 2013-06-17 | 2013-08-31 |  |  |  |  |  |  |
| 8220D-0390 |  | VB4 - ABWF Plant Rooms (TVFR 1&2) L1.02 & L1.03 | 21.33d | 2013-06-17 A | 2013-08-31 A | 8220D-0370 | 100% | 2013-07-02 | 2013-07-26 | NEW | 822_AB_W010 |
|  | 2 | **Non Plant Rooms/Common Areas** |  | 2013-07-22 | 2014-06-01 |  |  |  |  |  |  |
| 8220D-0480 |  | VB4 - ABWF 1st Fix to L1 Level (Non-Plant and Common) | 48d | 2013-07-22 A | 2013-08-31 A | 8220D-0390, 8220A-7810 | 100% | 2013-08-08 | 2013-10-04 | NEW | 822_AB_W010 |
| 8220D-6710 |  | VB4 - ABWF 2nd Fix to L1 Level | 24d | 2013-11-11 A | 2013-12-27 A | 8220D-0480 | 100% | 2013-11-11 | 2013-12-07 | NEW | 822_AB_W010 |
| 8220D-6720 |  | VB4 - ABWF 3rd Fix to L1 Level | 24d | 2013-12-28 A | 2014-06-01 A | 8220-KD4C2 | 100% | 2014-03-01 | 2014-03-28 | NEW | 822_AB_W010 |

Notes:
- 8220D-0250: P3 Activity Log Info: ??39.2m x 32.6m x 1.5m 1,920m3
- 8220D-0260: P3 Activity Log Info: +32.1 to +39.6 (7.5m) ??screen wall 114mx1141m + / column 17nr + internal wall 95m + Slab ??300thk
- 8220D-0330: P3 Activity Log Info: +39.6 to ??+46.65 (7m) column 17nr + internal / wall 500m + Slab ??200thk
- 8220D-0800: P3 Activity Log Info: +39.6 to ??+46.65 (7m) column 17nr + internal / wall 500m + Slab ??200thk
- 8220D-0810: P3 Activity Log Info: +39.6 to ??+46.65 (7m) column 17nr + internal / wall 500m + Slab ??200thk
- 8220D-0350: P3 Activity Log Info: ??530m2 x 1.5m
- 8220D-0360: P3 Activity Log Info: ?? +46.65 to ??+52/53.95 (7m) column 17nr + / internal wall 300m + Slab ??200thk 17mx32m + / 10mx32m
- 8220D-0820: P3 Activity Log Info: ?? +46.65 to ??+52/53.95 (7m) column 17nr + / internal wall 300m + Slab ??200thk 17mx32m + / 10mx32m
- 8220D-0830: P3 Activity Log Info: ?? +46.65 to ??+52/53.95 (7m) column 17nr + / internal wall 300m + Slab ??200thk 17mx32m + / 10mx32m
- 8220D-0390: P3 Activity Log Info: ????????430m2??
- 8220D-0480: P3 Activity Log Info: ????????600m2 ??
- 8220D-6710: P3 Activity Log Info: ????????600m2 ??
- 8220D-6720: P3 Activity Log Info: ????????600m2 ??

| ID | WBS | Activity | Duration | Start | Finish | Predecessors | Complete | Planned start | Planned finish | Total float | Free float | Stef Temp A1 | 822_AB_W010 |
| --- | --- | --- | --- | --- | --- | --- | --- | --- | --- | --- | --- | --- | --- |
|  | 2 | **Ground Floor Level +41.15mPD** |  | 2013-07-27 | 2017-01-28 |  |  |  |  |  |  |  |  |
|  | 1 | **Major Plant Rooms** |  | 2013-07-27 | 2013-11-11 |  |  |  |  |  |  |  |  |
| 8220D-0430 |  | VB4 - ABWF Plant Rooms (Transformer Rooms A & B) G.01 and G.02 | 18d | 2013-07-27 A | 2013-11-11 A | 8220D-0810 | 100% | 2013-08-01 | 2013-08-21 |  |  | NEW | 822_AB_W010 |
| 8220D-0440 |  | VB4 - ABWF Plant Rooms (LV Main) G.03 | 18d | 2013-07-27 A | 2013-11-11 A | 8220D-0430 SS | 100% | 2013-08-01 | 2013-08-21 |  |  | NEW | 822_AB_W010 |
| 8220D-0460 |  | VB4 - ABWF Plant Rooms (Air Compress Room) G.05 | 18d | 2013-07-27 A | 2013-11-11 A | 8220D-0430 FS-12d | 100% | 2013-08-08 | 2013-08-28 |  |  | NEW | 822_AB_W010 |
| 8220D-0470 |  | VB4 - ABWF Plant Rooms (Telcom Equipment Rm) G.06 | 18d | 2013-07-27 A | 2013-11-11 A | 8220D-0440 FS-12d | 100% | 2013-08-08 | 2013-08-28 |  |  | NEW | 822_AB_W010 |
| 8220D-0560 |  | VB4 - ABWF Plant Rooms (SER) G.08 | 18d | 2013-07-27 A | 2013-11-11 A | 8220D-0460 FS-12d | 100% | 2013-09-06 | 2013-09-27 |  |  | NEW | 822_AB_W010 |
| 8220D-5850 |  | VB4 - ABWF Plant Rooms (UPS) G.09 | 18d | 2013-07-27 A | 2013-11-11 A | 8220D-5830 FS-12d | 100% | 2013-09-13 | 2013-10-05 |  |  | NEW | 822_AB_W010 |
| 8220D-5830 |  | VB4 - ABWF Plant Rooms (TECSC) G.04 | 18d | 2013-09-17 A | 2013-11-11 A | 8220D-0470 FS-12d | 100% | 2013-09-17 | 2013-10-10 |  |  | NEW | 822_AB_W010 |
| 8220D-5840 |  | VB4 - ABWF Plant Rooms (CTER) G.07 | 18d | 2013-09-17 A | 2013-11-11 A | 8220D-0560 FS-12d | 100% | 2013-09-17 | 2013-10-10 |  |  | NEW | 822_AB_W010 |
| 8220D-5860 |  | VB4 - ABWF Plant Rooms (PASVR) G.10 | 18d | 2013-09-18 A | 2013-11-11 A | 8220D-5840 FS-12d | 100% | 2013-09-18 | 2013-10-10 |  |  | NEW | 822_AB_W010 |
| 8220D-5880 |  | VB4 - ABWF Plant Rooms (CFSCR) G.13 | 18d | 2013-09-18 A | 2013-11-11 A | 8220D-5860 FS-12d | 100% | 2013-09-18 | 2013-10-10 |  |  | NEW | 822_AB_W010 |
| 8220D-5870 |  | VB4 - ABWF Plant Rooms (FSPR) G.12 | 18d | 2013-09-18 A | 2013-11-11 A | 8220D-5850 FS-12d | 100% | 2013-09-18 | 2013-10-11 |  |  | NEW | 822_AB_W010 |
|  | 1 | **CLP Transformer Room 1** |  |  |  |  |  |  |  |  |  |  |  |
|  | 2 | **CLP Transformer Room 2** |  |  |  |  |  |  |  |  |  |  |  |
|  | 2 | **Non Plant Rooms/Common Areas** |  | 2013-07-27 | 2017-01-28 |  |  |  |  |  |  |  |  |
| 8220D-5900 |  | VB4 - ABWF 1st Fix to GF Level (Non-Plant and Common) | 48d | 2013-07-27 A | 2013-12-09 A | 8220D-0480 | 100% | 2013-09-02 | 2013-10-30 |  |  | NEW | 822_AB_W010 |
| 8220D-6730 |  | VB4 - ABWF 2nd Fix to GF Level | 24d | 2013-12-10 A | 2013-12-27 A | 8220D-6710 | 100% | 2014-01-04 | 2014-02-05 |  |  | NEW | 822_AB_W010 |
| 8220D-6740 |  | VB4 - ABWF 3rd Fix to GF Level | 24d | 2017-01-02 | 2017-01-28 | 8220D-6720 FS-12d |  |  |  | -905d | 0d | NEW |  |
|  | 3 | **U1 Level +47.150mPD** |  | 2013-09-30 | 2017-02-11 |  |  |  |  |  |  |  |  |
|  | 1 | **Major Plant Rooms** |  | 2013-09-30 | 2013-11-30 |  |  |  |  |  |  |  |  |
| 8220D-5890 |  | VB4 - ABWF Plant Rooms (Smoke Extract Rm) U1.05 | 18d | 2013-09-30 A | 2013-11-30 A | 8220D-0550 | 100% | 2013-09-30 | 2013-10-22 |  |  | NEW | 822_AB_W010 |
| 8220D-0450 |  | VB4 - ABWF Plant Rooms (Preasure Fan Rm) U1.02 | 18d | 2013-10-02 A | 2013-11-30 A | 8220D-5870 | 100% | 2013-10-02 | 2013-10-24 |  |  | NEW | 822_AB_W010 |
| 8220D-0540 |  | VB4 - ABWF Plant Rooms (P&D Pump Rm) U1.04 | 18d | 2013-10-03 A | 2013-11-30 A | 8220D-5880 | 100% | 2013-10-03 | 2013-10-24 |  |  | NEW | 822_AB_W010 |
| 8220D-0550 |  | VB4 - ABWF Plant Rooms (SEMUFR) U1.03 | 18d | 2013-10-03 A | 2013-11-30 A | 8220D-0450 | 100% | 2013-10-03 | 2013-10-24 |  |  | NEW | 822_AB_W010 |
| 8220D-0570 |  | VB4 - ABWF Plant Rooms (MCC) U1.06 | 18d | 2013-10-04 A | 2013-11-30 A | 8220D-0540 | 100% | 2013-10-04 | 2013-10-25 |  |  | NEW | 822_AB_W010 |

Notes:
- 8220D-0430: P3 Activity Log Info: ????????340m2??
- 8220D-0440: P3 Activity Log Info: ????????600m2??
- 8220D-0460: P3 Activity Log Info: ????????400m2??
- 8220D-0470: P3 Activity Log Info: ??????????140m2 ????
- 8220D-0560: P3 Activity Log Info: ????????700m2 ??
- 8220D-5850: P3 Activity Log Info: ????????700m2 ??
- 8220D-5830: P3 Activity Log Info: ????????700m2 ??
- 8220D-5840: P3 Activity Log Info: ????????700m2 ??
- 8220D-5860: P3 Activity Log Info: ????????700m2 ??
- 8220D-5880: P3 Activity Log Info: ????????700m2 ??
- 8220D-5870: P3 Activity Log Info: ????????700m2 ??
- 8220D-5900: P3 Activity Log Info: ????????600m2 ??
- 8220D-6730: P3 Activity Log Info: ????????600m2 ??
- 8220D-6740: P3 Activity Log Info: ????????600m2 ??
- 8220D-5890: P3 Activity Log Info: ????????510m2??
- 8220D-0450: P3 Activity Log Info: ????????1,000m2??
- 8220D-0540: P3 Activity Log Info: ????????510m2??
- 8220D-0550: P3 Activity Log Info: ????????700m2??
- 8220D-0570: P3 Activity Log Info: ????????17nr ??

| ID | WBS | Activity | Duration | Start | Finish | Predecessors | Complete | Planned start | Planned finish | Total float | Free float | Constraint | Stef Temp A1 | 822_AB_W010 |
| --- | --- | --- | --- | --- | --- | --- | --- | --- | --- | --- | --- | --- | --- | --- |
|  | 2 | **Non Plant Rooms/Common Areas** |  | 2013-10-03 | 2017-02-11 |  |  |  |  |  |  |  |  |  |
| 8220D-5910 |  | VB4 - ABWF 1st Fix to U1 Level (Non-Plant and Common) | 48d | 2013-10-03 A | 2013-12-23 A | 8220D-5900, 8220D-5890 FF, 8220D-0570 FF | 100% | 2013-10-03 | 2013-11-29 |  |  |  | NEW | 822_AB_W010 |
| 8220D-6750 |  | VB4 - ABWF 2nd Fix to U1 Level | 24d | 2013-12-24 A | 2013-12-27 A | 8220D-6730 | 100% | 2014-01-18 | 2014-02-18 |  |  |  | NEW | 822_AB_W010 |
| 8220D-6640 |  | VB4 - ABWF 3rd Fix works to U1 Level | 24d | 2017-01-16 | 2017-02-11 | 8220D-6740 FS-12d |  |  |  | -905d | 0d |  | NEW |  |
|  | 5 | **VB4 Link Structure** |  | 2013-04-26 | 2017-04-01 |  |  |  |  |  |  |  |  |  |
| 8220D-5780 |  | PHVA - Backfill invert | 8d | 2013-04-26 A | 2013-05-07 A | 8220D-0350 | 100% | 2013-09-02 | 2013-09-10 |  |  |  | NEW | 822_AB_W010 |
| 8220D-6830 |  | PHVA - Link Structure Construct Base Slab | 8d | 2013-05-07 A | 2014-06-01 A | 8220D-5780 | 100% | 2013-09-26 | 2013-10-07 |  |  |  | NEW | 822_AB_W010 |
| 8220D-5790 |  | PHVA - Link Structure Construct walls to +38.35 | 24d | 2013-07-08 A | 2014-06-01 A | 8220D-6830 | 100% | 2013-09-12 | 2013-10-11 |  |  |  | NEW | 822_AB_W010 |
| 8220D-1430 |  | PHVA - Link Structure Suspended Slab at +38.35 | 24d | 2013-07-27 A | 2014-06-01 A | 8220D-5790 | 100% | 2013-07-27 | 2013-08-23 |  |  |  | NEW | 822_AB_W010 |
| 8220D-0290 |  | VB4 - Link Structure Wall and Slab to +39.45mPD | 24d | 2013-10-16 A | 2014-06-01 A | 8220D-1440 | 100% | 2014-02-24 | 2014-03-22 |  |  |  | NEW | 822_AB_W010 |
| 8220D-0300 |  | VB4 - Link Structure Wall and Slabs to +40.85mPD | 24d | 2013-10-26 A | 2014-06-01 A | 8220D-0290 FS-6d | 100% | 2014-03-17 | 2014-04-14 |  |  |  | NEW | 822_AB_W010 |
| 8220D-1440 |  | PHVA - Link Structure Backfill at +38.35 | 5d | 2013-12-16 A | 2014-06-01 A | 8220D-1430 | 100% | 2014-02-18 | 2014-02-22 |  |  |  | NEW | 822_AB_W010 |
| 8220D-0310 |  | VB4 - Link Structure to PHVAA ducts +47.75mPD | 24d | 2017-01-02 | 2017-01-28 | 8220D-0300 FS-6d |  |  |  | -556d | 35.96d |  | NEW |  |
| 8220D-5920 |  | VB4 - ABWF 1st Fix between VB4 and Link Structure | 77.96d | 2017-01-02 | 2017-04-01 |  |  |  |  | -591.96d | 0d | as late as possible | NEW |  |
| 8220D-0320 |  | VB4 - Link Structure to PHVAA ducts +49.55mPD | 24d | 2017-03-04 | 2017-04-01 | 8220D-0310 FS-6d, 8220D-5920 FF |  |  |  | -591.96d | 0d |  | NEW |  |
|  | 6 | **VB4 External Works** |  | 2013-04-02 | 2017-09-23 |  |  |  |  |  |  |  |  |  |
|  | 1 | **Underground Drainage** |  | 2017-01-02 | 2017-08-22 |  |  |  |  |  |  |  |  |  |
| 8220D-0620 |  | VB4 - Oil Interceptor | 10.67d | 2017-01-02 | 2017-01-13 | 8220D-0350 |  |  |  | -1047.67d | 0d |  | NEW |  |
| 8220D-0630 |  | VB4 - Storm Drainage | 26.67d | 2017-01-02 | 2017-02-01 | 8220D-0350 SS+14.22d |  |  |  | -1096.89d | 0d |  | NEW |  |
| 8220D-0640 |  | VB4 - Soakaway System | 10.67d | 2017-01-13 | 2017-01-26 | 8220D-0620 |  |  |  | -1047.67d | 49.22d |  | NEW |  |
| 8220D-0650 |  | VB4 - Sewerage | 17.78d | 2017-01-17 | 2017-02-07 | 8220D-0630 SS+9.78d, 8220D-0630 FF+4.44d |  |  |  | -1096.89d | 0d |  | NEW |  |
| 8220D-0660 |  | VB4 - Water Supply | 8.89d | 2017-02-01 | 2017-02-11 | 8220D-0650 SS+8.89d, 8220D-0650 FF+4.44d |  |  |  | -1096.89d | 0d |  | NEW |  |
| 8220D-0670 |  | VB4 - Power Draw Pit & Duct / Earth Mat | 35d | 2017-02-11 | 2017-03-24 | 8220D-0660 |  |  |  | -1096.89d | 0d |  | NEW |  |
| 8220D-0680 |  | VB4 - Surface Drainage | 32d | 2017-03-24 | 2017-05-01 | 8220D-0640, 8220D-0670, 8220D-0670 FF+8d |  |  |  | -1096.89d | 0d |  | NEW |  |
| 8220D-0720 |  | PH - Drainage along Kam Shung Road | 39.11d | 2017-05-19 | 2017-07-04 | 8220D-0690 |  |  |  | -1096.89d | 0d |  | NEW |  |
| 8220D-0740 |  | PH - Drainage Manhole, Gully and Pipe | 28.44d | 2017-06-19 | 2017-07-21 | 8220D-0720 FS-13.33d |  |  |  | -1096.89d | 0d |  | NEW |  |
| 8220D-0750 |  | PH - Sewerage Manhole and Pipe | 43.56d | 2017-06-27 | 2017-08-16 | 8220D-0740 SS+7.11d, 8220D-0740 FF+11.56d |  |  |  | -1096.89d | 0d |  | NEW |  |
| 8220D-0760 |  | PH - Water Supply Pipe | 15.11d | 2017-08-04 | 2017-08-22 | 8220D-0750 SS+11.56d, 8220D-0750 FF+4.44d |  |  |  | -1096.89d | 0d |  | NEW |  |

Notes:
- 8220D-5910: P3 Activity Log Info: ????????600m2 ??
- 8220D-6750: P3 Activity Log Info: ????????600m2 ??
- 8220D-6640: P3 Activity Log Info: ????????600m2 ??
- 8220D-0290: P3 Activity Log Info: ??????????Wall 117m x 1.1m + Slab 15m x 39m x / ??0.5m??
- 8220D-0300: P3 Activity Log Info: ?????????? ?? ??
- 8220D-0310: P3 Activity Log Info: ??????????Wall 24m x 7m + Slab 15m x 11m x / ??0.2m??
- 8220D-5920: P3 Activity Log Info: ????????600m2 ??
- 8220D-0630: P3 Activity Log Info: ????????7MH + 144m??
- 8220D-0650: P3 Activity Log Info: ????????4MH + 52m??
- 8220D-0660: P3 Activity Log Info: ????????120m??
- 8220D-0670: P3 Activity Log Info: ????????7nr + 168m??
- 8220D-0680: P3 Activity Log Info: ????????12 catch pit + ??90m??
- 8220D-0720: P3 Activity Log Info: ??????????4MH + 96 ??
- 8220D-0740: P3 Activity Log Info: ????????4MH + 96m ??
- 8220D-0750: P3 Activity Log Info: ????????8MH + 200m ??
- 8220D-0760: P3 Activity Log Info: ????????200m ??

| ID | WBS | Activity | Type | Duration | Start | Finish | Predecessors | Complete | Planned start | Planned finish | Total float | Free float | Constraint | Stef Temp A1 | 822_AB_W010 |
| --- | --- | --- | --- | --- | --- | --- | --- | --- | --- | --- | --- | --- | --- | --- | --- |
|  | 2 | **Emergency Vehicle Access Road** |  |  | 2017-04-03 | 2017-09-23 |  |  |  |  |  |  |  |  |  |
| 8220D-0690 |  | VB4 - Kerb and Roadworks |  | 40d | 2017-04-03 | 2017-05-19 | 8220D-0680 SS+8d, 8220D-0680 FF+11.56d |  |  |  | -1096.89d | 0d |  | NEW |  |
| 8220D-0770 |  | VB4 - Perm Access Roadworks & Footpath |  | 28.44d | 2017-08-09 | 2017-09-12 | 8220D-0760 SS+4.44d, 8220D-0760 FF+7.11d |  |  |  | -1096.89d | 0d |  | NEW |  |
| 8220D-0780 |  | VB4 - Fire Hydrant, Sign and Street Furniture |  | 10.67d | 2017-09-12 | 2017-09-23 | 8220D-0770 |  |  |  | -1096.89d | 0d |  | NEW |  |
|  | 4 | **External ABWF** |  |  | 2013-04-02 | 2014-06-01 |  |  |  |  |  |  |  |  |  |
| 8220D-1110 |  | VB4 - Erect external scaffolding for Facade |  | 12d | 2013-04-02 A | 2013-09-07 A | 8220D-0350 | 100% | 2013-04-02 | 2013-04-17 |  |  | as late as possible | NEW | 822_AB_W010 |
| 8220D-1070 |  | VB4 - Install External Louvers |  | 12d | 2013-11-25 A | 2014-06-01 A | 8220D-1110 | 100% | 2013-12-05 | 2013-12-18 |  |  |  | NEW | 822_AB_W010 |
| 8220D-1050 |  | VB4 - External Painting |  | 12d | 2014-01-14 A | 2014-04-30 A | 8220D-1040 | 100% | 2014-03-17 | 2014-03-31 |  |  |  | NEW | 822_AB_W010 |
| 8220D-1030 |  | VB4 - Install External Aluminium Vertical Fins |  | 21d | 2014-03-24 A | 2014-06-01 A | 8220D-1050 | 100% | 2014-04-04 | 2014-05-05 |  |  |  | NEW | 822_AB_W010 |
| 8220D-1040 |  | VB4 - External Tiling |  | 12d | 2014-04-30 A | 2014-04-30 A | 8220D-1060 | 100% | 2014-05-21 | 2014-06-05 |  |  |  | NEW | 822_AB_W010 |
| 8220D-1060 |  | VB4 - External Rendering |  | 12d | 2014-04-30 A | 2014-04-30 A | 8220D-1070 | 100% | 2014-05-07 | 2014-05-21 |  |  |  | NEW | 822_AB_W010 |
|  | 5 | **Roofing Works** |  |  | 2013-12-16 | 2017-04-01 |  |  |  |  |  |  |  |  |  |
| 8220D-0485 |  | VB4 - Mobilisation for roofing works |  | 10d | 2013-12-16 A | 2013-12-21 A | 8220D-0380 FF | 100% | 2014-01-02 | 2014-01-13 |  |  |  | NEW | 822_AB_W010 |
| 8220D-0435 |  | VB4 - Roof Leveling Screed |  | 6d | 2013-12-23 A | 2014-01-24 A | 8220D-0485 | 100% | 2014-01-14 | 2014-01-20 |  |  |  | NEW | 822_AB_W010 |
| 8220D-0445 |  | VB4 - Apply Waterproof Membrane |  | 6d | 2014-03-03 A | 2014-06-01 A | 8220D-0435 | 100% | 2014-04-01 | 2014-04-08 |  |  |  | NEW | 822_AB_W010 |
| 8220D-0455 |  | VB4 - Apply Insulation Board |  | 6d | 2017-01-02 | 2017-01-07 | 8220D-0445 |  |  |  | -947d | 0d |  | NEW |  |
| 8220D-0465 |  | VB4 - Top Screed |  | 6d | 2017-01-09 | 2017-01-14 | 8220D-0455 |  |  |  | -947d | 0d |  | NEW |  |
| 8220D-0475 |  | VB4 - Concrete Pavers/Roof Tiles |  | 6d | 2017-01-16 | 2017-01-21 | 8220D-0465 |  |  |  | -947d | 0d |  | NEW |  |
| 8220D-0425 |  | VB4 - Install Green Roof for VB4 |  | 60d | 2017-01-23 | 2017-04-01 | 8220D-0475, 8220A-7985 |  |  |  | -947d | 149.89d |  | NEW |  |
|  | 3 | **Landscaping** |  |  | 2017-01-02 | 2017-08-15 |  |  |  |  |  |  |  |  |  |
| 8220D-5630 |  | VB4 - Hard and Soft Landscaping |  | 193.96d | 2017-01-02 | 2017-08-15 | 8220D-1040 |  |  |  | -1062.96d | 33.93d |  |  |  |
|  | 7 | **Testing and Commissioning** |  |  | 2017-01-02 | 2017-11-16 |  |  |  |  |  |  |  |  |  |
|  | 5 | **General** |  |  | 2017-01-02 | 2017-09-23 |  |  |  |  |  |  |  |  |  |
| 8220D-6470 |  | VB4 - Sub-main Cables Test |  | 10d | 2017-01-02 | 2017-01-12 |  |  |  |  | -806d | 0d | as late as possible |  |  |
| 8220D-6630 |  | VB4 - Main Cables Testing |  | 10d | 2017-01-13 | 2017-01-24 | 8220PD1-01 |  |  |  | -735.33d | 0d | as late as possible |  |  |
| 8220D-6510 |  | VB4 Integrated Test with ROS Contractors |  | 24d | 2017-01-25 | 2017-02-21 | 8220D-6630 |  |  |  | -735.33d | 0d |  |  |  |
| 8220D-6580 |  | VB4 Permanent Water Connection | milestone | 0d | 2017-09-23 | 2017-09-23 | 8220D-6450 FS+60d, 8220D-6440 FS+60d, 8220D-6430 FS+20d, 8220D-0780 |  |  |  | -895.22d | 0d |  |  |  |

Notes:
- 8220D-0690: P3 Activity Log Info: ????????510m + ??1,927m2??
- 8220D-0770: P3 Activity Log Info: ??????????200m??
- 8220D-0425: P3 Activity Log Info: ????????14nr??
- 8220D-5630: P3 Activity Log Info: ????????Fence 362m + paving 336m2 + top ??soil / 3.069m3 + turf 336m2 + shrub + tree 24,030nr??

| ID | WBS | Activity | Type | Duration | Start | Finish | Predecessors | Complete | Planned start | Planned finish | Total float | Free float | Constraint | 822_AB_W010 |
| --- | --- | --- | --- | --- | --- | --- | --- | --- | --- | --- | --- | --- | --- | --- |
|  | 4 | **Internal T&C** |  |  | 2017-02-22 | 2017-03-21 |  |  |  |  |  |  |  |  |
| 8220D-6460 |  | VB4 T&C - Plumbing and Drainage |  | 24d | 2017-02-22 | 2017-03-21 | 8220D-6510 |  |  |  | -735.33d | 0d |  |  |
| 8220D-6490 |  | VB4 T&C - Electrical |  | 24d | 2017-02-22 | 2017-03-21 | 8220D-6510 |  |  |  | -735.33d | 159.89d |  |  |
| 8220D-6500 |  | VB4 T&C - Mech Ventilation & Air Conditioning (MVAC) |  | 24d | 2017-02-22 | 2017-03-21 | 8220D-6510 |  |  |  | -735.33d | 159.89d |  |  |
| 8220D-6520 |  | VB4 T&C - Fire Services |  | 24d | 2017-02-22 | 2017-03-21 | 8220D-6510 |  |  |  | -735.33d | 0d |  |  |
|  | 1 | **Water Supplies Department** |  |  | 2017-03-22 | 2017-07-15 |  |  |  |  |  |  |  |  |
| 8220D-6540 |  | VB4 Submit Form WWO46 Part IV for P&D | milestone | 0d | 2017-03-22 | 2017-03-22 | 8220D-6460, 8220D-6460 SS |  |  |  | -735.33d | 0d | as late as possible |  |
| 8220D-6550 |  | VB4 WSD Inspection for FS |  | 24d | 2017-03-22 | 2017-04-18 | 8220D-6540 |  |  |  | -735.33d | 159.89d |  |  |
| 8220D-6560 |  | VB4 WSD Inspection for P&D |  | 24d | 2017-03-22 | 2017-04-18 | 8220D-6540 |  |  |  | -735.33d | 159.89d |  |  |
| 8220D-6450 |  | VB4 Submit Form WWO46 Part I&II for Plumbing and Drainage | milestone | 0d | 2017-07-15 | 2017-07-15 |  |  |  |  | -895.22d | 0d | as late as possible |  |
|  | 2 | **Fire Services Department** |  |  | 2017-02-13 | 2017-10-21 |  |  |  |  |  |  |  |  |
| 8220D-6480 |  | All Doors, Louvers are ready for FS Testing | milestone | 0d | 2017-02-13 | 2017-02-13 | 8220D-MS06 |  |  |  | -550d | 359.51d |  |  |
| 8220D-6530 |  | VB4 Submit Form WWO46 Part IV for Fire Services Department | milestone | 0d | 2017-03-22 | 2017-03-22 | 8220D-6520 |  |  |  | -711.33d | 183.89d |  |  |
| 8220D-6440 |  | VB4 Submit Form WWO46 Part I&II to Fire Services Department | milestone | 0d | 2017-07-15 | 2017-07-15 |  |  |  |  | -895.22d | 0d | as late as possible |  |
| 8220D-6590 |  | VB4 FSD Inspection/Re-inspection |  | 24d | 2017-09-23 | 2017-10-21 | 8220D-6580, 8220D-6490, 8220D-6500, 8220D-6570 |  |  |  | -895.22d | 0d |  |  |
| 8220D-6600 |  | VB4 FSD Issue Fire Certificate | milestone | 0d | 2017-10-21 | 2017-10-21 | 8220D-6590 |  |  |  | -895.22d | 0d |  |  |
|  | 3 | **Buildings Department** |  |  | 2017-03-22 | 2017-11-16 |  |  |  |  |  |  |  |  |
| 8220D-6570 |  | VB4 Submit Form 2 | milestone | 0d | 2017-03-22 | 2017-03-22 | 8220D-6520 |  |  |  | -735.33d | 159.89d |  |  |
| 8220D-6430 |  | VB4 Submit Form 1 | milestone | 0d | 2017-08-31 | 2017-08-31 |  |  |  |  | -895.22d | 0d | as late as possible |  |
| 8220D-6610 |  | VB4 - BD Conduct OP Inspection/Re-inspection |  | 21.33d | 2017-10-21 | 2017-11-16 | 8220D-6600, 8220D-6530, 8220D-6560, 8220D-6550 |  |  |  | -895.22d | 0d |  |  |
| 8220D-6620 |  | VB4 - BD Issue Occupation Permit | milestone | 0d | 2017-11-16 | 2017-11-16 | 8220D-6610 |  |  |  | -895.22d | 0d |  |  |
|  | 3 | **Area 3 : Shing Mun** |  |  | 2010-03-10 | 2017-12-21 |  |  |  |  |  |  |  |  |
|  | 1 | **Shing Mun Bus Terminus** |  |  | 2010-04-24 | 2010-11-20 |  |  |  |  |  |  |  |  |
|  | 1 | **Site Formation** |  |  | 2010-04-24 | 2010-07-21 |  |  |  |  |  |  |  |  |
| 8220F-0220 |  | Turn - Initial Survey & Record |  | 5.33d | 2010-04-24 A | 2010-04-30 A | 8220A-3080 | 100% |  |  |  |  |  | 822_AB_W010 |
| 8220F-0230 |  | Turn - Site Clearance |  | 1.78d | 2010-05-03 A | 2010-05-04 A | 8220F-0220 | 100% |  |  |  |  |  | 822_AB_W010 |
| 8220F-0240 |  | Turn - Rock Slope Excavation & Divert UC |  | 13.33d | 2010-05-27 A | 2010-07-10 A | 8220F-0230 | 100% | 2010-05-27 | 2010-06-11 |  |  |  | 822_AB_W010 |
| 8220F-0325 |  | Turn - 801 Transplant Planter trees |  | 2.67d | 2010-07-10 A | 2010-07-13 A | 8220F-0240 FS+2.67d | 100% |  |  |  |  |  | 822_AB_W010 |
| 8220F-0320 |  | Turn - Demolish Existing Planter |  | 3.56d | 2010-07-17 A | 2010-07-21 A | 8220F-0325 | 100% |  |  |  |  |  | 822_AB_W010 |

| ID | WBS | Activity | Duration | Start | Finish | Predecessors | Complete | Planned start | Planned finish | Constraint | 822_AB_W010 |
| --- | --- | --- | --- | --- | --- | --- | --- | --- | --- | --- | --- |
|  | 2 | **Utility Diversion** |  | 2010-05-14 | 2010-10-28 |  |  |  |  |  |  |
| 8220F-0250 |  | Turn - 132 & 11K Cable Diversion Works, CLP 205 | 10.67d | 2010-05-14 A | 2010-10-27 A |  | 100% | 2010-05-14 | 2010-05-27 |  | 822_AB_W010 |
| 8220F-0400 |  | Turn - Excavate Cable Trench for CLP201 by LCLA | 11.56d | 2010-06-07 A | 2010-07-14 A |  | 100% | 2010-06-07 | 2010-06-21 |  | 822_AB_W010 |
| 8220F-0430 |  | Turn - Excavate Cable Trench for CLP202 by LCLA | 15.11d | 2010-08-09 A | 2010-08-13 A |  | 100% | 2010-08-09 | 2010-08-26 |  | 822_AB_W010 |
| 8220F-0440 |  | Turn - Excavate Cable Trench for CLP202 by CLP | 7.11d | 2010-08-11 A | 2010-08-19 A | 8220F-0460 SS | 100% |  |  |  | 822_AB_W010 |
| 8220F-0450 |  | Turn - Construction of Drainage Works by LCAL | 38.22d | 2010-08-14 A | 2010-09-22 A |  | 100% | 2010-08-14 | 2010-09-29 |  | 822_AB_W010 |
| 8220F-0410 |  | Turn - Excavate Cable Trench for CLP201 by CLP | 7.11d | 2010-09-04 A | 2010-09-10 A | 8220F-0400 | 100% | 2010-09-04 | 2010-09-13 |  | 822_AB_W010 |
| 8220F-0420 |  | Turn - Modify Existing CLP Drawpits by CLP | 8.89d | 2010-09-06 A | 2010-09-16 A | 8220F-0460 SS | 100% | 2010-09-06 | 2010-09-15 |  | 822_AB_W010 |
| 8220F-0460 |  | Turn - Construct Concrete Pavement | 18.67d | 2010-09-22 A | 2010-10-19 A | 8220F-0430 | 100% | 2010-09-22 | 2010-10-15 |  | 822_AB_W010 |
| 8220F-0470 |  | Turn - Tie in with Existing Flex Pavement | 11.56d | 2010-10-13 A | 2010-10-28 A | 8220F-0420, 8220F-0440, 8220F-0460 FS-3.56d | 100% | 2010-10-13 | 2010-10-27 |  | 822_AB_W010 |
| 8220F-0480 |  | Turn - Install GeoTech Instrumentation | 4.44d | 2010-10-13 A | 2010-10-19 A | 8220F-0470 SS | 100% |  |  |  | 822_AB_W010 |
| 8220F-0490 |  | Turn - Road Marking & Trial Run | 2.67d | 2010-10-18 A | 2010-10-20 A | 8220F-0450, 8220F-0470, 8220F-0480 | 100% |  |  |  | 822_AB_W010 |
|  | 3 | **Road Works** |  | 2010-07-26 | 2010-11-20 |  |  |  |  |  |  |
| 8220F-0270 |  | Turn - Construct Underground Drainage | 21.33d | 2010-07-26 A | 2010-10-04 A |  | 100% | 2010-07-26 | 2010-08-19 |  | 822_AB_W010 |
| 8220F-0280 |  | Turn - Construct New Footpath | 10.67d | 2010-09-25 A | 2010-10-06 A | 8220F-0270 | 100% | 2010-09-25 | 2010-10-08 |  | 822_AB_W010 |
| 8220F-0290 |  | Turn - New Roadworks (Stage 1) | 21.33d | 2010-09-25 A | 2010-10-18 A | 8220F-0280 SS | 100% | 2010-09-25 | 2010-10-22 |  | 822_AB_W010 |
| 8220F-0300 |  | Turn - Relocation of Lamp Post by HyD | 10.67d | 2010-10-15 A | 2010-10-26 A | 8220F-0290 | 100% | 2010-10-15 | 2010-10-28 |  | 822_AB_W010 |
| 8220F-0380 |  | Turn - Inspection & Open New Bus Turning Area | 5.33d | 2010-10-15 A | 2010-10-22 A | 8220F-0300 FF, 8220F-0370 | 100% |  |  |  | 822_AB_W010 |
| 8220F-0370 |  | Turn - Fence, Roadmark & Sign | 5.33d | 2010-10-26 A | 2010-11-02 A | 8220F-0360 | 100% | 2010-10-26 | 2010-11-01 |  | 822_AB_W010 |
| 8220F-0360 |  | Turn - Modify Hoarding & Open New Footpath | 2.67d | 2010-11-09 A | 2010-11-20 A |  | 100% | 2010-11-09 | 2010-11-11 |  | 822_AB_W010 |
|  | 2 | **Shing Mun Enabling Works** |  | 2010-03-10 | 2012-08-30 |  |  |  |  |  |  |
|  | 1 | **Site Formation** |  | 2010-03-10 | 2011-04-04 |  |  |  |  |  |  |
| 8220G-0490 |  | VB5 - Initial Survey & Record | 5.33d | 2010-03-10 A | 2010-03-16 A | 8220A-3080 | 100% |  |  |  | 822_AB_W010 |
| 8220F-0525 |  | Apply for and Obtain Excavation Permit for SM | 26.67d | 2010-04-22 A | 2010-05-27 A | 8220G-0490 | 100% | 2010-04-22 | 2010-05-24 | as late as possible | 822_AB_W010 |
| 8220G-0535 |  | VB5 - Tree Transplant by 801 (Area 7.1) | 71.11d | 2010-04-28 A | 2010-07-16 A | 8220G-0510 | 100% | 2010-04-28 | 2010-07-23 |  | 822_AB_W010 |
| 8220G-0530 |  | VB5 - Tree Transplant by 801 (Area 7.3) | 33.78d | 2010-04-29 A | 2010-07-15 A | 8220G-0510, 8220G-0535 | 100% | 2010-04-29 | 2010-06-08 |  | 822_AB_W010 |
| 8220G-0510 |  | VB5 - Demolish Existing Feature | 8.89d | 2010-07-01 A | 2010-07-05 A | 8220G-0500 | 100% | 2010-07-02 | 2010-07-12 |  | 822_AB_W010 |
| 8220G-0500 |  | VB5 - Mobilization Area 7.1 | 10.67d | 2010-07-02 A | 2010-07-15 A | 8220F-0525, 8220G-0490 | 100% | 2010-07-02 | 2010-07-14 |  | 822_AB_W010 |
| 8220G-0550 |  | VB5 -Demolish Existing Planter Wall | 4.44d | 2010-07-09 A | 2010-07-14 A | 8220G-0530, 8220G-0535 | 100% |  |  |  | 822_AB_W010 |
| 8220G-0520 |  | VB5 - Slope Works | 40.89d | 2010-08-13 A | 2010-12-03 A | 8220G-0550 | 100% | 2010-08-13 | 2010-09-30 |  | 822_AB_W010 |
| 8220G-0540 |  | VB5 - Construction of Buttress Wall Stage 1 | 26.67d | 2010-09-18 A | 2010-10-29 A | 8220G-0520 | 100% | 2010-09-18 | 2010-10-22 |  | 822_AB_W010 |
| 8220G-0580 |  | VB5 - Shing Mun Install Instrumentation Stage 1 | 25.78d | 2010-10-15 A | 2010-12-16 A | 8220G-0570 SS+5.33d | 100% | 2010-10-15 | 2010-11-15 |  | 822_AB_W010 |
| 8220G-0570 |  | VB5 - Hoarding & Mobilisation | 21.33d | 2010-10-20 A | 2011-04-04 A | 8220G-0535 | 100% | 2010-10-20 | 2010-11-13 |  | 822_AB_W010 |
| 8220G-0600 |  | VB5 - Preparation to Divert 11kV & 132kV | 32d | 2010-11-10 A | 2010-11-22 A |  | 100% | 2010-11-10 | 2010-12-16 |  | 822_AB_W010 |
| 8220G-2400 |  | VB5 - Construction of Buttress Wall Stage 2 | 6.22d | 2010-12-04 A | 2010-12-21 A | 8220G-0590 | 100% | 2010-12-04 | 2010-12-11 |  | 822_AB_W010 |
| 8220G-0590 |  | VB5 - Reinstate Footpath | 10.67d | 2011-02-07 A | 2011-02-19 A |  | 100% | 2011-02-07 | 2011-02-18 |  | 822_AB_W010 |

Notes:
- 8220F-0270: P3 Activity Log Info: ??3MH + 67m ??300dia.
- 8220F-0290: P3 Activity Log Info: 300m2
- 8220G-0600: P3 Activity Log Info: 2 x ??150m
- 8220G-0590: P3 Activity Log Info: 85m

| ID | WBS | Activity | Duration | Start | Finish | Predecessors | Complete | Planned start | Planned finish | 822_AB_W010 |
| --- | --- | --- | --- | --- | --- | --- | --- | --- | --- | --- |
|  | 2 | **Utility Diversion** |  | 2010-11-23 | 2011-06-29 |  |  |  |  |  |
|  | 1 | **CLP 201** |  | 2011-01-18 | 2011-06-29 |  |  |  |  |  |
| 8220G-0705 |  | CLP - 201 - Duct Laying at Butress Stage 1 | 4.44d | 2011-01-18 A | 2011-01-22 A | 8220G-2400 | 100% |  |  | 822_AB_W010 |
| 8220G-0715 |  | CLP - 201 - Duct Laying at Butress Stage 2 | 4.44d | 2011-02-14 A | 2011-02-18 A | 8220G-0705 | 100% |  |  | 822_AB_W010 |
| 8220G-0725 |  | CLP - 201 - Joint Bay at Bus Loop Stage 1 | 25.78d | 2011-03-27 A | 2011-04-24 A | 8220G-0715 | 100% | 2011-03-28 | 2011-04-30 | 822_AB_W010 |
| 8220G-0735 |  | CLP - 201 - Joint Bay at Bus Loop Stage 2 | 25.78d | 2011-03-27 A | 2011-04-24 A | 8220G-0725 SS | 100% | 2011-03-28 | 2011-04-30 | 822_AB_W010 |
| 8220G-0745 |  | CLP - 201 - Excavate for Expose Cable Duct Bank | 7.11d | 2011-04-02 A | 2011-04-09 A | 8220G-0735 SS+5.33d | 100% | 2011-04-02 | 2011-04-12 | 822_AB_W010 |
| 8220G-0755 |  | CLP - 201 - Cable Duct Block Breaking | 4.44d | 2011-04-11 A | 2011-04-15 A | 8220G-0745 | 100% |  |  | 822_AB_W010 |
| 8220G-0765 |  | CLP - 201 - Cable Laying | 6.22d | 2011-04-25 A | 2011-04-29 A | 8220G-0735 FS-3.56d, 8220G-0755 | 100% | 2011-04-26 | 2011-05-04 | 822_AB_W010 |
| 8220G-0775 |  | CLP - 201 - 1st Circuit Cable Cutting | 18.67d | 2011-04-28 A | 2011-05-24 A | 8220G-0765 FS-0.89d | 100% | 2011-04-28 | 2011-05-21 | 822_AB_W010 |
| 8220G-0785 |  | CLP - 201 - 2nd Circuit Cable Cutting | 20.44d | 2011-05-25 A | 2011-06-18 A | 8220G-0775 | 100% |  |  | 822_AB_W010 |
| 8220G-0795 |  | CLP - 201 - Joint Bay Backfilling at Joint Bays | 15.11d | 2011-06-13 A | 2011-06-29 A | 8220G-0785 FS-7.11d | 100% | 2011-06-13 | 2011-06-30 | 822_AB_W010 |
|  | 2 | **CLP 202** |  | 2010-11-23 | 2011-03-26 |  |  |  |  |  |
| 8220F-0730 |  | CLP - 202 - 1st Circuit Cable Cutting | 0.89d | 2010-11-23 A | 2010-11-23 A |  | 100% |  |  | 822_AB_W010 |
| 8220F-1080 |  | CLP - 202 - Re-Conditioning / make good shoring | 21.33d | 2010-11-26 A | 2010-12-20 A | 8220F-0730 | 100% | 2010-11-26 | 2010-12-21 | 822_AB_W010 |
| 8220F-1090 |  | CLP - 202 - Re-Conditioning & Prep for Cabling | 13.33d | 2010-12-21 A | 2011-01-10 A | 8220F-1080 | 100% |  |  | 822_AB_W010 |
| 8220F-1100 |  | CLP - 202 - 1st Circuit Cable Slewing and Joint | 34.67d | 2011-01-11 A | 2011-02-28 A | 8220F-1090 | 100% | 2011-01-11 | 2011-02-23 | 822_AB_W010 |
| 8220F-1160 |  | Backfill btw bus Loop and Butress wall | 15.11d | 2011-02-15 A | 2011-03-05 A | 8220F-1100 FS-10.67d | 100% | 2011-02-15 | 2011-03-04 | 822_AB_W010 |
| 8220F-1110 |  | CLP - 202 - 2nd Circuit Cable Cutting | 0.89d | 2011-03-01 A | 2011-03-01 A | 8220F-1100 | 100% |  |  | 822_AB_W010 |
| 8220F-1120 |  | CLP - 202 - 2nd Circuit Cable Slewing and Joint | 10.67d | 2011-03-02 A | 2011-03-15 A | 8220F-1110 | 100% | 2011-03-02 | 2011-03-14 | 822_AB_W010 |
| 8220F-1130 |  | CLP - 202 - Joint Bay Backfilling at Turn | 8.89d | 2011-03-16 A | 2011-03-26 A | 8220F-1120 | 100% | 2011-03-16 | 2011-03-25 | 822_AB_W010 |
| 8220F-1140 |  | CLP - 202 - Joint Bay Backfilling at Butress | 8.89d | 2011-03-16 A | 2011-03-26 A | 8220F-1120, 8220F-1160 | 100% | 2011-03-16 | 2011-03-25 | 822_AB_W010 |
|  | 3 | **CLP 204** |  | 2011-02-14 | 2011-03-19 |  |  |  |  |  |
| 8220F-1150 |  | CLP - 204 - Cable Diversion | 26.67d | 2011-02-14 A | 2011-03-19 A |  | 100% | 2011-02-14 | 2011-03-16 | 822_AB_W010 |

| ID | WBS | Activity | Type | Duration | Start | Finish | Predecessors | Complete | Planned start | Planned finish | Calendar | 822_AB_W010 |
| --- | --- | --- | --- | --- | --- | --- | --- | --- | --- | --- | --- | --- |
|  | 3 | **Foundations** |  |  | 2010-03-10 | 2011-09-22 |  |  |  |  |  |  |
|  | 1 | **Pipe Piles - Rig 1** |  |  | 2010-12-16 | 2011-06-04 |  |  |  |  |  |  |
| 8220G-0610 |  | VB5 - Install Pipe Piles PP01 to PP09 |  | 13.33d | 2010-12-16 A | 2011-01-14 A | 8220A-4740 | 100% | 2010-12-16 | 2011-01-05 |  | 822_AB_W010 |
| 8220G-0730 |  | VB5 - Install Pipe Piles PP10 to PP22 |  | 11.56d | 2011-03-18 A | 2011-04-02 A | 8220G-0610 | 100% | 2011-03-18 | 2011-03-31 |  | 822_AB_W010 |
| 8220G-0660 |  | VB5 - Install Pipe Piles PP23 to PP34 |  | 10.67d | 2011-04-04 A | 2011-04-14 A | 8220G-0730 | 100% | 2011-04-04 | 2011-04-16 |  | 822_AB_W010 |
| 8220G-0670 |  | VB5 - Install Pipe Piles PP35 to PP46 |  | 10.67d | 2011-04-15 A | 2011-04-30 A | 8220G-0660 | 100% |  |  |  | 822_AB_W010 |
| 8220G-0680 |  | VB5 - Install Pipe Piles PP47 to PP58 |  | 10.67d | 2011-05-03 A | 2011-05-22 A | 8220G-0670 | 100% | 2011-05-03 | 2011-05-16 |  | 822_AB_W010 |
| 8220G-0700 |  | VB5 - Install Pipe Piles PP59 to PP66 |  | 7.11d | 2011-05-23 A | 2011-06-04 A | 8220G-0680 | 100% | 2011-05-23 | 2011-05-31 |  | 822_AB_W010 |
|  | 2 | **Pipe Piles - Rig 2** |  |  | 2010-03-10 | 2011-07-09 |  |  |  |  |  |  |
| 8220G-2050 |  | VB5 - Install Additional 8 Pipe Piles |  | 7.11d | 2010-03-10 A | 2010-03-10 A |  | 100% | 2010-03-10 | 2010-03-18 |  | 822_AB_W010 |
| 8220G-0710 |  | VB5 - Install Pipe Piles PP01 to PP12 |  | 10.67d | 2011-04-19 A | 2011-05-11 A | 8220A-4740 | 100% | 2011-04-19 | 2011-05-05 |  | 822_AB_W010 |
| 8220G-0720 |  | VB5 - Install Pipe Piles PP13 to PP24 |  | 10.67d | 2011-05-12 A | 2011-05-27 A | 8220G-0710 | 100% | 2011-05-12 | 2011-05-24 |  | 822_AB_W010 |
| 8220G-0740 |  | VB5 - Install Pipe Piles PP25 to PP36 |  | 10.67d | 2011-05-28 A | 2011-06-10 A | 8220G-0720 | 100% |  |  |  | 822_AB_W010 |
| 8220G-0750 |  | VB5 - Install Pipe Piles PP37 to PP48 |  | 10.67d | 2011-06-08 A | 2011-06-22 A | 8220G-0740 | 100% | 2011-06-08 | 2011-06-20 |  | 822_AB_W010 |
| 8220G-0770 |  | VB5 - Install Pipe Piles PP49 to PP51 |  | 2.67d | 2011-06-23 A | 2011-06-27 A | 8220G-0750 | 100% | 2011-06-23 | 2011-06-25 |  | 822_AB_W010 |
| 8220G-0780 |  | VB5 - Install Pipe Piles PP52 to PP56 |  | 13.33d | 2011-06-28 A | 2011-07-09 A | 8220G-0770 | 100% | 2011-06-28 | 2011-07-14 |  | 822_AB_W010 |
|  | 3 | **Grout Curtain and Dewatering** |  |  | 2011-06-08 | 2011-09-22 |  |  |  |  |  |  |
| 8220G-0840 |  | VB5 - Grout Holes |  | 35.56d | 2011-06-08 A | 2011-08-28 A | 8220G-0700, 8220G-0780 | 100% | 2011-06-08 | 2011-07-20 |  | 822_AB_W010 |
| 8220G-0630 |  | VB5 - Grout Curtain & Toe Grout |  | 26.67d | 2011-06-25 A | 2011-09-10 A | 8220G-0840 FF+5.33d | 100% | 2011-06-25 | 2011-07-27 |  | 822_AB_W010 |
| 8220G-0850 |  | VB5 - Install Dewatering Wells |  | 10.67d | 2011-08-03 A | 2011-09-15 A | 8220G-0630 FS-6.22d | 100% | 2011-08-03 | 2011-08-15 |  | 822_AB_W010 |
| 8220G-0010 |  | VB5 - Pump Test & Report |  | 10.67d | 2011-09-16 A | 2011-09-22 A | 8220G-0630, 8220G-0850 | 100% | 2011-09-16 | 2011-09-28 |  | 822_AB_W010 |
|  | 4 | **Noise Enclosure/ Overhead Crane** |  |  | 2011-07-26 | 2012-08-30 |  |  |  |  |  |  |
| 8220G-5000 |  | VB5 - Noise Enclosure: Excavation |  | 6.22d | 2011-07-26 A | 2011-12-13 A | 8220G-0010 | 100% | 2011-07-26 | 2011-08-02 |  | 822_AB_W010 |
| 8220G-5010 |  | VB5 - Noise Enclosure: Footings |  | 10.67d | 2011-10-03 A | 2011-12-30 A | 8220G-5000 | 100% | 2011-10-03 | 2011-10-15 |  | 822_AB_W010 |
| 8220G-5020 |  | VB5 - Noise Enclosure: Truss, Columns, Bracings |  | 16d | 2012-01-03 A | 2012-01-28 A | 8220G-5010 | 100% | 2012-03-02 | 2012-03-21 |  | 822_AB_W010 |
| 8220G-5030 |  | VB5 - Noise Enclosure : Complete Truss Install |  | 8.89d | 2012-02-02 A | 2012-02-09 A | 8220G-5020 | 100% | 2012-03-21 | 2012-03-31 |  | 822_AB_W010 |
| 8220G-5040 |  | VB5 - Noise Enclosure : Acoustic Panels |  | 28d | 2012-02-10 A | 2012-06-05 A | 8220G-5030 | 100% | 2012-03-31 | 2012-05-07 | W822 - 3 - 6D+ Site Holiday | 822_AB_W010 |
| 8220G-5060 |  | VB5 - Installation of Overhead Crane |  | 16d | 2012-03-06 A | 2012-03-17 A | 8220G-5020 | 100% | 2012-06-01 | 2012-06-19 |  | 822_AB_W010 |
| 8220G-5070 |  | VB5 - Overhead Crane T&C |  | 5.33d | 2012-03-19 A | 2012-04-28 A | 8220G-5060 | 100% | 2012-06-20 | 2012-06-27 | W822 - 3 - 6D+ Site Holiday | 822_AB_W010 |
| 8220G-5500 |  | VB5 - Delivery of 10T Derrick Crane | milestone | 0d | 2012-05-18 A | 2012-05-18 A | 8220G-5070 | 100% | 2012-06-26 | 2012-06-26 | M | 822_AB_W010 |
| 8220G-5050 |  | VB5 - Noise Enclosure : Complete | milestone | 0d | 2012-06-05 A | 2012-06-05 A | 8220G-5040 FF, 8220G-5070 | 100% | 2012-08-07 | 2012-08-07 | W822 - 3 - 6D+ Site Holiday | 822_AB_W010 |
| 8220G-6140 |  | VB5 - Noise Assessment |  | 3d | 2012-06-15 A | 2012-06-18 A | 8220G-5040 | 100% |  |  | W822 - 3 - 6D+ Site Holiday | 822_AB_W010 |
| 8220G-6160 |  | VB5 - Submit CNP Application | milestone | 0d | 2012-06-20 A | 2012-06-20 A | 8220G-6140 FS+1d | 100% | 2012-06-19 | 2012-06-19 | W822 - 3 - 6D+ Site Holiday | 822_AB_W010 |
| 8220G-6170 |  | VB5 - EPD Approve 24H CNP |  | 12d | 2012-06-20 A | 2012-07-11 A | 8220G-6160 | 100% | 2012-06-20 | 2012-07-05 | W822 - 3 - 6D+ Site Holiday | 822_AB_W010 |

Notes:
- 8220G-0610: P3 Activity Log Info: 139nr 610 x ??16 @ 900c/c 19m/21m with 2m rock / socket
- 8220G-0660: P3 Activity Log Info: 139nr 610 x ??16 @ 900c/c 19m/21m with 2m rock / socket
- 8220G-0840: P3 Activity Log Info: 127 @ 2nr/d/rig x 1rigs
- 8220G-0630: P3 Activity Log Info: 2,400m2 + 127holes ??

| ID | WBS | Activity | Type | Duration | Start | Finish | Predecessors | Complete | Planned start | Planned finish | Constraint | Calendar | 822_AB_W010 |
| --- | --- | --- | --- | --- | --- | --- | --- | --- | --- | --- | --- | --- | --- |
|  | 1 | **Permits** |  |  | 2012-06-12 | 2012-08-30 |  |  |  |  |  |  |  |
| 8220G-6210 |  | Submit Revised BMS for Cofferdam Blasting to Mines Dept | milestone | 0d | 2012-06-12 A | 2012-06-12 A |  | 100% | 2012-06-08 | 2012-06-08 | finish on 2012-06-08 | W822 - 3 - 6D+ Site Holiday | 822_AB_W010 |
| 8220G-6220 |  | Mines Dept review/approve revised BMS |  | 12d | 2012-06-12 A | 2012-06-29 A | 8220G-6210 | 100% | 2012-06-08 | 2012-06-22 |  | W822 - 3 - 6D+ Site Holiday | 822_AB_W010 |
| 8220G-6180 |  | Mines Department Inspection |  | 3d | 2012-07-20 A | 2012-07-24 A | 8220G-6220 | 100% | 2012-09-19 | 2012-09-21 | as late as possible | W822 - 3 - 6D+ Site Holiday | 822_AB_W010 |
| 8220G-6230 |  | Mines Dept issue permit to trial blast | milestone | 0d | 2012-07-24 A | 2012-07-24 A | 8220G-6180 | 100% | 2012-09-21 | 2012-09-21 | as late as possible | W822 - 3 - 6D+ Site Holiday | 822_AB_W010 |
| 8220G-6190 |  | 5 day Trial Blast |  | 5d | 2012-08-28 A | 2012-08-30 A | 8220G-6230 | 100% | 2012-09-01 | 2012-09-06 | as late as possible | W822 - 3 - 6D+ Site Holiday | 822_AB_W010 |
| 8220G-6200 |  | Mines Department Issue Blasting Permit |  | 5d | 2012-08-29 A | 2012-08-30 A | 8220G-6190 | 100% | 2012-09-17 | 2012-09-21 | as late as possible | W822 - 3 - 6D+ Site Holiday | 822_AB_W010 |
|  | 3 | **Shing Mun Cofferdam Excavation and ELS** |  |  | 2011-10-21 | 2013-01-19 |  |  |  |  |  |  |  |
|  | 1 | **Level 1 - Cofferdam to +84.0mPD** |  |  | 2011-10-24 | 2012-04-13 |  |  |  |  |  |  |  |
| 8220G-0890 |  | Install Level 1 ELS (Above Shaft) +85.5mPD |  | 8d | 2011-10-24 A | 2012-04-13 A | 8220G-0020 FS-8d | 100% | 2011-12-09 | 2011-12-19 |  |  | 822_AB_W010 |
| 8220G-0020 |  | Soil Excavation (3624m³) 0.75m³ scoop+2 excavators+2 15T skips = 9m³/h = 92m³/d (Cofferdam = 23x35m) |  | 39d | 2011-10-27 A | 2012-04-13 A | 8220G-0010 | 100% | 2011-12-01 | 2012-01-18 |  |  | 822_AB_W010 |
| 8220G-1450 |  | Rock Excavation (45m³) Mechanical concurrent with soil |  | 39d | 2011-10-27 A | 2012-04-13 A | 8220G-0020 SS | 100% | 2011-12-01 | 2012-01-18 |  |  | 822_AB_W010 |
| 8220G-1460 |  | Install Level 1 ELS (Centre) |  | 8d | 2011-11-10 A | 2012-04-13 A | 8220G-0890 | 100% | 2011-12-19 | 2011-12-30 |  |  | 822_AB_W010 |
| 8220G-3040 |  | Install Level 1 ELS (A-B) +88.0mPD |  | 8d | 2011-11-17 A | 2012-04-13 A | 8220G-1460 | 100% | 2011-12-30 | 2012-01-10 |  |  | 822_AB_W010 |
|  | 2 | **Level 2 - Cofferdam to +81mPD** |  |  | 2011-10-21 | 2012-06-28 |  |  |  |  |  |  |  |
| 8220G-1480 |  | Rock Excavation (468m³) Mechanical 0.75m³ scoop+1 Breaker, 1 Excavator, 2x15T skips = 10m³/h = 100m³/d |  | 4.5d | 2011-10-21 A | 2012-05-31 A | 8220G-3500 | 100% | 2012-06-16 | 2012-06-21 |  |  | 822_AB_W010 |
| 8220G-3500 |  | Soil Excavation (2226m³) 0.75m³ scoop+2 excavators+2x15T skips = 27m³/h = 270m³/d |  | 8.2d | 2011-10-21 A | 2012-05-31 A | 8220G-1460, 8220G-0890 | 100% | 2012-06-06 | 2012-06-15 |  |  | 822_AB_W010 |
| 8220G-0900 |  | Install Level 2 ELS +82.2mPD |  | 8d | 2012-02-29 A | 2012-06-28 A | 8220G-3500 | 100% | 2012-06-16 | 2012-06-27 |  | W822 - 3 - 6D+ Site Holiday | 822_AB_W010 |
| 8220G-6150 |  | Install Blast Mesh |  | 12d | 2012-06-13 A | 2012-06-25 A | 8220G-0900 FS-7d | 100% | 2012-07-26 | 2012-08-08 |  | W822 - 3 - 6D+ Site Holiday | 822_AB_W010 |
|  | 3 | **Level 3 - Cofferdam to +77.5mPD** |  |  | 2012-06-01 | 2012-08-27 |  |  |  |  |  |  |  |
|  | 1 | **Mechanical Excavation** |  |  | 2012-06-01 | 2012-08-27 |  |  |  |  |  |  |  |
| 8220G-1500 |  | Mechanical Excavation Soil (1430m³) = 150m³/d |  | 9.5d | 2012-06-01 A | 2012-08-25 A | 8220G-6150 FS-1d | 100% | 2012-06-22 | 2012-07-05 |  | W822 - 3 - 6D+ Site Holiday | 822_AB_W010 |
| 8220G-6280 |  | Mechanical Excavation (1680m³) = 100m³/d |  | 17d | 2012-06-01 A | 2012-08-27 A | 8220G-1500 SS | 100% | 2012-06-22 | 2012-07-10 |  | Shing Mun 24/7-1 | 822_AB_W010 |
|  | 3 | **ELS** |  |  | 2012-07-09 | 2012-08-25 |  |  |  |  |  |  |  |
| 8220G-6290 |  | Install Level 3 ELS +78.7mPD GL A-B and Centre Perimeter |  | 10d | 2012-07-09 A | 2012-08-15 A | 8220G-0910 | 100% | 2012-08-09 | 2012-08-18 |  | Shing Mun 24/7-1 | 822_AB_W010 |
| 8220G-0910 |  | Install Level 3 ELS +78.7mPD Above Shaft |  | 8d | 2012-07-18 A | 2012-08-16 A | 8220G-1500 FS-2d | 100% | 2012-07-03 | 2012-07-11 |  | Shing Mun 24/7-1 | 822_AB_W010 |
| 8220G-6300 |  | Install Level 3 ELS +78.7mPD Centre Strutts |  | 6d | 2012-08-13 A | 2012-08-25 A | 8220G-6290 | 100% | 2012-08-29 | 2012-09-04 |  | Shing Mun 24/7-1 | 822_AB_W010 |

| ID | WBS | Activity | Duration | Start | Finish | Predecessors | Complete | Planned start | Planned finish | Calendar | 822_AB_W010 |
| --- | --- | --- | --- | --- | --- | --- | --- | --- | --- | --- | --- |
|  | 4 | **Level 4 - Cofferdam to +73.5mPD** |  | 2012-08-27 | 2012-10-20 |  |  |  |  |  |  |
|  | 1 | **Mechanical Excavation** |  |  |  |  |  |  |  |  |  |
|  | 2 | **Excavation** |  | 2012-08-27 | 2012-10-20 |  |  |  |  |  |  |
| 8220G-3520 |  | Mechanical Excavation Soil (780m³) = 200m³/d | 4d | 2012-08-27 A | 2012-09-01 A | 8220G-6280 | 100% | 2012-09-01 | 2012-09-04 | Shing Mun 24/7-1 | 822_AB_W010 |
| 8220G-6240 |  | Mechanical Excavation (1600m³) = 100m³/d | 16d | 2012-09-03 A | 2012-10-07 A | 8220G-6250 FF+1d, 8220G-3520 | 100% | 2012-10-06 | 2012-10-21 | Shing Mun 24/7-1 | 822_AB_W010 |
| 8220G-6250 |  | Drill and Blast Excavation (1150m³) = 100m³/d (8 blasts) | 12d | 2012-10-09 A | 2012-10-20 A | 8220G-6200, 8220G-3520, 8220G-6300, 8220A-4910 | 100% |  |  | Shing Mun 24/7-1 | 822_AB_W010 |
|  | 3 | **ELS** |  | 2012-09-04 | 2012-09-29 |  |  |  |  |  |  |
| 8220G-0920 |  | Install Level 4 ELS +75.0mPD Above Shaft | 8d | 2012-09-04 A | 2012-09-18 A | 8220G-6250 FF, 8220G-6300 | 100% | 2012-09-19 | 2012-09-26 | Shing Mun 24/7-1 | 822_AB_W010 |
| 8220G-6310 |  | Install Level 4 ELS +75.0mPD GL A-B and Centre Perimeter | 3d | 2012-09-17 A | 2012-09-26 A | 8220G-0920 | 100% | 2012-10-21 | 2012-10-23 | Shing Mun 24/7-1 | 822_AB_W010 |
| 8220G-6320 |  | Install Level 4 ELS +75.0mPD Centre Strutts | 3d | 2012-09-22 A | 2012-09-29 A | 8220G-6310, 8220G-6240 | 100% | 2012-10-16 | 2012-10-19 | Shing Mun 24/7-1 | 822_AB_W010 |
|  | 5 | **Level 5 - Cofferdam to +70.5mPD** |  | 2012-10-07 | 2012-10-29 |  |  |  |  |  |  |
|  | 1 | **Mechanical Excavation** |  |  |  |  |  |  |  |  |  |
|  | 2 | **Excavation** |  | 2012-10-16 | 2012-10-29 |  |  |  |  |  |  |
| 8220G-6260 |  | Mechanical Excavation (1076m³) = 76m³/d | 14d | 2012-10-16 A | 2012-10-29 A | 8220G-6270 SS | 100% | 2012-11-14 | 2012-11-27 | Shing Mun 24/7-1 | 822_AB_W010 |
| 8220G-6270 |  | Drill and Blast Excavation (1588m³) = 113m³/d (9 blasts) | 14d | 2012-10-20 A | 2012-10-29 A | 8220G-6320 | 100% | 2012-12-06 | 2012-12-19 | Shing Mun 24/7-1 | 822_AB_W010 |
|  | 3 | **ELS** |  | 2012-10-07 | 2012-10-22 |  |  |  |  |  |  |
| 8220G-0930 |  | Install Level 5 ELS +71.5mPD = Above Shaft | 8d | 2012-10-07 A | 2012-10-19 A | 8220G-6270 FS-9d | 100% | 2012-11-19 | 2012-11-26 | Shing Mun 24/7-1 | 822_AB_W010 |
| 8220G-6330 |  | Install Level 5 ELS +71.5mPD = GL A-B and Centre Perimeter | 3d | 2012-10-15 A | 2012-10-22 A | 8220G-0930 | 100% | 2012-11-23 | 2012-11-26 | Shing Mun 24/7-1 | 822_AB_W010 |
| 8220G-6340 |  | Install Level 5 ELS +71.5mPD = Centre Strutts | 3d | 2012-10-22 A | 2012-10-22 A | 8220G-6330, 8220G-6260 | 100% | 2012-11-28 | 2012-11-30 | Shing Mun 24/7-1 | 822_AB_W010 |
|  | 6 | **Level 6 - Cofferdam to +67.5mPD** |  | 2012-10-29 | 2012-11-14 |  |  |  |  |  |  |
|  | 1 | **Mechanical Excavation** |  |  |  |  |  |  |  |  |  |
|  | 2 | **Excavation** |  | 2012-10-29 | 2012-11-12 |  |  |  |  |  |  |
| 8220G-0030 |  | Drill and Blast (1720m³) 143m³/Day (9 Blasts) | 12d | 2012-10-29 A | 2012-11-09 A | 8220G-6340, 8220G-6360 FF | 100% | 2012-12-01 | 2012-12-12 | Shing Mun 24/7-1 | 822_AB_W010 |
| 8220G-6360 |  | Mechanical Excavation (580m³) = 57m³/d | 12d | 2012-10-31 A | 2012-11-08 A | 8220G-6340 | 100% | 2012-11-13 | 2012-11-24 | Shing Mun 24/7-1 | 822_AB_W010 |
| 8220G-1620 |  | Install Rockdowels | 2d | 2012-11-10 A | 2012-11-12 A | 8220G-0030 FF | 100% | 2012-12-11 | 2012-12-12 | Shing Mun 24/7-1 | 822_AB_W010 |

| ID | WBS | Activity | Duration | Start | Finish | Predecessors | Complete | Planned start | Planned finish | Constraint | Calendar | 822_AB_W010 |
| --- | --- | --- | --- | --- | --- | --- | --- | --- | --- | --- | --- | --- |
|  | 3 | **ELS** |  | 2012-11-10 | 2012-11-14 |  |  |  |  |  |  |  |
| 8220G-0940 |  | Install Level 6 Tie Backs (A-B) +68.0mPD (59m) | 4d | 2012-11-10 A | 2012-11-13 A | 8220G-0810 | 100% | 2013-01-02 | 2013-01-05 |  | Shing Mun 24/7-1 | 822_AB_W010 |
| 8220G-0880 |  | Install Level 7 Tie Backs (A-B) +64.5mPD (59m) | 4d | 2012-11-12 A | 2012-11-14 A | 8220G-0940, 8220G-1660 | 100% | 2013-01-14 | 2013-01-17 |  | Shing Mun 24/7-1 | 822_AB_W010 |
|  | 7 | **Level 7 - Cofferdam to +64.5mPD** |  | 2012-11-12 | 2012-11-20 |  |  |  |  |  |  |  |
| 8220G-1640 |  | Drilling for Pre-grouting (cover 4 pulls at 2.2m ea) | 2d | 2012-11-12 A | 2012-11-13 A | 8220G-1620 | 100% | 2013-01-02 | 2013-01-03 | as late as possible | Shing Mun 24/7-1 | 822_AB_W010 |
| 8220G-1650 |  | Grouting (w/ 5m overlapping every 4 blasts) | 1.5d | 2012-11-14 A | 2012-11-15 A | 8220G-1640 | 100% | 2013-01-04 | 2013-01-05 | as late as possible | Shing Mun 24/7-1 | 822_AB_W010 |
|  | 1 | **Mechanical Excavation** |  | 2012-11-13 | 2012-11-16 |  |  |  |  |  |  |  |
| 8220G-1660 |  | Rock Excavation (A-B) to below Level 6 Strut (1006m³) = 100m³/d | 10d | 2012-11-13 A | 2012-11-15 A | 8220G-0940 FS-2d, 8220G-0940 FF | 100% | 2013-01-04 | 2013-01-13 |  | Shing Mun 24/7-1 | 822_AB_W010 |
| 8220G-1670 |  | Rock Excavation (A-B) to formation level (1279m³) = 100m³/d | 12d | 2012-11-14 A | 2012-11-16 A | 8220G-1660, 8220G-0880 FS-2d, 8220G-0880 FF | 100% | 2013-01-16 | 2013-01-27 |  | Shing Mun 24/7-1 | 822_AB_W010 |
|  | 2 | **Excavation** |  | 2012-11-16 | 2012-11-20 |  |  |  |  |  |  |  |
| 8220G-1630 |  | Install Rockdowels | 2d | 2012-11-16 A | 2012-11-17 A | 8220G-1650, 8220G-0790 FF | 100% | 2013-01-05 | 2013-01-07 |  | Shing Mun 24/7-1 | 822_AB_W010 |
| 8220G-6350 |  | Mechanical Excavation (580m³) = 164m³/d | 10d | 2012-11-16 A | 2012-11-20 A | 8220G-0030 | 100% | 2012-12-01 | 2012-12-10 |  | Shing Mun 24/7-1 | 822_AB_W010 |
| 8220G-0790 |  | Drill and Blast (1360m³) 136m³/Day (7 Blasts) | 10d | 2012-11-17 A | 2012-11-20 A | 8220G-0030, 8220G-6350 FF | 100% | 2012-12-01 | 2012-12-10 |  | Shing Mun 24/7-1 | 822_AB_W010 |
|  | 3 | **ELS** |  |  |  |  |  |  |  |  |  |  |
|  | 8 | **Level 8 - Cofferdam to +61.5mPD** |  | 2012-11-19 | 2012-11-25 |  |  |  |  |  |  |  |
| 8220G-1690 |  | Install Rockdowels | 2d | 2012-11-19 A | 2012-11-20 A | 8220G-0800 FF, 8220G-6370 FF | 100% | 2013-01-05 | 2013-01-07 |  | Shing Mun 24/7-1 | 822_AB_W010 |
| 8220G-0800 |  | Drill and Blast (1100m³) 136m³/Day (6 Blasts) | 8d | 2012-11-21 A | 2012-11-23 A | 8220G-0790, 8220G-1630 | 100% | 2012-12-11 | 2012-12-18 |  | Shing Mun 24/7-1 | 822_AB_W010 |
| 8220G-6370 |  | Mechanical Excavation (465m³) = 64m³/d | 8d | 2012-11-21 A | 2012-11-25 A | 8220G-0800 FF, 8220G-0800 SS | 100% | 2012-12-11 | 2012-12-18 |  | Shing Mun 24/7-1 | 822_AB_W010 |
|  | 9 | **Level 9 - Cofferdam to +57.1mPD** |  | 2012-11-19 | 2013-01-19 |  |  |  |  |  |  |  |
| 8220G-6380 |  | Mechanical Excavation (665m³) 24h Working 72m³/day | 11d | 2012-11-19 A | 2012-12-14 A | 8220G-1690, 8220G-0810 FF, 8220A-5280, 8220A-5070, 8220A-5100 | 100% | 2012-12-19 | 2012-12-31 |  | Shing Mun 24/7-1 | 822_AB_W010 |
| 8220G-0810 |  | Drill and Blast (1413m³) 128m³/Day (8 Blasts) | 11d | 2012-11-25 A | 2012-12-14 A | 8220G-1690 | 100% | 2012-11-25 | 2012-12-06 |  | Shing Mun 24/7-1 | 822_AB_W010 |
| 8220G-1700 |  | Install Rockdowels | 2d | 2012-12-14 A | 2012-12-15 A | 8220G-0810 FF, 8220G-6380 FF | 100% | 2013-01-12 | 2013-01-14 |  | Shing Mun 24/7-1 | 822_AB_W010 |
| 8220G-0190 |  | Construct Shaft Collar | 6d | 2012-12-27 A | 2013-01-11 A |  | 100% | 2013-01-02 | 2013-01-07 |  | Shing Mun 24/7-1 | 822_AB_W010 |
| 8220G-0040 |  | Construct Blast Cover at top of Vent Shaft | 6d | 2013-01-12 A | 2013-01-18 A | 8220G-0190 | 100% | 2013-01-04 | 2013-01-09 |  | Shing Mun 24/7-1 | 822_AB_W010 |
| 8220G-1730 |  | Install Ventilation System | 6d | 2013-01-14 A | 2013-01-19 A | 8220G-0040, 8220A-4900 | 100% | 2013-01-10 | 2013-01-15 |  | Shing Mun 24/7-1 | 822_AB_W010 |

| ID | WBS | Activity | Duration | Start | Finish | Predecessors | Complete | Planned start | Planned finish | Calendar | 822_AB_W010 |
| --- | --- | --- | --- | --- | --- | --- | --- | --- | --- | --- | --- |
|  | 10 | **Level 10 - Cofferdam to +59.4mPD** |  |  |  |  |  |  |  |  |  |
|  | 11 | **Level 11 - Cofferdam to +57.2mPD** |  |  |  |  |  |  |  |  |  |
|  | 4 | **Shing Mun Shaft Excavation** |  | 2012-12-16 | 2013-08-11 |  |  |  |  |  |  |
|  | 1 | **VB5 - Stage 1 (+57.10mpd to +48.30mpd) - 8.8m D&B and Grouting** |  | 2012-12-16 | 2013-02-24 |  |  |  |  |  |  |
| 8220G-0050 |  | Drilling for Pre grouting (cover 4 pulls at 2.2m eac) 60 holes x 15m | 2d | 2012-12-16 A | 2012-12-17 A |  | 100% |  |  | Shing Mun 24/7-1 | 822_AB_W010 |
| 8220G-0160 |  | Grouting (w/ 5m overlapping every 4 blasts) | 1.78d | 2012-12-18 A | 2012-12-19 A | 8220G-0050 | 100% |  |  | Shing Mun 24/7-1 | 822_AB_W010 |
| 8220G-0200 |  | 1. Drill and Blast Cycle +57.10 to 54.90 | 4.87d | 2012-12-20 A | 2012-12-24 A | 8220G-0160 | 100% |  |  | Shing Mun 24/7-1 | 822_AB_W010 |
| 8220G-0240 |  | 2. Drill and Blast Cycle +54.90 to 52.70 | 3.75d | 2013-01-22 A | 2013-01-29 A | 8220G-0200, 8220G-1730 | 100% | 2013-02-01 | 2013-02-04 | Shing Mun 24/7-1 | 822_AB_W010 |
| 8220G-0250 |  | 3. Drill and Blast Cycle +52.70 to 50.50 | 3.75d | 2013-01-30 A | 2013-02-14 A | 8220G-0240 | 100% | 2013-02-04 | 2013-02-08 | Shing Mun 24/7-1 | 822_AB_W010 |
| 8220G-0260 |  | 4. Drill and Blast Cycle +50.50 to 48.30 | 3.75d | 2013-02-15 A | 2013-02-24 A | 8220G-0250 | 100% | 2013-02-04 | 2013-02-08 | Shing Mun 24/7-1 | 822_AB_W010 |
|  | 2 | **VB5 - Stage 2 (+48.30mpd to +39.50mpd) - 8.8m D&B and Grouting** |  | 2013-02-25 | 2013-03-21 |  |  |  |  |  |  |
| 8220G-0060 |  | Drilling for Pre grouting (cover 4 pulls at 2.2m eac) 60 holes x 15m | 2d | 2013-02-25 A | 2013-02-27 A | 8220G-0260 | 100% | 2013-03-04 | 2013-03-06 | Shing Mun 24/7-1 | 822_AB_W010 |
| 8220G-5090 |  | 5. Drill and Blast Cycle +48.30 to 46.10 | 3.75d | 2013-02-25 A | 2013-03-02 A | 8220G-5080 | 100% | 2013-03-02 | 2013-03-06 | Shing Mun 24/7-1 | 822_AB_W010 |
| 8220G-5080 |  | Grouting (w/ 5m overlapping every 4 blasts) | 1.8d | 2013-02-28 A | 2013-03-02 A | 8220G-0060 | 100% | 2013-03-06 | 2013-03-08 | Shing Mun 24/7-1 | 822_AB_W010 |
| 8220G-5100 |  | 6. Drill and Blast Cycle +46.10 to 43.90 | 3.75d | 2013-03-04 A | 2013-03-08 A | 8220G-5090 | 100% |  |  | Shing Mun 24/7-1 | 822_AB_W010 |
| 8220G-5110 |  | 7. Drill and Blast Cycle +43.90 to 41.7 | 3.75d | 2013-03-09 A | 2013-03-16 A | 8220G-5100 | 100% | 2013-03-08 | 2013-03-12 | Shing Mun 24/7-1 | 822_AB_W010 |
| 8220G-5120 |  | 8. Drill and Blast Cycle +41.70 to 39.50 | 3.75d | 2013-03-18 A | 2013-03-21 A | 8220G-5110 | 100% | 2013-03-12 | 2013-03-16 | Shing Mun 24/7-1 | 822_AB_W010 |
|  | 3 | **VB5 - Stage 3 (+39.50mpd to +30.70mpd) - 8.8m D&B and Grouting** |  | 2013-03-21 | 2013-04-09 |  |  |  |  |  |  |
| 8220G-0070 |  | Drilling for Pre grouting (cover 4 pulls at 2.2m eac) 60 holes x 15m | 2d | 2013-03-21 A | 2013-03-23 A | 8220G-5120 | 100% | 2013-04-01 | 2013-04-02 | Shing Mun 24/7-1 | 822_AB_W010 |
| 8220G-5130 |  | Grouting (w/ 5m overlapping every 4 blasts) | 1.78d | 2013-03-23 A | 2013-03-25 A | 8220G-0070 | 100% | 2013-04-03 | 2013-04-05 | Shing Mun 24/7-1 | 822_AB_W010 |
| 8220G-5140 |  | 9. Drill and Blast Cycle +39.50 to +37.30 | 3.75d | 2013-03-25 A | 2013-03-28 A | 8220G-5130 | 100% | 2013-04-05 | 2013-04-09 | Shing Mun 24/7-1 | 822_AB_W010 |
| 8220G-5150 |  | 10. Drill and Blast Cycle +37.30 to +35.10 | 3.75d | 2013-03-28 A | 2013-03-30 A | 8220G-5140 | 100% | 2013-04-05 | 2013-04-09 | Shing Mun 24/7-1 | 822_AB_W010 |
| 8220G-5160 |  | 11. Drill and Blast Cycle +35.10 to +32.90 | 3.75d | 2013-03-30 A | 2013-04-03 A | 8220G-5150 | 100% | 2013-05-02 | 2013-05-04 | Shing Mun 24/7-1 | 822_AB_W010 |
| 8220G-5170 |  | 12. Drill and Blast Cycle +32.90 to +30.70 | 3.75d | 2013-04-04 A | 2013-04-09 A | 8220G-5160 | 100% | 2013-05-05 | 2013-05-09 | Shing Mun 24/7-1 | 822_AB_W010 |

Notes:
- 8220G-0050: P3 Activity Log Info: 16m dia. x 90m @ 36 blast avg. 2.5m / pull @ 7days cycle
- 8220G-0060: P3 Activity Log Info: ????????16m dia. x 90m @ 36 blast avg. ??2.5m / pull @ 7days cycle??
- 8220G-0070: P3 Activity Log Info: Includes +1 day time adjustment (Total 250days)

| ID | WBS | Activity | Duration | Start | Finish | Predecessors | Complete | Planned start | Planned finish | Calendar | 822_AB_W010 |
| --- | --- | --- | --- | --- | --- | --- | --- | --- | --- | --- | --- |
|  | 4 | **VB5 - Stage 4 (+30.70mpd to +21.90mpd) - 8.8m D&B and Grouting** |  | 2013-04-09 | 2013-04-28 |  |  |  |  |  |  |
| 8220G-0080 |  | Drilling for Pre grouting (cover 4 pulls at 2.2m eac) 60 holes x 15m | 2d | 2013-04-09 A | 2013-04-10 A | 8220G-5170 | 100% | 2013-05-09 | 2013-05-11 | Shing Mun 24/7-1 | 822_AB_W010 |
| 8220G-5180 |  | Grouting (w/ 5m overlapping every 4 blasts) | 1.78d | 2013-04-10 A | 2013-04-11 A | 8220G-0080 | 100% | 2013-05-11 | 2013-05-13 | Shing Mun 24/7-1 | 822_AB_W010 |
| 8220G-5190 |  | 13. Drill and Blast Cycle +30.70 to +28.50 | 3.75d | 2013-04-12 A | 2013-04-16 A | 8220G-5180 | 100% | 2013-05-13 | 2013-05-17 | Shing Mun 24/7-1 | 822_AB_W010 |
| 8220G-5200 |  | 14. Drill and Blast Cycle +28.50 to +26.30 | 3.75d | 2013-04-16 A | 2013-04-19 A | 8220G-5190 | 100% | 2013-05-17 | 2013-05-20 | Shing Mun 24/7-1 | 822_AB_W010 |
| 8220G-5210 |  | 15. Drill and Blast Cycle +26.30 to +24.10 | 3.75d | 2013-04-19 A | 2013-04-25 A | 8220G-5200 | 100% | 2013-05-20 | 2013-05-24 | Shing Mun 24/7-1 | 822_AB_W010 |
| 8220G-5220 |  | 16. Drill and Blast Cycle +24.10 to +21.90 | 3.75d | 2013-04-25 A | 2013-04-28 A | 8220G-5210 | 100% | 2013-05-24 | 2013-05-28 | Shing Mun 24/7-1 | 822_AB_W010 |
|  | 5 | **VB5 - Stage 5 (+21.90mpd to +13.10mpd) - 8.8m D&B and Grouting** |  | 2013-04-22 | 2013-05-14 |  |  |  |  |  |  |
| 8220G-0090 |  | Drilling for Pre grouting (cover 4 pulls at 2.2m eac) 60 holes x 15m | 2d | 2013-04-22 A | 2013-04-23 A | 8220G-5220 | 100% | 2013-05-28 | 2013-05-30 | Shing Mun 24/7-1 | 822_AB_W010 |
| 8220G-5230 |  | Grouting (w/ 5m overlapping every 4 blasts) | 1.78d | 2013-04-24 A | 2013-04-25 A | 8220G-0090 | 100% | 2013-05-04 | 2013-05-05 | Shing Mun 24/7-1 | 822_AB_W010 |
| 8220G-5240 |  | 17. Drill and Blast Cycle +21.90 to +19.70 | 3.75d | 2013-04-25 A | 2013-04-28 A | 8220G-5230 | 100% | 2013-05-05 | 2013-05-09 | Shing Mun 24/7-1 | 822_AB_W010 |
| 8220G-5250 |  | 18. Drill and Blast Cycle +19.70 to +17.50 | 3.75d | 2013-04-28 A | 2013-05-06 A | 8220G-5240 | 100% | 2013-05-09 | 2013-05-13 | Shing Mun 24/7-1 | 822_AB_W010 |
| 8220G-5260 |  | 19. Drill and Blast Cycle +17.50 to +15.30 | 3.75d | 2013-05-07 A | 2013-05-11 A | 8220G-5250 | 100% | 2013-05-02 | 2013-05-05 | Shing Mun 24/7-1 | 822_AB_W010 |
| 8220G-5270 |  | 20. Drill and Blast Cycle +15.30 to +13.10 | 3.75d | 2013-05-11 A | 2013-05-14 A | 8220G-5260 | 100% | 2013-05-06 | 2013-05-10 | Shing Mun 24/7-1 | 822_AB_W010 |
|  | 6 | **VB5 - Stage 6 (+13.10mpd to +4.30mpd) - 8.8m D&B and Grouting** |  | 2013-05-15 | 2013-06-01 |  |  |  |  |  |  |
| 8220G-0100 |  | Drilling for Pre grouting (cover 4 pulls at 2.2m eac) 60 holes x 15m | 2d | 2013-05-15 A | 2013-05-16 A | 8220G-5270 | 100% | 2013-05-18 | 2013-05-20 | Shing Mun 24/7-1 | 822_AB_W010 |
| 8220G-5280 |  | Grouting (w/ 5m overlapping every 4 blasts) | 1.8d | 2013-05-18 A | 2013-05-20 A | 8220G-0100 | 100% | 2013-05-29 | 2013-05-30 | Shing Mun 24/7-1 | 822_AB_W010 |
| 8220G-5290 |  | 21. Drill and Blast Cycle +13.10 to +10.90 | 3.75d | 2013-05-20 A | 2013-05-23 A | 8220G-5280 | 100% | 2013-05-30 | 2013-06-03 | Shing Mun 24/7-1 | 822_AB_W010 |
| 8220G-5300 |  | 22. Drill and Blast Cycle +10.90 to +8.70 | 3.75d | 2013-05-23 A | 2013-05-26 A | 8220G-5290 | 100% | 2013-06-04 | 2013-06-08 | Shing Mun 24/7-1 | 822_AB_W010 |
| 8220G-5310 |  | 23. Drill and Blast Cycle +8.70 to +6.50 | 3.75d | 2013-05-26 A | 2013-05-29 A | 8220G-5300 | 100% | 2013-06-08 | 2013-06-13 | Shing Mun 24/7-1 | 822_AB_W010 |
| 8220G-5320 |  | 24. Drill and Blast Cycle +6.50 to +4.30 | 3.75d | 2013-05-29 A | 2013-06-01 A | 8220G-5310 | 100% | 2013-06-25 | 2013-06-29 | Shing Mun 24/7-1 | 822_AB_W010 |
|  | 7 | **VB5 - Stage 7 (+4.30mpd to -4.50mpd) - 8.8m D&B and Grouting** |  | 2013-06-03 | 2013-06-19 |  |  |  |  |  |  |
| 8220G-0110 |  | Drilling for Pre grouting (cover 4 pulls at 2.2m eac) 60 holes x 15m | 2d | 2013-06-03 A | 2013-06-04 A | 8220G-5320 | 100% | 2013-06-29 | 2013-07-02 | Shing Mun 24/7-1 | 822_AB_W010 |
| 8220G-5330 |  | Grouting (w/ 5m overlapping every 4 blasts) | 1.78d | 2013-06-04 A | 2013-06-05 A | 8220G-0110 | 100% | 2013-07-02 | 2013-07-04 | Shing Mun 24/7-1 | 822_AB_W010 |
| 8220G-5340 |  | 25 Drill and Blast Cycle +4.30 to +2.10 | 3.75d | 2013-06-05 A | 2013-06-08 A | 8220G-5330 | 100% | 2013-07-04 | 2013-07-08 | Shing Mun 24/7-1 | 822_AB_W010 |
| 8220G-5350 |  | 26. Drill and Blast Cycle +2.10 to -0.10 | 3.75d | 2013-06-08 A | 2013-06-12 A | 8220G-5340 | 100% | 2013-07-08 | 2013-07-11 | Shing Mun 24/7-1 | 822_AB_W010 |
| 8220G-5360 |  | 27. Drill and Blast Cycle -0.10 to -2.3 | 3.75d | 2013-06-12 A | 2013-06-15 A | 8220G-5350 | 100% | 2013-07-11 | 2013-07-15 | Shing Mun 24/7-1 | 822_AB_W010 |
| 8220G-5370 |  | 28. Drill and Blast Cycle -2.30 to -4.50 | 3.75d | 2013-06-15 A | 2013-06-19 A | 8220G-5360 | 100% | 2013-07-15 | 2013-07-19 | Shing Mun 24/7-1 | 822_AB_W010 |

Notes:
- 8220G-0080: P3 Activity Log Info: Includes +1 day time adjustment (Total 250days)
- 8220G-0090: P3 Activity Log Info: Includes +1 day time adjustment (Total 250days)
- 8220G-0100: P3 Activity Log Info: Includes +1 day time adjustment (Total 250days)
- 8220G-0110: P3 Activity Log Info: Includes +1 day time adjustment (Total 250days)

| ID | WBS | Activity | Duration | Start | Finish | Predecessors | Complete | Planned start | Planned finish | Total float | Free float | Calendar | 822_AB_W010 | Stef Temp A1 |
| --- | --- | --- | --- | --- | --- | --- | --- | --- | --- | --- | --- | --- | --- | --- |
|  | 8 | **VB5 - Stage 8 (-4.50mpd to -13.30mpd) - 8.8m D&B and Grouting** |  | 2013-06-19 | 2013-07-20 |  |  |  |  |  |  |  |  |  |
| 8220G-1740 |  | Drilling for Pre grouting (cover 4 pulls at 2.2m eac) 60 holes x 15m | 2d | 2013-06-19 A | 2013-06-20 A | 8220G-5370 | 100% | 2013-07-19 | 2013-07-21 |  |  | Shing Mun 24/7-1 | 822_AB_W010 |  |
| 8220G-5380 |  | Grouting (w/ 5m overlapping every 4 blasts) | 1.78d | 2013-06-20 A | 2013-06-21 A | 8220G-1740 | 100% | 2013-07-21 | 2013-07-23 |  |  | Shing Mun 24/7-1 | 822_AB_W010 |  |
| 8220G-5390 |  | 29. Drill and Blast Cycle -4.50 to -6.70 | 3.75d | 2013-06-21 A | 2013-07-03 A | 8220G-5380 | 100% | 2013-07-23 | 2013-07-26 |  |  | Shing Mun 24/7-1 | 822_AB_W010 |  |
| 8220G-5400 |  | 30. Drill and Blast Cycle -6.70 to -8.90 | 3.75d | 2013-07-04 A | 2013-07-09 A | 8220G-5390 | 100% | 2013-07-26 | 2013-07-30 |  |  | Shing Mun 24/7-1 | 822_AB_W010 |  |
| 8220G-5410 |  | 31. Drill and Blast Cycle -8.90 to -11.10 | 3.75d | 2013-07-10 A | 2013-07-16 A | 8220G-5400 | 100% | 2013-07-30 | 2013-08-03 |  |  | Shing Mun 24/7-1 | 822_AB_W010 |  |
| 8220G-5420 |  | 32. Drill and Blast Cycle -11.10 to -13.30 | 3.75d | 2013-07-17 A | 2013-07-20 A | 8220G-5410 | 100% | 2013-08-03 | 2013-08-06 |  |  | Shing Mun 24/7-1 | 822_AB_W010 |  |
|  | 9 | **VB5 - Stage 9 (-13.30mpd to -17.70mpd) - 4.4m D&B and Grouting** |  | 2013-07-21 | 2013-07-30 |  |  |  |  |  |  |  |  |  |
| 8220G-1750 |  | Drilling for Pre grouting (cover 4 pulls at 2.2m eac) 60 holes x 15m | 2d | 2013-07-21 A | 2013-07-22 A | 8220G-5420 | 100% | 2013-08-07 | 2013-08-08 |  |  | Shing Mun 24/7-1 | 822_AB_W010 |  |
| 8220G-5430 |  | Grouting (w/ 5m overlapping every 4 blasts) | 1.8d | 2013-07-23 A | 2013-07-24 A | 8220G-1750 | 100% | 2013-08-01 | 2013-08-02 |  |  | Shing Mun 24/7-1 | 822_AB_W010 |  |
| 8220G-5440 |  | 33. Drill and Blast Cycle -13.30 to -15.50 | 3.75d | 2013-07-24 A | 2013-07-28 A | 8220G-5430 | 100% | 2013-08-02 | 2013-08-06 |  |  | Shing Mun 24/7-1 | 822_AB_W010 |  |
| 8220G-5450 |  | 34. Drill and Blast Cycle -15.50 to -17.70 | 3.75d | 2013-07-29 A | 2013-07-30 A | 8220G-5440 | 100% | 2013-08-06 | 2013-08-10 |  |  | Shing Mun 24/7-1 | 822_AB_W010 |  |
|  | 10 | **VB5 - 4.4m Rock Plug (-17.70mpd to -22.10mpd) - Mech'l Excavation** |  | 2013-07-30 | 2013-08-11 |  |  |  |  |  |  |  |  |  |
| 8220G-0120 |  | VB5 - 4.4m Rock Plug (-17.70mpd to -22.10mpd) - Mech'l Excavation | 10d | 2013-07-30 A | 2013-08-11 A | 8220G-5450 | 100% | 2013-08-10 | 2013-08-20 |  |  | Shing Mun 24/7-1 | 822_AB_W010 |  |
|  | 5 | **Shing Mun EAP Adit** |  | 2012-10-23 | 2017-06-20 |  |  |  |  |  |  |  |  |  |
|  | 1 | **Adit Excavation** |  | 2012-10-23 | 2013-03-09 |  |  |  |  |  |  |  |  |  |
| 8220EE1330 |  | SMEAP - Pregrouting work within Cavern & Temp. Support | 36d | 2012-10-23 A | 2013-01-05 A | 8220EE0080 | 100% | 2013-02-20 | 2013-04-03 |  |  |  | 822_AB_W010 |  |
| 8220EE0140 |  | SMEAP - EAP Adit D&B Ch. 0 to Ch.5.5 - Top Heading | 10d | 2013-01-05 A | 2013-01-11 A | 8220B-1170 FS+26d | 100% | 2012-11-01 | 2012-11-12 |  |  |  | 822_AB_W010 |  |
| 8220EE0080 |  | SMEAP - EAP Adit D&B Ch. 0 to Ch.5.5 - Bench | 6d | 2013-01-11 A | 2013-01-16 A | 8220EE0140, 8220A-8530 | 100% | 2013-02-14 | 2013-02-20 |  |  |  | 822_AB_W010 |  |
| 8220EE0150 |  | SMEAP - EAP Adit D&B Ch. 5.5 to Ch.62.0 - Top Heading | 16d | 2013-01-16 A | 2013-02-02 A | 8220EE1330 | 100% | 2013-04-08 | 2013-04-25 |  |  |  | 822_AB_W010 |  |
| 8220EE160 |  | SMEAP - EAP Adit D&B Ch. 5.5 to Ch.62.0 - Bench | 28d | 2013-01-16 A | 2013-02-02 A | 8220EE0150 | 100% | 2013-04-26 | 2013-05-29 |  |  |  | 822_AB_W010 |  |
| 8220G-0130 |  | SMEAP - Drill and Blast the basement | 14d | 2013-02-04 A | 2013-02-23 A | 8220EE160 | 100% | 2013-02-06 | 2013-02-25 |  |  |  | 822_AB_W010 |  |
| 8220G-1370 |  | SMEAP - Trim Cavern | 8d | 2013-02-25 A | 2013-03-09 A | 8220G-0130 | 100% | 2013-03-04 | 2013-03-13 |  |  |  | 822_AB_W010 |  |
|  | 2 | **Adit Lining** |  | 2013-10-29 | 2017-06-20 |  |  |  |  |  |  |  |  |  |
| 8220EE0040 |  | SMEAP - Lining First section | 30d | 2013-10-29 A | 2014-01-22 A | 8220G-2070, 8220A-7370 | 100% | 2013-11-01 | 2013-12-05 |  |  |  | 822_AB_W010 | NEW |
| 8220EE0060 |  | SMEAP - Lining Second Section | 30d | 2014-01-23 A | 2014-05-29 A | 8220EE0050 | 100% | 2014-03-10 | 2014-04-15 |  |  |  | 822_AB_W010 | NEW |
| 8220EE0050 |  | SMEAP - Base Slab, Duct Wall & End Wall | 26d | 2014-03-06 A | 2014-06-01 A | 8220EE0040 | 100% | 2014-06-03 | 2014-07-04 |  |  |  | 822_AB_W010 | NEW |
| 8220EE0070 |  | SMEAP - Base Slab & Fire Rated Barrier Wall | 24d | 2017-01-02 | 2017-01-28 | 8220EE0060 |  |  |  | -1066d | 0d |  |  | NEW |
| 8220EE0090 |  | SMEAP - Internal Wall & Suspended Slab | 12d | 2017-01-30 | 2017-02-11 | 8220EE0070 |  |  |  | -1066d | 0d |  |  | NEW |
| 8220EE0100 |  | SMEAP - Construct Block Walls for Rooms | 18d | 2017-02-13 | 2017-03-04 | 8220EE0090 |  |  |  | -1066d | 0d |  |  | NEW |
| 8220EE0110 |  | SMEAP - ABWF Degree 1 to OHLM Rm. and Trackside LV Rms | 18d | 2017-03-06 | 2017-03-25 | 8220EE0100 |  |  |  | -1066d | 0d |  |  | NEW |
| 8220EE1340 |  | SMEAP - ABWF Degree 1 to EAP Adit | 18d | 2017-03-06 | 2017-03-25 | 8220EE0100 |  |  |  | -1066d | 0d |  |  | NEW |
| 8220EE1350 |  | SMEAP - ABWF Degree 2 to EAP Adit | 48d | 2017-03-27 | 2017-05-20 | 8220EE1340, 8220EE0110 |  |  |  | -1040d | 0d |  |  | NEW |
| 8220EE1360 |  | SMEAP - ABWF Degree 3 to EAP Adit | 26d | 2017-05-22 | 2017-06-20 | 8220EE1350 |  |  |  | -1015d | 0d |  |  | NEW |

Notes:
- 8220G-0120: P3 Activity Log Info: Includes +1 day time adjustment (Total 250days)

| ID | WBS | Activity | Type | Duration | Start | Finish | Predecessors | Complete | Planned start | Planned finish | Total float | Free float | Calendar | Stef Temp A1 | 822_AB_W010 |
| --- | --- | --- | --- | --- | --- | --- | --- | --- | --- | --- | --- | --- | --- | --- | --- |
|  | 3 | **Hand over to Designated Contractors** |  |  | 2017-02-11 | 2017-03-25 |  |  |  |  |  |  |  |  |  |
| 8220G1790 |  | C8203 - Construction Stage Mobile Phone Network (Shaft/EAP) (31 Aug 13) | milestone | 0d | 2017-02-11 | 2017-02-11 | 8220EE0090 |  |  |  | -550d | 359.51d |  |  |  |
| 8220G1810 |  | C855 - Earliest Shared Access with DC855 in Shaft Bottom and EAP | milestone | 0d | 2017-03-25 | 2017-03-25 | 8220EE0110, 8220EE1340 |  |  |  | -586d | 323.51d |  |  |  |
|  | 6 | **Shing Mun Bottom Shaft Structure** |  |  | 2013-03-18 | 2014-04-17 |  |  |  |  |  |  |  |  |  |
|  | 1 | **Basement Level -40.5mPD to -34.0mPD Track Level** |  |  | 2013-03-18 | 2013-12-12 |  |  |  |  |  |  |  |  |  |
| 8220F-0080 |  | Base Slab Construction (2.0m) |  | 20d | 2013-03-18 A | 2013-06-08 A | 8220G-1370 | 100% | 2013-04-11 | 2013-05-06 |  |  | W7 - 6 day - Double Shift (20H) - All Holidays | NEW | 822_AB_W010 |
| 8220G-2010 |  | Install Geodrain drainage, protective sheet and polymer membrane |  | 6d | 2013-04-08 A | 2013-05-02 A | 8220F-0080 | 100% | 2013-06-01 | 2013-06-08 |  |  | W7 - 6 day - Double Shift (20H) - All Holidays | NEW | 822_AB_W010 |
| 8220G-2020 |  | Construct Permanent Concrete Lining |  | 16d | 2013-05-03 A | 2013-05-24 A | 8220G-2010 | 100% | 2013-06-08 | 2013-06-28 |  |  | W7 - 6 day - Double Shift (20H) - All Holidays | NEW | 822_AB_W010 |
| 8220G-2070 |  | Erect Crash Deck at -34.0 mpd |  | 18d | 2013-06-10 A | 2013-06-24 A | 8220F-0090, 8220A-9730 | 100% | 2013-08-15 | 2013-09-05 |  |  | W7 - 6 day - Double Shift (20H) - All Holidays | NEW | 822_AB_W010 |
| 8220G-2030 |  | Construct Internal Walls (-38.5 mpd to -34.0 mpd) |  | 15d | 2013-10-03 A | 2013-12-07 A | 8220G-2020 | 100% | 2013-11-01 | 2013-11-19 |  |  | W7 - 6 day - Double Shift (20H) - All Holidays | NEW | 822_AB_W010 |
| 8220G-2040 |  | Construct Foulwater Sump (-36.55 mpd) |  | 8d | 2013-11-11 A | 2013-12-07 A | 8220G-2030 | 100% | 2013-12-06 | 2013-12-16 |  |  | W7 - 6 day - Double Shift (20H) - All Holidays | NEW | 822_AB_W010 |
| 8220G-2080 |  | Tank Rooms Waterproofing and Backfilling around Lift Pit Voids |  | 8d | 2013-11-29 A | 2013-12-07 A | 8220G-2040 | 100% | 2014-01-06 | 2014-01-15 |  |  | W7 - 6 day - Double Shift (20H) - All Holidays | NEW | 822_AB_W010 |
| 8220F-0090 |  | Construct Track Level Slab (-34.0 mpd) and conc. all openings |  | 8d | 2013-12-02 A | 2013-12-12 A | 8220G-2080 | 100% | 2014-01-15 | 2014-01-24 |  |  | W7 - 6 day - Double Shift (20H) - All Holidays | NEW | 822_AB_W010 |
|  | 2 | **Track Level -34.0mPD to -27.85mPD Above Track Level** |  |  | 2013-08-11 | 2014-04-17 |  |  |  |  |  |  |  |  |  |
| 8220G-1000 |  | Removal of Crash Deck at -34.0mpd |  | 6d | 2013-08-11 A | 2013-08-29 A | 8220G-0120, 8220G-2070 | 100% | 2013-08-27 | 2013-09-02 |  |  |  | NEW | 822_AB_W010 |
| 8220G-1010 |  | Install Geodrain drainage, protective sheet and polymer membrane |  | 4d | 2013-08-29 A | 2013-09-21 A | 8220G-1000 | 100% | 2013-09-02 | 2013-09-05 |  |  |  | NEW | 822_AB_W010 |
| 8220G-1020 |  | Construct permanent concrete lining |  | 18d | 2013-09-21 A | 2013-10-21 A | 8220G-6080 | 100% | 2013-12-11 | 2014-01-03 |  |  |  | NEW | 822_AB_W010 |
| 8220G-6080 |  | Concrete Lining, Junction with EAP Adit |  | 12d | 2013-09-21 A | 2014-01-22 A | 8220G-1010 | 100% | 2013-11-20 | 2013-12-04 |  |  |  | NEW | 822_AB_W010 |
| 8220G-1030 |  | Construct internal walls (-34.0mpd to -27.85mpd) |  | 10d | 2013-12-13 A | 2014-02-14 A | 8220G-1020 | 100% | 2014-01-02 | 2014-01-13 |  |  |  | NEW | 822_AB_W010 |
| 8220F-0130 |  | Construct Above Track Level Slab (-27.85mpd) |  | 10d | 2014-01-11 A | 2014-02-24 A | 8220G-1030 | 100% | 2014-02-13 | 2014-02-25 |  |  |  | NEW | 822_AB_W010 |
| 8220G-1050 |  | Curing and Falsework Removal |  | 12d | 2014-02-25 A | 2014-04-17 A | 8220F-0130 | 100% | 2014-03-01 | 2014-03-14 |  |  |  | NEW | 822_AB_W010 |
|  | 7 | **Shing Mun Shaft Lining** |  |  | 2014-02-19 | 2017-02-10 |  |  |  |  |  |  |  |  |  |
|  | 1 | **Slipform** |  |  | 2014-02-19 | 2017-02-10 |  |  |  |  |  |  |  |  |  |
| 8220F-0100 |  | Assemble Slipform at -27.85 mpd |  | 18d | 2014-02-19 A | 2014-03-20 A | 8220A9820, 8220G-1050 SS | 100% | 2014-03-01 | 2014-03-18 |  |  | Shing Mun 24/7-1 | NEW | 822_AB_W010 |
| 8220G-0300 |  | Testing and Commissioning of Slipform |  | 6d | 2014-02-24 A | 2014-03-20 A | 8220F-0100 | 100% | 2014-04-18 | 2014-04-23 |  |  | Shing Mun 24/7-1 | NEW | 822_AB_W010 |
| 8220F-0520 |  | 1. -27.85mPD to -15.85mPD (12m) |  | 3d | 2014-03-20 A | 2014-05-30 A | 8220G-0300 | 100% | 2014-04-23 | 2014-04-26 |  |  | W7 - 24 Hour - 7 day - No Holiday | NEW | 822_AB_W010 |
| 8220F-0530 |  | 2. -15.85mPD to -3.85mPD (12m) |  | 3d | 2014-05-30 A | 2014-06-01 A | 8220F-0520 | 100% | 2014-06-02 | 2014-06-05 |  |  | W7 - 24 Hour - 7 day - No Holiday | NEW | 822_AB_W010 |
| 8220F-0540 |  | 3. -3.85mPD to +8.15mPD (12m) |  | 3d | 2017-01-02 | 2017-01-05 | 8220F-0530 |  |  |  | -1565.19d | 0d | W7 - 24 Hour - 7 day - No Holiday | NEW |  |
| 8220F-0560 |  | 4. +8.15mPD to +20.15mPD (12m) |  | 3d | 2017-01-05 | 2017-01-08 | 8220F-0540 |  |  |  | -1565.19d | 0d | W7 - 24 Hour - 7 day - No Holiday | NEW |  |
| 8220F-0750 |  | 5. +20.15mPD to +32.15mP (12m) |  | 3d | 2017-01-08 | 2017-01-11 | 8220F-0560 |  |  |  | -1565.19d | 0d | W7 - 24 Hour - 7 day - No Holiday | NEW |  |
| 8220F-0570 |  | 6. +32.15mPD to +44.15mPD (12m) |  | 3d | 2017-01-11 | 2017-01-14 | 8220F-0750 |  |  |  | -1565.19d | 0d | W7 - 24 Hour - 7 day - No Holiday | NEW |  |
| 8220F-0710 |  | 7. +44.15mPD to +57.15mPD (13m) |  | 3.5d | 2017-01-14 | 2017-01-17 | 8220F-0570 |  |  |  | -1565.19d | 0d | W7 - 24 Hour - 7 day - No Holiday | NEW |  |
| 8220F-1040 |  | Disassemble and De-mobilise Slipform |  | 24d | 2017-01-17 | 2017-02-10 | 8220F-0710 |  |  |  | -1526.5d | 0d | Shing Mun 24/7-1 | NEW |  |

| ID | WBS | Activity | Duration | Start | Finish | Predecessors | Total float | Free float | Calendar | Stef Temp A1 |
| --- | --- | --- | --- | --- | --- | --- | --- | --- | --- | --- |
|  | 9 | **Shing Mun Shaft Structure** |  | 2017-02-10 | 2017-08-29 |  |  |  |  |  |
| 8220F-0140 |  | Install pre-cast stairs/precast non structural walls | 54d | 2017-02-10 | 2017-04-05 | 8220F-1040 | -1526.5d | 0d | Shing Mun 24/7-1 | NEW |
| 8220F-0150 |  | Remove Scaffold | 10d | 2017-04-05 | 2017-04-15 | 8220F-0140 | -1526.5d | 0d | Shing Mun 24/7-1 | NEW |
| 8220F-0210 |  | Cast insitu FW and GW tanks in Shaft | 38d | 2017-07-16 | 2017-08-23 | 8220G-5820 | -1512.5d | 14d | Shing Mun 24/7-1 | NEW |
| 8220G-5830 |  | Dismantle Remainder of Noise Enclosure | 12d | 2017-08-17 | 2017-08-29 | 8220G-6130, 8220G-1210 | -837.5d | 222.18d | Shing Mun 24/7-1 | NEW |
|  | 8 | **Ventilation Building No.5** |  | 2013-01-24 | 2017-12-21 |  |  |  |  |  |
|  | 5 | **VB5 Sub-Structure Gridline D-F** |  | 2017-04-15 | 2017-06-28 |  |  |  |  |  |
| 8220G-5680 |  | L4 Complete Base Slab +58.5mPD | 8d | 2017-04-15 | 2017-04-23 | 8220F-0150 | -1526.5d | 0d | Shing Mun 24/7-1 | NEW |
| 8220G-5690 |  | L4 Complete Walls and Raking Columns (Gridline E) | 8d | 2017-04-23 | 2017-05-01 | 8220G-5680 | -1526.5d | 0d | Shing Mun 24/7-1 | NEW |
| 8220G-6030 |  | L3 Suspended Slab +63.90mPD (GridlineD-F) | 8d | 2017-05-01 | 2017-05-09 | 8220G-5690 | -1526.5d | 0d | Shing Mun 24/7-1 | NEW |
| 8220G-5720 |  | L3 Construct External Wall to L2 (GridlineD-F) | 10d | 2017-05-05 | 2017-05-15 | 8220G-6030 FS-4d | -1526.5d | 0d | Shing Mun 24/7-1 | NEW |
| 8220G-5740 |  | L2 Suspended Slab +70.50mPD (GridlineD-F) | 10d | 2017-05-15 | 2017-05-25 | 8220G-5720 | -1526.5d | 0d | Shing Mun 24/7-1 | NEW |
| 8220G-6040 |  | L2 Construct External Wall to L1 (GridlineD-F) | 10d | 2017-05-21 | 2017-05-31 | 8220G-5740 FS-4d | -1526.5d | 0d | Shing Mun 24/7-1 | NEW |
| 8220G-5730 |  | L2 Internal Walls and Beams (GridlineD-F) | 10d | 2017-05-31 | 2017-06-10 | 8220G-6040 | -1526.5d | 0d | Shing Mun 24/7-1 | NEW |
| 8220G-5770 |  | L1 Suspended Slab +77.70mPD (GridlineD-F) | 10d | 2017-06-06 | 2017-06-16 | 8220G-5730 FS-4d | -1526.5d | 0d | Shing Mun 24/7-1 | NEW |
| 8220G-5790 |  | L1 Internal Walls and Beams (GridlineD-F) | 10d | 2017-06-12 | 2017-06-22 | 8220G-5770 FS-4d | -1526.5d | 0d | Shing Mun 24/7-1 | NEW |
| 8220G-5750 |  | L1 Construct External Wall to GF (GridlineD-F) | 10d | 2017-06-18 | 2017-06-28 | 8220G-5790 FS-4d | -1526.5d | 0d | Shing Mun 24/7-1 | NEW |
|  | 1 | **Strutting Removal Gridline D-F** |  | 2017-04-23 | 2017-05-23 |  |  |  |  |  |
| 8220G-5950 |  | Remove Level 5 Strutting at +71.5mPD (Gridline A-D) | 6d | 2017-04-23 | 2017-04-29 | 8220G-5680 | -1494.5d | 0d | Shing Mun 24/7-1 | NEW |
| 8220G-5960 |  | Remove Level 4 Strutting at +75.0mPD (Gridline A-D) | 6d | 2017-04-29 | 2017-05-05 | 8220G-5950 | -1494.5d | 0d | Shing Mun 24/7-1 | NEW |
| 8220G-5970 |  | Remove Level 3 Strutting at +78.7mPD (Gridline A-D) | 6d | 2017-05-05 | 2017-05-11 | 8220G-5960 | -1494.5d | 0d | Shing Mun 24/7-1 | NEW |
| 8220G-5980 |  | Remove Level 2 Strutting at +82.2mPD (Gridline A-D) | 6d | 2017-05-11 | 2017-05-17 | 8220G-5970 | -1494.5d | 0d | Shing Mun 24/7-1 | NEW |
| 8220G-5990 |  | Remove Level 1 Strutting at +85.5mPD (Gridline A-D) | 6d | 2017-05-17 | 2017-05-23 | 8220G-5980 | -1494.5d | 32d | Shing Mun 24/7-1 | NEW |
|  | 6 | **VB5 Super-Structure Gridline D-F** |  | 2017-06-24 | 2017-09-06 |  |  |  |  |  |
| 8220G-5800 |  | Ground Floor Suspended Slab +86.70mPD (GridlineD-F) | 10d | 2017-06-24 | 2017-07-04 | 8220G-5990, 8220G-5750 FS-4d | -1526.5d | 0d | Shing Mun 24/7-1 | NEW |
| 8220G-5810 |  | Ground Floor Walls and Beams (GridlineD-F) | 10d | 2017-06-30 | 2017-07-10 | 8220G-5800 FS-4d | -1526.5d | 0d | Shing Mun 24/7-1 | NEW |
| 8220G-5820 |  | U1 Suspended Slab +93.90mPD (GridlineD-F) | 10d | 2017-07-06 | 2017-07-16 | 8220G-5810 FS-4d | -1526.5d | 0d | Shing Mun 24/7-1 | NEW |
| 8220G-6130 |  | Remove Noise Enclosure Roof Panels (Gridline C-F) and Gantry | 12d | 2017-07-16 | 2017-07-28 | 8220G-5820 | -1526.5d | 0d | Shing Mun 24/7-1 | NEW |
| 8220G-1190 |  | U1 Walls and Beams (Gridline C-F) | 10d | 2017-07-28 | 2017-08-07 | 8220G-6130 | -1526.5d | 0d | Shing Mun 24/7-1 | NEW |
| 8220G-1210 |  | Lower Roof Level Suspended Slabs +100.35mPD (Gridline C-F) | 10d | 2017-08-07 | 2017-08-17 | 8220G-1190 | -1526.5d | 0d | Shing Mun 24/7-1 | NEW |
| 8220G-1220 |  | U2 Walls (Gridline C-F) | 10d | 2017-08-17 | 2017-08-27 | 8220G-1210 | -1526.5d | 0d | Shing Mun 24/7-1 | NEW |
| 8220G-0230 |  | Upper Roof Suspended Slab 107.7mPD (Gridline D-F) | 10d | 2017-08-27 | 2017-09-06 | 8220G-1210 FF, 8220G-1220, 8220F-0210 FF | -1526.5d | 0d | Shing Mun 24/7-1 | NEW |

| ID | WBS | Activity | Duration | Start | Finish | Predecessors | Complete | Planned start | Planned finish | Total float | Free float | Calendar | Stef Temp A1 | 822_AB_W010 |
| --- | --- | --- | --- | --- | --- | --- | --- | --- | --- | --- | --- | --- | --- | --- |
|  | 1 | **VB5 Sub-Structure Gridline A-D** |  | 2013-01-24 | 2014-06-01 |  |  |  |  |  |  |  |  |  |
| 8220G-3000 |  | L4 base slab +58.5mPD (Partial) | 10d | 2013-01-24 A | 2013-04-24 A | 8220G-5650 | 100% | 2013-04-13 | 2013-04-23 |  |  | Shing Mun 24/7-1 | NEW | 822_AB_W010 |
| 8220G-5650 |  | Install Protection Measures at Gridline D | 26d | 2013-01-24 A | 2013-02-27 A | 8220G-5160 | 100% | 2013-03-17 | 2013-04-13 |  |  | Shing Mun 24/7-1 | NEW | 822_AB_W010 |
| 8220G-0140 |  | L3 Base Slab +63.90mPD (Gridline A-D) | 12d | 2013-03-21 A | 2013-11-21 A | 8220G-5660 | 100% | 2013-05-26 | 2013-06-06 |  |  | Shing Mun 24/7-1 | NEW | 822_AB_W010 |
| 8220G-5660 |  | L4 to L3 External Wall (Gridline A-D) | 12d | 2013-04-17 A | 2013-06-29 A | 8220G-1090 | 100% | 2013-05-14 | 2013-05-25 |  |  | Shing Mun 24/7-1 | NEW | 822_AB_W010 |
| 8220G-5460 |  | L3 Construct External Wall to L2 (Gridline A-D) | 10d | 2013-05-10 A | 2013-12-16 A | 8220G-0140 | 100% | 2013-06-13 | 2013-06-22 |  |  | Shing Mun 24/7-1 | NEW | 822_AB_W010 |
| 8220G-1090 |  | L4 Construct Raking Columns/ Walls/beams | 12d | 2013-09-18 A | 2013-11-21 A | 8220G-3000 | 100% | 2013-09-18 | 2013-09-30 |  |  | Shing Mun 24/7-1 | NEW | 822_AB_W010 |
| 8220G-1110 |  | L3 Internal Wall and Beams (Gridline A-D) | 18d | 2013-09-28 A | 2013-12-19 A | 8220G-5460 | 100% | 2013-09-28 | 2013-10-17 |  |  | Shing Mun 24/7-1 | NEW | 822_AB_W010 |
| 8220G-0150 |  | L2 Suspended Slab +70.50mPD (Gridline A-D) | 18d | 2013-10-20 A | 2014-01-02 A | 8220G-1110 FS-3d | 100% | 2013-10-20 | 2013-11-07 |  |  | Shing Mun 24/7-1 | 3MRP | 822_AB_W010 |
| 8220G-5470 |  | L2 Construct External Wall to L1 (Gridline A-D) | 18d | 2013-12-17 A | 2014-02-28 A | 8220G-0150 FS-3d | 100% | 2014-01-02 | 2014-01-19 |  |  | Shing Mun 24/7-1 | 3MRP | 822_AB_W010 |
| 8220G-5480 |  | L2 Internal Wall and Beams (Gridline A-D)+Additional Suspended Slabs | 24d | 2014-01-13 A | 2014-06-01 A | 8220G-5470 FS-3d | 100% | 2014-02-16 | 2014-03-12 |  |  | Shing Mun 24/7-1 | 3MRP | 822_AB_W010 |
| 8220G-0170 |  | L1 Suspended Slab +77.70mPD (Gridline A-D) | 18d | 2014-02-08 A | 2014-02-28 A | 8220G-5480 FS-3d | 100% | 2014-02-13 | 2014-03-03 |  |  | Shing Mun 24/7-1 | 3MRP | 822_AB_W010 |
| 8220G-1150 |  | L1 Internal Walls and Beams (Gridline A-D)+Additional Suspended Slabs | 24d | 2014-03-01 A | 2014-06-01 A | 8220G-5490 FS-3d | 100% | 2014-04-17 | 2014-05-11 |  |  | Shing Mun 24/7-1 | 3MRP | 822_AB_W010 |
| 8220G-5490 |  | L1 Construct External Wall to GF (Gridline A-D) | 18d | 2014-03-01 A | 2014-05-26 A | 8220G-0170 FS-3d | 100% | 2014-04-01 | 2014-04-19 |  |  | Shing Mun 24/7-1 | 3MRP | 822_AB_W010 |
|  | 1 | **Strutting Removal Gridline A-D** |  | 2013-05-07 | 2014-05-14 |  |  |  |  |  |  |  |  |  |
| 8220G-5860 |  | Remove Level 7 Strutting at +64.5mPD (Gridline A-D) | 6d | 2013-05-07 A | 2013-05-10 A | 8220G-0140 | 100% | 2013-07-12 | 2013-07-17 |  |  | Shing Mun 24/7-1 | NEW | 822_AB_W010 |
| 8220G-5870 |  | Remove Level 6 Strutting at +68.0mPD (Gridline A-D) | 6d | 2013-09-25 A | 2013-10-04 A | 8220G-5860 | 100% | 2013-11-01 | 2013-11-06 |  |  | Shing Mun 24/7-1 | NEW | 822_AB_W010 |
| 8220G-5880 |  | Remove Level 5 Strutting at +71.5mPD (Gridline A-D) | 6d | 2014-01-06 A | 2014-01-10 A | 8220G-1110, 8220G-5870 | 100% | 2014-02-02 | 2014-02-07 |  |  | Shing Mun 24/7-1 | 3MRP | 822_AB_W010 |
| 8220G-5890 |  | Remove Level 4 Strutting at +78.7mPD (Gridline A-D) | 6d | 2014-01-16 A | 2014-05-14 A | 8220G-5880 | 100% | 2014-02-08 | 2014-02-13 |  |  | Shing Mun 24/7-1 | 3MRP | 822_AB_W010 |
| 8220G-5900 |  | Remove Level 3 Strutting at +81.2mPD (Gridline A-D) | 6d | 2014-03-01 A | 2014-03-08 A | 8220G-5480, 8220G-5890 | 100% | 2014-03-06 | 2014-03-12 |  |  | Shing Mun 24/7-1 | 3MRP | 822_AB_W010 |
| 8220G-5910 |  | Remove Level 2 Strutting at +84.0mPD (Gridline A-D) | 6d | 2014-03-31 A | 2014-04-07 A | 8220G-5900 | 100% | 2014-04-08 | 2014-04-13 |  |  | Shing Mun 24/7-1 | 3MRP | 822_AB_W010 |
| 8220G-5920 |  | Remove Level 1 Strutting at +88.0mPD (Gridline A-D) | 6d | 2014-04-07 A | 2014-05-09 A | 8220G-5910, 8220G-5490 | 100% | 2014-05-14 | 2014-05-20 |  |  | Shing Mun 24/7-1 | 3MRP | 822_AB_W010 |
|  | 2 | **VB5 Super-Structure Gridline A-D** |  | 2014-05-20 | 2017-04-09 |  |  |  |  |  |  |  |  |  |
| 8220G-0180 |  | Ground Floor Double Suspended Slab/Cable Trench +86.70mPD (Gridline A-D) | 28d | 2014-05-20 A | 2014-06-01 A | 8220G-1150 FS-3d | 100% | 2014-06-03 | 2014-07-02 |  |  | Shing Mun 24/7-1 | NEW | 822_AB_W010 |
| 8220G-1170 |  | Ground Floor External Walls to U1 (Gridline A-D) | 18d | 2017-01-02 | 2017-01-19 | 8220G-0180 FS-3d |  |  |  | -1394d | 0d | Shing Mun 24/7-1 | NEW |  |
| 8220G-6010 |  | Ground Floor FS Tank and Sprinkler Tanks | 12d | 2017-01-02 | 2017-01-13 | 8220G-0180 |  |  |  | -1368d | 26d | Shing Mun 24/7-1 | NEW |  |
| 8220G-5840 |  | Ground Floor Internal Walls and Beams (Gridline A-D)+Additional Suspended Slabs | 28d | 2017-01-16 | 2017-02-12 | 8220G-1170 FS-4d |  |  |  | -1394d | 0d | Shing Mun 24/7-1 | NEW |  |
| 8220G-0210 |  | U1 Suspended Slab +93.90mPD (Gridline A-D) | 18d | 2017-02-09 | 2017-02-26 | 8220G-5840 FS-4d, 8220G-6010 |  |  |  | -1394d | 0d | Shing Mun 24/7-1 | NEW |  |
| 8220G-6100 |  | Removal of roof panels Gl A-C | 12d | 2017-02-27 | 2017-03-10 | 8220G-0210 |  |  |  | -1394d | 0d | Shing Mun 24/7-1 | NEW |  |
| 8220G-6110 |  | U1 Walls and Beams (Gridline A-C) | 18d | 2017-03-11 | 2017-03-28 | 8220G-6100 |  |  |  | -1394d | 0d | Shing Mun 24/7-1 | NEW |  |
| 8220G-6120 |  | Lower Roof Level Suspended Slabs +100.35mPD (Gridline A-C) | 18d | 2017-03-23 | 2017-04-09 | 8220G-6110 FS-6d |  |  |  | -1394d | 0d | Shing Mun 24/7-1 | NEW |  |

| ID | WBS | Activity | Duration | Start | Finish | Predecessors | Total float | Free float | Calendar | Stef Temp A1 |
| --- | --- | --- | --- | --- | --- | --- | --- | --- | --- | --- |
|  | 7 | **VB5 ABWF Works Gridline D-F** |  | 2017-08-17 | 2017-09-10 |  |  |  |  |  |
| 8220G-1400 |  | Complete ABWF to Degree 1 at U1 | 10d | 2017-08-17 | 2017-08-27 | 8220G-1530 FF, 8220G-1210 | -1516.5d | 10d | Shing Mun 24/7-1 | NEW |
| 8220G-1470 |  | Complete ABWF to Degree 1 at U2 | 4d | 2017-09-06 | 2017-09-10 | 8220G-0230, 8220G-5630 FF | -1526.5d | 0d | Shing Mun 24/7-1 | NEW |
| 8220G-5630 |  | Complete ABWF to Degree 1 Lift Machine Room | 4d | 2017-09-06 | 2017-09-10 | 8220G-0230, 8220G-1400 | -1526.5d | 0d | Shing Mun 24/7-1 | NEW |
| 8220G-6000 |  | Complete ABWF to Degree 1 Stair Pressure Fan Room x 2 | 4d | 2017-09-06 | 2017-09-10 | 8220G-0230, 8220G-1470 FF | -1526.5d | 0d | Shing Mun 24/7-1 | NEW |
|  | 3 | **VB5 ABWF Works Gridline A-D** |  | 2017-01-02 | 2017-10-20 |  |  |  |  |  |
|  | 3 | **Level L4** |  |  |  |  |  |  |  |  |
|  | 1 | **Non Plant Room/Common Area** |  |  |  |  |  |  |  |  |
|  | 4 | **Level L3** |  | 2017-01-02 | 2017-02-15 |  |  |  |  |  |
|  | 1 | **Non Plant Room/Common Area** |  | 2017-01-02 | 2017-02-15 |  |  |  |  |  |
| 8220G-0640 |  | ABWF to Degree 1 at L3 (Gridline A-D) | 45d | 2017-01-02 | 2017-02-15 | 8220G-0150 | -1351.94d | 0d | Shing Mun 24/7-1 | NEW |
|  | 5 | **Level L2** |  | 2017-01-02 | 2017-02-15 |  |  |  |  |  |
|  | 2 | **Major Plant Rooms** |  | 2017-01-02 | 2017-01-25 |  |  |  |  |  |
| 8220G-5520 |  | Complete ABWF to Degree 1 to TVF Rooms 1 & 2 | 12d | 2017-01-02 | 2017-01-13 | 8220G-0170 | -1330.94d | 0d | Shing Mun 24/7-1 | NEW |
| 8220G-5530 |  | Complete ABWF to Degree 1 to Telecom Equipment Room | 12d | 2017-01-14 | 2017-01-25 | 8220G-5520 | -1330.94d | 21d | Shing Mun 24/7-1 | NEW |
|  | 1 | **Non Plant Room/Common Area** |  | 2017-01-02 | 2017-02-15 |  |  |  |  |  |
| 8220G-1610 |  | ABWF to Degree 1 at L2 (Gridline A-D) | 45d | 2017-01-02 | 2017-02-15 | 8220G-0170, 8220G-0640 FF, 8220G-5530 FF | -1351.94d | 0d | Shing Mun 24/7-1 | NEW |
|  | 6 | **Level L1** |  | 2017-01-02 | 2017-02-15 |  |  |  |  |  |
|  | 2 | **Major Plant Rooms** |  | 2017-01-02 | 2017-01-25 |  |  |  |  |  |
| 8220G-5550 |  | Complete ABWF to Degree 1 to TVF Rooms 3 & 4 | 12d | 2017-01-02 | 2017-01-13 | 8220G-0180 | -1330.94d | 0d | Shing Mun 24/7-1 | NEW |
| 8220G-5560 |  | Complete ABWF to Degree 1 to LV Switch Rooms 1 & 2 | 12d | 2017-01-14 | 2017-01-25 | 8220G-5550 | -1330.94d | 21d | Shing Mun 24/7-1 | NEW |
|  | 1 | **Non Plant Room/Common Area** |  | 2017-01-02 | 2017-02-15 |  |  |  |  |  |
| 8220G-1560 |  | ABWF to Degree 1 at L1 (Gridline A-D) | 45d | 2017-01-02 | 2017-02-15 | 8220G-0180, 8220G-1610 FF, 8220G-5560 FF | -1351.94d | 41d | Shing Mun 24/7-1 | NEW |
|  | 7 | **GF Level** |  | 2017-02-27 | 2017-03-28 |  |  |  |  |  |
|  | 2 | **Major Plant Rooms** |  | 2017-02-27 | 2017-03-25 |  |  |  |  |  |
| 8220G-5580 |  | Complete ABWF to Degree 1 to Trackside Section Cable Room | 12d | 2017-03-14 | 2017-03-25 | 8220G-6450, 8220G-6520 | -1389.94d | 3d | Shing Mun 24/7-1 | NEW |

| ID | WBS | Activity | Duration | Start | Finish | Predecessors | Total float | Free float | Calendar | Stef Temp A1 |
| --- | --- | --- | --- | --- | --- | --- | --- | --- | --- | --- |
|  | 1 | **CLP Transformer Room A** |  | 2017-02-27 | 2017-03-10 |  |  |  |  |  |
| 8220G-6390 |  | Tx Rm A - Internal Render Prior Perm Door | 3d | 2017-02-27 | 2017-03-01 | 8220G-0210 | -1389.94d | 0d | Shing Mun 24/7-1 | NEW |
| 8220G-6400 |  | Tx Rm A - Metal Frames Cable Trench | 1d | 2017-03-02 | 2017-03-02 | 8220G-6390 | -1386.94d | 0d | Shing Mun 24/7-1 | NEW |
| 8220G-6410 |  | Tx Rm A - Floor Screed | 2d | 2017-03-03 | 2017-03-04 | 8220G-6400 | -1386.94d | 0d | Shing Mun 24/7-1 | NEW |
| 8220G-6420 |  | Tx Rm A - Perm Door Frames | 1d | 2017-03-05 | 2017-03-05 | 8220G-6410 | -1386.94d | 0d | Shing Mun 24/7-1 | NEW |
| 8220G-6430 |  | Tx Rm A - Internal Render Final | 1d | 2017-03-06 | 2017-03-06 | 8220G-6420 | -1386.94d | 0d | Shing Mun 24/7-1 | NEW |
| 8220G-6440 |  | Tx Rm A - Install Wall Tiles | 2d | 2017-03-07 | 2017-03-08 | 8220G-6430 | -1386.94d | 0d | Shing Mun 24/7-1 | NEW |
| 8220G-6450 |  | Tx Rm A - Paint Walls,Soffit Excl Final | 2d | 2017-03-09 | 2017-03-10 | 8220G-6440 | -1386.94d | 3d | Shing Mun 24/7-1 | NEW |
|  | 2 | **CLP Transformer Room B** |  | 2017-03-02 | 2017-03-13 |  |  |  |  |  |
| 8220G-6460 |  | Tx Rm B - Internal Render Prior Perm Door | 3d | 2017-03-02 | 2017-03-04 | 8220G-0210, 8220G-6390 | -1389.94d | 0d | Shing Mun 24/7-1 | NEW |
| 8220G-6470 |  | Tx Rm B - Metal Frames Cable Trench | 1d | 2017-03-05 | 2017-03-05 | 8220G-6460 | -1389.94d | 0d | Shing Mun 24/7-1 | NEW |
| 8220G-6480 |  | Tx Rm B - Floor Screed | 2d | 2017-03-06 | 2017-03-07 | 8220G-6470 | -1389.94d | 0d | Shing Mun 24/7-1 | NEW |
| 8220G-6490 |  | Tx Rm B - Perm Door Frames | 1d | 2017-03-08 | 2017-03-08 | 8220G-6480 | -1389.94d | 0d | Shing Mun 24/7-1 | NEW |
| 8220G-6500 |  | Tx Rm B - Internal Render Final | 1d | 2017-03-09 | 2017-03-09 | 8220G-6490 | -1389.94d | 0d | Shing Mun 24/7-1 | NEW |
| 8220G-6510 |  | Tx Rm B - Install Wall Tiles | 2d | 2017-03-10 | 2017-03-11 | 8220G-6500 | -1389.94d | 0d | Shing Mun 24/7-1 | NEW |
| 8220G-6520 |  | Tx Rm B - Paint Walls,Soffit Excl Final | 2d | 2017-03-12 | 2017-03-13 | 8220G-6510 | -1389.94d | 0d | Shing Mun 24/7-1 | NEW |
|  | 1 | **Non Plant Room/Common Area** |  | 2017-02-27 | 2017-03-28 |  |  |  |  |  |
| 8220G-1530 |  | ABWF to Degree 1 at GF (Gridline A-D) | 30d | 2017-02-27 | 2017-03-28 | 8220G-0210, 8220G-1560 FF, 8220G-5580 FF | -1392.94d | 0d | Shing Mun 24/7-1 | NEW |
|  | 8 | **U1 Level** |  | 2017-04-10 | 2017-04-29 |  |  |  |  |  |
|  | 2 | **Major Plant Rooms** |  | 2017-04-10 | 2017-04-27 |  |  |  |  |  |
| 8220G-5590 |  | Complete ABWF to Degree 1 to Tunnel ECS Room 1 & 2 | 10d | 2017-04-10 | 2017-04-19 | 8220G-6120 | -1391d | 0d | Shing Mun 24/7-1 | NEW |
| 8220G-5600 |  | Complete ABWF to Degree 1 to LS Electical Room | 10d | 2017-04-14 | 2017-04-23 | 8220G-5590 FS-6d | -1387d | 139.5d | Shing Mun 24/7-1 | NEW |
| 8220G-5610 |  | Complete ABWF to Degree 1 to LV Switch Room | 10d | 2017-04-14 | 2017-04-23 | 8220G-5590 FS-6d | -1391d | 0d | Shing Mun 24/7-1 | NEW |
| 8220G-5620 |  | Complete ABWF to Degree 1 to UPS Room | 10d | 2017-04-18 | 2017-04-27 | 8220G-5610 FS-6d | -1391d | 135.5d | Shing Mun 24/7-1 | NEW |
| 8220G-5640 |  | Complete ABWF to Degree 1 to Signal Equipment Room | 10d | 2017-04-18 | 2017-04-27 | 8220G-5610 FS-6d | -1391d | 135.5d | Shing Mun 24/7-1 | NEW |

| ID | WBS | Activity | Type | Duration | Start | Finish | Predecessors | Total float | Free float | Constraint | Calendar | Stef Temp A1 |
| --- | --- | --- | --- | --- | --- | --- | --- | --- | --- | --- | --- | --- |
|  | 1 | **Non Plant Room/Common Area** |  |  | 2017-04-10 | 2017-04-29 |  |  |  |  |  |  |
| 8220G-6070 |  | ABWF to Degree 1 at U1 (Gridline A-D) |  | 20d | 2017-04-10 | 2017-04-29 | 8220G-6120 | -1394d | 0d |  | Shing Mun 24/7-1 | NEW |
|  | 9 | **U2 Level** |  |  |  |  |  |  |  |  |  |  |
|  | 1 | **Non Plant Room/Common Area** |  |  |  |  |  |  |  |  |  |  |
|  | 2 | **Hand Over Dates to Designated Contractors** |  |  | 2017-03-28 | 2017-10-20 |  |  |  |  |  |  |
| 8220G-5850 |  | Complete ABWF to Degree 2 all Level L4 to GF Gridline A-D |  | 81d | 2017-03-28 | 2017-06-30 | 8220G-1530 | -1192.83d | 0d |  |  | NEW |
| 8220G1800 |  | C846 - Trackside Auxiliaries (28 Sept 13) (VB5) | milestone | 0d | 2017-04-29 | 2017-04-29 | 8220G1870 | -1095.83d | 0d |  |  | NEW |
| 8220G1820 |  | C843 - Tunnel Environmental Control System (28 Sept 13) (L1 and L2 Level TVR & U1 ECS) | milestone | 0d | 2017-04-29 | 2017-04-29 | 8220G1870 | -1095.83d | 0d |  |  | NEW |
| 8220G1830 |  | C844 - Power by CLP (28 Sept 13) (U1, GF, L1 - UPS, LVER, LVSR, TX & TSLV) | milestone | 0d | 2017-04-29 | 2017-04-29 | 8220G1870 | -1095.83d | 0d |  |  | NEW |
| 8220G1840 |  | C845 - Power Supply System (28 Sept 13) (U1 & GF - LVER, LVSR & TX) | milestone | 0d | 2017-04-29 | 2017-04-29 | 8220G1870 | -1095.83d | 0d |  |  | NEW |
| 8220G1860 |  | C830 - Permanent Way and OHL (28 Sept 13) (TSCR @ GF) | milestone | 0d | 2017-04-29 | 2017-04-29 | 8220G1870 FF | -1095.83d | 0d |  |  | NEW |
| 8220G1870 |  | C855 - Building Services Earliest Commencement Date (Gridline A-D L2 to U1) | milestone | 0d | 2017-04-29 | 2017-04-29 | 8220G-6070 | -1194.83d | 0d |  |  | NEW |
| 8220G-1770 |  | Complete ABWF to Degree 3 all Levels |  | 96d | 2017-06-30 | 2017-10-20 | 8220G1870, 8220G-5850 | -1192.83d | 0d |  |  | NEW |
| 8220G1880 |  | C855 - Building Services Earliest Shaft Commencement Date (GF-L4 to EAP Basement) | milestone | 0d | 2017-07-04 | 2017-07-04 | 8220G-5800 | -1231.44d | 0d |  |  | NEW |
| 8220G-6090 |  | Complete ABWF to Degree 2 all Level L4 to GF Gridline D-F |  | 80d | 2017-07-04 | 2017-10-05 | 8220G1880 | -1231.44d | 0d |  |  | NEW |
| 8220G1850 |  | C847 - Lifts (28 Sept 13) (Shaft and U1- LMR) | milestone | 0d | 2017-09-11 | 2017-09-11 | 8220G-5630 | -1210d | 0d |  |  | NEW |
|  | 8 | **External Works** |  |  | 2017-08-17 | 2017-12-21 |  |  |  |  |  |  |
|  | 1 | **External ABWF Works** |  |  | 2017-08-17 | 2017-12-21 |  |  |  |  |  |  |
|  | 1 | **External Facade** |  |  | 2017-08-17 | 2017-12-01 |  |  |  |  |  |  |
| 8220D-5930 |  | VB5 - Erect external scaffolding for Facade |  | 12d | 2017-08-17 | 2017-08-31 | 8220G-1210 | -1218.44d | 0d | as late as possible |  | NEW |
| 8220D-5940 |  | VB5 - Install External Louvers |  | 12d | 2017-08-31 | 2017-09-14 | 8220D-5930 | -1218.44d | 0d |  |  | NEW |
| 8220D-5950 |  | VB5 - External Rendering |  | 12d | 2017-09-14 | 2017-09-28 | 8220D-5940 | -1218.44d | 0d |  |  | NEW |
| 8220D-5960 |  | VB5 - External Tiling |  | 12d | 2017-09-28 | 2017-10-12 | 8220D-5950 | -1218.44d | 0d |  |  | NEW |
| 8220D-5970 |  | VB5 - External Painting |  | 12d | 2017-10-12 | 2017-10-26 | 8220D-5960 | -1218.44d | 0d |  |  | NEW |
| 8220D-5980 |  | VB5 - Install External Aluminium Vertical Fins |  | 21d | 2017-10-26 | 2017-11-20 | 8220D-5970 | -1218.44d | 0d |  |  | NEW |
| 8220D-6760 |  | VB5 - Dismantal and Remove External Scaffolding |  | 10d | 2017-11-20 | 2017-12-01 | 8220D-5980 | -800.44d | 17d |  |  | NEW |

| ID | WBS | Activity | Type | Duration | Start | Finish | Predecessors | Total float | Free float | Calendar | Stef Temp A1 |
| --- | --- | --- | --- | --- | --- | --- | --- | --- | --- | --- | --- |
|  | 2 | **Roofing Works** |  |  | 2017-08-28 | 2017-11-13 |  |  |  |  |  |
| 8220D-5990 |  | VB5 - Mobilisation for roofing works |  | 10d | 2017-08-28 | 2017-09-07 | 8220D-6070 FS-10d | -1213d | 0d |  | NEW |
| 8220D-6070 |  | VB5 - Building Weathertight | milestone | 0d | 2017-09-06 | 2017-09-06 | 8220G-0230 | -1446.5d | 0.5d | M | NEW |
| 8220D-6000 |  | VB5 - Roof Leveling Screed |  | 6d | 2017-09-08 | 2017-09-14 | 8220D-5990 | -1213d | 0d |  | NEW |
| 8220D-6010 |  | VB5 - Apply Waterproof Membrane |  | 6d | 2017-09-15 | 2017-09-21 | 8220D-6000 | -1213d | 0d |  | NEW |
| 8220D-6020 |  | VB5 - Apply Insulation Board |  | 3d | 2017-09-22 | 2017-09-25 | 8220D-6010 | -1213d | 0d |  | NEW |
| 8220D-6030 |  | VB5 - Top Screed |  | 3d | 2017-09-26 | 2017-09-28 | 8220D-6020 | -1213d | 0d |  | NEW |
| 8220D-6040 |  | VB5 - Concrete Pavers/Roof Tiles |  | 3d | 2017-09-29 | 2017-10-02 | 8220D-6030 | -1213d | 0d |  | NEW |
| 8220D-6050 |  | VB5 - Install Green Roof for VB5 |  | 36d | 2017-10-03 | 2017-11-13 | 8220D-6040, 8220A-5585 | -1213d | 5.44d |  | NEW |
|  | 4 | **Landscaping Works** |  |  | 2017-10-12 | 2017-12-21 |  |  |  |  |  |
| 8220D-6060 |  | VB5 - Hard and Soft Landscaping (Turfing 258m² + Paving 192m² + Shrubs) |  | 60d | 2017-10-12 | 2017-12-21 | 8220D-5960, 8220D-6760 FF, 8220D-6180 | -817.44d | 0d |  | NEW |
|  | 9 | **Roadworks and Drainage** |  |  | 2017-01-02 | 2017-06-27 |  |  |  |  |  |
|  | 3 | **Roads and Drainage** |  |  | 2017-01-02 | 2017-06-27 |  |  |  |  |  |
|  | 1 | **Storm Water System** |  |  | 2017-01-02 | 2017-04-11 |  |  |  |  |  |
| 8220D-6080 |  | VB5 - Storm Drainage along Chung Shan Estate Rd (113m x 225dia+4 manholes) |  | 74d | 2017-01-02 | 2017-03-28 | 8220A-3190, 8220G-0180 | -1245d | 0d |  | NEW |
| 8220D-6770 |  | VB5 - Storm Drainage inside site boundary (120m x 225dia+2 manholes) |  | 12d | 2017-03-29 | 2017-04-11 | 8220D-6080 | -1245d | 0d |  | NEW |
|  | 2 | **Foul Water System** |  |  | 2017-04-12 | 2017-05-09 |  |  |  |  |  |
| 8220D-6100 |  | VB5 - Foul Drain and Manhole within Site Boundary (5m + 2 manholes) |  | 12d | 2017-04-12 | 2017-04-25 | 8220D-6770 | -1245d | 0d |  | NEW |
| 8220D-6780 |  | VB5 - Foul Drain Connection to FD901(18m) |  | 12d | 2017-04-26 | 2017-05-09 | 8220D-6100 | -624d | 285.51d |  | NEW |
|  | 3 | **Roadworks and Paving** |  |  | 2017-04-26 | 2017-06-27 |  |  |  |  |  |
| 8220D-6180 |  | VB5 - Kerbing and Paving (135m and 347m²) |  | 36d | 2017-04-26 | 2017-06-06 | 8220D-6770, 8220D-6100 | -1245d | 0d |  | NEW |
| 8220D-6790 |  | VB5 - Fencing, Railings & Signage (176m + 15nr) |  | 18d | 2017-06-07 | 2017-06-27 | 8220D-6180 | -1245d | 0d |  | NEW |
|  | 4 | **External Services** |  |  | 2017-02-27 | 2017-05-06 |  |  |  |  |  |
| 8220D-6140 |  | VB5 - Salt Water Mains along Chung Shan Estate Rd (50m) |  | 36d | 2017-02-27 | 2017-04-08 | 8220G-0210 | -894d | 0d |  | NEW |
| 8220D-6120 |  | VB5 - Power Draw Pit & Duct / Earth Mat (65m+4 Pits) |  | 18d | 2017-03-20 | 2017-04-08 | 8220D-6140 SS+18d | -841d | 0d |  | NEW |
| 8220D-6800 |  | VB5 - Fresh Water Mains along Chung Shan Estate Rd Connect to FW901 |  | 12d | 2017-04-10 | 2017-04-22 | 8220D-6140 | -894d | 0d |  | NEW |
| 8220D-6810 |  | VB5 - Salt Water Mains within site boundary (16m) |  | 6d | 2017-04-10 | 2017-04-15 | 8220D-6140 | -604d | 305.51d |  | NEW |
| 8220D-6820 |  | VB5 - Fresh Water Mains within site boundary |  | 12d | 2017-04-24 | 2017-05-06 | 8220D-6800 | -894d | 0d |  | NEW |

Notes:
- 8220D-6050: P3 Activity Log Info: ????????14nr??
- 8220D-6060: P3 Activity Log Info: ????????Fence 362m + paving 336m2 + top ??soil / 3.069m3 + turf 336m2 + shrub + tree 24,030nr??
- 8220D-6080: P3 Activity Log Info: ????????7MH + 144m??
- 8220D-6770: P3 Activity Log Info: ????????7MH + 144m??
- 8220D-6100: P3 Activity Log Info: ????????4MH + 52m??
- 8220D-6780: P3 Activity Log Info: ????????4MH + 52m??
- 8220D-6180: P3 Activity Log Info: ????????510m + ??1,927m2??
- 8220D-6790: P3 Activity Log Info: ????????510m + ??1,927m2??
- 8220D-6140: P3 Activity Log Info: ??????????4MH + 96 ??
- 8220D-6120: P3 Activity Log Info: ????????7nr + 168m??
- 8220D-6800: P3 Activity Log Info: ??????????4MH + 96 ??
- 8220D-6810: P3 Activity Log Info: ??????????4MH + 96 ??
- 8220D-6820: P3 Activity Log Info: ??????????4MH + 96 ??

| ID | WBS | Activity | Duration | Start | Finish | Predecessors | Complete | Planned start | Planned finish | L1 : Project | L2 : Phase | L3 : Area | L4 : Sub-Area | L5 : Element | M1: Contracts | M2 : Cost Centre | M4 : Location | 822_AB_W010 | M6 : Areas/Rooms | L6 : Sub-Element |
| --- | --- | --- | --- | --- | --- | --- | --- | --- | --- | --- | --- | --- | --- | --- | --- | --- | --- | --- | --- | --- |
|  | 4 | **Testing and Commissioning** |  |  |  |  |  |  |  |  |  |  |  |  |  |  |  |  |  |  |
|  | 5 | **General** |  |  |  |  |  |  |  |  |  |  |  |  |  |  |  |  |  |  |
|  | 4 | **Internal T&C** |  |  |  |  |  |  |  |  |  |  |  |  |  |  |  |  |  |  |
|  | 1 | **Water Supplies Department** |  |  |  |  |  |  |  |  |  |  |  |  |  |  |  |  |  |  |
|  | 2 | **Fire Services Department** |  |  |  |  |  |  |  |  |  |  |  |  |  |  |  |  |  |  |
|  | 3 | **Buildings Department** |  |  |  |  |  |  |  |  |  |  |  |  |  |  |  |  |  |  |
|  | 4 | **Area 4 : Shek Yam** |  | 2010-03-17 | 2017-07-18 |  |  |  |  |  |  |  |  |  |  |  |  |  |  |  |
|  | 1 | **Enabling Works** |  | 2010-03-17 | 2011-10-01 |  |  |  |  |  |  |  |  |  |  |  |  |  |  |  |
|  | 1 | **Facilities** |  | 2010-03-17 | 2011-10-01 |  |  |  |  |  |  |  |  |  |  |  |  |  |  |  |
|  | 6 | **Hoarding** |  | 2010-03-17 | 2010-08-21 |  |  |  |  |  |  |  |  |  |  |  |  |  |  |  |
| 8220H-0020 |  | SY - Initial Site Survey & Record, Tree Survey | 10.67d | 2010-03-17 A | 2010-03-30 A | 8220A-3120 | 100% | 2010-03-17 | 2010-03-29 | C822 | C12 | 04 | 0403 | DRV2 | 822 | HH | 2240 | 822_AB_W010 |  |  |
| 8220H-0030 |  | SY - Hoarding | 21.33d | 2010-03-24 A | 2010-05-28 A | 8220H-0020 SS | 100% | 2010-03-24 | 2010-04-22 | C822 | B70 | 04 | 0403 | DRV2 | 822 | HH | 2240 | 822_AB_W010 | C020 |  |
| 8220H-0040 |  | SY - Facility Set Up | 32d | 2010-05-05 A | 2010-05-31 A | 8220H-0030 SS+10.67d | 100% | 2010-05-05 | 2010-06-11 | C822 | B70 | 04 | 0403 | DRV2 | 822 | HH | 2240 | 822_AB_W010 | C020 |  |
| 8220H-0060 |  | SY - Site Clearance | 10.67d | 2010-05-05 A | 2010-05-29 A | 8220H-0030 SS+5.33d | 100% | 2010-05-05 | 2010-05-17 | C822 | B70 | 04 | 0403 | DRV2 | 822 | HH | 2240 | 822_AB_W010 | C020 |  |
| 8220H-0070 |  | SY - Shek Yam Area Install Instrumentation | 21.33d | 2010-05-22 A | 2010-06-18 A | 8220H-0030 SS | 100% | 2010-05-22 | 2010-06-17 | C822 | C12 | 04 | 0401 | DRV2 | 822 | HH | 2240 | 822_AB_W010 |  | T32 |
| 8220H-0470 |  | SY - Install Rock Bolts / Soil Nails | 12.44d | 2010-07-23 A | 2010-08-13 A | 8220H-0070 | 100% | 2010-07-23 | 2010-08-06 | C822 | B70 | 04 | 0403 | DRV2 | 822 | HH | 2240 | 822_AB_W010 | C020 |  |
| 8220H-0500 |  | SY - Pull Out Test / Acceptance Test | 6.22d | 2010-08-14 A | 2010-08-21 A | 8220H-0470 FS-6.22d | 100% |  |  | C822 | B70 | 04 | 0403 | DRV2 | 822 | HH | 2240 | 822_AB_W010 | C020 |  |
|  | 1 | **Aquased Facility** |  | 2010-05-15 | 2010-07-05 |  |  |  |  |  |  |  |  |  |  |  |  |  |  |  |
| 8220H-0050 |  | SY - Aquased Facility: Preparation Works | 10.67d | 2010-05-15 A | 2010-05-22 A | 8220H-0060, 8220H-0040 | 100% | 2010-05-15 | 2010-05-28 | C822 | B70 | 04 | 0403 | SY01 | 822 | HH | 2240 | 822_AB_W010 | C020 |  |
| 8220H-0300 |  | SY - Aquased Facility: Arrival of Pre-fabricated | 0.89d | 2010-05-26 A | 2010-05-26 A | 8220H-0050 FF | 100% |  |  | C822 | B70 | 04 | 0403 | SY01 | 822 | HH | 2240 | 822_AB_W010 | C020 |  |
| 8220H-0310 |  | SY - Aquased Facility: Connect/Install Pre-fabri | 4.44d | 2010-06-28 A | 2010-07-05 A | 8220H-0300 | 100% | 2010-06-28 | 2010-07-03 | C822 | B70 | 04 | 0403 | SY01 | 822 | HH | 2240 | 822_AB_W010 | C020 |  |
| 8220H-0320 |  | Sy - Aquased Facility: Complete | 0.89d | 2010-07-04 A | 2010-07-04 A | 8220H-0310 | 100% | 2010-07-05 | 2010-07-05 | C822 | B70 | 04 | 0403 | SY01 | 822 | HH | 2240 | 822_AB_W010 | C020 |  |
|  | 2 | **Car Wash Facility** |  | 2010-05-25 | 2010-12-14 |  |  |  |  |  |  |  |  |  |  |  |  |  |  |  |
| 8220H-0330 |  | SY - Car Wash Facility: Preparartion Works | 8.89d | 2010-05-25 A | 2010-05-29 A | 8220H-0060, 8220H-0040 | 100% | 2010-05-25 | 2010-06-03 | C822 | B70 | 04 | 0403 | SY02 | 822 | HH | 2240 | 822_AB_W010 | C020 |  |
| 8220H-0340 |  | SY - Car Wash Facility: Cast Surface Slab | 5.33d | 2010-06-24 A | 2010-06-26 A | 8220H-0330 | 100% | 2010-06-24 | 2010-06-30 | C822 | B70 | 04 | 0403 | SY02 | 822 | HH | 2240 | 822_AB_W010 | C020 |  |
| 8220H-0350 |  | SY - Car Wash Facility: Install Conduits | 4.44d | 2010-12-01 A | 2010-12-06 A | 8220H-0340 | 100% |  |  | C822 | B70 | 04 | 0403 | SY02 | 822 | HH | 2240 | 822_AB_W010 | C020 |  |
| 8220H-0360 |  | SY - Car Wash Facility: Connect Pipes from Aquas | 3.56d | 2010-12-07 A | 2010-12-10 A | 8220H-0350 | 100% |  |  | C822 | B70 | 04 | 0403 | SY02 | 822 | HH | 2240 | 822_AB_W010 | C020 |  |
| 8220H-0370 |  | SY - Car Wash Facility: Complete | 0.89d | 2010-12-14 A | 2010-12-14 A | 8220H-0360 FF | 100% |  |  | C822 | B70 | 04 | 0403 | SY02 | 822 | HH | 2240 | 822_AB_W010 | C020 |  |

Notes:
- 8220H-0030: P3 Activity Log Info: 440m

| ID | WBS | Activity | Type | Duration | Start | Finish | Predecessors | Complete | Planned start | Planned finish | L1 : Project | L2 : Phase | L3 : Area | L4 : Sub-Area | L5 : Element | M1: Contracts | M2 : Cost Centre | M4 : Location | M6 : Areas/Rooms | 822_AB_W010 | M3 : Works Area | M8 : Classifica |
| --- | --- | --- | --- | --- | --- | --- | --- | --- | --- | --- | --- | --- | --- | --- | --- | --- | --- | --- | --- | --- | --- | --- |
|  | 5 | **Stockpile Facility** |  |  | 2010-11-13 | 2010-12-02 |  |  |  |  |  |  |  |  |  |  |  |  |  |  |  |  |
| 8220H-0590 |  | SY - Stockpile Facility: RC Slab |  | 6.22d | 2010-11-13 A | 2010-12-01 A |  | 100% | 2010-11-13 | 2010-11-20 | C822 | B70 | 04 | 0403 | SY04 | 822 | HH | 2240 | C020 | 822_AB_W010 |  |  |
| 8220H-0600 |  | SY - Stockpile Facility: Block Walls |  | 4.44d | 2010-11-16 A | 2010-12-01 A | 8220H-0590 | 100% | 2010-11-16 | 2010-11-20 | C822 | B70 | 04 | 0403 | SY04 | 822 | HH | 2240 | C020 | 822_AB_W010 |  |  |
| 8220H-0620 |  | SY - Stockpile Facility: Complete | milestone | 0d | 2010-12-02 A | 2010-12-02 A | 8220H-0600 | 100% |  |  | C822 | B70 | 04 | 0403 | SY04 | 822 | HH | 2240 | C020 | 822_AB_W010 |  |  |
|  | 3 | **Workshop Facility** |  |  | 2010-09-30 | 2011-01-27 |  |  |  |  |  |  |  |  |  |  |  |  |  |  |  |  |
| 8220H-0380 |  | SY - Workshop: Preparation works |  | 5.33d | 2010-09-30 A | 2010-11-10 A |  | 100% | 2010-09-30 | 2010-10-07 | C822 | B70 | 04 | 0403 | SY05 | 822 | HH | 2240 | C020 | 822_AB_W010 |  |  |
| 8220H-0390 |  | SY - Workshop : Concrete Slab |  | 16d | 2010-11-09 A | 2010-11-25 A | 8220H-0380 | 100% | 2010-11-09 | 2010-11-26 | C822 | B70 | 04 | 0403 | SY05 | 822 | HH | 2240 | C020 | 822_AB_W010 |  |  |
| 8220H-0400 |  | SY - Workshop: Columns / Roof/ Cladding |  | 16d | 2010-11-26 A | 2011-01-26 A | 8220H-0390 | 100% | 2010-11-26 | 2010-12-14 | C822 | B70 | 04 | 0403 | SY05 | 822 | HH | 2240 | C020 | 822_AB_W010 |  |  |
| 8220H-0410 |  | SY - Workshop: Complete | milestone | 0d | 2011-01-27 A | 2011-01-27 A | 8220H-0400 | 100% |  |  | C822 | B70 | 04 | 0403 | SY05 | 822 | HH | 2240 | C020 | 822_AB_W010 |  |  |
|  | 4 | **2 Storey Site Office** |  |  | 2011-03-05 | 2011-10-01 |  |  |  |  |  |  |  |  |  |  |  |  |  |  |  |  |
| 8220H-0530 |  | SY - 2 Storey Site Office : G/F Slab & UG Utilit |  | 6.22d | 2011-03-05 A | 2011-04-02 A | 8220A-2730 | 100% | 2011-03-05 | 2011-03-12 | C822 | B70 | 04 | 0403 | SY03 | 822 | HH | 2240 | C020 | 822_AB_W010 |  |  |
| 8220H-0540 |  | SY - 2 Storey Site Office: Walls' Frame & Column |  | 6.22d | 2011-07-21 A | 2011-09-02 A | 8220H-0530 | 100% | 2011-07-21 | 2011-07-28 | C822 | B70 | 04 | 0403 | SY03 | 822 | HH | 2240 | C020 | 822_AB_W010 |  |  |
| 8220H-0550 |  | SY - 2 Storey Site Office: 2/F Flooring Slab |  | 4.44d | 2011-09-03 A | 2011-09-06 A | 8220H-0540 | 100% | 2011-09-03 | 2011-09-08 | C822 | B70 | 04 | 0403 | SY03 | 822 | HH | 2240 | C020 | 822_AB_W010 |  |  |
| 8220H-0560 |  | SY - 2 Storey Site Office: ABWF Internal & Exter |  | 10.67d | 2011-09-07 A | 2011-09-27 A | 8220H-0550 FS-1.78d | 100% | 2011-09-07 | 2011-09-20 | C822 | B70 | 04 | 0403 | SY03 | 822 | HH | 2240 | C020 | 822_AB_W010 |  |  |
| 8220H-0570 |  | SY - 2 Storey Site Office: E&M Installation |  | 8.89d | 2011-09-07 A | 2011-09-30 A | 8220H-0560 SS | 100% | 2011-09-07 | 2011-09-17 | C822 | B70 | 04 | 0403 | SY03 | 822 | HH | 2240 | C020 | 822_AB_W010 |  |  |
| 8220H-0580 |  | SY - 2 Storey Site Office: Complete | milestone | 0d | 2011-10-01 A | 2011-10-01 A | 8220H-0560, 8220H-0570 | 100% |  |  | C822 | B70 | 04 | 0403 | SY03 | 822 | HH | 2240 | C020 | 822_AB_W010 |  |  |
|  | 7 | **CLP Substation** |  |  | 2010-08-02 | 2010-12-24 |  |  |  |  |  |  |  |  |  |  |  |  |  |  |  |  |
| 8220H-1420 |  | Shek Yam Power: Substation Construction |  | 40.89d | 2010-08-02 A | 2010-09-24 A | 8220H-1410 | 100% | 2010-08-02 | 2010-09-17 | C822 | B70 | 04 | 0403 | SY09 | T | T | L9 |  | 822_AB_W010 | TU | 0 |
| 8220H-1430 |  | Shek Yam Power: Substation H/O & Remedial Works |  | 24.89d | 2010-09-25 A | 2010-10-22 A | 8220H-1420, 8220H-1570 | 100% | 2010-09-25 | 2010-10-26 | C822 | B70 | 04 | 0403 | SY09 | T | T | L9 |  | 822_AB_W010 | TU | 0 |
| 8220H-1440 |  | Shek Yam Power: Substation CLP connection |  | 24.89d | 2010-10-23 A | 2010-12-24 A | 8220H-1430 | 100% | 2010-10-23 | 2010-11-20 | C822 | B70 | 04 | 0403 | SY09 | T | HH | L9 |  | 822_AB_W010 | TU | 0 |
|  | 8 | **Drainage** |  |  | 2010-08-07 | 2010-11-11 |  |  |  |  |  |  |  |  |  |  |  |  |  |  |  |  |
| 8220H-1530 |  | Ramp - Excavate for 300 UC Channel |  | 3.56d | 2010-08-07 A | 2010-08-17 A | 8220H-1500 | 100% | 2010-08-07 | 2010-08-11 | C822 | B70 | 04 | 0403 | SY10 |  |  |  |  | 822_AB_W010 |  |  |
| 8220H-1550 |  | Ramp - Cast 300 UC Channel |  | 2.67d | 2010-08-12 A | 2010-08-17 A | 8220H-1520, 8220H-1540 | 100% | 2010-08-12 | 2010-08-14 | C822 | B70 | 04 | 0403 | SY10 |  |  |  |  | 822_AB_W010 |  |  |
| 8220H-1520 |  | Surface Rig- Connect to Existing Stepped Channel |  | 0.89d | 2010-08-18 A | 2010-08-19 A | 8220H-1510 | 100% | 2010-08-18 | 2010-08-18 | C822 | B70 | 04 | 0403 | SY10 |  |  |  |  | 822_AB_W010 |  |  |
| 8220H-1540 |  | Ramp - Cast Pump Sump (2 Nos) |  | 1.78d | 2010-08-18 A | 2010-08-19 A | 8220H-1530 | 100% |  |  | C822 | B70 | 04 | 0403 | SY10 |  |  |  |  | 822_AB_W010 |  |  |
| 8220H-1560 |  | Ramp - Connect to Aquased |  | 0.89d | 2010-08-18 A | 2010-08-18 A | 8220H-1550 | 100% |  |  | C822 | B70 | 04 | 0403 | SY10 |  |  |  |  | 822_AB_W010 |  |  |
| 8220H-1570 |  | Ramp - Backfill U-Channel Drains at Substation |  | 2.67d | 2010-08-19 A | 2010-08-21 A | 8220H-1560 | 100% |  |  | C822 | B70 | 04 | 0403 | SY10 |  |  |  |  | 822_AB_W010 |  |  |
| 8220H-1450 |  | Surface Left - Excavate for 300UC Channel |  | 6.22d | 2010-08-23 A | 2010-08-30 A |  | 100% |  |  | C822 | B70 | 04 | 0403 | SY10 |  |  |  |  | 822_AB_W010 |  |  |
| 8220H-1490 |  | Surface Right - Excavate for 300UC Channel |  | 6.22d | 2010-08-28 A | 2010-09-04 A | 8220H-1470, 8220H-1480 FF | 100% |  |  | C822 | B70 | 04 | 0403 | SY10 |  |  |  |  | 822_AB_W010 |  |  |
| 8220H-1460 |  | Surface Left - Cast Pump Sump (3nos) |  | 2.67d | 2010-08-31 A | 2010-09-02 A | 8220H-1450 | 100% |  |  | C822 | B70 | 04 | 0403 | SY10 |  |  |  |  | 822_AB_W010 |  |  |
| 8220H-1470 |  | Surface Left - Cast 300UC Channel |  | 4.44d | 2010-09-03 A | 2010-09-08 A | 8220H-1460 | 100% |  |  | C822 | B70 | 04 | 0403 | SY10 |  |  |  |  | 822_AB_W010 |  |  |
| 8220H-1480 |  | Surface Left - Connect to Wetsup Tank |  | 0.89d | 2010-09-09 A | 2010-09-09 A | 8220H-1470 | 100% |  |  | C822 | B70 | 04 | 0403 | SY10 |  |  |  |  | 822_AB_W010 |  |  |
| 8220H-1500 |  | Surface Right - Cast Pump Sump (4 nos) |  | 3.56d | 2010-11-01 A | 2010-11-04 A | 8220H-1490 | 100% |  |  | C822 | B70 | 04 | 0403 | SY10 |  |  |  |  | 822_AB_W010 |  |  |
| 8220H-1510 |  | Surface Right - Cast 300UC Channel |  | 4.44d | 2010-11-06 A | 2010-11-11 A | 8220H-1500 | 100% |  |  | C822 | B70 | 04 | 0403 | SY10 |  |  |  |  | 822_AB_W010 |  |  |

| ID | WBS | Activity | Duration | Start | Finish | Predecessors | Complete | Planned start | Planned finish | L1 : Project | L2 : Phase | L3 : Area | L4 : Sub-Area | L5 : Element | L6 : Sub-Element | 822_AB_W010 |
| --- | --- | --- | --- | --- | --- | --- | --- | --- | --- | --- | --- | --- | --- | --- | --- | --- |
|  | 2 | **Retaining Wall** |  | 2010-08-11 | 2010-10-28 |  |  |  |  |  |  |  |  |  |  |  |
|  | 1 | **Area 1 - Gridline A to F** |  | 2010-08-11 | 2010-09-22 |  |  |  |  |  |  |  |  |  |  |  |
| 822-H-1680 |  | Area 1 - Cast Concrete Bedding | 8d | 2010-08-11 A | 2010-08-21 A | 822-H-1670 FS-2.67d | 100% | 2010-08-11 | 2010-08-19 | C822 | C15A | 04 | 0403 | SY06 | A1 | 822_AB_W010 |
| 822-H-1670 |  | Area 1 - Erect Scaffolding for R/W | 4.44d | 2010-08-13 A | 2010-08-18 A | 8220A-5720 | 100% |  |  | C822 | C15A | 04 | 0403 | SY06 | A1 | 822_AB_W010 |
| 822-H-1690 |  | Area 1 - Retaining Wall (Type 1A) | 11.56d | 2010-08-19 A | 2010-09-11 A | 822-H-1670, 822-H-1680 FF | 100% | 2010-08-19 | 2010-09-01 | C822 | C15A | 04 | 0403 | SY06 | A1 | 822_AB_W010 |
| 822-H-1700 |  | Area 1 - Backfilling | 4.44d | 2010-09-11 A | 2010-09-22 A | 822-H-1690 FS-1.78d | 100% | 2010-09-11 | 2010-09-16 | C822 | C15A | 04 | 0403 | SY06 | A1 | 822_AB_W010 |
|  | 2 | **Area 2 - Gridline F to I** |  | 2010-08-18 | 2010-10-12 |  |  |  |  |  |  |  |  |  |  |  |
| 822-H-0535 |  | Area 2 - Erect Scaffolding for R/W | 2.67d | 2010-08-18 A | 2010-08-20 A | 8220A-5720 | 100% |  |  | C822 | C15A | 04 | 0403 | SY06 | A2 | 822_AB_W010 |
| 822-H-0555 |  | Area 2 - Cast Concrete Bedding | 4.44d | 2010-08-20 A | 2010-08-25 A | 822-H-0535 FS-0.89d | 100% |  |  | C822 | C15A | 04 | 0403 | SY06 | A2 | 822_AB_W010 |
| 822-H-0575 |  | Area 2 - Retaining Wall (Type R-E ) | 6.22d | 2010-08-23 A | 2010-08-30 A | 822-H-0555 FS-2.67d | 100% |  |  | C822 | C15A | 04 | 0403 | SY06 | A2 | 822_AB_W010 |
| 822-H-0565 |  | Area 2 - Retaining Wall (Type 1 ) | 6.22d | 2010-08-31 A | 2010-09-14 A | 822-H-0575 | 100% | 2010-08-31 | 2010-09-07 | C822 | C15A | 04 | 0403 | SY06 | A2 | 822_AB_W010 |
| 822-H-0585 |  | Area 2 - Backfilling | 5.33d | 2010-09-17 A | 2010-10-12 A | 822-H-0565 FS-1.78d | 100% | 2010-09-17 | 2010-09-24 | C822 | C15A | 04 | 0403 | SY06 | A2 | 822_AB_W010 |
|  | 3 | **Area 3 - Gridline 10 to 18** |  | 2010-08-16 | 2010-10-15 |  |  |  |  |  |  |  |  |  |  |  |
| 822-H-0615 |  | Area 3 - Erect Scaffolding for R/W | 5.33d | 2010-08-16 A | 2010-08-21 A | 8220A-5720 | 100% |  |  | C822 | C15A | 04 | 0403 | SY06 | A3 | 822_AB_W010 |
| 822-H-0625 |  | Area 3 -Cast Concrete Bedding | 7.11d | 2010-08-19 A | 2010-08-27 A | 822-H-0615 FS-2.67d | 100% |  |  | C822 | C15A | 04 | 0403 | SY06 | A3 | 822_AB_W010 |
| 822-H-0635 |  | Area 3 - Blockwall Erection (LHS) | 6.22d | 2010-08-28 A | 2010-09-14 A | 822-H-0625 | 100% | 2010-08-28 | 2010-09-04 | C822 | C15A | 04 | 0403 | SY06 | A3 | 822_AB_W010 |
| 822-H-0685 |  | Area 3 - Concrete Columns (2no) | 7.11d | 2010-08-30 A | 2010-10-02 A | 822-H-0655 SF+0.89d | 100% | 2010-08-30 | 2010-09-07 | C822 | C15A | 04 | 0403 | SY06 | A3 | 822_AB_W010 |
| 822-H-0645 |  | Area 3 - Blockwall Erection (RHS) | 6.22d | 2010-09-04 A | 2010-09-13 A | 822-H-0635 FS-0.89d | 100% | 2010-09-04 | 2010-09-11 | C822 | C15A | 04 | 0403 | SY06 | A3 | 822_AB_W010 |
| 822-H-0655 |  | Area 3 - Pour no-fine concrete | 4.44d | 2010-09-08 A | 2010-09-22 A | 822-H-0645 FF | 100% | 2010-09-08 | 2010-09-13 | C822 | C15A | 04 | 0403 | SY06 | A3 | 822_AB_W010 |
| 822-H-0675 |  | Area 3 - Backfilling | 3.56d | 2010-10-08 A | 2010-10-15 A | 822-H-0655, 822-H-0685 | 100% | 2010-10-08 | 2010-10-12 | C822 | C15A | 04 | 0403 | SY06 | A3 | 822_AB_W010 |
|  | 4 | **Area 4 - Gridline 1 to 9** |  | 2010-08-16 | 2010-10-28 |  |  |  |  |  |  |  |  |  |  |  |
| 822-H-0695 |  | Area 4 - Erect Scaffolding for R/W | 5.33d | 2010-08-16 A | 2010-08-21 A | 8220A-5720 | 100% |  |  | C822 | C15A | 04 | 0403 | SY06 | A4 | 822_AB_W010 |
| 822-H-0715 |  | Area 4 -Cast Concrete Bedding | 6.22d | 2010-08-23 A | 2010-08-30 A | 822-H-0695 | 100% |  |  | C822 | C15A | 04 | 0403 | SY06 | A4 | 822_AB_W010 |
| 822-H-0735 |  | Area 4 - Blockwall Erection (RHS) | 6.22d | 2010-09-11 A | 2010-10-14 A | 822-H-0725 FS-0.89d | 100% | 2010-09-11 | 2010-09-18 | C822 | C15A | 04 | 0403 | SY06 | A4 | 822_AB_W010 |
| 822-H-0725 |  | Area 4 - Blockwall Erection (LHS) | 6.22d | 2010-09-13 A | 2010-10-13 A | 822-H-0715 | 100% | 2010-09-13 | 2010-09-20 | C822 | C15A | 04 | 0403 | SY06 | A4 | 822_AB_W010 |
| 822-H-0755 |  | Area 4 - Backfilling | 3.56d | 2010-10-12 A | 2010-10-28 A | 822-H-0735 | 100% | 2010-10-12 | 2010-10-15 | C822 | C15A | 04 | 0403 | SY06 | A4 | 822_AB_W010 |

| ID | WBS | Activity | Type | Duration | Start | Finish | Predecessors | Complete | Planned start | Planned finish | Constraint | L1 : Project | L2 : Phase | L3 : Area | L4 : Sub-Area | L5 : Element | L6 : Sub-Element | 822_AB_W010 | M1: Contracts | M2 : Cost Centre | M4 : Location | M6 : Areas/Rooms |
| --- | --- | --- | --- | --- | --- | --- | --- | --- | --- | --- | --- | --- | --- | --- | --- | --- | --- | --- | --- | --- | --- | --- |
|  | 5 | **Area 5 - Gridline 0 to 23** |  |  | 2010-08-23 | 2010-10-14 |  |  |  |  |  |  |  |  |  |  |  |  |  |  |  |  |
| 822-H-0705 |  | Area 5 - Excavation |  | 6.22d | 2010-08-23 A | 2010-08-30 A | 8220A-5720 | 100% |  |  |  | C822 | C15A | 04 | 0403 | SY06 | A5 | 822_AB_W010 |  |  |  |  |
| 822-H-0815 |  | Area 5 - Cast Concrete Bedding |  | 6.22d | 2010-08-30 A | 2010-09-06 A | 822-H-0705 FS-0.89d | 100% |  |  |  | C822 | C15A | 04 | 0403 | SY06 | A5 | 822_AB_W010 |  |  |  |  |
| 822-H-0835 |  | Area 5 - Blockwall Erection (RHS) |  | 3.56d | 2010-09-07 A | 2010-10-14 A | 822-H-0815 | 100% | 2010-09-07 | 2010-09-10 |  | C822 | C15A | 04 | 0403 | SY06 | A5 | 822_AB_W010 |  |  |  |  |
| 822-H-0825 |  | Area 5 - Blockwall Erection (LHS) |  | 3.56d | 2010-09-11 A | 2010-10-14 A | 822-H-0835 | 100% | 2010-09-11 | 2010-09-15 |  | C822 | C15A | 04 | 0403 | SY06 | A5 | 822_AB_W010 |  |  |  |  |
|  | 3 | **Steel Deck** |  |  | 2010-08-23 | 2011-03-08 |  |  |  |  |  |  |  |  |  |  |  |  |  |  |  |  |
|  | 1 | **Area 1 - Gridline A to F** |  |  | 2010-08-23 | 2011-03-08 |  |  |  |  |  |  |  |  |  |  |  |  |  |  |  |  |
| 822-H-0500 |  | Area 1 - Steel deck fabrication |  | 10.67d | 2010-08-23 A | 2010-09-04 A | 8220A-6445 | 100% | 2010-08-23 | 2010-09-03 |  | C822 | C15A | 04 | 0403 | SY12 | A1 | 822_AB_W010 |  |  |  |  |
| 822-H-1290 |  | Area 1 - Steel Delivery to Shek Yam |  | 0.89d | 2010-09-10 A | 2010-09-10 A | 822-H-0500 FS+3.56d | 100% |  |  |  | C822 | C15A | 04 | 0403 | SY12 | A1 | 822_AB_W010 |  |  |  |  |
| 822-H-1750 |  | Area 1 - Steel Weld Checks |  | 0.89d | 2010-09-11 A | 2010-09-11 A | 822-H-1290 | 100% |  |  | as late as possible | C822 | C15A | 04 | 0403 | SY12 | A1 | 822_AB_W010 |  |  |  |  |
| 822-H-1360 |  | Area 1 - Steel Erection |  | 5.33d | 2010-09-18 A | 2010-09-30 A | 822-H-1290 SS, 822-H-1750 | 100% | 2010-09-18 | 2010-09-25 |  | C822 | C15A | 04 | 0403 | SY12 | A1 | 822_AB_W010 |  |  |  |  |
| 822-H-0460 |  | Area 1 - Bondeck: Install 610 UB |  | 6.22d | 2010-10-05 A | 2010-10-20 A | 822-H-1360 | 100% | 2010-10-05 | 2010-10-12 |  | C822 | C15A | 04 | 0403 | SY12 | A1 | 822_AB_W010 | 822 | HH | 2240 | C020 |
| 822-H-0490 |  | Area 1 - Cast Removable Slab Panel Off deck |  | 6.22d | 2010-10-07 A | 2010-10-15 A | 822-H-0460 | 100% | 2010-10-07 | 2010-10-14 |  | C822 | C15A | 04 | 0403 | SY12 | A1 | 822_AB_W010 | 822 | HH | 2240 | C020 |
| 822-H-1650 |  | Area 1 - Hanger Steel (Vent Fans) Erection |  | 0.89d | 2011-03-01 A | 2011-03-08 A | 822-H-0460 | 100% | 2011-03-01 | 2011-03-01 |  | C822 | C15A | 04 | 0403 | SY12 | A1 | 822_AB_W010 |  | HH |  |  |
|  | 2 | **Area 2 - Gridline F to I** |  |  | 2010-09-10 | 2010-10-14 |  |  |  |  |  |  |  |  |  |  |  |  |  |  |  |  |
| 822-H-0515 |  | Area 2 - Steel Delivery to Shek Yam |  | 0.89d | 2010-09-10 A | 2010-09-10 A | 8220A-6445 | 100% |  |  |  | C822 | C15A | 04 | 0403 | SY12 | A2 | 822_AB_W010 |  |  |  |  |
| 822-H-0525 |  | Area 2 - Installation of Steel Decking |  | 3.56d | 2010-09-18 A | 2010-10-08 A | 822-H-0515 SS+0.89d | 100% | 2010-09-18 | 2010-09-22 |  | C822 | C15A | 04 | 0403 | SY12 | A2 | 822_AB_W010 |  |  |  |  |
| 822-H-0495 |  | Area 2 - Bondeck: Install 610 UB |  | 3.56d | 2010-10-11 A | 2010-10-14 A | 822-H-0525 | 100% |  |  |  | C822 | C15A | 04 | 0403 | SY12 | A2 | 822_AB_W010 | 822 | HH | 2240 | C020 |
|  | 3 | **Area 3 - Gridline 10 to 18** |  |  | 2010-09-11 | 2010-10-20 |  |  |  |  |  |  |  |  |  |  |  |  |  |  |  |  |
| 822-H-0547 |  | Area 3 - Steel Delivery to Shek Yam |  | 1.78d | 2010-09-11 A | 2010-09-18 A | 8220A-6445 | 100% | 2010-09-11 | 2010-09-13 |  | C822 | C15A | 04 | 0403 | SY12 | A3 | 822_AB_W010 |  |  |  |  |
| 822-H-0665 |  | Area 3 - Deck Support Plinth |  | 10.67d | 2010-09-20 A | 2010-09-29 A | 822-H-0547 | 100% | 2010-09-20 | 2010-10-04 |  | C822 | C15A | 04 | 0403 | SY12 | A3 | 822_AB_W010 |  |  |  |  |
| 822-H-0548 |  | Area 3 - Installation of Steel Decking |  | 5.33d | 2010-10-08 A | 2010-10-14 A | 822-H-0665 FS-2.67d | 100% |  |  |  | C822 | C15A | 04 | 0403 | SY12 | A3 | 822_AB_W010 |  |  |  |  |
| 822-H-0545 |  | Area 3 - Bondeck: Install 610 UB |  | 7.11d | 2010-10-15 A | 2010-10-19 A | 822-H-0548 FS-2.67d | 100% | 2010-10-15 | 2010-10-25 |  | C822 | C15A | 04 | 0403 | SY12 | A3 | 822_AB_W010 | 822 | HH | 2240 | C020 |
| 822-A-6300 |  | Completion of Area 3 Bondek | milestone | 0d | 2010-10-20 A | 2010-10-20 A | 822-H-0545 | 100% |  |  |  | C822 | C15A | 04 | 0403 | SY12 | A3 | 822_AB_W010 | 822 | HH |  |  |

| ID | WBS | Activity | Type | Duration | Start | Finish | Predecessors | Complete | Planned start | Planned finish | L1 : Project | L2 : Phase | L3 : Area | L4 : Sub-Area | L5 : Element | L6 : Sub-Element | 822_AB_W010 | M1: Contracts | M2 : Cost Centre | M4 : Location | L7 : System |
| --- | --- | --- | --- | --- | --- | --- | --- | --- | --- | --- | --- | --- | --- | --- | --- | --- | --- | --- | --- | --- | --- |
|  | 4 | **Area 4 - Gridline 1 to 9** |  |  | 2010-09-06 | 2010-10-19 |  |  |  |  |  |  |  |  |  |  |  |  |  |  |  |
| 822-H-0745 |  | Area 4 - Deck Support Plinth |  | 8.89d | 2010-09-06 A | 2010-10-11 A | 8220A-6445 | 100% | 2010-09-06 | 2010-09-15 | C822 | C15A | 04 | 0403 | SY12 | A4 | 822_AB_W010 |  |  |  |  |
| 822-H-0765 |  | Area 4 - Installation of Steel Decking |  | 7.11d | 2010-10-14 A | 2010-10-18 A | 822-H-0745 | 100% | 2010-10-14 | 2010-10-23 | C822 | C15A | 04 | 0403 | SY12 | A4 | 822_AB_W010 |  |  |  |  |
| 822-H-0775 |  | Area 4 - Bondeck: Install 610 UB |  | 8d | 2010-10-18 A | 2010-10-19 A | 822-H-0765 | 100% | 2010-10-18 | 2010-10-26 | C822 | C15A | 04 | 0403 | SY12 | A4 | 822_AB_W010 |  |  |  |  |
|  | 4 | **Noise Barrier** |  |  | 2010-06-26 | 2010-08-29 |  |  |  |  |  |  |  |  |  |  |  |  |  |  |  |
| 8220H-1300 |  | SY - Noise Barrier: Divert Footpath |  | 0.89d | 2010-06-26 A | 2010-06-26 A | 8220A-6440 | 100% |  |  | C822 | C18 | 04 | 0403 | SY13 | NB1 | 822_AB_W010 | 822 | HH | 2240 | 304 |
| 8220H-1310 |  | SY - Noise Barrier: Excavation |  | 3.56d | 2010-06-29 A | 2010-08-05 A | 8220H-1300 | 100% | 2010-06-29 | 2010-07-03 | C822 | C18 | 04 | 0403 | SY13 | NB1 | 822_AB_W010 | 822 | HH | 2240 | 304 |
| 8220H-1320 |  | SY - Noise Barrier: Strap / Mat Footing |  | 9.78d | 2010-07-05 A | 2010-08-11 A | 8220H-1310 | 100% | 2010-07-05 | 2010-07-15 | C822 | C18 | 04 | 0403 | SY13 | NB1 | 822_AB_W010 | 822 | HH | 2240 | 304 |
| 8220H-1330 |  | SY - Noise Barrier: Column (152x152x37) |  | 5.33d | 2010-07-13 A | 2010-08-19 A | 8220H-1320 FS-4.44d | 100% | 2010-07-13 | 2010-07-19 | C822 | C18 | 04 | 0403 | SY13 | NB1 | 822_AB_W010 | 822 | HH | 2240 | 304 |
| 8220H-1340 |  | SY - Noise Barrier : UC Longitudinal Strut |  | 5.33d | 2010-07-17 A | 2010-08-24 A | 8220H-1330 FS-1.78d | 100% | 2010-07-17 | 2010-07-23 | C822 | C18 | 04 | 0403 | SY13 | NB1 | 822_AB_W010 | 822 | HH | 2240 | 304 |
| 8220H-1350 |  | SY - Noise Barrier : Install Roof Beam |  | 5.33d | 2010-07-20 A | 2010-08-25 A | 8220H-1340 FS-1.78d | 100% | 2010-07-20 | 2010-07-26 | C822 | C18 | 04 | 0403 | SY13 | NB1 | 822_AB_W010 | 822 | HH | 2240 | 304 |
| 8220H-1360 |  | SY - Noise Barrier : Install Diagonal Steel Memb |  | 5.33d | 2010-07-20 A | 2010-08-23 A | 8220H-1350 FS-1.78d | 100% | 2010-07-20 | 2010-07-26 | C822 | C18 | 04 | 0403 | SY13 | NB1 | 822_AB_W010 | 822 | HH | 2240 | 304 |
| 8220H-1370 |  | SY - Noise Barrier : Noise Insulation Panels |  | 5.33d | 2010-08-17 A | 2010-08-26 A | 8220H-1360 | 100% | 2010-08-17 | 2010-08-23 | C822 | C18 | 04 | 0403 | SY13 | NB1 | 822_AB_W010 | 822 | HH | 2240 | 304 |
| 8220H-1380 |  | Sy - Noise Barrier : Corrugated sheets over roof |  | 5.33d | 2010-08-17 A | 2010-08-26 A | 8220H-1370 FF | 100% | 2010-08-17 | 2010-08-23 | C822 | C18 | 04 | 0403 | SY13 | NB1 | 822_AB_W010 | 822 | HH | 2240 | 304 |
| 8220H-1390 |  | SY - Noise Barrier : Complete | milestone | 0d | 2010-08-29 A | 2010-08-29 A | 8220H-1380 FF | 100% |  |  | C822 | C18 | 04 | 0403 | SY13 | NB1 | 822_AB_W010 | 822 | HH | 2240 | 304 |
|  | 5 | **Noise Barrier Portal Extension** |  |  | 2010-08-03 | 2010-08-31 |  |  |  |  |  |  |  |  |  |  |  |  |  |  |  |
| 8220H-1600 |  | SY-Noise Barrier Ex: Excavation |  | 3.56d | 2010-08-03 A | 2010-08-06 A | 8220A-6440 | 100% |  |  | C822 | C18 | 04 | 0403 | SY13 | NB2 | 822_AB_W010 | 822 | HH | 2240 | 305 |
| 8220H-1610 |  | SY-Noise Barrier Ex: Strap / Mat Footing |  | 9.78d | 2010-08-06 A | 2010-08-18 A | 8220H-1600 | 100% | 2010-08-06 | 2010-08-17 | C822 | C18 | 04 | 0403 | SY13 | NB2 | 822_AB_W010 | 822 | HH | 2240 | 305 |
| 8220H-1620 |  | SY-Noise Barrier Ex: Column (152x152x37) |  | 5.33d | 2010-08-13 A | 2010-08-19 A | 8220H-1610 FS-4.44d | 100% |  |  | C822 | C18 | 04 | 0403 | SY13 | NB2 | 822_AB_W010 | 822 | HH | 2240 | 305 |
| 8220H-1630 |  | SY-Noise Barrier Ex: UC Longitudinal Strut |  | 5.33d | 2010-08-16 A | 2010-08-21 A | 8220H-1620 FS-1.78d | 100% |  |  | C822 | C18 | 04 | 0403 | SY13 | NB2 | 822_AB_W010 | 822 | HH | 2240 | 305 |
| 8220H-1640 |  | SY-Noise Barrier Ex: Install Roof Beam |  | 5.33d | 2010-08-18 A | 2010-08-24 A | 8220H-1630 FS-1.78d | 100% |  |  | C822 | C18 | 04 | 0403 | SY13 | NB2 | 822_AB_W010 | 822 | HH | 2240 | 305 |
| 8220H-1650 |  | SY-Noise Barrier Ex: Install Diagonal Steel Memb |  | 5.33d | 2010-08-19 A | 2010-08-25 A | 8220H-1640 FS-1.78d | 100% |  |  | C822 | C18 | 04 | 0403 | SY13 | NB2 | 822_AB_W010 | 822 | HH | 2240 | 305 |
| 8220H-1660 |  | SY-Noise Barrier Ex: Noise Insulation Panels |  | 5.33d | 2010-08-23 A | 2010-08-28 A | 8220H-1650 | 100% |  |  | C822 | C18 | 04 | 0403 | SY13 | NB2 | 822_AB_W010 | 822 | HH | 2240 | 305 |
| 8220H-1670 |  | SY-Noise Barrier Ex: Corrugated sheets over roof |  | 5.33d | 2010-08-24 A | 2010-08-30 A | 8220H-1660 FF | 100% |  |  | C822 | C18 | 04 | 0403 | SY13 | NB2 | 822_AB_W010 | 822 | HH | 2240 | 305 |
| 8220H-1680 |  | SY-Noise Barrier Ex: Complete | milestone | 0d | 2010-08-31 A | 2010-08-31 A | 8220H-1670 FF | 100% |  |  | C822 | C18 | 04 | 0403 | SY13 | NB2 | 822_AB_W010 | 822 | HH | 2240 | 305 |

| ID | WBS | Activity | Type | Duration | Start | Finish | Predecessors | Complete | Planned start | Planned finish | L1 : Project | L2 : Phase | L3 : Area | L4 : Sub-Area | L5 : Element | M1: Contracts | M2 : Cost Centre | M4 : Location | M6 : Areas/Rooms | 822_AB_W010 | L6 : Sub-Element | L7 : System | L8: Section |
| --- | --- | --- | --- | --- | --- | --- | --- | --- | --- | --- | --- | --- | --- | --- | --- | --- | --- | --- | --- | --- | --- | --- | --- |
|  | 2 | **Construction Adit** |  |  | 2010-05-05 | 2017-07-18 |  |  |  |  |  |  |  |  |  |  |  |  |  |  |  |  |  |
|  | 1 | **Ventilation System** |  |  | 2010-11-04 | 2011-03-25 |  |  |  |  |  |  |  |  |  |  |  |  |  |  |  |  |  |
| 8220H-0240 |  | SY - Ventilation System: I- Beam Steel Support |  | 40d | 2010-11-04 A | 2011-03-09 A | 822-H-1650 FF, 822-H-0775, 822-A-6300, 822-H-0495, 822-H-0490 | 100% | 2010-11-04 | 2010-12-20 | C822 | B70 | 04 | 0402 | SY07 | 822 | HH | 2240 | C020 | 822_AB_W010 |  |  |  |
| 8220H-0260 |  | SY - Ventilation System: Install Vent |  | 1.78d | 2011-03-12 A | 2011-03-20 A | 8220H-0240 | 100% | 2011-03-12 | 2011-03-14 | C822 | B70 | 04 | 0402 | SY07 | 822 | HH | 2240 | C020 | 822_AB_W010 |  |  |  |
| 8220H-0270 |  | SY - Ventilation System: Test & Commission |  | 2.67d | 2011-03-21 A | 2011-03-23 A | 8220H-0260 | 100% |  |  | C822 | B70 | 04 | 0402 | SY07 | 822 | HH | 2240 | C020 | 822_AB_W010 |  |  |  |
| 8220H-0280 |  | SY - Ventilation System : Approval |  | 2.67d | 2011-03-23 A | 2011-03-25 A | 8220H-0270 | 100% |  |  | C822 | B70 | 04 | 0402 | SY07 | 822 | HH | 2240 | C020 | 822_AB_W010 |  |  |  |
| 8220H-0290 |  | SY - Ventilation System Complete | milestone | 0d | 2011-03-25 A | 2011-03-25 A | 8220H-0280 FF | 100% |  |  | C822 | B70 | 04 | 0402 | SY07 | 822 | HH | 2240 | C020 | 822_AB_W010 |  |  |  |
|  | 2 | **Excavation** |  |  | 2010-05-05 | 2011-06-10 |  |  |  |  |  |  |  |  |  |  |  |  |  |  |  |  |  |
|  | 1 | **Mechanical Excavation** |  |  | 2010-05-05 | 2010-11-26 |  |  |  |  |  |  |  |  |  |  |  |  |  |  |  |  |  |
| 8220H-0120 |  | SY - Excavation of Top Soil Ch00 - Ch78 |  | 8.89d | 2010-05-05 A | 2010-06-28 A | 8220H-0060 | 100% | 2010-05-05 | 2010-05-14 | C822 | C16 | 04 | 0402 | DRV2 | 822 | HH | 2240 | C070 | 822_AB_W010 | P13 |  |  |
| 8220H-0130 |  | SY - Excavation of Rock, Ch00 - Ch78 |  | 12.44d | 2010-05-15 A | 2010-07-30 A | 8220H-0120 SS+1.78d | 100% | 2010-05-15 | 2010-05-31 | C822 | C16 | 04 | 0402 | DRV2 | 822 | HH | 2240 | C070 | 822_AB_W010 | P13 |  |  |
| 8220H-0140 |  | SY - Excavation Rock, Ch00 - Ch78 |  | 12.44d | 2010-05-18 A | 2010-06-28 A | 8220H-0130 | 100% | 2010-05-18 | 2010-06-02 | C822 | C16 | 04 | 0402 | DRV2 | 822 | HH | 2240 | C070 | 822_AB_W010 | P13 |  |  |
| 8220H-0150 |  | SY - Excavation Rock, Ch00 - Ch 78 |  | 10.67d | 2010-05-24 A | 2010-07-26 A | 8220H-0140 | 100% | 2010-05-24 | 2010-06-04 | C822 | C16 | 04 | 0402 | DRV2 | 822 | HH | 2240 | C070 | 822_AB_W010 | P13 |  |  |
| 8220H-0080 |  | SY - Tunnel Portal Spile First Set |  | 5.33d | 2010-06-05 A | 2010-06-11 A | 8220H-0150 | 100% |  |  | C822 | C16 | 04 | 0402 | DRV2 | 822 | HH | 2240 | C070 | 822_AB_W010 | P13 |  |  |
| 8220H-0160 |  | SY - Apply Shotcrete |  | 4.44d | 2010-06-19 A | 2010-06-24 A | 8220H-0150 | 100% |  |  | C822 | C16 | 04 | 0402 | DRV2 | 822 | HH | 2240 | C070 | 822_AB_W010 | P13 |  |  |
| 8220H-0170 |  | SY - Excavation Complete | milestone | 0d | 2010-07-31 A | 2010-07-31 A | 8220H-0160 FF | 100% |  |  | C822 | C16 | 04 | 0402 | DRV2 | 822 | HH | 2240 | C070 | 822_AB_W010 | P13 |  |  |
| 8220H-0480 |  | SY - Concrete Paving at SY Ramp |  | 26.67d | 2010-07-31 A | 2010-08-26 A | 8220H-0170 | 100% | 2010-07-31 | 2010-08-31 | C822 | C16 | 04 | 0402 | DRV2 |  |  |  |  | 822_AB_W010 | P13 |  |  |
| 8220H-0090 |  | SY - Tunnel Portal Excavation CH78 - CH90 |  | 76.44d | 2010-08-21 A | 2010-10-29 A | 8220H-0080, 8220H-0500, 822-H-1700, 822-H-0585, 822-H-0675, 822-H-0755, 822-H-0825 | 100% | 2010-08-21 | 2010-11-22 | C822 | C17 | 04 | 0402 | DRV2 | 822 | HH | 2240 | C090 | 822_AB_W010 | P13 |  |  |
| 8220H-0100 |  | SY - Tunnel CH90-CH100 Mechanical Excavation |  | 28.44d | 2010-10-29 A | 2010-11-26 A | 8220H-0090 | 100% | 2010-10-29 | 2010-12-01 | C822 | C17 | 04 | 0402 | DRV2 | 822 | HH | 2240 | C090 | 822_AB_W010 | P13 |  |  |
| 8220H-0110 |  | SY - Erect Blast Door |  | 10.67d | 2010-10-29 A | 2010-11-11 A | 8220A-5735, 8220H-0480 | 100% | 2010-10-29 | 2010-11-10 | C822 | C16 | 04 | 0402 | DRV2 | 822 | HH | 2240 | C070 | 822_AB_W010 | P13 |  |  |
| 8220H-0230 |  | SY - Inspection by Mines Department |  | 2.67d | 2010-11-13 A | 2010-11-16 A | 8220H-0110, 8220A-8440 | 100% |  |  | C822 | C16 | 04 | 0402 | DRV2 |  |  |  |  | 822_AB_W010 | P13 |  |  |
|  | 2 | **Drill and Blast Excavation** |  |  | 2010-11-29 | 2011-06-10 |  |  |  |  |  |  |  |  |  |  |  |  |  |  |  |  |  |
| 8220H-0180 |  | SY - Construction Adit CH100 - CH150 D&B |  | 27.56d | 2010-11-29 A | 2010-12-23 A | 8220H-0100, 8220H-0230, 8220H-0290, 8220H-1390, 8220H-1680, 8220H-0620, 8220H-0410, 8220H-0580, 8220H-1440, 8220H-0320, 8220H-0370 | 100% | 2010-11-29 | 2011-01-04 | C822 | C19 | 04 | 0402 | DRV2 | 822 | HH | 2240 | C090 | 822_AB_W010 |  | 201 |  |
| 8220H-0200 |  | SY - Construction Adit CH150 - CH200 D&B |  | 7.11d | 2010-12-24 A | 2011-01-14 A | 8220H-0180 | 100% | 2010-12-24 | 2011-01-05 | C822 | C19 | 04 | 0402 | DRV2 | 822 | HH | 2240 | C090 | 822_AB_W010 |  | 201 |  |
| 8220H-0190 |  | SY - Construction Adit CH200 - CH250 D&B |  | 7.11d | 2011-01-15 A | 2011-01-31 A | 8220H-0200 | 100% | 2011-01-15 | 2011-01-24 | C822 | C19 | 04 | 0402 | DRV2 | 822 | HH | 2240 | C090 | 822_AB_W010 |  | 201 |  |
| 8220H-0220 |  | SY - Construction Adit CH250 - CH300 D&B |  | 7.11d | 2011-01-31 A | 2011-02-16 A | 8220H-0190 | 100% | 2011-01-31 | 2011-02-11 | C822 | C19 | 04 | 0402 | DRV2 | 822 | HH | 2240 | C090 | 822_AB_W010 |  | 201 |  |
| 8220H-0225 |  | SY - Construction Adit CH300 - CH350 D&B |  | 17.78d | 2011-02-16 A | 2011-03-02 A | 8220H-0220 | 100% | 2011-02-16 | 2011-03-08 | C822 | C19 | 04 | 0402 | DRV2 | 822 | HH | 2240 | C090 | 822_AB_W010 |  | 201 |  |
| 8220H-0235 |  | SY - Construction Adit CH350 - CH400 D&B |  | 11.56d | 2011-03-04 A | 2011-03-22 A | 8220H-0225 | 100% | 2011-03-04 | 2011-03-17 | C822 | C19 | 04 | 0402 | DRV2 | 822 | HH | 2240 | C090 | 822_AB_W010 |  | 201 | C |
| 8220H-0245 |  | SY - Construction Adit CH400 - CH440 D&B |  | 8.89d | 2011-03-23 A | 2011-04-04 A | 8220H-0235 | 100% | 2011-03-23 | 2011-04-01 | C822 | C19 | 04 | 0402 | DRV2 | 822 | HH | 2240 | C090 | 822_AB_W010 |  | 201 | C |
| 8220H-0690 |  | SY - Construction Adit CH440-Ch444 |  | 1.78d | 2011-04-06 A | 2011-04-06 A | 8220H-0245 | 100% | 2011-04-06 | 2011-04-07 | C822 | C19 | 04 | 0402 | DRV2 |  | HH |  |  | 822_AB_W010 |  | 201 | C |
| 8220H-1210 |  | SY - Construction Adit CH444-Ch447.2 |  | 1.78d | 2011-04-07 A | 2011-04-08 A | 8220H-0690 | 100% |  |  | C822 | C19 | 04 | 0402 | DRV2 |  | HH |  |  | 822_AB_W010 |  | 201 | C |
| 8220H-0210 |  | SY - Construction Adit CH447.2 - CH491 D&B |  | 9.78d | 2011-04-09 A | 2011-04-27 A | 8220H-1210 | 100% | 2011-04-09 | 2011-04-20 | C822 | C19 | 04 | 0402 | DRV2 | 822 | HH | 2240 | C090 | 822_AB_W010 |  | 201 | C |
| 8220H-0940 |  | SY - Construction Adit CH491 - CH493.9 D&B |  | 0.89d | 2011-04-28 A | 2011-04-28 A | 8220H-0210 | 100% |  |  | C822 | C19 | 04 | 0402 | DRV2 |  | HH |  |  | 822_AB_W010 |  | 201 | C |
| 8220H-0950 |  | Main - Tunnel Square Up CH132.532 - CH132.544D&B |  | 6d | 2011-04-29 A | 2011-05-06 A | 8220H-0940, 8220A-8620 | 100% |  |  | C822 | C19 | 04 | 0402 | DRV2 |  | HH |  |  | 822_AB_W010 |  | 201 | B |
| 8220H-0680 |  | Main - Spoil Pocket Sth Ch132.544 - 132.574 D&B |  | 7.11d | 2011-05-07 A | 2011-06-10 A | 8220H-0950 | 100% | 2011-05-07 | 2011-05-17 | C822 | C19 | 04 | 0402 | DRV2 |  | HH |  |  | 822_AB_W010 |  | 201 | B |

Notes:
- 8220H-0120: P3 Activity Log Info: soft 1,452m3 ??+ rock 2,010m3
- 8220H-0080: P3 Activity Log Info: ?????????? ??
- 8220H-0090: P3 Activity Log Info: ??????????64m2 10m / 0.33(m/day) ??
- 8220H-0100: P3 Activity Log Info: ??????????4m / 0.33(m/d) = 12d + 8m / 0.8(m/d) = / ??10d??

| ID | WBS | Activity | Duration | Start | Finish | Predecessors | Complete | Planned start | Planned finish | Total float | Free float | Constraint | L1 : Project | L2 : Phase | L3 : Area | L4 : Sub-Area | L5 : Element | M1: Contracts | M2 : Cost Centre | M4 : Location | L7 : System | L8: Section | 822_AB_W010 | M6 : Areas/Rooms |
| --- | --- | --- | --- | --- | --- | --- | --- | --- | --- | --- | --- | --- | --- | --- | --- | --- | --- | --- | --- | --- | --- | --- | --- | --- |
|  | 3 | **Backfill & Reinstatement** |  | 2017-01-02 | 2017-07-18 |  |  |  |  |  |  |  |  |  |  |  |  |  |  |  |  |  |  |  |
| 8220H-0700 |  | SY - Close Tunnel Wall Opening | 19.56d | 2017-01-02 | 2017-01-24 | 8220PD2-2 |  |  |  | -683.11d | 0d |  | C822 | C45 | 04 | 0402 | DRV2 | 822 | HH | 2240 | ACO |  |  |  |
| 8220H-1170 |  | Remove all services from the Adit | 5.33d | 2017-01-24 | 2017-01-30 | 8220H-0700 |  |  |  | -683.11d | 0d |  | C822 | C45 | 04 | 0402 | DRV2 | 822 | HH | 2240 |  |  |  |  |
| 8220H-1180 |  | Backfilling of Adit Portal | 88.89d | 2017-01-30 | 2017-05-13 | 8220H-1170 |  |  |  | -683.11d | 0d |  | C822 | C45 | 04 | 0402 | DRV2 | 822 | HH | 2240 |  |  |  |  |
| 8220H-1220 |  | Reinstate Shek Yam Area | 40d | 2017-05-13 | 2017-06-29 | 8220H-1180 |  |  |  | -683.11d | 0d |  | C822 | C45 | 04 | 0402 | DRV2 | 822 | HH | 2240 |  |  |  |  |
| 8220H-1230 |  | De-mobilise plant and equipment | 26d | 2017-06-17 | 2017-07-18 | 8220H-1220 FS-10.67d |  |  |  | -683.11d | 216.67d |  | C822 | C45 | 04 | 0402 | DRV2 | 822 | HH | 2240 |  |  |  |  |
|  | 3 | **Crusher Adit/ Feeder Apron** |  | 2011-04-02 | 2011-11-01 |  |  |  |  |  |  |  |  |  |  |  |  |  |  |  |  |  |  |  |
|  | 1 | **Excavatation** |  | 2011-04-26 | 2011-09-03 |  |  |  |  |  |  |  |  |  |  |  |  |  |  |  |  |  |  |  |
| 8220H-0610 |  | SY - Mono Pump Pocket D&B | 2.67d | 2011-04-26 A | 2011-04-29 A |  | 100% | 2011-04-26 | 2011-04-28 |  |  |  | C822 | C19 | 04 | 0402 | DRV2 |  | HH |  | 202 | D | 822_AB_W010 |  |
| 8220H-0440 |  | SY - Crusher Cavern Ch0+0 to Ch0+36 (T8) D&B | 7.11d | 2011-04-27 A | 2011-05-20 A | 8220H-0610 | 100% | 2011-04-27 | 2011-05-06 |  |  |  | C822 | C19 | 04 | 0402 | DRV2 |  | HH |  | 202 | D | 822_AB_W010 |  |
| 8220H-0450 |  | SY - Crusher Cavern Ch0+36 to Ch71.63 Head D&B | 7.11d | 2011-04-27 A | 2011-06-24 A | 8220H-0640 | 100% | 2011-04-27 | 2011-05-06 |  |  |  | C822 | C19 | 04 | 0402 | DRV2 |  | HH |  | 202 | D | 822_AB_W010 |  |
| 8220H-0490 |  | SY - Conveyor Adit D&B | 8d | 2011-05-05 A | 2011-08-06 A | 8220H-0960 | 100% | 2011-05-05 | 2011-05-14 |  |  |  | C822 | C19 | 04 | 0402 | DRV2 |  | HH |  | 202 | D | 822_AB_W010 |  |
| 8220H-0960 |  | SY- Crusher Cavern Ch0+26 to Ch71.63 Bench D&B | 8.89d | 2011-05-24 A | 2011-08-02 A | 8220H-0450 | 100% | 2011-05-24 | 2011-06-02 |  |  |  | C822 | C19 | 04 | 0402 | DRV2 |  | HH |  | 202 | D | 822_AB_W010 |  |
| 8220H-1160 |  | SY - Unloading Adit Junction D&B | 3.56d | 2011-06-27 A | 2011-07-12 A | 8220H-0510 | 100% | 2011-06-27 | 2011-06-30 |  |  |  | C822 | C19 | 04 | 0402 | DRV2 |  | HH |  | 202 | D | 822_AB_W010 |  |
| 8220H-0460 |  | SY - Unloading Adit D&B | 1.78d | 2011-07-13 A | 2011-07-14 A | 8220H-1160 | 100% |  |  |  |  |  | C822 | C19 | 04 | 0402 | DRV2 |  | HH |  | 202 | D | 822_AB_W010 |  |
| 8220H-0520 |  | SY - Reversing Bay (Hammerhead) D&B | 4.44d | 2011-07-14 A | 2011-09-03 A | 8220H-0460 | 100% | 2011-07-14 | 2011-07-19 |  |  |  | C822 | C19 | 04 | 0402 | DRV2 |  | HH |  | 202 | D | 822_AB_W010 |  |
| 8220H-0640 |  | SY - Take out conveyor/crusher enlargment | 2.67d | 2011-08-03 A | 2011-08-05 A | 8220H-0440 | 100% |  |  |  |  |  | C822 | C19 | 04 | 0402 | DRV2 |  |  |  | 202 | D | 822_AB_W010 |  |
| 8220H-0510 |  | SY - Dump Truck Access Adit from Main Tunnel D&B | 8d | 2011-08-12 A | 2011-08-27 A | 8220H-0490 | 100% | 2011-08-12 | 2011-08-20 |  |  |  | C822 | C19 | 04 | 0402 | DRV2 |  | HH |  | 202 | D | 822_AB_W010 |  |
|  | 2 | **Installation/ T & C** |  | 2011-04-02 | 2011-11-01 |  |  |  |  |  |  |  |  |  |  |  |  |  |  |  |  |  |  |  |
| 8220H-0630 |  | SY - Conveyor System: Install I-Beam Steel Frame | 13.33d | 2011-04-02 A | 2011-09-17 A |  | 100% | 2011-04-02 | 2011-04-19 |  |  | as late as possible | C822 | C19 | 04 | 0402 | DRV2 | 822 | HH | 2240 | 202 | E | 822_AB_W010 | C020 |
| 8220H-1190 |  | SY - Hopper/Feeder Installation, set up Crusher | 23.11d | 2011-08-24 A | 2011-09-22 A |  | 100% | 2011-08-24 | 2011-09-21 |  |  |  | C822 | C19 | 04 | 0402 | DRV2 |  | HH |  | 202 | E | 822_AB_W010 |  |
| 8220H-0650 |  | SY - Conveyor Adit Concreting Base | 2.67d | 2011-08-25 A | 2011-08-26 A |  | 100% | 2011-08-25 | 2011-08-27 |  |  |  | C822 | C19 | 04 | 0402 | DRV2 |  |  |  | 202 | D | 822_AB_W010 |  |
| 8220H-0430 |  | SY - Conveyor Belt Installation | 13.33d | 2011-09-12 A | 2011-09-28 A | 8220H-0630 FF+1.78d, 8220H-0650 | 100% |  |  |  |  |  | C822 | C19 | 04 | 0402 | DRV2 |  | HH |  | 202 | E | 822_AB_W010 |  |
| 8220H-0970 |  | SY - Conveyor T&C | 6.22d | 2011-10-24 A | 2011-11-01 A | 8220H-0430, 8220H-0430 FF | 100% | 2011-10-24 | 2011-10-31 |  |  |  | C822 | C19 | 04 | 0402 | DRV2 |  | HH |  | 202 | E | 822_AB_W010 |  |
| 8220H-1200 |  | SY - Crusher/Hopper/Feeder T&C | 6.22d | 2011-10-24 A | 2011-11-01 A | 8220H-0970 FF, 8220H-1190, 8220H-0970 | 100% | 2011-10-24 | 2011-10-31 |  |  |  | C822 | C19 | 04 | 0402 | DRV2 |  | HH |  | 202 | E | 822_AB_W010 |  |

| ID | WBS | Activity | Type | Duration | Start | Finish | Predecessors | Complete | Planned start | Planned finish | Constraint | Calendar | Stef Temp A1 | 822_AB_W010 |
| --- | --- | --- | --- | --- | --- | --- | --- | --- | --- | --- | --- | --- | --- | --- |
|  | 5 | **Area 5 : Main Tunnel South** |  |  | 2011-04-30 | 2017-05-29 |  |  |  |  |  |  |  |  |
|  | 1 | **Main Tunnel South Excavation** |  |  | 2011-04-30 | 2014-02-07 |  |  |  |  |  |  |  |  |
|  | 1 | **Type C - Heading South to C821 interface** |  |  | 2011-06-10 | 2012-06-14 |  |  |  |  |  |  |  |  |
| 8220B-0820 |  | Main - Ch132.574 to Ch132.623 D&B |  | 11.56d | 2011-06-10 A | 2011-07-25 A | 8220H-0680 | 100% | 2011-06-10 | 2011-06-23 |  |  | NEW | 822_AB_W010 |
| 8220B-0060 |  | Main - Ch132.623 to Ch132.645 D&B |  | 3.56d | 2011-07-25 A | 2011-08-11 A | 8220B-0820 | 100% | 2011-07-25 | 2011-07-28 |  |  | NEW | 822_AB_W010 |
| 8220B-2880 |  | Main - Ch132.645 to Ch132.723 D&B |  | 14.22d | 2011-08-11 A | 2011-09-05 A | 8220B-0060 | 100% | 2011-08-11 | 2011-08-27 |  |  | NEW | 822_AB_W010 |
| 8220B-0070 |  | Main - Ch132.723 to Ch132.823 D&B |  | 17.78d | 2011-09-06 A | 2011-10-11 A | 8220B-2880 | 100% | 2011-09-06 | 2011-09-27 |  |  | NEW | 822_AB_W010 |
| 8220B-0080 |  | Main - Ch132.823 to Ch132.895 D&B |  | 6d | 2011-10-11 A | 2011-11-01 A | 8220B-0070 | 100% | 2011-10-11 | 2011-10-18 |  | W7 - 6 day - Double Shift (20H) - All Holidays | NEW | 822_AB_W010 |
| 8220B-10070 |  | Design for weak/soft ground Ch132.895 to 132.920 |  | 29d | 2011-11-01 A | 2011-11-29 A |  | 100% | 2011-12-01 | 2012-01-06 |  |  | NEW | 822_AB_W010 |
| 8220B-9920 |  | Encountered Soft Ground are after Blast No.SYTS-076 | milestone | 0d | 2011-11-01 A | 2011-11-01 A |  | 100% | 2011-12-01 | 2011-12-01 | finish on 2011-12-01 |  | NEW | 822_AB_W010 |
| 8220B-10130 |  | Stage Grout/Install spiles from Ch132.895 to 132.907 |  | 61d | 2011-11-05 A | 2012-01-04 A |  | 100% | 2011-12-01 | 2012-02-16 |  |  | NEW | 822_AB_W010 |
| 8220B-10140 |  | Pilot A Excavation from Ch132.895 to 132.912.5 |  | 31d | 2011-12-01 A | 2012-01-09 A |  | 100% |  |  |  |  | NEW | 822_AB_W010 |
| 8220B-10150 |  | Pilot B Excavation from Ch132.895 to 132.900 |  | 12d | 2012-01-03 A | 2012-01-16 A | 8220B-10140 FS-6d | 100% |  |  |  |  | NEW | 822_AB_W010 |
| 8220B-10160 |  | Stop work to commence Type C formwork assembly | milestone | 0d | 2012-01-16 A | 2012-01-16 A | 8220B-10150 | 100% |  |  | finish on 2012-01-16 |  | NEW | 822_AB_W010 |
| 8220B-10170 |  | Recommence soft ground tunneling | milestone | 0d | 2012-02-20 A | 2012-02-20 A |  | 100% |  |  | finish on 2012-02-20 |  | NEW | 822_AB_W010 |
| 8220B-10180 |  | Install Ribs from Ch132.890 to 132.895 |  | 5d | 2012-02-20 A | 2012-02-25 A | 8220B-10170 | 100% |  |  |  |  | NEW | 822_AB_W010 |
| 8220B-10190 |  | Remove Centre Pillar from Ch132.895 to 132.898 |  | 13d | 2012-02-25 A | 2012-03-29 A | 8220B-10180 | 100% | 2012-02-25 | 2012-03-12 |  |  | NEW | 822_AB_W010 |
| 8220B-10200 |  | Extend pilot B and C |  | 23.11d | 2012-03-29 A | 2012-04-07 A | 8220B-10190 | 100% | 2012-06-13 | 2012-07-11 |  |  | NEW | 822_AB_W010 |
| 8220B-10210 |  | Remove Bench and Install Ribs |  | 24d | 2012-04-07 A | 2012-05-14 A | 8220B-10200 | 100% | 2012-07-11 | 2012-08-08 |  |  | NEW | 822_AB_W010 |
| 8220B-9850 |  | Main - Ch132.920 to Ch132.955 D&B (35m) (rate= 2.5m/d) |  | 14d | 2012-05-14 A | 2012-05-28 A | 8220B-10210 | 100% | 2012-08-08 | 2012-08-24 |  | W7 - 6 day - Double Shift (20H) - All Holidays | NEW | 822_AB_W010 |
| 8220B-9860 |  | Main - Ch132.955 to Ch132.990 D&B (35m) (rate= 2.5m/d) |  | 14d | 2012-05-29 A | 2012-06-11 A | 8220B-9850 | 100% | 2012-06-01 | 2012-06-18 |  | W7 - 6 day - Double Shift (20H) - All Holidays | NEW | 822_AB_W010 |
| 8220B-0090 |  | Main - Ch132.990 to Ch133.000 D&B (10m) (rate= 2.5m/d) |  | 4d | 2012-06-11 A | 2012-06-14 A | 8220H-1200 FF, 8220B-9860 | 100% | 2012-08-04 | 2012-08-09 |  | W7 - 6 day - Double Shift (20H) - All Holidays | NEW | 822_AB_W010 |
|  | 2 | **Type C - Heading North to Shing Mun** |  |  | 2011-04-30 | 2012-01-09 |  |  |  |  |  |  |  |  |
| 8220B-1260 |  | Main - Ch132.532 to Ch132.432 D&B (100m) (126m²) |  | 17.78d | 2011-04-30 A | 2011-07-06 A | 8220H-0950 | 100% | 2011-04-30 | 2011-05-23 |  |  | NEW | 822_AB_W010 |
| 8220B-1270 |  | Main - Ch132.432 to Ch132.332 D&B (100m) (126m²) |  | 17.78d | 2011-07-07 A | 2011-09-05 A | 8220B-1260 | 100% | 2011-07-07 | 2011-07-27 |  |  | NEW | 822_AB_W010 |
| 8220B-1285 |  | Main - Ch132.332 to Ch132.232 D&B (100m) (126m²) |  | 17.78d | 2011-09-06 A | 2011-10-10 A | 8220B-1270 | 100% | 2011-09-06 | 2011-09-27 |  |  | NEW | 822_AB_W010 |
| 8220B-1290 |  | Main - Ch132.232 to Ch132.150 D&B (72m) (126m²) |  | 6.8d | 2011-10-10 A | 2011-12-01 A | 8220B-1285 | 100% | 2011-10-10 | 2011-10-17 |  |  | NEW | 822_AB_W010 |
| 8220B-1300 |  | Main - Ch132.150 to Ch132.084 Mechanical (66m) (126m²) (rate= 1.8m/d) |  | 36d | 2011-12-01 A | 2012-01-09 A | 8220B-1290 | 100% | 2011-12-01 | 2012-01-14 |  |  | NEW | 822_AB_W010 |

Notes:
- 8220B-0820: P3 Activity Log Info: Includes -1 day time adjustment (Total 89 days)
- 8220B-0060: P3 Activity Log Info: Drives Milestone B2 (5% of Main Tunnel Complete)
- 8220B-2880: P3 Activity Log Info: Includes -1 day time adjustment (Total 89 days)
- 8220B-0080: P3 Activity Log Info: Drives Milestone B3 (10% of Main Tunnel Complete
- 8220B-9850: P3 Activity Log Info: Drives Milestone B3 (10% of Main Tunnel Complete
- 8220B-9860: P3 Activity Log Info: Drives Milestone B3 (10% of Main Tunnel Complete
- 8220B-0090: P3 Activity Log Info: Includes -1 day time adjustment (Total 89 days)
- 8220B-1300: P3 Activity Log Info: Includes 1 day time adjustment (Total 97 days)

| ID | WBS | Activity | Type | Duration | Start | Finish | Predecessors | Complete | Planned start | Planned finish | Calendar | Stef Temp A1 | 822_AB_W010 |
| --- | --- | --- | --- | --- | --- | --- | --- | --- | --- | --- | --- | --- | --- |
|  | 6 | **Junction SM2A2** |  |  | 2012-01-10 | 2012-02-25 |  |  |  |  |  |  |  |
| 8220B-2920 |  | Main - Ch132.084 to Ch132.065 D&B (19m) (rate= 1.8m/d) |  | 10.55d | 2012-01-10 A | 2012-02-06 A | 8220B-1300, 8220A-8710 | 100% | 2012-01-16 | 2012-01-31 |  | NEW | 822_AB_W010 |
| 8220B-2610 |  | Main - MAJOR FAULT 11 - D&B Ch132.065 to 132.034 (31m) (rate = 4m/d) |  | 7.75d | 2012-02-07 A | 2012-02-25 A | 8220B-2920 | 100% | 2012-01-31 | 2012-02-09 |  | NEW | 822_AB_W010 |
|  | 3 | **Type M - Heading North from Shing Mun** |  |  | 2012-03-03 | 2013-03-06 |  |  |  |  |  |  |  |
| 8220B-10090 |  | Main - Ch132.034 to Ch132.018 D&B (16m) (179.8m²) (rate= 6.6m/d) |  | 2.4d | 2012-03-03 A | 2012-03-08 A | 8220B-2610 | 100% | 2012-06-01 | 2012-06-04 |  | NEW | 822_AB_W010 |
| 8220B-2600 |  | Main - MAJOR FAULT 10 - Mechanical Ch.132.018 to 131.987 to (31m) (rate = 0.64m/d) |  | 48d | 2012-03-09 A | 2012-03-30 A | 8220B-10090 | 100% | 2012-06-04 | 2012-07-31 |  | NEW | 822_AB_W010 |
| 8220B-1150 |  | Main - Ch131.987 to Ch131.955 D&B (32m) (179.8m²) (rate= 6.6m/d) |  | 4.8d | 2012-03-30 A | 2012-04-14 A | 8220B-2600 | 100% | 2012-07-31 | 2012-08-06 |  | NEW | 822_AB_W010 |
| 8220B-1160 |  | Main - Ch131.955 to Ch131.855 D&B (100m) (179.8m²) (rate= 6.6m/d) |  | 15.15d | 2012-04-14 A | 2012-07-09 A | 8220B-1150 | 100% | 2012-08-06 | 2012-08-23 |  | NEW | 822_AB_W010 |
| 8220B-1170 |  | Main - Ch131.855 to Ch131.755 D&B (100m) (179.8m²) (rate= 6.6m/d) |  | 15.15d | 2012-07-09 A | 2012-07-31 A | 8220B-1160 | 100% | 2012-08-07 | 2012-08-24 |  | NEW | 822_AB_W010 |
| 8220B-1180 |  | Main - Ch131.755 to Ch131.655 D&B (100m) (179.8m²) (rate= 6.6m/d) |  | 15.15d | 2012-07-31 A | 2012-08-22 A | 8220B-1170 | 100% | 2012-08-01 | 2012-08-18 |  | NEW | 822_AB_W010 |
| 8220B-1190 |  | Main - Ch131.655 to Ch131.555 D&B (100m) (179.8m²) (rate= 6.6m/d) |  | 15.15d | 2012-08-22 A | 2012-09-12 A | 8220B-1180 | 100% | 2012-08-27 | 2012-09-13 |  | NEW | 822_AB_W010 |
| 8220B-1630 |  | Main - Approx cross under Tseun Wan Drainage | milestone | 0d | 2012-08-22 A | 2012-08-22 A | 8220B-1180 | 100% | 2012-09-01 | 2012-09-01 | OCT1 - 1 - 6D+ All Holidays | NEW | 822_AB_W010 |
| 8220B-1205 |  | Main - Ch131.555 to Ch131.455 D&B (100m) (179.8m²) (rate= 6.6m/d) |  | 15.15d | 2012-09-12 A | 2012-10-05 A | 8220B-1190 | 100% | 2012-10-11 | 2012-10-30 |  | NEW | 822_AB_W010 |
| 8220B-1200 |  | Main - Ch131.455 to Ch131.355 D&B (100m) (179.8m²) (rate= 6.6m/d) |  | 15.15d | 2012-10-05 A | 2012-10-27 A | 8220B-1205 | 100% | 2012-11-03 | 2012-11-21 |  | NEW | 822_AB_W010 |
| 8220B-1210 |  | Main - Ch131.355 to Ch131.255 D&B (100m) (179.8m²) (rate= 6.6m/d) |  | 15.15d | 2012-10-27 A | 2012-11-21 A | 8220B-1200 | 100% | 2012-11-01 | 2012-11-19 |  | NEW | 822_AB_W010 |
| 8220B-1220 |  | Main - Ch131.255 to Ch131.155 D&B (100m) (179.8m²) (rate= 6.6m/d) |  | 15.15d | 2012-11-21 A | 2012-12-19 A | 8220B-1210 | 100% | 2012-11-29 | 2012-12-17 |  | NEW | 822_AB_W010 |
| 8220B-2890 |  | Main - Ch131.155 to Ch131.055 D&B (100m) (179.8m²) (rate= 6.6m/d) |  | 15.15d | 2012-12-19 A | 2013-02-02 A | 8220B-1220 | 100% | 2013-01-12 | 2013-01-30 |  | NEW | 822_AB_W010 |
| 8220B-2910 |  | Main - Ch131.055 to Ch130.946 D&B (109m) (179.8m²) (rate= 6.6m/d) |  | 15.15d | 2013-02-02 A | 2013-03-06 A | 8220B-2890 | 100% | 2013-03-02 | 2013-03-20 |  | NEW | 822_AB_W010 |
|  | 5 | **Type P - Enlarged Nozzle** |  |  | 2013-03-06 | 2013-03-18 |  |  |  |  |  |  |  |
| 8220B-2940 |  | Main - Ch130.946 to Ch130.905 D&B (41m) (341.8m²) (rate= 6.6m/d) |  | 6.21d | 2013-03-06 A | 2013-03-18 A | 8220B-2910 | 100% | 2013-04-06 | 2013-04-14 | W7 - 6 day - Double Shift (20H) - All Holidays | NEW | 822_AB_W010 |
|  | 4 | **Type C - Heading North to Breakthrough** |  |  | 2013-03-19 | 2014-02-07 |  |  |  |  |  |  |  |
| 8220B-1250 |  | Main - Ch130.905 to Ch130.893 D&B (12m) (126m²) (8.23m/d) |  | 1.45d | 2013-03-19 A | 2013-03-30 A | 8220A-8800, 8220B-2940 | 100% | 2013-04-01 | 2013-04-02 |  | NEW | 822_AB_W010 |
| 8220B-2570 |  | Main - MAJOR FAULT 9 - D&B Ch130.893 to 130.875 (18m) (rate = 4m/d) |  | 4.5d | 2013-03-30 A | 2013-04-04 A | 8220B-1250 | 100% | 2013-04-01 | 2013-04-06 |  | NEW | 822_AB_W010 |
| 8220B-1310 |  | Main - Ch130.875 to Ch130.841 D&B (34m) (126m²) (8.23m/d) |  | 4.13d | 2013-04-04 A | 2013-04-11 A | 8220B-2570 | 100% | 2013-04-27 | 2013-05-03 |  | NEW | 822_AB_W010 |
| 8220B-2380 |  | Main - MAJOR FAULT 8 - D&B Ch130.841 to 130.806 (35m) (rate = 4m/d) |  | 8.75d | 2013-04-11 A | 2013-04-16 A | 8220B-1310 | 100% | 2013-05-03 | 2013-05-14 |  | NEW | 822_AB_W010 |
| 8220B-10100 |  | Main - Ch130.806 to Ch130.705 D&B (101m) (126m²) (8.23m/d) |  | 12.27d | 2013-04-16 A | 2013-04-30 A | 8220B-2380 | 100% | 2013-05-14 | 2013-05-28 |  | NEW | 822_AB_W010 |
| 8220B-2690 |  | Main - Ch130.705 to Ch130.594 D&B (111m) (126m²) (8.23m/d) |  | 13.48d | 2013-04-30 A | 2013-05-17 A | 8220B-10100 | 100% | 2013-05-10 | 2013-05-25 |  | NEW | 822_AB_W010 |
| 8220B-2270 |  | Main - MAJOR FAULT 7 - D&B Ch130.594 to 130.576 (18m) (rate = 4m/d) |  | 4.5d | 2013-05-17 A | 2013-05-20 A | 8220B-2690 | 100% | 2013-05-31 | 2013-06-05 |  | NEW | 822_AB_W010 |
| 8220B-1320 |  | Main - Ch130.576 to Ch130.505 D&B (71m) (126m²) (8.23m/d) |  | 8.62d | 2013-05-20 A | 2013-05-31 A | 8220B-2270 | 100% | 2013-05-25 | 2013-06-05 |  | NEW | 822_AB_W010 |
| 8220B-1325 |  | Main - Ch130.505 to Ch130.405 D&B (100m) (126m²) (8.23m/d) |  | 12.15d | 2013-05-31 A | 2013-06-18 A | 8220B-1320 | 100% | 2013-06-05 | 2013-06-20 |  | NEW | 822_AB_W010 |
| 8220B-1330 |  | Main - Ch130.405 to Ch130.305 D&B (100m) (126m²) (8.23m/d) |  | 12.15d | 2013-06-18 A | 2013-07-02 A | 8220B-1325 | 100% | 2013-07-09 | 2013-07-23 |  | NEW | 822_AB_W010 |
| 8220B-1340 |  | Main - Ch130.305 to Ch130.237 D&B (68m) (126m²) (8.23m/d) |  | 8.26d | 2013-07-02 A | 2013-07-12 A | 8220B-1330 | 100% | 2013-07-24 | 2013-08-02 |  | NEW | 822_AB_W010 |
| 8220B-2220 |  | Main - MAJOR FAULT 6 - D&B Ch130.237 to 130.212 (25m) (rate = 4m/d) |  | 6.25d | 2013-07-12 A | 2013-07-15 A | 8220B-1340 | 100% | 2013-08-02 | 2013-08-09 |  | NEW | 822_AB_W010 |
| 8220B-2750 |  | Main - Ch130.212 to Ch130.105 D&B (107m) (126m²) (8.23m/d) |  | 13d | 2013-07-15 A | 2013-07-31 A | 8220B-2220 | 100% | 2013-08-09 | 2013-08-24 |  | NEW | 822_AB_W010 |
| 8220B-1350 |  | Main - Ch130.105 to Ch130.050 D&B (55m) (126m²) (8.23m/d) |  | 6.68d | 2013-07-31 A | 2013-08-08 A | 8220B-2750 | 100% | 2013-08-07 | 2013-08-15 |  | NEW | 822_AB_W010 |
| 8220B-1360 |  | Main - Ch130.050 to Ch129.970 D&B (80m) (126m²) (8.23m/d) |  | 9.72d | 2013-08-08 A | 2013-08-20 A | 8220B-1350 | 100% |  |  |  | NEW | 822_AB_W010 |
| 8220B-2060 |  | Main - MAJOR FAULT 5 - D&B Ch129.970 to 129.950 (20m) (rate = 4m/d) |  | 5d | 2013-08-21 A | 2013-08-22 A | 8220B-1360 | 100% | 2013-08-21 | 2013-08-27 |  | NEW | 822_AB_W010 |
| 8220B-1370 |  | Main - Ch129.950 to Ch129.850 D&B (100m) (126m²) (8.23m/d) |  | 12.15d | 2013-08-22 A | 2013-09-24 A | 8220B-2060 | 100% | 2013-08-27 | 2013-09-10 |  | NEW | 822_AB_W010 |
| 8220B-1710 |  | Main - MAJOR FAULT 4 - D&B Ch129.850 to 129.815 (35m) (rate = 4m/d) |  | 8.75d | 2013-09-24 A | 2013-10-05 A | 8220B-1370 | 100% | 2013-09-09 | 2013-09-18 |  | NEW | 822_AB_W010 |
| 8220B-2780 |  | Main - Ch129.815 to Ch129.750 D&B (65m) (126m²) (8.23m/d) |  | 7.89d | 2013-10-07 A | 2013-10-17 A | 8220B-1710 | 100% | 2013-11-01 | 2013-11-11 |  | NEW | 822_AB_W010 |
| 8220B-1380 |  | Main - Ch129.750 to Ch129.650 D&B (100m) (126m²) (8.23m/d) |  | 12.15d | 2013-10-19 A | 2013-10-26 A | 8220B-2780 | 100% | 2013-11-11 | 2013-11-25 |  | NEW | 822_AB_W010 |
| 8220B-1390 |  | Main - Ch129.650 to Ch129.550 D&B (100m) (126m²) (8.23m/d) |  | 12.15d | 2013-10-26 A | 2013-11-30 A | 8220B-1380 | 100% | 2013-11-25 | 2013-12-09 |  | NEW | 822_AB_W010 |
| 8220B-1400 |  | Main - Ch129.550 to Ch129.450 D&B (100m) (126m²) (8.23m/d) |  | 12.15d | 2013-12-02 A | 2013-12-24 A | 8220B-1390 | 100% | 2013-12-02 | 2013-12-16 |  | NEW | 822_AB_W010 |
| 8220B-2770 |  | Main - Ch129.450 to Ch129.350 D&B (100m) (126m²) (8.23m/d) |  | 12.15d | 2013-12-25 A | 2014-01-12 A | 8220B-1400 | 100% | 2014-01-16 | 2014-01-30 |  | NEW | 822_AB_W010 |
| 8220B-1415 |  | Main - Ch129.350 to Ch129.250 D&B (100m) (126m²) (8.23m/d) - Last SY blast ending on Ch129.269 |  | 12.15d | 2014-01-12 A | 2014-01-29 A | 8220B-2770 | 100% | 2014-02-12 | 2014-02-27 |  | NEW | 822_AB_W010 |
| 8220B-1410 |  | Main - Ch129.250 to Ch129.198 D&B (52m) (126m²) (8.23m/d) - N/A |  | 6.05d | 2014-01-29 A | 2014-01-29 A | 8220B-1415 | 100% | 2014-02-27 | 2014-03-06 |  | NEW | 822_AB_W010 |
| 8220B-1650 |  | Main - MAJOR FAULT 3 - D&B Ch129.198 to 129.163 (35m) (rate = 4m/d) - N/A |  | 8.75d | 2014-01-29 A | 2014-01-29 A | 8220B-1410 | 100% | 2014-03-06 | 2014-03-15 |  | NEW | 822_AB_W010 |
| 8220B-2760 |  | Main - Ch129.163 to Ch129.065 D&B (98m) (126m²) (8.23m/d) - N/A |  | 12d | 2014-01-29 A | 2014-01-29 A | 8220B-1650 | 100% | 2014-03-15 | 2014-03-29 |  | NEW | 822_AB_W010 |
| 8220B-12140 |  | Main - Demobilise prior to walkway commencement |  | 12d | 2014-02-04 A | 2014-02-07 A | 8220B-2760 | 100% | 2014-03-01 | 2014-03-14 |  | NEW | 822_AB_W010 |

Notes:
- 8220B-2920: P3 Activity Log Info: Includes 1 day time adjustment (Total 97 days)
- 8220B-1210: P3 Activity Log Info: Drives Milestone B4 (20% of Main Tunnel Complete
- 8220B-2690: P3 Activity Log Info: Includes 1 day time adjustment (Total 350 days) / Drives Milestone B7 (80% of Main Tunnel Complete
- 8220B-1340: P3 Activity Log Info: Drives Milestone B5 (30% of Main Tunnel Complete
- 8220B-2750: P3 Activity Log Info: Includes 1 day time adjustment (Total 350 days) / Drives Milestone B7 (80% of Main Tunnel Complete
- 8220B-2780: P3 Activity Log Info: Includes 1 day time adjustment (Total 350 days) / Drives Milestone B7 (80% of Main Tunnel Complete
- 8220B-2770: P3 Activity Log Info: Includes 1 day time adjustment (Total 350 days) / Drives Milestone B7 (80% of Main Tunnel Complete
- 8220B-2760: P3 Activity Log Info: Includes 1 day time adjustment (Total 350 days) / Drives Milestone B7 (80% of Main Tunnel Complete
- 8220B-12140: P3 Activity Log Info: Drives Milestone B6 (50% of Main Tunnel Complete

| ID | WBS | Activity | Type | Duration | Start | Finish | Predecessors | Complete | Planned start | Planned finish | Constraint | Stef Temp A1 | 822_AB_W010 |
| --- | --- | --- | --- | --- | --- | --- | --- | --- | --- | --- | --- | --- | --- |
|  | 2 | **Main Tunnel South Permanent Lining Operations** |  |  | 2011-05-21 | 2017-05-29 |  |  |  |  |  |  |  |
|  | 1 | **Type C - Heading North from C821 Interface Ch133.000** |  |  | 2011-05-21 | 2017-02-08 |  |  |  |  |  |  |  |
| 8220B-2790 |  | Place order for 1 x Type C Formwork Shutter | milestone | 0d | 2011-05-21 A | 2011-05-21 A |  | 100% |  |  | as late as possible | NEW | 822_AB_W010 |
| 8220B-2800 |  | Fabrication of 1 x Type C Formwork Shutter |  | 100d | 2011-05-21 A | 2011-12-31 A | 8220B-2790 | 100% | 2011-05-21 | 2011-09-17 |  | NEW | 822_AB_W010 |
| 8220B-2810 |  | Delivery to Hong Kong Shek Yam Site |  | 11d | 2012-01-04 A | 2012-01-16 A | 8220B-2800 | 100% |  |  | as late as possible | NEW | 822_AB_W010 |
| 8220B-2820 |  | Assemble 1 x Type C Formwork in Tunnel |  | 50d | 2012-01-13 A | 2012-03-05 A | 8220B-2810, 8220B-10160 | 100% | 2012-01-17 | 2012-03-17 |  | NEW | 822_AB_W010 |
| 8220B-2830 |  | Test and Commission Type C Formwork Shutter |  | 5d | 2012-03-06 A | 2012-03-17 A | 8220B-2820 | 100% | 2012-06-22 | 2012-06-27 |  | NEW | 822_AB_W010 |
|  | 1 | **Rail, Kicker, Membrane** |  |  | 2012-02-01 | 2013-03-30 |  |  |  |  |  |  |  |
| 8220B-1640 |  | Main - 132+770 to 132+670 Kicker & Membrane (100m) (rate = 8m/d) |  | 12.5d | 2012-02-01 A | 2012-03-10 A |  | 100% | 2012-02-20 | 2012-03-06 | start on 2012-02-20 | NEW | 822_AB_W010 |
| 8220B-2200 |  | Main - 132+670 to 132+570 Kicker & Membrane (100m) (rate = 8m/d) |  | 12.5d | 2012-05-01 A | 2012-05-31 A | 8220B-1640 | 100% | 2012-06-07 | 2012-06-21 |  | NEW | 822_AB_W010 |
| 8220B-2210 |  | Main - 132+570 to 132+470 Kicker & Membrane (100m) (rate = 8m/d) |  | 12.5d | 2012-06-12 A | 2012-12-15 A | 8220B-2200 | 100% | 2012-08-01 | 2012-08-15 |  | NEW | 822_AB_W010 |
| 8220B-1670 |  | Main - 132+470 to 132+370 Kicker & Membrane (100m) (rate = 8m/d) |  | 12.5d | 2012-06-14 A | 2012-06-28 A | 8220B-2210 | 100% | 2012-08-15 | 2012-08-29 |  | NEW | 822_AB_W010 |
| 8220B-11210 |  | Main - Erect RMD Waterproofing Gantry |  | 26d | 2012-06-26 A | 2012-07-16 A | 8220B-2200 | 100% | 2012-08-01 | 2012-08-30 |  | NEW | 822_AB_W010 |
| 8220B-2230 |  | Main - 132+370 to 132+270 Kicker & Membrane (100m) (rate = 8m/d) |  | 12.5d | 2012-07-11 A | 2012-07-27 A | 8220B-1670 | 100% | 2012-08-04 | 2012-08-20 |  | NEW | 822_AB_W010 |
| 8220B-2240 |  | Main - 132+270 to 132+170 Kicker & Membrane (100m) (rate = 8m/d) |  | 12.5d | 2012-08-08 A | 2012-09-07 A | 8220B-2230 | 100% | 2012-08-20 | 2012-09-03 |  | NEW | 822_AB_W010 |
| 8220B-9930 |  | Main - 132+170 to 132+085 Kicker & Membrane (85m) (rate = 8m/d) |  | 10.62d | 2012-09-07 A | 2013-03-30 A | 8220B-2240 | 100% | 2012-09-06 | 2012-09-18 |  | NEW | 822_AB_W010 |
| 8220B-11220 |  | Main - Steelwork support installation |  | 36d | 2012-09-09 A | 2012-11-28 A | 8220B-11210 | 100% | 2012-09-04 | 2012-10-17 |  | NEW | 822_AB_W010 |
| 8220B-2250 |  | Main - 132+900 to 132+770 Kicker & Membrane (130m) (rate = 8m/d) |  | 16.25d | 2012-09-20 A | 2012-10-12 A | 8220B-10060 | 100% | 2012-10-26 | 2012-11-14 |  | NEW | 822_AB_W010 |
| 8220B-10060 |  | Main - 133+000 to 132+900 Kicker & Membrane (100m) (rate = 8m/d) |  | 12.5d | 2012-10-10 A | 2012-11-02 A | 8220B-0090, 8220B-9930 | 100% | 2012-11-08 | 2012-11-23 |  | NEW | 822_AB_W010 |
|  | 2 | **Permanent Concrete Lining** |  |  | 2012-03-28 | 2013-05-15 |  |  |  |  |  |  |  |
| 8220B-1700 |  | Main - 132+770 to 132+670 Perm Concrete Lining (100m)(rate = 8m/d) |  | 12.5d | 2012-03-28 A | 2012-05-12 A | 8220B-2830 | 100% | 2012-06-28 | 2012-07-13 |  | NEW | 822_AB_W010 |
| 8220B-3530 |  | Main - 132+670 to 132+570 Perm Concrete Lining (100m)(rate = 8m/d) |  | 12.5d | 2012-05-14 A | 2012-06-09 A | 8220B-1700 | 100% | 2012-07-13 | 2012-07-27 |  | NEW | 822_AB_W010 |
| 8220B-3540 |  | Main - 132+570 to 132+470 Perm Concrete Lining (100m)(rate = 8m/d) |  | 12.5d | 2012-06-10 A | 2013-03-23 A | 8220B-3530, 8220B-2210 | 100% | 2012-08-08 | 2012-08-23 |  | NEW | 822_AB_W010 |
| 8220B-1730 |  | Main - 132+470 to 132+370 Perm Concrete Lining (100m)(rate = 8m/d) |  | 12.5d | 2012-07-04 A | 2012-07-30 A | 8220B-3540 | 100% | 2012-08-23 | 2012-09-06 |  | NEW | 822_AB_W010 |
| 8220B-3560 |  | Main - 132+370 to 132+270 Perm Concrete Lining (100m)(rate = 8m/d) |  | 12.5d | 2012-07-30 A | 2012-08-24 A | 8220B-1730 | 100% | 2012-08-04 | 2012-08-20 |  | NEW | 822_AB_W010 |
| 8220B-3570 |  | Main - 132+270 to 132+170 Perm Concrete Lining (100m)(rate = 8m/d) |  | 12.5d | 2012-08-23 A | 2012-09-15 A | 8220B-3560 | 100% | 2012-08-29 | 2012-09-12 |  | NEW | 822_AB_W010 |
| 8220B-9940 |  | Main - 132+170 to 132+085 Perm Concrete Lining (85m) (rate = 8m/d) |  | 10.6d | 2012-09-13 A | 2013-05-15 A | 8220B-3570 | 100% | 2012-11-03 | 2012-11-16 |  | NEW | 822_AB_W010 |
| 8220B-3580 |  | Main - 132+900 to 132+770 Perm Concrete Lining (130m)(rate = 8m/d) |  | 16.25d | 2012-10-15 A | 2013-01-04 A | 8220B-10050 | 100% | 2012-12-17 | 2013-01-08 |  | NEW | 822_AB_W010 |
| 8220B-10050 |  | Main - 133+000 to 132+900 Perm Concrete Lining (100m)(rate = 8m/d) |  | 12.5d | 2012-12-01 A | 2013-01-04 A | 8220B-11220, 8220B-9940 | 100% | 2013-01-15 | 2013-01-30 |  | NEW | 822_AB_W010 |

Notes:
- 8220B-1640: P3 Activity Log Info: ??????????400m / 4m/d??
- 8220B-2200: P3 Activity Log Info: ??????????400m / 4m/d??
- 8220B-2210: P3 Activity Log Info: ??????????400m / 4m/d??
- 8220B-1670: P3 Activity Log Info: ??????????3142m / 10m/d??
- 8220B-11210: P3 Activity Log Info: ??????????3142m / 10m/d??
- 8220B-2230: P3 Activity Log Info: ??????????3142m / 10m/d??
- 8220B-2240: P3 Activity Log Info: ??????????3142m / 10m/d??
- 8220B-9930: P3 Activity Log Info: ??????????3142m / 10m/d??
- 8220B-11220: P3 Activity Log Info: ??????????3142m / 10m/d??
- 8220B-2250: P3 Activity Log Info: ??????????3142m / 10m/d??
- 8220B-10060: P3 Activity Log Info: ??????????3142m / 10m/d??
- 8220B-1700: P3 Activity Log Info: ?????????? ??
- 8220B-3530: P3 Activity Log Info: ?????????? ??
- 8220B-3540: P3 Activity Log Info: ?????????? ??
- 8220B-1730: P3 Activity Log Info: ?????????? ?? ??
- 8220B-3560: P3 Activity Log Info: ?????????? ?? ??
- 8220B-3570: P3 Activity Log Info: ?????????? ?? ??
- 8220B-9940: P3 Activity Log Info: ?????????? ?? ??
- 8220B-3580: P3 Activity Log Info: ?????????? ?? ??
- 8220B-10050: P3 Activity Log Info: ?????????? ?? ??

| ID | WBS | Activity | Duration | Start | Finish | Predecessors | Complete | Planned start | Planned finish | Stef Temp A1 | 822_AB_W010 |
| --- | --- | --- | --- | --- | --- | --- | --- | --- | --- | --- | --- |
|  | 3 | **1st Invert Prep/Drainage** |  | 2013-01-14 | 2014-01-25 |  |  |  |  |  |  |
| 8220B-10040 |  | Main - 133+000 to 132+900 1st Half Invert Prep (rate = 8m/d) (100m) | 12.5d | 2013-01-14 A | 2013-02-22 A | 8220B-10050 | 100% | 2013-01-28 | 2013-02-14 | NEW | 822_AB_W010 |
| 8220B-9950 |  | Main - 132+900 to 132+800 1st Half Invert Prep (rate = 8m/d) (100m) | 12.5d | 2013-06-10 A | 2013-06-21 A | 8220B-10040 | 100% | 2013-02-14 | 2013-02-28 | NEW | 822_AB_W010 |
| 8220B-7820 |  | Main - 132+800 to 132+700 1st Half Invert Prep (rate = 8m/d) (100m) | 12.5d | 2013-06-22 A | 2013-07-03 A | 8220B-9950 | 100% | 2013-07-29 | 2013-08-12 | NEW | 822_AB_W010 |
| 8220B-1750 |  | Main - 132+700 to 132+600 1st Half Invert Prep (rate = 8m/d) (100m) | 12.5d | 2013-07-04 A | 2013-09-10 A | 8220B-7820 | 100% | 2013-08-03 | 2013-08-17 | NEW | 822_AB_W010 |
| 8220B-7830 |  | Main - 132+600 to 132+500 1st Half Invert Prep (rate = 8m/d) (100m) | 12.5d | 2013-09-11 A | 2013-10-15 A | 8220B-1750 | 100% | 2013-10-02 | 2013-10-17 | NEW | 822_AB_W010 |
| 8220B-1790 |  | Main - 132+500 to 132+400 1st Half Invert Prep (rate = 8m/d) (100m) | 12.5d | 2013-10-16 A | 2013-11-02 A | 8220B-7830 | 100% | 2013-11-08 | 2013-11-22 | NEW | 822_AB_W010 |
| 8220B-8470 |  | Main - 132+400 to 132+300 1st Half Invert Prep (rate = 8m/d) (100m) | 12.5d | 2013-11-04 A | 2013-11-14 A | 8220B-1790 | 100% | 2013-12-02 | 2013-12-16 | NEW | 822_AB_W010 |
| 8220B-8480 |  | Main - 132+300 to 132+200 1st Half Invert Prep (rate = 8m/d) (100m) | 12.5d | 2013-11-15 A | 2013-11-21 A | 8220B-8470 | 100% | 2013-12-16 | 2013-12-31 | NEW | 822_AB_W010 |
| 8220B-8490 |  | Main - 132+200 to 132+100 1st Half Invert Prep (rate = 8m/d) (100m) | 12.5d | 2013-11-22 A | 2013-11-27 A | 8220B-8480 | 100% | 2014-01-02 | 2014-01-16 | NEW | 822_AB_W010 |
| 8220B-8500 |  | Main - 132+100 to 132+085 1st Half Invert Prep (rate = 8m/d) (15m) | 2d | 2013-11-28 A | 2014-01-25 A | 8220B-8490, 8220B-3580 FF | 100% | 2014-01-16 | 2014-01-18 | NEW | 822_AB_W010 |
|  | 5 | **1st Invert Slab** |  | 2013-01-14 | 2014-01-25 |  |  |  |  |  |  |
| 8220B-10030 |  | Main - 133+000 to 132+900 1st Half Invert Slab (rate = 8m/d) (100m) | 12.5d | 2013-01-14 A | 2013-02-22 A | 8220B-10040 | 100% | 2013-02-21 | 2013-03-08 | NEW | 822_AB_W010 |
| 8220B-9960 |  | Main - 132+900 to 132+800 1st Half Invert Slab (rate = 8m/d) (100m) | 12.5d | 2013-06-10 A | 2013-06-21 A | 8220B-10030 | 100% | 2013-03-08 | 2013-03-22 | NEW | 822_AB_W010 |
| 8220B-7850 |  | Main - 132+800 to 132+700 1st Half Invert Slab (rate = 8m/d) (100m) | 12.5d | 2013-06-22 A | 2013-07-03 A | 8220B-9960 | 100% | 2013-07-29 | 2013-08-12 | NEW | 822_AB_W010 |
| 8220B-1760 |  | Main - 132+700 to 132+600 1st Half Invert Slab (rate = 8m/d) (100m) | 12.5d | 2013-07-04 A | 2013-09-10 A | 8220B-7850 | 100% | 2013-08-15 | 2013-08-29 | NEW | 822_AB_W010 |
| 8220B-7860 |  | Main - 132+600 to 132+500 1st Half Invert Slab (rate = 8m/d) (100m) | 12.5d | 2013-09-11 A | 2013-10-15 A | 8220B-1760 | 100% | 2013-10-02 | 2013-10-17 | NEW | 822_AB_W010 |
| 8220B-1800 |  | Main - 132+500 to 132+400 1st Half Invert Slab (rate = 8m/d) (100m) | 12.5d | 2013-10-16 A | 2013-11-02 A | 8220B-7860 | 100% | 2013-11-08 | 2013-11-22 | NEW | 822_AB_W010 |
| 8220B-8520 |  | Main - 132+400 to 132+300 1st Half Invert Slab (rate = 8m/d) (100m) | 12.5d | 2013-11-04 A | 2013-11-14 A | 8220B-1800 | 100% | 2013-12-04 | 2013-12-18 | NEW | 822_AB_W010 |
| 8220B-8530 |  | Main - 132+300 to 132+200 1st Half Invert Slab (rate = 8m/d) (100m) | 12.5d | 2013-11-15 A | 2013-11-21 A | 8220B-8520 | 100% | 2013-11-15 | 2013-11-29 | NEW | 822_AB_W010 |
| 8220B-8540 |  | Main - 132+200 to 132+100 1st Half Invert Slab (rate = 8m/d) (100m) | 12.5d | 2013-11-22 A | 2013-11-27 A | 8220B-8530 | 100% | 2014-01-04 | 2014-01-18 | NEW | 822_AB_W010 |
| 8220B-8550 |  | Main - 132+100 to 132+085 1st Half Invert Slab (rate = 8m/d) (15m) | 2d | 2013-11-28 A | 2014-01-25 A | 8220B-8540, 8220B-8500 FF | 100% | 2014-01-20 | 2014-01-21 | NEW | 822_AB_W010 |
|  | 4 | **2nd Invert Prep/Drainage** |  | 2013-01-14 | 2014-01-25 |  |  |  |  |  |  |
| 8220B-10020 |  | Main - 133+000 to 132+900 2nd Half Invert Prep (rate = 8m/d) (100m) | 12.5d | 2013-01-14 A | 2013-02-22 A | 8220B-10030 | 100% | 2013-03-08 | 2013-03-22 | NEW | 822_AB_W010 |
| 8220B-9970 |  | Main - 132+900 to 132+800 2nd Half Invert Prep (rate = 8m/d) (100m) | 12.5d | 2013-06-10 A | 2013-07-20 A | 8220B-10020 | 100% | 2013-03-22 | 2013-04-08 | NEW | 822_AB_W010 |
| 8220B-7880 |  | Main - 132+800 to 132+700 2nd Half Invert Prep (rate = 8m/d) (100m) | 12.5d | 2013-07-20 A | 2013-08-02 A | 8220B-9970 | 100% | 2013-07-29 | 2013-08-12 | NEW | 822_AB_W010 |
| 8220B-1770 |  | Main - 132+700 to 132+600 2nd Half Invert Prep (rate = 8m/d) (100m) | 12.5d | 2013-08-03 A | 2013-09-10 A | 8220B-7880 | 100% | 2013-08-05 | 2013-08-19 | NEW | 822_AB_W010 |
| 8220B-7890 |  | Main - 132.600 to 132+500 2nd Half Invert Prep (rate = 8m/d) (100m) | 12.5d | 2013-09-11 A | 2013-10-15 A | 8220B-1770 | 100% | 2013-10-09 | 2013-10-24 | NEW | 822_AB_W010 |
| 8220B-1810 |  | Main - 132+500 to 132+400 2nd Half Invert Prep (rate = 8m/d) (100m) | 12.5d | 2013-10-16 A | 2013-11-02 A | 8220B-7890 | 100% | 2013-11-08 | 2013-11-22 | NEW | 822_AB_W010 |
| 8220B-8570 |  | Main - 132+400 to 132+300 2nd Half Invert Prep (rate = 8m/d) (100m) | 12.5d | 2013-11-04 A | 2013-11-14 A | 8220B-1810 | 100% | 2013-12-04 | 2013-12-18 | NEW | 822_AB_W010 |
| 8220B-8580 |  | Main - 132+300 to 132+200 2nd Half Invert Prep (rate = 8m/d) (100m) | 12.5d | 2013-11-15 A | 2013-11-21 A | 8220B-8570 | 100% | 2013-12-19 | 2014-01-04 | NEW | 822_AB_W010 |
| 8220B-8590 |  | Main - 132+200 to 132+100 2nd Half Invert Prep (rate = 8m/d) (100m) | 12.5d | 2013-11-22 A | 2013-11-27 A | 8220B-8580 | 100% | 2014-01-04 | 2014-01-18 | NEW | 822_AB_W010 |
| 8220B-8600 |  | Main - 132+100 to 132+085 2nd Half Invert Prep (rate = 8m/d) (100m) | 2d | 2013-11-28 A | 2014-01-25 A | 8220B-8590, 8220B-8550 FF | 100% | 2014-01-20 | 2014-01-21 | NEW | 822_AB_W010 |

| ID | WBS | Activity | Type | Duration | Start | Finish | Predecessors | Complete | Planned start | Planned finish | Total float | Free float | Stef Temp A1 | 822_AB_W010 |
| --- | --- | --- | --- | --- | --- | --- | --- | --- | --- | --- | --- | --- | --- | --- |
|  | 6 | **2nd Invert Slab** |  |  | 2013-01-14 | 2014-01-25 |  |  |  |  |  |  |  |  |
| 8220B-10010 |  | Main - 133+000 to 132+900 2nd Half Invert Slab (rate = 8m/d) (100m) |  | 12.5d | 2013-01-14 A | 2013-02-22 A | 8220B-10020 | 100% | 2013-03-22 | 2013-04-08 |  |  | NEW | 822_AB_W010 |
| 8220B-9980 |  | Main - 132+900 to 132+800 2nd Half Invert Slab (rate = 8m/d) (100m) |  | 12.5d | 2013-06-10 A | 2013-07-20 A | 8220B-10010 | 100% | 2013-04-11 | 2013-04-25 |  |  | NEW | 822_AB_W010 |
| 8220B-7910 |  | Main - 132+800 to 132+700 2nd Half Invert Slab (rate = 8m/d) (100m) |  | 12.5d | 2013-07-20 A | 2013-08-02 A | 8220B-9980 | 100% | 2013-07-29 | 2013-08-12 |  |  | NEW | 822_AB_W010 |
| 8220B-1780 |  | Main - 132+700 to 132+600 2nd Half Invert Slab (rate = 8m/d) (100m) |  | 12.5d | 2013-08-03 A | 2013-09-11 A | 8220B-7910 | 100% | 2013-08-05 | 2013-08-19 |  |  | NEW | 822_AB_W010 |
| 8220B-7920 |  | Main - 132.600 to 132+500 2nd Half Invert Slab (rate = 8m/d) (100m) |  | 12.5d | 2013-09-11 A | 2013-10-15 A | 8220B-1780 | 100% | 2013-10-02 | 2013-10-17 |  |  | NEW | 822_AB_W010 |
| 8220B-1820 |  | Main - 132+500 to 132+400 2nd Half Invert Slab (rate = 8m/d) (100m) |  | 12.5d | 2013-10-16 A | 2013-11-02 A | 8220B-7920 | 100% | 2013-11-08 | 2013-11-22 |  |  | NEW | 822_AB_W010 |
| 8220B-8620 |  | Main - 132+400 to 132+300 2nd Half Invert Slab (rate = 8m/d) (100m) |  | 12.5d | 2013-11-04 A | 2013-11-14 A | 8220B-1820 | 100% | 2013-12-04 | 2013-12-18 |  |  | NEW | 822_AB_W010 |
| 8220B-8630 |  | Main - 132+300 to 132+200 2nd Half Invert Slab (rate = 8m/d) (100m) |  | 12.5d | 2013-11-15 A | 2013-11-21 A | 8220B-8620 | 100% | 2013-12-19 | 2014-01-04 |  |  | NEW | 822_AB_W010 |
| 8220B-8640 |  | Main - 132+200 to 132+100 2nd Half Invert Slab (rate = 8m/d) (100m) |  | 12.5d | 2013-11-22 A | 2013-11-27 A | 8220B-8630 | 100% | 2014-01-04 | 2014-01-18 |  |  | NEW | 822_AB_W010 |
| 8220B-8650 |  | Main - 132+100 to 132+085 2nd Half Invert Slab (rate = 8m/d) (15m) |  | 2d | 2013-11-28 A | 2014-01-25 A | 8220B-8640, 8220B-8600 FF | 100% | 2014-01-20 | 2014-01-21 |  |  | NEW | 822_AB_W010 |
|  | 7 | **Centre Wall** |  |  | 2013-07-12 | 2014-06-01 |  |  |  |  |  |  |  |  |
| 8220B-10000 |  | Main - 133+000 to 132+900 Centre Wall (rate = 8m/d) (100m) |  | 12.5d | 2013-07-12 A | 2013-08-08 A | 8220B-10010 | 100% | 2013-07-23 | 2013-08-06 |  |  | NEW | 822_AB_W010 |
| 8220B-9990 |  | Main - 132+900 to 132+800 Centre Wall (rate = 8m/d) (100m) |  | 12.5d | 2013-08-09 A | 2013-08-23 A | 8220B-10000 | 100% | 2013-09-02 | 2013-09-16 |  |  | NEW | 822_AB_W010 |
| 8220B-5310 |  | Main - 132+800 to 132+700 Centre Wall (rate = 8m/d) (100m) |  | 12.5d | 2013-08-24 A | 2013-09-11 A | 8220B-9990 | 100% | 2013-09-16 | 2013-10-02 |  |  | NEW | 822_AB_W010 |
| 8220B-1910 |  | Main - 132+700 to 132+600 Centre Wall (rate = 8m/d) (100m) |  | 12.5d | 2013-09-12 A | 2013-11-23 A | 8220B-5310 | 100% | 2013-10-02 | 2013-10-17 |  |  | NEW | 822_AB_W010 |
| 8220B-5320 |  | Main - 132.600 to 132+500 Centre Wal (rate = 8m/d) (100m) |  | 12.5d | 2013-11-25 A | 2014-06-01 A | 8220B-1910 | 100% | 2013-12-05 | 2013-12-19 |  |  | NEW | 822_AB_W010 |
| 8220B-1920 |  | Main - 132+500 to 132+400 Centre Wall (rate = 8m/d) (100m) |  | 12.5d | 2013-12-23 A | 2014-03-13 A | 8220B-5320 | 100% | 2014-01-16 | 2014-01-30 |  |  | NEW | 822_AB_W010 |
| 8220B-5470 |  | Main - 132+400 to 132+300 Centre Wal (rate = 8m/d) (100m) |  | 12.5d | 2014-01-03 A | 2014-03-05 A | 8220B-1920 | 100% | 2014-02-12 | 2014-02-26 |  |  | NEW | 822_AB_W010 |
| 8220B-5480 |  | Main - 132+300 to 132+200 Centre Wall (rate = 8m/d) (100m) |  | 12.5d | 2014-01-26 A | 2014-02-11 A | 8220B-5470 | 100% | 2014-02-26 | 2014-03-12 |  |  | NEW | 822_AB_W010 |
| 8220B-5490 |  | Main - 132+200 to 132+100 Centre Wall (rate = 8m/d) (100m) |  | 12.5d | 2014-02-11 A | 2014-02-21 A | 8220B-5480 | 100% | 2014-03-11 | 2014-03-25 |  |  | NEW | 822_AB_W010 |
| 8220B-5500 |  | Main - 132+100 to 132+085 Centre Wall (rate = 8m/d) (100m) |  | 2d | 2014-02-21 A | 2014-02-24 A | 8220B-5490, 8220B-8650 FF | 100% | 2014-03-25 | 2014-03-27 |  |  | NEW | 822_AB_W010 |
|  | 8 | **D/T Walkway and De-Railment Kurbs** |  |  | 2013-08-28 | 2017-02-08 |  |  |  |  |  |  |  |  |
| 8220B-6170 |  | Main - U/T and D/T Walkway and De-railment Kurbs 133+000 to 132+545 (455m) (rate = 22m/d) |  | 22d | 2013-08-28 A | 2014-03-22 A | 8220B-5310, 8220B-5500 | 100% | 2013-12-23 | 2014-01-20 |  |  | NEW | 822_AB_W010 |
| 8220B-12090 |  | Main - Snagging/Remedials/Repairs prior to Hand Over to C830 |  | 12d | 2013-09-16 A | 2013-09-30 A | 8220B-6170 | 100% | 2013-10-09 | 2013-10-24 |  |  | NEW | 822_AB_W010 |
| 8220X-0020 |  | 830 - Commencement Date Tunnel South 133+000 to 132+545 (455m) UT & DT | milestone | 0d | 2013-09-30 A | 2013-09-30 A | 8220B-12090 | 100% | 2013-10-24 | 2013-10-24 |  |  | NEW | 822_AB_W010 |
| 8220B-11700 |  | Main - Remedials and Repair |  | 18d | 2017-01-02 | 2017-01-21 | 8220B-11200 |  |  |  | -532d | 66d | NEW |  |

Notes:
- 8220B-6170: P3 Activity Log Info: ????????4,900m / 32(m/d) ????
- 8220B-12090: P3 Activity Log Info: ????????4,900m / 32(m/d) ????

| ID | WBS | Activity | Type | Duration | Start | Finish | Predecessors | Complete | Planned start | Planned finish | Total float | Free float | Constraint | Stef Temp A1 | 822_AB_W010 |
| --- | --- | --- | --- | --- | --- | --- | --- | --- | --- | --- | --- | --- | --- | --- | --- |
|  | 1 | **Section 1** |  |  | 2014-04-04 | 2017-01-14 |  |  |  |  |  |  |  |  |  |
| 8220B-10980 |  | Main - 132+533 to 132+085 D/T Walkway (448m) (rate = 45m/d) |  | 10d | 2014-04-04 A | 2014-06-01 A | 8220B-12090, 8220B-12140 | 100% | 2014-04-01 | 2014-04-12 |  |  |  | NEW | 822_AB_W010 |
| 8220B-10990 |  | Main - 132+085 to 131+449 DT Walkway (636m) (rate = 45m/d) |  | 14d | 2014-04-19 A | 2014-06-01 A | 8220B-10980 | 100% | 2014-04-09 | 2014-04-29 |  |  |  | NEW | 822_AB_W010 |
| 8220B-11090 |  | Main - 131+449 to 130+955 DT Walkway (504m) (rate = 45m/d) |  | 11d | 2014-05-14 A | 2014-06-01 A | 8220B-10990 | 100% | 2014-06-17 | 2014-06-30 |  |  |  | NEW | 822_AB_W010 |
|  | 1 | **Derailment Kurb+Close Opening** |  |  | 2014-05-09 | 2017-01-14 |  |  |  |  |  |  |  |  |  |
| 8220B-11870 |  | Main - Derailment Upstands and Close openings 132+533 to 130+955 |  | 36.93d | 2014-05-09 A | 2014-06-30 A | 8220B-10980 | 100% | 2014-06-05 | 2014-07-19 |  |  |  | NEW | 822_AB_W010 |
| 8220B-12220 |  | Main - Snagging/Remedials/Repairs prior to Hand Over to C830 132+545 to 130+955 |  | 12d | 2017-01-02 | 2017-01-14 | 8220B-11870 |  |  |  | -1006d | 0d |  | NEW |  |
|  | 2 | **Section 2** |  |  | 2014-04-15 | 2017-01-16 |  |  |  |  |  |  |  |  |  |
| 8220B-11100 |  | Main - 130+955 to 129+955 DT Walkway (1000m) (rate = 45m/d) |  | 22d | 2014-04-15 A | 2014-06-01 A | 8220B-11090 | 100% | 2014-04-12 | 2014-05-12 |  |  |  | NEW | 822_AB_W010 |
| 8220B-12230 |  | Main - Derailment Upstands and Close openings 130+955 to 129+955 |  | 21d | 2014-04-23 A | 2014-06-01 A | 8220B-11870 | 100% | 2014-06-24 | 2014-07-19 |  |  |  | NEW | 822_AB_W010 |
| 8220B-12240 |  | Main - Snagging/Remedials/Repairs prior to Hand Over to C830 130+955 to 129+955 |  | 12d | 2017-01-02 | 2017-01-14 | 8220B-12230 |  |  |  | -1006d | 0d |  | NEW |  |
|  | 1 | **Derailment Kurb+Close Opening** |  |  | 2017-01-16 | 2017-01-16 |  |  |  |  |  |  |  |  |  |
| 8220X-140 |  | 830 - Commencement Date Tunnel South 132+545 to 130+955 (1590m) DT ONLY | milestone | 0d | 2017-01-16 | 2017-01-16 | 8220B-12220 |  |  |  | -526d | 383.51d |  | NEW |  |
| 8220X-150 |  | 830 - Commencement Date Tunnel South 130+955 to 129+892 (1063m) DT ONLY | milestone | 0d | 2017-01-16 | 2017-01-16 | 8220B-12240 |  |  |  | -526d | 383.51d |  | NEW |  |
|  | 3 | **Section 3** |  |  | 2014-05-17 | 2017-02-08 |  |  |  |  |  |  |  |  |  |
| 8220B-11200 |  | Main - 129+955 to 128+995 DT Walkway (1000m) (rate = 45m/d) |  | 22d | 2014-05-17 A | 2014-06-30 A | 8220B-11100 | 100% | 2014-06-05 | 2014-07-03 |  |  |  | NEW | 822_AB_W010 |
| 8220B-12250 |  | Main - Derailment Upstands and Close openings 129+955 to 128+995 |  | 21d | 2017-01-02 | 2017-01-25 | 8220B-12230 |  |  |  | -1039d | 0d |  | NEW |  |
| 8220B-12260 |  | Main - Snagging/Remedials/Repairs prior to Hand Over to C830 129+955 to 128+995 |  | 12d | 2017-01-26 | 2017-02-08 | 8220B-12250 |  |  |  | -1039d | 39d |  | NEW |  |
|  | 1 | **Derailment Kurb+Close Opening** |  |  |  |  |  |  |  |  |  |  |  |  |  |
|  | 3 | **Type M - Heading North from Shing Mun** |  |  | 2012-08-08 | 2017-05-29 |  |  |  |  |  |  |  |  |  |
| 8220B-10310 |  | Place order for 2nd Type M Formwork Shutter (Expected Early date) | milestone | 0d | 2012-08-08 A | 2012-08-08 A |  | 100% | 2012-09-01 | 2012-09-01 |  |  | finish on 2012-07-09 | NEW | 822_AB_W010 |
| 8220B-10320 |  | Fabrication of 2nd Type M Formwork Shutter |  | 100d | 2012-08-08 A | 2012-12-31 A | 8220B-10310 | 100% | 2012-09-01 | 2013-01-02 |  |  | as late as possible | NEW | 822_AB_W010 |
| 8220B-10330 |  | Delivery to Hong Kong Shek Yam Site |  | 11d | 2013-01-14 A | 2013-01-29 A | 8220B-10320 | 100% | 2013-02-01 | 2013-02-16 |  |  | as late as possible | NEW | 822_AB_W010 |
| 8220B-10340 |  | Assemble 2nd Type M Formwork in Tunnel |  | 36d | 2013-02-18 A | 2013-07-06 A | 8220B-10330, 8220B-3580, 8220B-9940 | 100% | 2013-03-09 | 2013-04-23 |  |  |  | NEW | 822_AB_W010 |
| 8220B-10350 |  | Test and Commission 2nd Type M Formwork Shutter |  | 5d | 2013-07-08 A | 2013-07-13 A | 8220B-10340 | 100% | 2013-07-27 | 2013-08-01 |  |  |  | NEW | 822_AB_W010 |

| ID | WBS | Activity | Duration | Start | Finish | Predecessors | Complete | Planned start | Planned finish | Stef Temp A1 | 822_AB_W010 |
| --- | --- | --- | --- | --- | --- | --- | --- | --- | --- | --- | --- |
|  | 1 | **Rail, Kicker, Membrane** |  | 2013-01-24 | 2014-01-25 |  |  |  |  |  |  |
| 8220B-1660 |  | Main - 132+055 to 131+949 Kicker, Membrane (106m) (rate = 5.76m/d) | 18.4d | 2013-01-24 A | 2013-04-06 A | 8220B-10350 FS-12d | 100% | 2013-03-20 | 2013-04-12 | NEW | 822_AB_W010 |
| 8220B-2280 |  | Main - 131+949 to 131+849 Kicker, Membrane (100m) (rate = 5.76m/d) | 17.36d | 2013-04-08 A | 2013-05-10 A | 8220B-1660 | 100% | 2013-07-04 | 2013-07-25 | NEW | 822_AB_W010 |
| 8220B-2290 |  | Main - 131+849 to 131+749 Kicker, Membrane (100m) (rate = 10m/d) | 10d | 2013-05-10 A | 2013-06-24 A | 8220B-2280 | 100% | 2013-08-03 | 2013-08-15 | NEW | 822_AB_W010 |
| 8220B-2300 |  | Main - 131+749 to 131+649 Kicker, Membrane (100m) (rate = 10m/d) | 10d | 2013-06-25 A | 2013-09-05 A | 8220B-2290 | 100% | 2013-09-03 | 2013-09-13 | NEW | 822_AB_W010 |
| 8220B-2310 |  | Main - 131+649 to 131+549 Kicker, Membrane (100m) (rate = 10m/d) | 10d | 2013-09-06 A | 2013-09-28 A | 8220B-2300 | 100% | 2013-10-05 | 2013-10-17 | NEW | 822_AB_W010 |
| 8220B-2320 |  | Main - 131+549 to 131+449 Kicker, Membrane (100m) (rate = 10m/d) | 10d | 2013-09-30 A | 2013-11-20 A | 8220B-2310 | 100% | 2013-10-15 | 2013-10-25 | NEW | 822_AB_W010 |
| 8220B-2330 |  | Main - 131+449 to 131+349 Kicker, Membrane (100m) (rate = 10m/d) | 10d | 2013-11-21 A | 2013-12-03 A | 8220B-2320 | 100% | 2013-12-12 | 2013-12-24 | NEW | 822_AB_W010 |
| 8220B-2340 |  | Main - 131+349 to 131+249 Kicker, Membrane (100m) (rate = 10m/d) | 10d | 2013-12-04 A | 2013-12-14 A | 8220B-2330 | 100% | 2014-01-04 | 2014-01-16 | NEW | 822_AB_W010 |
| 8220B-2350 |  | Main - 131+249 to 131+149 Kicker, Membrane (100m) (rate = 10m/d) | 10d | 2013-12-16 A | 2013-12-23 A | 8220B-2340 | 100% | 2014-01-16 | 2014-01-28 | NEW | 822_AB_W010 |
| 8220B-2360 |  | Main - 131+149 to 131+049 Kicker, Membrane (100m) (rate = 10m/d) | 10d | 2013-12-24 A | 2014-01-04 A | 8220B-2350 | 100% | 2014-01-28 | 2014-02-12 | NEW | 822_AB_W010 |
| 8220B-2370 |  | Main - 131+049 to 130+945 Kicker, Membrane (104m) (rate = 10m/d) | 10.4d | 2014-01-04 A | 2014-01-25 A | 8220B-2360 | 100% | 2014-02-10 | 2014-02-22 | NEW | 822_AB_W010 |
|  | 2 | **Permanent Concrete Lining** |  | 2013-07-15 | 2014-05-20 |  |  |  |  |  |  |
| 8220B-1720 |  | Main - 132+055 to 131+949 Perm Concrete Lining (106m) (rate = 5.76m/d) | 18.4d | 2013-07-15 A | 2013-09-18 A | 8220B-1660 FS-6d, 8220B-10350, 8220B-3580 | 100% | 2013-08-02 | 2013-08-23 | NEW | 822_AB_W010 |
| 8220B-3420 |  | Main - 131+949 to 131+849 Perm Concrete Lining (100m) (rate = 5.76m/d) | 17.4d | 2013-09-19 A | 2013-10-15 A | 8220B-1720 | 100% | 2013-09-30 | 2013-10-22 | NEW | 822_AB_W010 |
| 8220B-3430 |  | Main - 131+849 to 131+749 Perm Concrete Lining (100m) (rate = 10m/d) | 10d | 2013-10-16 A | 2013-11-03 A | 8220B-3420 | 100% | 2013-11-09 | 2013-11-21 | NEW | 822_AB_W010 |
| 8220B-3440 |  | Main - 131+749 to 131+649 Perm Concrete Lining (100m) (rate = 10m/d) | 10d | 2013-11-04 A | 2013-11-22 A | 8220B-3430 | 100% | 2013-12-03 | 2013-12-14 | NEW | 822_AB_W010 |
| 8220B-3450 |  | Main - 131+649 to 131+549 Perm Concrete Lining (100m) (rate = 10m/d) | 10d | 2013-11-23 A | 2013-12-09 A | 8220B-3440 | 100% | 2013-12-14 | 2013-12-27 | NEW | 822_AB_W010 |
| 8220B-3460 |  | Main - 131+549 to 131+449 Perm Concrete Lining (100m) (rate = 10m/d) | 10d | 2013-12-10 A | 2013-12-28 A | 8220B-3450 | 100% | 2014-01-07 | 2014-01-18 | NEW | 822_AB_W010 |
| 8220B-3470 |  | Main - 131+449 to 131+349 Perm Concrete Lining (100m) (rate = 10m/d) | 10d | 2013-12-29 A | 2014-01-15 A | 8220B-3460 | 100% | 2014-01-18 | 2014-01-30 | NEW | 822_AB_W010 |
| 8220B-3480 |  | Main - 131+349 to 131+249 Perm Concrete Lining (100m) (rate = 10m/d) | 10d | 2014-01-15 A | 2014-02-08 A | 8220B-3470 | 100% | 2014-02-13 | 2014-02-25 | NEW | 822_AB_W010 |
| 8220B-3490 |  | Main - 131+249 to 131+149 Perm Concrete Lining (100m) (rate = 10m/d) | 10d | 2014-02-08 A | 2014-02-26 A | 8220B-3480 | 100% | 2014-03-04 | 2014-03-15 | NEW | 822_AB_W010 |
| 8220B-3500 |  | Main - 131+149 to 131+049 Perm Concrete Lining (100m) (rate = 10m/d) | 10d | 2014-02-26 A | 2014-03-15 A | 8220B-3490 | 100% | 2014-03-15 | 2014-03-27 | NEW | 822_AB_W010 |
| 8220B-3510 |  | Main - 131+049 to 130+945 Perm Concrete Lining (104m) (rate = 10m/d) | 10.4d | 2014-03-15 A | 2014-05-20 A | 8220B-2370 FF, 8220B-3500 | 100% | 2014-04-11 | 2014-04-23 | NEW | 822_AB_W010 |

Notes:
- 8220B-1660: P3 Activity Log Info: ??????????1157m / 6m/d??
- 8220B-2280: P3 Activity Log Info: ??????????1157m / 6m/d??
- 8220B-2290: P3 Activity Log Info: ??????????1157m / 6m/d??
- 8220B-2300: P3 Activity Log Info: ??????????1157m / 6m/d??
- 8220B-2310: P3 Activity Log Info: ??????????1157m / 6m/d??
- 8220B-2320: P3 Activity Log Info: ??????????1157m / 6m/d??
- 8220B-2330: P3 Activity Log Info: ??????????1157m / 6m/d??
- 8220B-2340: P3 Activity Log Info: ??????????1157m / 6m/d??
- 8220B-2350: P3 Activity Log Info: ??????????1157m / 6m/d??
- 8220B-2360: P3 Activity Log Info: ??????????1157m / 6m/d??
- 8220B-2370: P3 Activity Log Info: ??????????1157m / 6m/d??
- 8220B-1720: P3 Activity Log Info: ?????????? ??
- 8220B-3420: P3 Activity Log Info: ?????????? ??
- 8220B-3430: P3 Activity Log Info: ?????????? ??
- 8220B-3440: P3 Activity Log Info: ?????????? ??
- 8220B-3450: P3 Activity Log Info: ?????????? ??
- 8220B-3460: P3 Activity Log Info: ?????????? ??
- 8220B-3470: P3 Activity Log Info: ?????????? ??
- 8220B-3480: P3 Activity Log Info: ?????????? ??
- 8220B-3490: P3 Activity Log Info: ?????????? ??
- 8220B-3500: P3 Activity Log Info: ?????????? ??
- 8220B-3510: P3 Activity Log Info: ?????????? ??

| ID | WBS | Activity | Duration | Start | Finish | Predecessors | Complete | Planned start | Planned finish | Stef Temp A1 | 822_AB_W010 |
| --- | --- | --- | --- | --- | --- | --- | --- | --- | --- | --- | --- |
|  | 8 | **Suspended Slab** |  | 2013-11-21 | 2014-06-01 |  |  |  |  |  |  |
| 8220B-1960 |  | Main - 132+055 to 131+949 Suspended Slab (106m) (rate = 5.76m/d) | 18.4d | 2013-11-21 A | 2013-12-10 A | 8220B-1720 FS-6d | 100% | 2013-12-02 | 2013-12-23 | NEW | 822_AB_W010 |
| 8220B-4000 |  | Main - 131+949 to 131+849 Suspended Slab (100m) (rate = 5.76m/d) | 17.4d | 2013-12-10 A | 2013-12-19 A | 8220B-1960 | 100% | 2014-01-11 | 2014-02-04 | NEW | 822_AB_W010 |
| 8220B-4010 |  | Main - 131+849 to 131+749 Suspended Slab (100m) (rate = 10m/d) | 10d | 2013-12-20 A | 2014-01-02 A | 8220B-4000 | 100% | 2014-02-04 | 2014-02-15 | NEW | 822_AB_W010 |
| 8220B-4020 |  | Main - 131+749 to 131+649 Suspended Slab (100m) (rate = 10m/d) | 10d | 2014-01-02 A | 2014-01-16 A | 8220B-4010 | 100% | 2014-02-06 | 2014-02-18 | NEW | 822_AB_W010 |
| 8220B-4030 |  | Main - 131+649 to 131+549 Suspended Slab (100m) (rate = 10m/d) | 10d | 2014-01-16 A | 2014-01-29 A | 8220B-4020 | 100% | 2014-02-18 | 2014-03-01 | NEW | 822_AB_W010 |
| 8220B-4040 |  | Main - 131+549 to 131+449 Suspended Slab (100m) (rate = 10m/d) | 10d | 2014-01-29 A | 2014-02-15 A | 8220B-4030 | 100% | 2014-03-01 | 2014-03-13 | NEW | 822_AB_W010 |
| 8220B-4050 |  | Main - 131+449 to 131+349 Suspended Slab (100m) (rate = 10m/d) | 10d | 2014-02-15 A | 2014-02-25 A | 8220B-4040 | 100% | 2014-03-10 | 2014-03-21 | NEW | 822_AB_W010 |
| 8220B-4060 |  | Main - 131+349 to 131+249 Suspended Slab (100m) (rate = 10m/d) | 10d | 2014-02-25 A | 2014-03-11 A | 8220B-4050 | 100% | 2014-03-21 | 2014-04-02 | NEW | 822_AB_W010 |
| 8220B-4070 |  | Main - 131+249 to 131+149 Suspended Slab (100m) (rate = 10m/d) | 10d | 2014-03-11 A | 2014-03-28 A | 8220B-4060 | 100% | 2014-04-12 | 2014-04-24 | NEW | 822_AB_W010 |
| 8220B-4080 |  | Main - 131+149 to 131+049 Suspended Slab (100m) (rate = 10m/d) | 10d | 2014-03-28 A | 2014-04-15 A | 8220B-4070 | 100% | 2014-04-24 | 2014-05-07 | NEW | 822_AB_W010 |
| 8220B-4090 |  | Main - 131+049 to 130+945 Suspended Slab (104m) (rate = 10m/d) | 10.4d | 2014-04-15 A | 2014-06-01 A | 8220B-4080, 8220B-3510 FF | 100% | 2014-05-12 | 2014-05-23 | NEW | 822_AB_W010 |
|  | 3 | **1st Invert Prep/Drainage** |  | 2013-12-25 | 2014-06-01 |  |  |  |  |  |  |
| 8220B-1830 |  | Main - 132+055 to 131+949 1st Half Invert Prepl (106m) (rate = 5.76m/d) | 18.4d | 2013-12-25 A | 2014-01-13 A | 8220B-1960 FS-6d | 100% | 2014-01-02 | 2014-01-23 | NEW | 822_AB_W010 |
| 8220B-7940 |  | Main - 131+949 to 131+849 1st Half Invert Prep (100m) (rate = 5.76m/d) | 17.4d | 2013-12-30 A | 2014-01-21 A | 8220B-1830 | 100% | 2014-01-23 | 2014-02-15 | NEW | 822_AB_W010 |
| 8220B-7950 |  | Main - 131+849 to 131+749 1st Half Invert Prep (100m) (rate = 10m/d) | 10d | 2014-01-21 A | 2014-02-13 A | 8220B-7940 | 100% | 2014-02-24 | 2014-03-07 | NEW | 822_AB_W010 |
| 8220B-7960 |  | Main - 131+749 to 131+649 1st Half Invert Prep (100m) (rate = 10m/d) | 10d | 2014-02-13 A | 2014-02-27 A | 8220B-7950 | 100% | 2014-03-04 | 2014-03-15 | NEW | 822_AB_W010 |
| 8220B-7970 |  | Main - 131+649 to 131+549 1st Half Invert Prep (100m) (rate = 10m/d) | 10d | 2014-02-27 A | 2014-03-06 A | 8220B-7960 | 100% | 2014-03-15 | 2014-03-27 | NEW | 822_AB_W010 |
| 8220B-7980 |  | Main - 131+549 to 131+449 1st Half Invert Prep (100m) (rate = 10m/d) | 10d | 2014-03-06 A | 2014-03-17 A | 8220B-7970 | 100% | 2014-04-03 | 2014-04-16 | NEW | 822_AB_W010 |
| 8220B-7990 |  | Main - 131+449 to 131+349 1st Half Invert Prep (100m) (rate = 10m/d) | 10d | 2014-03-17 A | 2014-03-26 A | 8220B-7980 | 100% | 2014-04-16 | 2014-04-28 | NEW | 822_AB_W010 |
| 8220B-8000 |  | Main - 131+349 to 131+249 1st Half Invert Prep (100m) (rate = 10m/d) | 10d | 2014-03-26 A | 2014-04-02 A | 8220B-7990 | 100% | 2014-04-28 | 2014-05-10 | NEW | 822_AB_W010 |
| 8220B-8010 |  | Main - 131+249 to 131+149 1st Half Invert Prep (100m) (rate = 10m/d) | 10d | 2014-04-02 A | 2014-04-28 A | 8220B-8000 | 100% | 2014-05-10 | 2014-05-21 | NEW | 822_AB_W010 |
| 8220B-8020 |  | Main - 131+149 to 131+049 1st Half Invert Prep (100m) (rate = 10m/d) | 10d | 2014-04-28 A | 2014-05-21 A | 8220B-8010 | 100% | 2014-05-22 | 2014-06-03 | NEW | 822_AB_W010 |
| 8220B-8030 |  | Main - 131+049 to 130+945 1st Half Invert Prep (104m) (rate = 10m/d) | 10.4d | 2014-05-15 A | 2014-06-01 A | 8220B-8020, 8220B-4090 FF | 100% | 2014-06-09 | 2014-06-23 | NEW | 822_AB_W010 |

Notes:
- 8220B-1830: P3 Activity Log Info: ????????1157 / 15m/d ??
- 8220B-7940: P3 Activity Log Info: ????????1157 / 15m/d ??
- 8220B-7950: P3 Activity Log Info: ????????1157 / 15m/d ??
- 8220B-7960: P3 Activity Log Info: ????????1157 / 15m/d ??
- 8220B-7970: P3 Activity Log Info: ????????1157 / 15m/d ??
- 8220B-7980: P3 Activity Log Info: ????????1157 / 15m/d ??
- 8220B-7990: P3 Activity Log Info: ????????1157 / 15m/d ??
- 8220B-8000: P3 Activity Log Info: ????????1157 / 15m/d ??
- 8220B-8010: P3 Activity Log Info: ????????1157 / 15m/d ??
- 8220B-8020: P3 Activity Log Info: ????????1157 / 15m/d ??
- 8220B-8030: P3 Activity Log Info: ????????1157 / 15m/d ??

| ID | WBS | Activity | Duration | Start | Finish | Predecessors | Complete | Planned start | Planned finish | Stef Temp A1 | 822_AB_W010 |
| --- | --- | --- | --- | --- | --- | --- | --- | --- | --- | --- | --- |
|  | 5 | **1st Invert Slab** |  | 2013-12-30 | 2014-06-01 |  |  |  |  |  |  |
| 8220B-1840 |  | Main - 132+055 to 131+949 1st Half Invert Slabl (106m) (rate = 6m/d) | 18.4d | 2013-12-30 A | 2014-01-13 A | 8220B-1830 FS-6d | 100% | 2014-01-16 | 2014-02-10 | NEW | 822_AB_W010 |
| 8220B-8050 |  | Main - 131+949 to 131+849 1st Half Invert Slab (100m) (rate = 5.76m/d) | 17.4d | 2013-12-30 A | 2014-01-21 A | 8220B-1840 | 100% | 2014-02-17 | 2014-03-10 | NEW | 822_AB_W010 |
| 8220B-8060 |  | Main - 131+849 to 131+749 1st Half Invert Slab (100m) (rate = 10m/d) | 10d | 2014-01-21 A | 2014-02-13 A | 8220B-8050 | 100% | 2014-03-10 | 2014-03-21 | NEW | 822_AB_W010 |
| 8220B-8070 |  | Main - 131+749 to 131+649 1st Half Invert Slab (100m) (rate = 10m/d) | 10d | 2014-02-13 A | 2014-02-27 A | 8220B-8060 | 100% | 2014-03-04 | 2014-03-15 | NEW | 822_AB_W010 |
| 8220B-8080 |  | Main - 131+649 to 131+549 1st Half Invert Slab (100m) (rate = 10m/d) | 10d | 2014-02-27 A | 2014-03-06 A | 8220B-8070 | 100% | 2014-03-15 | 2014-03-27 | NEW | 822_AB_W010 |
| 8220B-8090 |  | Main - 131+549 to 131+449 1st Half Invert Slab (100m) (rate = 10m/d) | 10d | 2014-03-06 A | 2014-03-17 A | 8220B-8080 | 100% | 2014-04-03 | 2014-04-16 | NEW | 822_AB_W010 |
| 8220B-8100 |  | Main - 131+449 to 131+349 1st Half Invert Slab (100m) (rate = 10m/d) | 10d | 2014-03-17 A | 2014-03-26 A | 8220B-8090 | 100% | 2014-04-16 | 2014-04-28 | NEW | 822_AB_W010 |
| 8220B-8110 |  | Main - 131+349 to 131+249 1st Half Invert Slab (100m) (rate = 10m/d) | 10d | 2014-03-26 A | 2014-04-02 A | 8220B-8100 | 100% | 2014-04-28 | 2014-05-10 | NEW | 822_AB_W010 |
| 8220B-8120 |  | Main - 131+249 to 131+149 1st Half Invert Slab (100m) (rate = 10m/d) | 10d | 2014-04-02 A | 2014-04-28 A | 8220B-8110 | 100% | 2014-05-10 | 2014-05-21 | NEW | 822_AB_W010 |
| 8220B-8130 |  | Main - 131+149 to 131+049 1st Half Invert Slab (100m) (rate = 10m/d) | 10d | 2014-04-28 A | 2014-05-21 A | 8220B-8120 | 100% | 2014-05-22 | 2014-06-03 | NEW | 822_AB_W010 |
| 8220B-8140 |  | Main - 131+049 to 130+945 1st Half Invert Slab (104m) (rate = 10m/d) | 10.4d | 2014-05-15 A | 2014-06-01 A | 8220B-8030 FF, 8220B-8130 | 100% | 2014-06-09 | 2014-06-23 | NEW | 822_AB_W010 |
|  | 4 | **2nd Invert Prep/Drainage** |  | 2013-12-25 | 2014-06-01 |  |  |  |  |  |  |
| 8220B-1850 |  | Main - 132+055 to 131+949 2nd Half Invert Prepl (106m) (rate = 5.76m/d) | 18.4d | 2013-12-25 A | 2014-01-13 A | 8220B-1840 FS-6d | 100% | 2014-01-30 | 2014-02-25 | NEW | 822_AB_W010 |
| 8220B-8160 |  | Main - 131+949 to 131+849 2nd Half Invert Prep (100m) (rate = 5.76m/d) | 17.4d | 2013-12-30 A | 2014-01-21 A | 8220B-1850 | 100% | 2014-02-17 | 2014-03-08 | NEW | 822_AB_W010 |
| 8220B-8170 |  | Main - 131+849 to 131+749 2nd Half Invert Prep (100m) (rate = 10m/d) | 10d | 2014-01-21 A | 2014-02-13 A | 8220B-8160 | 100% | 2014-03-08 | 2014-03-20 | NEW | 822_AB_W010 |
| 8220B-8180 |  | Main - 131+749 to 131+649 2nd Half Invert Prep (100m) (rate = 10m/d) | 10d | 2014-02-13 A | 2014-02-27 A | 8220B-8170 | 100% | 2014-03-04 | 2014-03-15 | NEW | 822_AB_W010 |
| 8220B-8190 |  | Main - 131+649 to 131+549 2nd Half Invert Prep (100m) (rate = 10m/d) | 10d | 2014-02-27 A | 2014-03-06 A | 8220B-8180 | 100% | 2014-03-15 | 2014-03-27 | NEW | 822_AB_W010 |
| 8220B-8200 |  | Main - 131+549 to 131+449 2nd Half Invert Prep (100m) (rate = 10m/d) | 10d | 2014-03-06 A | 2014-03-17 A | 8220B-8190 | 100% | 2014-04-03 | 2014-04-16 | NEW | 822_AB_W010 |
| 8220B-8210 |  | Main - 131+449 to 131+349 2nd Half Invert Prep (100m) (rate = 10m/d) | 10d | 2014-03-17 A | 2014-03-26 A | 8220B-8200 | 100% | 2014-04-16 | 2014-04-28 | NEW | 822_AB_W010 |
| 8220B-8220 |  | Main - 131+349 to 131+249 2nd Half Invert Prep (100m) (rate = 10m/d) | 10d | 2014-03-26 A | 2014-04-02 A | 8220B-8210 | 100% | 2014-04-28 | 2014-05-10 | NEW | 822_AB_W010 |
| 8220B-8230 |  | Main - 131+249 to 131+149 2nd Half Invert Prep (100m) (rate = 10m/d) | 10d | 2014-04-02 A | 2014-04-28 A | 8220B-8220 | 100% | 2014-05-10 | 2014-05-21 | NEW | 822_AB_W010 |
| 8220B-8240 |  | Main - 131+149 to 131+049 2nd Half Invert Prep (100m) (rate = 10m/d) | 10d | 2014-04-28 A | 2014-05-21 A | 8220B-8230 | 100% | 2014-05-22 | 2014-06-03 | NEW | 822_AB_W010 |
| 8220B-8250 |  | Main - 131+049 to 130+945 2nd Half Invert Prep (104m) (rate = 10m/d) | 10.4d | 2014-05-15 A | 2014-06-01 A | 8220B-8140 FF, 8220B-8240 | 100% | 2014-06-09 | 2014-06-23 | NEW | 822_AB_W010 |

| ID | WBS | Activity | Duration | Start | Finish | Predecessors | Complete | Planned start | Planned finish | Total float | Free float | Stef Temp A1 | 822_AB_W010 |
| --- | --- | --- | --- | --- | --- | --- | --- | --- | --- | --- | --- | --- | --- |
|  | 6 | **2nd Invert Slab** |  | 2013-12-30 | 2014-06-01 |  |  |  |  |  |  |  |  |
| 8220B-1860 |  | Main - 132+055 to 131+949 2nd Half Invert Slabl (106m) (rate = 5.76m/d) | 18.4d | 2013-12-30 A | 2014-01-13 A | 8220B-1850 FS-6d | 100% | 2014-02-18 | 2014-03-11 |  |  | NEW | 822_AB_W010 |
| 8220B-8270 |  | Main - 131+949 to 131+849 2nd Half Invert Slab (100m) (rate = 5.76m/d) | 17.4d | 2013-12-30 A | 2014-01-21 A | 8220B-1860 | 100% | 2014-02-17 | 2014-03-10 |  |  | NEW | 822_AB_W010 |
| 8220B-8280 |  | Main - 131+849 to 131+749 2nd Half Invert Slab (100m) (rate = 10m/d) | 10d | 2014-01-21 A | 2014-02-13 A | 8220B-8270 | 100% | 2014-03-10 | 2014-03-21 |  |  | NEW | 822_AB_W010 |
| 8220B-8290 |  | Main - 131+749 to 131+649 2nd Half Invert Slab (100m) (rate = 10m/d) | 10d | 2014-02-13 A | 2014-02-27 A | 8220B-8280 | 100% | 2014-03-04 | 2014-03-15 |  |  | NEW | 822_AB_W010 |
| 8220B-8300 |  | Main - 131+649 to 131+549 2nd Half Invert Slab (100m) (rate = 10m/d) | 10d | 2014-02-27 A | 2014-03-06 A | 8220B-8290 | 100% | 2014-03-15 | 2014-03-27 |  |  | NEW | 822_AB_W010 |
| 8220B-8310 |  | Main - 131+549 to 131+449 2nd Half Invert Slab (100m) (rate = 10m/d) | 10d | 2014-03-06 A | 2014-03-17 A | 8220B-8300 | 100% | 2014-04-03 | 2014-04-16 |  |  | NEW | 822_AB_W010 |
| 8220B-8320 |  | Main - 131+449 to 131+349 2nd Half Invert Slab (100m) (rate = 10m/d) | 10d | 2014-03-17 A | 2014-03-26 A | 8220B-8310 | 100% | 2014-04-16 | 2014-04-28 |  |  | NEW | 822_AB_W010 |
| 8220B-8330 |  | Main - 131+349 to 131+249 2nd Half Invert Slab (100m) (rate = 10m/d) | 10d | 2014-03-26 A | 2014-04-02 A | 8220B-8320 | 100% | 2014-04-28 | 2014-05-10 |  |  | NEW | 822_AB_W010 |
| 8220B-8340 |  | Main - 131+249 to 131+149 2nd Half Invert Slab (100m) (rate = 10m/d) | 10d | 2014-04-02 A | 2014-04-28 A | 8220B-8330 | 100% | 2014-05-10 | 2014-05-21 |  |  | NEW | 822_AB_W010 |
| 8220B-8380 |  | Main - 131+149 to 131+049 2nd Half Invert Slab (100m) (rate = 10m/d) | 10d | 2014-04-28 A | 2014-05-21 A | 8220B-8340 | 100% | 2014-05-22 | 2014-06-03 |  |  | NEW | 822_AB_W010 |
| 8220B-8420 |  | Main - 131+049 to 130+945 2nd Half Invert Slab (104m) (rate = 10m/d) | 10.4d | 2014-05-15 A | 2014-06-01 A | 8220B-8250 FF, 8220B-8380 | 100% | 2014-06-09 | 2014-06-23 |  |  | NEW | 822_AB_W010 |
|  | 7 | **Centre Wall** |  | 2014-02-20 | 2017-01-13 |  |  |  |  |  |  |  |  |
| 8220B-1930 |  | Main - 132+049 to 131+949 Centre Wall (106m) (rate = 5.76m/d) | 18.4d | 2014-02-20 A | 2014-06-01 A | 8220B-1860 FS-6d | 100% | 2014-03-01 | 2014-03-22 |  |  | NEW | 822_AB_W010 |
| 8220B-5790 |  | Main - 131+949 to 131+849 Centre Wall (100m) (rate = 5.76m/d) | 17.4d | 2014-02-28 A | 2014-03-08 A | 8220B-1930 | 100% | 2014-03-22 | 2014-04-12 |  |  | NEW | 822_AB_W010 |
| 8220B-5800 |  | Main - 131+849 to 131+749 Centre Wall(100m) (rate = 10m/d) | 10d | 2014-03-08 A | 2014-03-18 A | 8220B-5790 | 100% | 2014-04-19 | 2014-05-02 |  |  | NEW | 822_AB_W010 |
| 8220B-5810 |  | Main - 131+749 to 131+649 Centre Wall (100m) (rate = 10m/d) | 10d | 2014-03-18 A | 2014-03-28 A | 8220B-5800 | 100% | 2014-05-02 | 2014-05-14 |  |  | NEW | 822_AB_W010 |
| 8220B-5820 |  | Main - 131+649 to 131+549 Centre Wall (100m) (rate = 10m/d) | 10d | 2014-03-28 A | 2014-04-04 A | 8220B-5810 | 100% | 2014-05-14 | 2014-05-26 |  |  | NEW | 822_AB_W010 |
| 8220B-5830 |  | Main - 131+549 to 131+449 Centre Wall (100m) (rate = 10m/d) | 10d | 2014-04-04 A | 2014-04-17 A | 8220B-5820 | 100% | 2014-05-10 | 2014-05-22 |  |  | NEW | 822_AB_W010 |
| 8220B-5840 |  | Main - 131+449 to 131+349 Centre Wall (100m) (rate = 10m/d) | 10d | 2014-04-17 A | 2014-04-23 A | 8220B-5830 | 100% | 2014-05-22 | 2014-06-04 |  |  | NEW | 822_AB_W010 |
| 8220B-5850 |  | Main - 131+349 to 131+249 Centre Wall (100m) (rate = 10m/d) | 10d | 2014-04-23 A | 2014-06-01 A | 8220B-5840 | 100% | 2014-06-04 | 2014-06-17 |  |  | NEW | 822_AB_W010 |
| 8220B-5860 |  | Main - 131+249 to 131+149 Centre Wall (100m) (rate = 10m/d) | 10d | 2014-05-08 A | 2014-05-17 A | 8220B-5850 | 100% | 2014-06-10 | 2014-06-23 |  |  | NEW | 822_AB_W010 |
| 8220B-5870 |  | Main - 131+149 to 131+049 Centre Wall (100m) (rate = 10m/d) | 10d | 2014-05-17 A | 2014-06-01 A | 8220B-5860 | 100% | 2014-06-23 | 2014-07-05 |  |  | NEW | 822_AB_W010 |
| 8220B-5880 |  | Main - 131+049 to 130+945 Centre Wall (104m) (rate = 10m/d) | 10.4d | 2017-01-02 | 2017-01-13 | 8220B-5870, 8220B-8420 FF |  |  |  | -1004.4d | 115.8d | NEW |  |

| ID | WBS | Activity | Duration | Start | Finish | Predecessors | Complete | Planned start | Planned finish | Total float | Free float | Stef Temp A1 | 822_AB_W010 |
| --- | --- | --- | --- | --- | --- | --- | --- | --- | --- | --- | --- | --- | --- |
|  | 10 | **D/T Walkway and De-Railment Kurbs** |  |  |  |  |  |  |  |  |  |  |  |
|  | 9 | **OHVD Centre Wall** |  | 2017-01-02 | 2017-05-29 |  |  |  |  |  |  |  |  |
| 8220B-1940 |  | Main - 132+049 to 131+949 OHVD Centre Wall (106m) (rate = 5.76m/d) | 18.4d | 2017-01-02 | 2017-01-23 | 8220B-1930 FS-6d |  |  |  | -1120.2d | 0d | NEW |  |
| 8220B-5360 |  | Main - 131+949 to 131+849 OHVD Centre Wall (100m) (rate = 5.76m/d) | 17.4d | 2017-01-23 | 2017-02-11 | 8220B-1940 |  |  |  | -1120.2d | 0d | NEW |  |
| 8220B-5370 |  | Main - 131+849 to 131+749 OHVD Centre Wall (100m) (rate = 10m/d) | 10d | 2017-02-11 | 2017-02-23 | 8220B-5360 |  |  |  | -1120.2d | 0d | NEW |  |
| 8220B-5380 |  | Main - 131+749 to 131+649 OHVD Centre Wall (100m) (rate = 10m/d) | 10d | 2017-02-23 | 2017-03-07 | 8220B-5370 |  |  |  | -1120.2d | 0d | NEW |  |
| 8220B-5390 |  | Main - 131+649 to 131+549 OHVD Centre Wall (100m) (rate = 10m/d) | 10d | 2017-03-07 | 2017-03-18 | 8220B-5380 |  |  |  | -1120.2d | 0d | NEW |  |
| 8220B-5400 |  | Main - 131+549 to 131+449 OHVD Centre Wall (100m) (rate = 10m/d) | 10d | 2017-03-18 | 2017-03-30 | 8220B-5390 |  |  |  | -1120.2d | 0d | NEW |  |
| 8220B-5410 |  | Main - 131+449 to 131+349 OHVD Centre Wall (100m) (rate = 10m/d) | 10d | 2017-03-30 | 2017-04-11 | 8220B-5400 |  |  |  | -1120.2d | 0d | NEW |  |
| 8220B-5420 |  | Main - 131+349 to 131+249 OHVD Centre Wall (100m) (rate = 10m/d) | 10d | 2017-04-11 | 2017-04-22 | 8220B-5410 |  |  |  | -1120.2d | 0d | NEW |  |
| 8220B-5430 |  | Main - 131+249 to 131+149 OHVD Centre Wall (100m) (rate = 10m/d) | 10d | 2017-04-22 | 2017-05-04 | 8220B-5420 |  |  |  | -1120.2d | 0d | NEW |  |
| 8220B-5440 |  | Main - 131+149 to 131+049 OHVD Centre Wall (100m) (rate = 10m/d) | 10d | 2017-05-04 | 2017-05-16 | 8220B-5430 |  |  |  | -1120.2d | 0d | NEW |  |
| 8220B-5450 |  | Main - 131+049 to 130+945 OHVD Centre Wall (104m) (rate = 10m/d) | 10.4d | 2017-05-16 | 2017-05-29 | 8220B-5440, 8220B-5880 FF |  |  |  | -1120.2d | 0d | NEW |  |
|  | 4 | **Type P - Ch130946 to Ch130905** |  | 2014-01-26 | 2017-02-11 |  |  |  |  |  |  |  |  |
| 8220B-5515 |  | Main - 130+946 to 130+905 Kicker, Membrane (41m) | 12d | 2014-01-26 A | 2014-03-15 A | 8220B-5505 | 100% | 2014-03-11 | 2014-03-25 |  |  | NEW | 822_AB_W010 |
| 8220B-5505 |  | Assemble 1 x Type P Formwork in Tunnel | 21d | 2014-03-15 A | 2014-04-24 A | 8220B-1950 | 100% | 2014-05-02 | 2014-05-26 |  |  | NEW | 822_AB_W010 |
| 8220B-5525 |  | Main - 130+946 to 130+905 Perm Concrete Lining (41m) | 12d | 2014-04-25 A | 2014-06-01 A | 8220B-5515 | 100% | 2014-05-02 | 2014-05-15 |  |  | NEW | 822_AB_W010 |
| 8220B-5585 |  | Main - 130+946 to 130+905 Suspended Slab w/TVS (41m) | 12d | 2017-01-02 | 2017-01-14 | 8220B-5525 |  |  |  | -1030d | 0d | NEW |  |
| 8220B-5575 |  | Main - 130+946 to 130+905 Centre Wall (41m) | 12d | 2017-01-16 | 2017-01-28 | 8220B-5585 |  |  |  | -1030d | 0d | NEW |  |
| 8220B-5595 |  | Main - 130+946 to 130+905 OHVD Duct Wall (41m) | 12d | 2017-01-30 | 2017-02-11 | 8220B-5575 |  |  |  | -1030d | 90.2d | NEW |  |
|  | 2 | **Type C - Heading North from Ch130.905 to Join Point** |  | 2013-06-05 | 2017-03-25 |  |  |  |  |  |  |  |  |
| 8220B-2010 |  | Main - Mobilise Shutter from Ch132+085 | 5d | 2013-06-05 A | 2013-06-08 A | 8220B-3580, 8220B-9940 | 100% | 2013-07-02 | 2013-07-06 |  |  | NEW | 822_AB_W010 |
|  | 1 | **Rail, Kicker, Membrane** |  | 2013-07-04 | 2014-04-21 |  |  |  |  |  |  |  |  |
| 8220B-1680 |  | Main - 130+892 to 130+792 Kicker and Membrane (rate = 10m/d) (100m) | 10d | 2013-07-04 A | 2013-08-10 A | 8220B-2010 FS-14d | 100% | 2013-08-22 | 2013-09-02 |  |  | NEW | 822_AB_W010 |
| 8220B-2390 |  | Main - 130+792 to 130+692 Kicker and Membrane (rate = 10m/d) (100m) | 10d | 2013-08-10 A | 2013-08-29 A | 8220B-1680 | 100% | 2013-09-03 | 2013-09-13 |  |  | NEW | 822_AB_W010 |
| 8220B-2400 |  | Main - 130+692 to 130+592 Kicker and Membrane (rate = 10m/d) (100m) | 10d | 2013-08-30 A | 2013-09-16 A | 8220B-2390 | 100% | 2013-10-05 | 2013-10-17 |  |  | NEW | 822_AB_W010 |
| 8220B-2410 |  | Main - 130+592 to 130+492 Kicker and Membrane (rate = 10m/d) (100m) | 10d | 2013-09-20 A | 2013-10-17 A | 8220B-2400 | 100% | 2013-10-18 | 2013-10-29 |  |  | NEW | 822_AB_W010 |
| 8220B-2420 |  | Main - 130+492 to 130+392 Kicker and Membrane (rate = 10m/d) (100m) | 10d | 2013-10-18 A | 2013-10-23 A | 8220B-2410 | 100% | 2013-11-13 | 2013-11-23 |  |  | NEW | 822_AB_W010 |
| 8220B-2430 |  | Main - 130+392 to 130+292 Kicker and Membrane (rate = 10m/d) (100m) | 10d | 2013-10-24 A | 2013-11-14 A | 8220B-2420 | 100% | 2013-11-11 | 2013-11-21 |  |  | NEW | 822_AB_W010 |
| 8220B-2440 |  | Main - 130+292 to 130+192 Kicker and Membrane (rate = 10m/d) (100m) | 10d | 2013-11-15 A | 2013-11-25 A | 8220B-2430 | 100% | 2013-12-06 | 2013-12-18 |  |  | NEW | 822_AB_W010 |
| 8220B-2450 |  | Main - 130+192 to 130+092 Kicker and Membrane (rate = 10m/d) (100m) | 10d | 2013-11-26 A | 2013-12-03 A | 8220B-2440 | 100% | 2013-12-18 | 2013-12-31 |  |  | NEW | 822_AB_W010 |
| 8220B-2650 |  | Main - 130+092 to 129+992 Kicker and Membrane (rate = 10m/d) (100m) | 10d | 2013-12-04 A | 2013-12-13 A | 8220B-2450 | 100% | 2014-01-04 | 2014-01-16 |  |  | NEW | 822_AB_W010 |
| 8220B-2460 |  | Main - 129+992 to 129+892 Kicker and Membrane (rate = 10m/d) (100m) | 10d | 2013-12-14 A | 2013-12-23 A | 8220B-2650 | 100% | 2014-01-16 | 2014-01-28 |  |  | NEW | 822_AB_W010 |
| 8220B-2470 |  | Main - 129+892 to 129+792 Kicker and Membrane (rate = 10m/d) (100m) | 10d | 2013-12-24 A | 2014-01-03 A | 8220B-2460 | 100% | 2014-01-28 | 2014-02-12 |  |  | NEW | 822_AB_W010 |
| 8220B-2480 |  | Main - 129+792 to 129+692 Kicker and Membrane (rate = 10m/d) (100m) | 10d | 2014-01-03 A | 2014-01-28 A | 8220B-2470 | 100% | 2014-02-05 | 2014-02-17 |  |  | NEW | 822_AB_W010 |
| 8220B-2490 |  | Main - 129+692 to 129+592 Kicker and Membrane (rate = 10m/d) (100m) | 10d | 2014-01-28 A | 2014-02-17 A | 8220B-2480 | 100% | 2014-02-17 | 2014-02-28 |  |  | NEW | 822_AB_W010 |
| 8220B-2500 |  | Main - 129+592 to 129+492 Kicker and Membrane (rate = 10m/d) (100m) | 10d | 2014-02-17 A | 2014-02-23 A | 8220B-2490 | 100% | 2014-03-11 | 2014-03-22 |  |  | NEW | 822_AB_W010 |
| 8220B-2510 |  | Main - 129+492 to 129+392 Kicker and Membrane (rate = 10m/d) (100m) | 10d | 2014-02-23 A | 2014-03-04 A | 8220B-2500 | 100% | 2014-03-22 | 2014-04-03 |  |  | NEW | 822_AB_W010 |
| 8220B-2520 |  | Main - 129+392 to 129+292 Kicker and Membrane (rate = 10m/d) (100m) | 10d | 2014-03-04 A | 2014-03-18 A | 8220B-2510 | 100% | 2014-04-02 | 2014-04-15 |  |  | NEW | 822_AB_W010 |
| 8220B-2530 |  | Main - 129+292 to 129+192 Kicker and Membrane (rate = 10m/d) (100m) | 10d | 2014-03-18 A | 2014-03-30 A | 8220B-2520 | 100% | 2014-04-15 | 2014-04-26 |  |  | NEW | 822_AB_W010 |
| 8220B-2580 |  | Main - 129+192 to 128+995 Kicker and Membranel (rate = 10m/d) (197m) | 20d | 2014-03-30 A | 2014-04-21 A | 8220B-2530 | 100% | 2014-04-26 | 2014-05-21 |  |  | NEW | 822_AB_W010 |

Notes:
- 8220B-1680: P3 Activity Log Info: ??????????3142m / 12m/d??
- 8220B-2390: P3 Activity Log Info: ??????????3142m / 12m/d??
- 8220B-2400: P3 Activity Log Info: ??????????3142m / 12m/d??
- 8220B-2410: P3 Activity Log Info: ??????????3142m / 12m/d??
- 8220B-2420: P3 Activity Log Info: ??????????3142m / 12m/d??
- 8220B-2430: P3 Activity Log Info: ??????????3142m / 12m/d??
- 8220B-2440: P3 Activity Log Info: ??????????3142m / 12m/d??
- 8220B-2450: P3 Activity Log Info: ??????????3142m / 12m/d??
- 8220B-2650: P3 Activity Log Info: ??????????3142m / 12m/d??
- 8220B-2460: P3 Activity Log Info: ??????????3142m / 12m/d??
- 8220B-2470: P3 Activity Log Info: ??????????3142m / 12m/d??
- 8220B-2480: P3 Activity Log Info: ??????????3142m / 12m/d??
- 8220B-2490: P3 Activity Log Info: ??????????3142m / 12m/d??
- 8220B-2500: P3 Activity Log Info: ??????????3142m / 12m/d??
- 8220B-2510: P3 Activity Log Info: ??????????3142m / 12m/d??
- 8220B-2520: P3 Activity Log Info: ??????????3142m / 12m/d??
- 8220B-2530: P3 Activity Log Info: ??????????3142m / 12m/d??
- 8220B-2580: P3 Activity Log Info: 1 day deducted - 2797m = 242 days

| ID | WBS | Activity | Duration | Start | Finish | Predecessors | Complete | Planned start | Planned finish | Stef Temp A1 | 822_AB_W010 |
| --- | --- | --- | --- | --- | --- | --- | --- | --- | --- | --- | --- |
|  | 2 | **Permanent Concrete Lining** |  | 2013-08-15 | 2014-04-30 |  |  |  |  |  |  |
| 8220B-1740 |  | Main - 130+892 to 130+792 Perm Concrete Lining (rate = 10m/d) (100m) | 10d | 2013-08-15 A | 2013-09-04 A | 8220B-2010 | 100% | 2013-08-22 | 2013-09-02 | NEW | 822_AB_W010 |
| 8220B-3650 |  | Main - 130+792 to 130+692 Perm Concrete Lining (rate = 10m/d) (100m) | 10d | 2013-09-05 A | 2013-10-02 A | 8220B-1740 | 100% | 2013-09-28 | 2013-10-10 | NEW | 822_AB_W010 |
| 8220B-3660 |  | Main - 130+692 to 130+592 Perm Concrete Lining (rate = 10m/d) (100m) | 10d | 2013-10-03 A | 2013-10-16 A | 8220B-3650 | 100% | 2013-11-01 | 2013-11-13 | NEW | 822_AB_W010 |
| 8220B-3670 |  | Main - 130+592 to 130+492 Perm Concrete Lining (rate = 10m/d) (100m) | 10d | 2013-10-17 A | 2013-10-29 A | 8220B-3660 | 100% | 2013-11-13 | 2013-11-25 | NEW | 822_AB_W010 |
| 8220B-3680 |  | Main - 130+492 to 130+392 Perm Concrete Lining (rate = 10m/d) (100m) | 10d | 2013-10-30 A | 2013-11-11 A | 8220B-3670 | 100% | 2013-11-25 | 2013-12-06 | NEW | 822_AB_W010 |
| 8220B-3690 |  | Main - 130+392 to 130+292 Perm Concrete Lining (rate = 10m/d) (100m) | 10d | 2013-11-12 A | 2013-11-23 A | 8220B-3680 | 100% | 2013-12-11 | 2013-12-23 | NEW | 822_AB_W010 |
| 8220B-3920 |  | Main - 130+292 to 130+192 Perm Concrete Lining (rate = 10m/d) (100m) | 10d | 2013-11-25 A | 2013-12-03 A | 8220B-3690 | 100% | 2013-12-23 | 2014-01-06 | NEW | 822_AB_W010 |
| 8220B-3700 |  | Main - 130+192 to 130+092 Perm Concrete Lining (rate = 10m/d) (100m) | 10d | 2013-12-04 A | 2013-12-12 A | 8220B-3920 | 100% | 2014-01-03 | 2014-01-15 | NEW | 822_AB_W010 |
| 8220B-3710 |  | Main - 130+092 to 129+992 Perm Concrete Lining (rate = 10m/d) (100m) | 10d | 2013-12-13 A | 2013-12-23 A | 8220B-3700 | 100% | 2014-01-15 | 2014-01-27 | NEW | 822_AB_W010 |
| 8220B-3720 |  | Main - 129+992 to 129+892 Perm Concrete Lining (rate = 10m/d) (100m) | 10d | 2013-12-24 A | 2014-01-04 A | 8220B-3710 | 100% | 2014-01-27 | 2014-02-11 | NEW | 822_AB_W010 |
| 8220B-3730 |  | Main - 129+892 to 129+792 Perm Concrete Lining (rate = 10m/d) (100m) | 10d | 2014-01-06 A | 2014-01-17 A | 8220B-3720 | 100% | 2014-02-06 | 2014-02-18 | NEW | 822_AB_W010 |
| 8220B-3740 |  | Main - 129+792 to 129+692 Perm Concrete Lining (rate = 10m/d) (100m) | 10d | 2014-01-18 A | 2014-02-14 A | 8220B-3730 | 100% | 2014-02-18 | 2014-03-01 | NEW | 822_AB_W010 |
| 8220B-3750 |  | Main - 129+692 to 129+592 Perm Concrete Lining (rate = 10m/d) (100m) | 10d | 2014-02-14 A | 2014-02-25 A | 8220B-3740 | 100% | 2014-03-07 | 2014-03-19 | NEW | 822_AB_W010 |
| 8220B-3760 |  | Main - 129+592 to 129+492 Perm Concrete Lining (rate = 10m/d) (100m) | 10d | 2014-02-25 A | 2014-03-08 A | 8220B-3750 | 100% | 2014-03-19 | 2014-03-31 | NEW | 822_AB_W010 |
| 8220B-3770 |  | Main - 129+492 to 129+392 Perm Concrete Lining (rate = 10m/d) (100m) | 10d | 2014-03-08 A | 2014-03-19 A | 8220B-3760 | 100% | 2014-04-10 | 2014-04-22 | NEW | 822_AB_W010 |
| 8220B-3780 |  | Main - 129+392 to 129+292 Perm Concrete Lining (rate = 10m/d) (100m) | 10d | 2014-03-19 A | 2014-03-29 A | 8220B-3770 | 100% | 2014-04-22 | 2014-05-05 | NEW | 822_AB_W010 |
| 8220B-3790 |  | Main - 129+292 to 129+192 Perm Concrete Lining (rate = 10m/d) (100m) | 10d | 2014-03-29 A | 2014-04-09 A | 8220B-3780 | 100% | 2014-05-05 | 2014-05-16 | NEW | 822_AB_W010 |
| 8220B-3840 |  | Main - 129+192 to 128+995 Perm Concrete Lining (rate = 10m/d) (197m) | 20d | 2014-04-09 A | 2014-04-30 A | 8220B-2580 FF, 8220B-3790 | 100% | 2014-05-12 | 2014-06-05 | NEW | 822_AB_W010 |
|  | 3 | **1st Invert Prep/Drainage** |  | 2013-10-26 | 2014-06-01 |  |  |  |  |  |  |
| 8220B-1870 |  | Main - 130+892 to 130+792 1st Half Invert Prep (rate = 10m/d) (100m) | 10d | 2013-10-26 A | 2013-11-08 A | 8220B-1740 FS+2d, 8220B-8500, 8220B-8550 | 100% | 2013-12-10 | 2013-12-21 | NEW | 822_AB_W010 |
| 8220B-8670 |  | Main - 130+792 to 130+692 1st Half Invert Prep (rate = 10m/d) (100m) | 10d | 2013-11-09 A | 2013-11-20 A | 8220B-1870 | 100% | 2013-12-06 | 2013-12-17 | NEW | 822_AB_W010 |
| 8220B-8680 |  | Main - 130+692 to 130+592 1st Half Invert Prep (rate = 10m/d) (100m) | 10d | 2013-11-21 A | 2013-11-28 A | 8220B-8670 | 100% | 2013-12-18 | 2013-12-30 | NEW | 822_AB_W010 |
| 8220B-8690 |  | Main - 130+592 to 130+492 1st Half Invert Prep (rate = 10m/d) (100m) | 10d | 2013-11-29 A | 2013-12-12 A | 8220B-8680 | 100% | 2013-12-31 | 2014-01-11 | NEW | 822_AB_W010 |
| 8220B-8700 |  | Main - 130+492 to 130+392 1st Half Invert Prep (rate = 10m/d) (100m) | 10d | 2013-12-13 A | 2013-12-21 A | 8220B-8690 | 100% | 2014-01-14 | 2014-01-24 | NEW | 822_AB_W010 |
| 8220B-8710 |  | Main - 130+392 to 130+292 1st Half Invert Prep (rate = 10m/d) (100m) | 10d | 2013-12-23 A | 2013-12-30 A | 8220B-8700 | 100% | 2014-01-25 | 2014-02-08 | NEW | 822_AB_W010 |
| 8220B-8720 |  | Main - 130+292 to 130+192 1st Half Invert Prep (rate = 10m/d) (100m) | 10d | 2013-12-31 A | 2014-01-15 A | 8220B-8710 | 100% | 2014-02-10 | 2014-02-20 | NEW | 822_AB_W010 |
| 8220B-8730 |  | Main - 130+192 to 130+092 1st Half Invert Prep (rate = 10m/d) (100m) | 10d | 2014-01-15 A | 2014-01-25 A | 8220B-8720 | 100% | 2014-02-14 | 2014-02-25 | NEW | 822_AB_W010 |
| 8220B-8740 |  | Main - 130+092 to 129+992 1st Half Invert Prep (rate = 10m/d) (100m) | 10d | 2014-01-25 A | 2014-01-27 A | 8220B-8730 | 100% | 2014-02-26 | 2014-03-08 | NEW | 822_AB_W010 |
| 8220B-8750 |  | Main - 129+992 to 129+892 1st Half Invert Prep (rate = 10m/d) (100m) | 10d | 2014-01-27 A | 2014-02-18 A | 8220B-8740 | 100% | 2014-03-10 | 2014-03-20 | NEW | 822_AB_W010 |
| 8220B-8760 |  | Main - 129+892 to 129+792 1st Half Invert Prep (rate = 10m/d) (100m) | 10d | 2014-02-18 A | 2014-02-27 A | 8220B-8750 | 100% | 2014-03-13 | 2014-03-24 | NEW | 822_AB_W010 |
| 8220B-8770 |  | Main - 129+792 to 129+692 1st Half Invert Prep (rate = 10m/d) (100m) | 10d | 2014-02-27 A | 2014-03-13 A | 8220B-8760 | 100% | 2014-03-25 | 2014-04-04 | NEW | 822_AB_W010 |
| 8220B-8780 |  | Main - 129+692 to 129+592 1st Half Invert Prep (rate = 10m/d) (100m) | 10d | 2014-03-13 A | 2014-03-29 A | 8220B-8770 | 100% | 2014-04-08 | 2014-04-19 | NEW | 822_AB_W010 |
| 8220B-8790 |  | Main - 129+592 to 129+492 1st Half Invert Prep (rate = 10m/d) (100m) | 10d | 2014-03-29 A | 2014-04-11 A | 8220B-8780 | 100% | 2014-04-19 | 2014-05-02 | NEW | 822_AB_W010 |
| 8220B-8800 |  | Main - 129+492 to 129+392 1st Half Invert Prep (rate = 10m/d) (100m) | 10d | 2014-04-11 A | 2014-04-19 A | 8220B-8790 | 100% | 2014-05-05 | 2014-05-16 | NEW | 822_AB_W010 |
| 8220B-8810 |  | Main - 129+392 to 129+292 1st Half Invert Prep (rate = 10m/d) (100m) | 10d | 2014-04-19 A | 2014-05-09 A | 8220B-8800 | 100% | 2014-05-16 | 2014-05-28 | NEW | 822_AB_W010 |
| 8220B-8820 |  | Main - 129+292 to 129+192 1st Half Invert Prep (rate = 10m/d) (100m) | 10d | 2014-04-30 A | 2014-06-01 A | 8220B-8810 | 100% | 2014-05-28 | 2014-06-10 | NEW | 822_AB_W010 |
| 8220B-8860 |  | Main - 129+192 to 128+995 1st Half Invert Prepl (rate = 10m/d) (197m) | 20d | 2014-05-26 A | 2014-06-01 A | 8220B-3840 FF, 8220B-8820 | 100% | 2014-06-03 | 2014-06-27 | NEW | 822_AB_W010 |

Notes:
- 8220B-1740: P3 Activity Log Info: ?????????? ?? ??
- 8220B-3650: P3 Activity Log Info: ?????????? ?? ??
- 8220B-3660: P3 Activity Log Info: ?????????? ?? ??
- 8220B-3670: P3 Activity Log Info: ?????????? ?? ??
- 8220B-3680: P3 Activity Log Info: ?????????? ?? ??
- 8220B-3690: P3 Activity Log Info: ?????????? ?? ??
- 8220B-3920: P3 Activity Log Info: ?????????? ?? ??
- 8220B-3700: P3 Activity Log Info: ?????????? ?? ??
- 8220B-3710: P3 Activity Log Info: ?????????? ?? ??
- 8220B-3720: P3 Activity Log Info: ?????????? ?? ??
- 8220B-3730: P3 Activity Log Info: ?????????? ?? ??
- 8220B-3740: P3 Activity Log Info: ?????????? ?? ??
- 8220B-3750: P3 Activity Log Info: ?????????? ?? ??
- 8220B-3760: P3 Activity Log Info: ?????????? ?? ??
- 8220B-3770: P3 Activity Log Info: ?????????? ?? ??
- 8220B-3780: P3 Activity Log Info: ?????????? ?? ??
- 8220B-3790: P3 Activity Log Info: ?????????? ?? ??
- 8220B-3840: P3 Activity Log Info: 1 day deducted - 2797m = 242 days
- 8220B-8860: P3 Activity Log Info: 1 day deducted - 2797m = 242 days

| ID | WBS | Activity | Duration | Start | Finish | Predecessors | Complete | Planned start | Planned finish | Stef Temp A1 | 822_AB_W010 |
| --- | --- | --- | --- | --- | --- | --- | --- | --- | --- | --- | --- |
|  | 5 | **1st Invert Slab** |  | 2013-10-26 | 2014-06-01 |  |  |  |  |  |  |
| 8220B-1880 |  | Main - 130+892 to 130+792 1st Half Invert Slab (rate = 10m/d) (100m) | 10d | 2013-10-26 A | 2013-11-08 A | 8220B-1870 FS+2d | 100% | 2013-12-24 | 2014-01-07 | NEW | 822_AB_W010 |
| 8220B-8940 |  | Main - 130+792 to 130+692 1st Half Invert Slab (rate = 10m/d) (100m) | 10d | 2013-11-09 A | 2013-11-20 A | 8220B-1880 | 100% | 2013-12-06 | 2013-12-17 | NEW | 822_AB_W010 |
| 8220B-8950 |  | Main - 130+692 to 130+592 1st Half Invert Slab (rate = 10m/d) (100m) | 10d | 2013-11-21 A | 2013-11-28 A | 8220B-8940 | 100% | 2013-12-18 | 2013-12-30 | NEW | 822_AB_W010 |
| 8220B-8960 |  | Main - 130+592 to 130+492 1st Half Invert Slab (rate = 10m/d) (100m) | 10d | 2013-11-29 A | 2013-12-12 A | 8220B-8950 | 100% | 2013-12-31 | 2014-01-11 | NEW | 822_AB_W010 |
| 8220B-8970 |  | Main - 130+492 to 130+392 1st Half Invert Slab (rate = 10m/d) (100m) | 10d | 2013-12-13 A | 2013-12-21 A | 8220B-8960 | 100% | 2014-01-14 | 2014-01-24 | NEW | 822_AB_W010 |
| 8220B-8980 |  | Main - 130+392 to 130+292 1st Half Invert Slab (rate = 10m/d) (100m) | 10d | 2013-12-23 A | 2013-12-30 A | 8220B-8970 | 100% | 2014-01-25 | 2014-02-08 | NEW | 822_AB_W010 |
| 8220B-8990 |  | Main - 130+292 to 130+192 1st Half Invert Slab (rate = 10m/d) (100m) | 10d | 2013-12-31 A | 2014-01-15 A | 8220B-8980 | 100% | 2014-02-10 | 2014-02-20 | NEW | 822_AB_W010 |
| 8220B-9000 |  | Main - 130+192 to 130+092 1st Half Invert Slab (rate = 10m/d) (100m) | 10d | 2014-01-15 A | 2014-01-25 A | 8220B-8990 | 100% | 2014-02-14 | 2014-02-26 | NEW | 822_AB_W010 |
| 8220B-9010 |  | Main - 130+092 to 129+992 1st Half Invert Slab (rate = 10m/d) (100m) | 10d | 2014-01-25 A | 2014-01-27 A | 8220B-9000 | 100% | 2014-02-26 | 2014-03-10 | NEW | 822_AB_W010 |
| 8220B-9020 |  | Main - 129+992 to 129+892 1st Half Invert Slab (rate = 10m/d) (100m) | 10d | 2014-01-27 A | 2014-02-18 A | 8220B-9010 | 100% | 2014-03-10 | 2014-03-21 | NEW | 822_AB_W010 |
| 8220B-9030 |  | Main - 129+892 to 129+792 1st Half Invert Slab (rate = 10m/d) (100m) | 10d | 2014-02-18 A | 2014-02-27 A | 8220B-9020 | 100% | 2014-03-13 | 2014-03-24 | NEW | 822_AB_W010 |
| 8220B-9040 |  | Main - 129+792 to 129+692 1st Half Invert Slab (rate = 10m/d) (100m) | 10d | 2014-02-27 A | 2014-03-13 A | 8220B-9030 | 100% | 2014-03-25 | 2014-04-04 | NEW | 822_AB_W010 |
| 8220B-9050 |  | Main - 129+692 to 129+592 1st Half Invert Slab (rate = 10m/d) (100m) | 10d | 2014-03-13 A | 2014-03-29 A | 8220B-9040 | 100% | 2014-04-08 | 2014-04-19 | NEW | 822_AB_W010 |
| 8220B-9060 |  | Main - 129+592 to 129+492 1st Half Invert Slab (rate = 10m/d) (100m) | 10d | 2014-03-29 A | 2014-04-11 A | 8220B-9050 | 100% | 2014-04-19 | 2014-05-02 | NEW | 822_AB_W010 |
| 8220B-9070 |  | Main - 129+492 to 129+392 1st Half Invert Slab (rate = 10m/d) (100m) | 10d | 2014-04-11 A | 2014-04-19 A | 8220B-9060 | 100% | 2014-05-05 | 2014-05-16 | NEW | 822_AB_W010 |
| 8220B-9080 |  | Main - 129+392 to 129+292 1st Half Invert Slab (rate = 10m/d) (100m) | 10d | 2014-04-19 A | 2014-05-09 A | 8220B-9070 | 100% | 2014-05-16 | 2014-05-28 | NEW | 822_AB_W010 |
| 8220B-9090 |  | Main - 129+292 to 129+192 1st Half Invert Slab (rate = 10m/d) (100m) | 10d | 2014-04-30 A | 2014-06-01 A | 8220B-9080 | 100% | 2014-05-28 | 2014-06-10 | NEW | 822_AB_W010 |
| 8220B-9140 |  | Main - 129+192 to 128+995 1st Half Invert Slab (rate = 10m/d) (197m) | 20d | 2014-05-26 A | 2014-06-01 A | 8220B-8860 FF, 8220B-9090 | 100% | 2014-06-03 | 2014-06-27 | NEW | 822_AB_W010 |
|  | 4 | **2nd Invert Prep/Drainage** |  | 2013-10-26 | 2014-06-01 |  |  |  |  |  |  |
| 8220B-1890 |  | Main - 130+892 to 130+792 2nd Half Invert Prep (rate = 10m/d) (100m) | 10d | 2013-10-26 A | 2013-11-08 A | 8220B-1880 FS+2d, 8220B-8600 | 100% | 2013-12-10 | 2013-12-21 | NEW | 822_AB_W010 |
| 8220B-9210 |  | Main - 130+792 to 130+692 2nd Half Invert Prep (rate = 10m/d) (100m) | 10d | 2013-11-09 A | 2013-11-20 A | 8220B-1890 | 100% | 2013-12-06 | 2013-12-17 | NEW | 822_AB_W010 |
| 8220B-9220 |  | Main - 130+692 to 130+592 2nd Half Invert Prep (rate = 10m/d) (100m) | 10d | 2013-11-21 A | 2013-11-28 A | 8220B-9210 | 100% | 2013-12-18 | 2013-12-30 | NEW | 822_AB_W010 |
| 8220B-9230 |  | Main - 130+592 to 130+492 2nd Half Invert Prep (rate = 10m/d) (100m) | 10d | 2013-11-29 A | 2013-12-12 A | 8220B-9220 | 100% | 2013-12-31 | 2014-01-11 | NEW | 822_AB_W010 |
| 8220B-9240 |  | Main - 130+492 to 130+392 2nd Half Invert Prep (rate = 10m/d) (100m) | 10d | 2013-12-13 A | 2013-12-21 A | 8220B-9230 | 100% | 2014-01-14 | 2014-01-24 | NEW | 822_AB_W010 |
| 8220B-9250 |  | Main - 130+392 to 130+292 2nd Half Invert Prep (rate = 10m/d) (100m) | 10d | 2013-12-23 A | 2013-12-30 A | 8220B-9240 | 100% | 2014-01-25 | 2014-02-08 | NEW | 822_AB_W010 |
| 8220B-9260 |  | Main - 130+292 to 130+192 2nd Half Invert Prep (rate = 10m/d) (100m) | 10d | 2013-12-31 A | 2014-01-15 A | 8220B-9250 | 100% | 2014-02-10 | 2014-02-20 | NEW | 822_AB_W010 |
| 8220B-9270 |  | Main - 130+192 to 130+092 2nd Half Invert Prep (rate = 10m/d) (100m) | 10d | 2014-01-15 A | 2014-01-25 A | 8220B-9260 | 100% | 2014-02-14 | 2014-02-25 | NEW | 822_AB_W010 |
| 8220B-9280 |  | Main - 130+092 to 129+992 2nd Half Invert Prep (rate = 10m/d) (100m) | 10d | 2014-01-25 A | 2014-01-27 A | 8220B-9270 | 100% | 2014-02-26 | 2014-03-08 | NEW | 822_AB_W010 |
| 8220B-9290 |  | Main - 129+992 to 129+892 2nd Half Invert Prep (rate = 10m/d) (100m) | 10d | 2014-01-27 A | 2014-02-18 A | 8220B-9280 | 100% | 2014-03-10 | 2014-03-20 | NEW | 822_AB_W010 |
| 8220B-9300 |  | Main - 129+892 to 129+792 2nd Half Invert Prep (rate = 10m/d) (100m) | 10d | 2014-02-18 A | 2014-02-27 A | 8220B-9290 | 100% | 2014-03-13 | 2014-03-24 | NEW | 822_AB_W010 |
| 8220B-9310 |  | Main - 129+792 to 129+692 2nd Half Invert Prep (rate = 10m/d) (100m) | 10d | 2014-02-27 A | 2014-03-13 A | 8220B-9300 | 100% | 2014-03-25 | 2014-04-04 | NEW | 822_AB_W010 |
| 8220B-9320 |  | Main - 129+692 to 129+592 2nd Half Invert Prep (rate = 10m/d) (100m) | 10d | 2014-03-13 A | 2014-03-29 A | 8220B-9310 | 100% | 2014-04-08 | 2014-04-19 | NEW | 822_AB_W010 |
| 8220B-9330 |  | Main - 129+592 to 129+492 2nd Half Invert Prep (rate = 10m/d) (100m) | 10d | 2014-03-29 A | 2014-04-11 A | 8220B-9320 | 100% | 2014-04-19 | 2014-05-02 | NEW | 822_AB_W010 |
| 8220B-9340 |  | Main - 129+492 to 129+392 2nd Half Invert Prep (rate = 10m/d) (100m) | 10d | 2014-04-11 A | 2014-04-19 A | 8220B-9330 | 100% | 2014-05-05 | 2014-05-16 | NEW | 822_AB_W010 |
| 8220B-9350 |  | Main - 129+392 to 129+292 2nd Half Invert Prep (rate = 10m/d) (100m) | 10d | 2014-04-19 A | 2014-05-09 A | 8220B-9340 | 100% | 2014-05-16 | 2014-05-28 | NEW | 822_AB_W010 |
| 8220B-9360 |  | Main - 129+292 to 129+192 2nd Half Invert Prep (rate = 10m/d) (100m) | 10d | 2014-04-30 A | 2014-06-01 A | 8220B-9350 | 100% | 2014-05-28 | 2014-06-10 | NEW | 822_AB_W010 |
| 8220B-9410 |  | Main - 129+192 to128+995 2nd Half Invert Prep (rate = 10m/d) (197m) | 20d | 2014-05-26 A | 2014-06-01 A | 8220B-9140 FF, 8220B-9360 | 100% | 2014-06-03 | 2014-06-27 | NEW | 822_AB_W010 |

Notes:
- 8220B-9140: P3 Activity Log Info: 1 day deducted - 2797m = 242 days
- 8220B-9410: P3 Activity Log Info: 1 day deducted - 2797m = 242 days

| ID | WBS | Activity | Duration | Start | Finish | Predecessors | Complete | Planned start | Planned finish | Total float | Free float | Stef Temp A1 | 822_AB_W010 |
| --- | --- | --- | --- | --- | --- | --- | --- | --- | --- | --- | --- | --- | --- |
|  | 6 | **2nd Invert Slab** |  | 2013-10-26 | 2014-06-01 |  |  |  |  |  |  |  |  |
| 8220B-1900 |  | Main - 130+892 to 130+792 2nd Half Invert Slab (rate = 10m/d) (100m) | 10d | 2013-10-26 A | 2013-11-08 A | 8220B-1890 FS+2d, 8220B-8650 | 100% | 2013-12-24 | 2014-01-07 |  |  | NEW | 822_AB_W010 |
| 8220B-9480 |  | Main - 130+792 to 130+692 2nd Half Invert Slab (rate = 10m/d) (100m) | 10d | 2013-11-09 A | 2013-11-20 A | 8220B-1900 | 100% | 2013-12-06 | 2013-12-17 |  |  | NEW | 822_AB_W010 |
| 8220B-9490 |  | Main - 130+692 to 130+592 2nd Half Invert Slab (rate = 10m/d) (100m) | 10d | 2013-11-21 A | 2013-11-28 A | 8220B-9480 | 100% | 2013-12-18 | 2013-12-30 |  |  | NEW | 822_AB_W010 |
| 8220B-9500 |  | Main - 130+592 to 130+492 2nd Half Invert Slab (rate = 10m/d) (100m) | 10d | 2013-11-29 A | 2013-12-12 A | 8220B-9490 | 100% | 2013-12-31 | 2014-01-11 |  |  | NEW | 822_AB_W010 |
| 8220B-9510 |  | Main - 130+492 to 130+392 2nd Half Invert Slab (rate = 10m/d) (100m) | 10d | 2013-12-13 A | 2013-12-21 A | 8220B-9500 | 100% | 2014-01-14 | 2014-01-24 |  |  | NEW | 822_AB_W010 |
| 8220B-9520 |  | Main - 130+392 to 130+292 2nd Half Invert Slab (rate = 10m/d) (100m) | 10d | 2013-12-23 A | 2013-12-30 A | 8220B-9510 | 100% | 2014-01-25 | 2014-02-08 |  |  | NEW | 822_AB_W010 |
| 8220B-9530 |  | Main - 130+292 to 130+192 2nd Half Invert Slab (rate = 10m/d) (100m) | 10d | 2013-12-31 A | 2014-01-15 A | 8220B-9520 | 100% | 2014-02-10 | 2014-02-20 |  |  | NEW | 822_AB_W010 |
| 8220B-9540 |  | Main - 130+192 to 130+092 2nd Half Invert Slab (rate = 10m/d) (100m) | 10d | 2014-01-15 A | 2014-01-25 A | 8220B-9530 | 100% | 2014-02-14 | 2014-02-26 |  |  | NEW | 822_AB_W010 |
| 8220B-9550 |  | Main - 130+092 to 129+992 2nd Half Invert Slab (rate = 10m/d) (100m) | 10d | 2014-01-25 A | 2014-01-27 A | 8220B-9540 | 100% | 2014-02-26 | 2014-03-10 |  |  | NEW | 822_AB_W010 |
| 8220B-9560 |  | Main - 129+992 to 129+892 2nd Half Invert Slab (rate = 10m/d) (100m) | 10d | 2014-01-27 A | 2014-02-18 A | 8220B-9550 | 100% | 2014-03-10 | 2014-03-21 |  |  | NEW | 822_AB_W010 |
| 8220B-9570 |  | Main - 129+892 to 129+792 2nd Half Invert Slab (rate = 10m/d) (100m) | 10d | 2014-02-18 A | 2014-02-27 A | 8220B-9560 | 100% | 2014-03-13 | 2014-03-24 |  |  | NEW | 822_AB_W010 |
| 8220B-9580 |  | Main - 129+792 to 129+692 2nd Half Invert Slab (rate = 10m/d) (100m) | 10d | 2014-02-27 A | 2014-03-13 A | 8220B-9570 | 100% | 2014-03-25 | 2014-04-04 |  |  | NEW | 822_AB_W010 |
| 8220B-9590 |  | Main - 129+692 to 129+592 2nd Half Invert Slab (rate = 10m/d) (100m) | 10d | 2014-03-13 A | 2014-03-29 A | 8220B-9580 | 100% | 2014-04-08 | 2014-04-19 |  |  | NEW | 822_AB_W010 |
| 8220B-9600 |  | Main - 129+592 to 129+492 2nd Half Invert Slab (rate = 10m/d) (100m) | 10d | 2014-03-29 A | 2014-04-11 A | 8220B-9590 | 100% | 2014-04-19 | 2014-05-02 |  |  | NEW | 822_AB_W010 |
| 8220B-9610 |  | Main - 129+492 to 129+392 2nd Half Invert Slab (rate = 10m/d) (100m) | 10d | 2014-04-11 A | 2014-04-19 A | 8220B-9600 | 100% | 2014-05-05 | 2014-05-16 |  |  | NEW | 822_AB_W010 |
| 8220B-9620 |  | Main - 129+392 to 129+292 2nd Half Invert Slab (rate = 10m/d) (100m) | 10d | 2014-04-19 A | 2014-05-09 A | 8220B-9610 | 100% | 2014-05-16 | 2014-05-28 |  |  | NEW | 822_AB_W010 |
| 8220B-9630 |  | Main - 129+292 to 129+192 2nd Half Invert Slab (rate = 10m/d) (100m) | 10d | 2014-04-30 A | 2014-06-01 A | 8220B-9620 | 100% | 2014-05-28 | 2014-06-10 |  |  | NEW | 822_AB_W010 |
| 8220B-9680 |  | Main - 129+192 to 128+995 2nd Half Invert Slab (rate = 10m/d) (197m) | 20d | 2014-05-26 A | 2014-06-01 A | 8220B-9410 FF, 8220B-9630 | 100% | 2014-06-03 | 2014-06-27 |  |  | NEW | 822_AB_W010 |
|  | 7 | **Centre Wall** |  | 2013-12-30 | 2017-03-25 |  |  |  |  |  |  |  |  |
| 8220B-1950 |  | Main - 130+892 to 130+792 Centre Wall (rate = 10m/d) (100m) | 10d | 2013-12-30 A | 2014-01-13 A | 8220B-1900 FS+2d, 8220B-5500 | 100% | 2014-02-28 | 2014-03-12 |  |  | NEW | 822_AB_W010 |
| 8220B-5520 |  | Main - 130+792 to 130+692 Centre Wall (rate = 10m/d) (100m) | 10d | 2014-01-13 A | 2014-02-21 A | 8220B-1950 | 100% | 2014-02-14 | 2014-02-26 |  |  | NEW | 822_AB_W010 |
| 8220B-5530 |  | Main - 130+692 to 130+592 Centre Wall (rate = 10m/d) (100m) | 10d | 2014-01-21 A | 2014-02-10 A | 8220B-5520 | 100% | 2014-02-26 | 2014-03-10 |  |  | NEW | 822_AB_W010 |
| 8220B-5540 |  | Main - 130+592 to 130+492 Centre Wall (rate = 10m/d) (100m) | 10d | 2014-02-10 A | 2014-03-26 A | 8220B-5530 | 100% | 2014-03-05 | 2014-03-17 |  |  | NEW | 822_AB_W010 |
| 8220B-5550 |  | Main - 130+492 to 130+392 Centre Wall (rate = 10m/d) (100m) | 10d | 2014-02-26 A | 2014-03-04 A | 8220B-5540 | 100% | 2014-03-05 | 2014-03-17 |  |  | NEW | 822_AB_W010 |
| 8220B-5560 |  | Main - 130+392 to 130+292 Centre Wall (rate = 10m/d) (100m) | 10d | 2014-03-04 A | 2014-03-14 A | 8220B-5550 | 100% | 2014-04-08 | 2014-04-19 |  |  | NEW | 822_AB_W010 |
| 8220B-5570 |  | Main - 130+292 to 130+192 Centre Wall (rate = 10m/d) (100m) | 10d | 2014-03-14 A | 2014-04-26 A | 8220B-5560 | 100% | 2014-04-19 | 2014-05-02 |  |  | NEW | 822_AB_W010 |
| 8220B-5580 |  | Main - 130+192 to 130+092 Centre Wall (rate = 10m/d) (100m) | 10d | 2014-04-04 A | 2014-04-27 A | 8220B-5570 | 100% | 2014-05-03 | 2014-05-15 |  |  | NEW | 822_AB_W010 |
| 8220B-5590 |  | Main - 130+092 to 129+992 Centre Wall (rate = 10m/d) (100m) | 10d | 2014-04-10 A | 2014-04-19 A | 8220B-5580 | 100% | 2014-05-15 | 2014-05-27 |  |  | NEW | 822_AB_W010 |
| 8220B-5600 |  | Main - 129+992 to 129+892 Centre Wall (rate = 10m/d) (100m) | 10d | 2014-04-19 A | 2014-05-15 A | 8220B-5590 | 100% | 2014-05-27 | 2014-06-09 |  |  | NEW | 822_AB_W010 |
| 8220B-5610 |  | Main - 129+892 to 129+792 Centre Wall (rate = 10m/d) (100m) | 10d | 2014-05-02 A | 2014-06-01 A | 8220B-5600 | 100% | 2014-06-07 | 2014-06-20 |  |  | NEW | 822_AB_W010 |
| 8220B-5620 |  | Main - 129+792 to 129+692 Centre Wall (rate = 10m/d) (100m) | 10d | 2014-05-07 A | 2014-05-26 A | 8220B-5610 | 100% | 2014-06-04 | 2014-06-17 |  |  | NEW | 822_AB_W010 |
| 8220B-5630 |  | Main - 129+692 to 129+592 Centre Wall (rate = 10m/d) (100m) | 10d | 2014-05-26 A | 2014-06-01 A | 8220B-5620 | 100% | 2014-06-17 | 2014-06-28 |  |  | NEW | 822_AB_W010 |
| 8220B-5640 |  | Main - 129+592 to 129+492 Centre Wall (rate = 10m/d) (100m) | 10d | 2017-01-02 | 2017-01-12 | 8220B-5630 |  |  |  | -1078d | 0d | NEW |  |
| 8220B-5650 |  | Main - 129+492 to 129+392 Centre Wall (rate = 10m/d) (100m) | 10d | 2017-01-13 | 2017-01-24 | 8220B-5640 |  |  |  | -1078d | 0d | NEW |  |
| 8220B-5660 |  | Main - 129+392 to 129+292 Centre Wall (rate = 10m/d) (100m) | 10d | 2017-01-25 | 2017-02-04 | 8220B-5650 |  |  |  | -1078d | 0d | NEW |  |
| 8220B-5670 |  | Main - 129+292 to 129+192 Centre Wall (rate = 10m/d) (100m) | 10d | 2017-02-06 | 2017-02-16 | 8220B-5660 |  |  |  | -1078d | 0d | NEW |  |
| 8220B-5720 |  | Main - 129+192 to 128+995 Centre Wall (rate = 10m/d) (197m) | 20d | 2017-02-17 | 2017-03-11 | 8220B-9680 FF, 8220B-5670 |  |  |  | -1078d | 0d | NEW |  |
| 8220B-12080 |  | Main - De-mobilise/Remedials/Repairs | 12d | 2017-03-13 | 2017-03-25 | 8220B-5720 |  |  |  | -1078d | 0d | NEW |  |

Notes:
- 8220B-9680: P3 Activity Log Info: 1 day deducted - 2797m = 242 days
- 8220B-5720: P3 Activity Log Info: 1 day deducted - 2797m = 242 days

| ID | WBS | Activity | Type | Duration | Start | Finish | Predecessors | Complete | Planned start | Planned finish | Total float | Free float | Calendar | Stef Temp A1 | 822_AB_W010 | L1 : Project | L2 : Phase | L3 : Area | L4 : Sub-Area | L5 : Element | L6 : Sub-Element | M1: Contracts | M2 : Cost Centre | M4 : Location | M5 :Sub-Location | M6 : Areas/Rooms | L7 : System |
| --- | --- | --- | --- | --- | --- | --- | --- | --- | --- | --- | --- | --- | --- | --- | --- | --- | --- | --- | --- | --- | --- | --- | --- | --- | --- | --- | --- |
|  | 8 | **D/T Walkway and De-Railment Kurbs to Ch129+775** |  |  |  |  |  |  |  |  |  |  |  |  |  |  |  |  |  |  |  |  |  |  |  |  |  |
|  | 5 | **Southern Upstand Walls, Walkway, Derailment Kerbs** |  |  | 2014-01-26 | 2017-04-08 |  |  |  |  |  |  |  |  |  |  |  |  |  |  |  |  |  |  |  |  |  |
| 8220B-6110 |  | Walkway and Upstand U/T 129+995 to 130+995 (1000m) (rate = 45m/d) |  | 23d | 2014-01-26 A | 2014-06-01 A | 8220B-1140 | 100% | 2014-09-29 | 2014-10-27 |  |  |  | NEW | 822_AB_W010 |  |  |  |  |  |  |  |  |  |  |  |  |
| 8220B-6130 |  | Walkway and Upstand U/T 131+225 to 132+533 (1308m) (rate = 45m/d) |  | 29d | 2014-03-04 A | 2014-06-01 A | 8220B-6110 | 100% | 2014-04-25 | 2014-05-30 |  |  |  | NEW | 822_AB_W010 |  |  |  |  |  |  |  |  |  |  |  |  |
| 8220B-1140 |  | Walkway and Upstand U/T 128+995 to 129+995 (1000m) (rate = 45m/d) |  | 22.5d | 2014-05-24 A | 2014-06-01 A | 8220B-11200, 8220B-12070, 8220B-12080, 8220B-12260 | 100% | 2014-09-01 | 2014-09-27 |  |  |  | NEW | 822_AB_W010 |  |  |  |  |  |  |  |  |  |  |  |  |
| 8220B-12150 |  | Main - Snagging/Remedials/Repairs prior to Hand Over to C830 |  | 12d | 2017-03-27 | 2017-04-08 | 8220B-6130 |  |  |  | -1078d | 0d |  | NEW |  |  |  |  |  |  |  |  |  |  |  |  |  |
| 8220B-12160 |  | Main - Snagging/Remedials/Repairs prior to Hand Over to C830 |  | 12d | 2017-03-27 | 2017-04-08 | 8220B-1140 |  |  |  | -1078d | 0d |  | NEW |  |  |  |  |  |  |  |  |  |  |  |  |  |
| 8220B-12540 |  | Main - Snagging/Remedials/Repairs prior to Hand Over to C830 |  | 12d | 2017-03-27 | 2017-04-08 | 8220B-6110 |  |  |  | -1078d | 0d |  | NEW |  |  |  |  |  |  |  |  |  |  |  |  |  |
|  | 6 | **C830 Permanent Way and Overhead Line Installation South** |  |  | 2017-04-10 | 2017-04-10 |  |  |  |  |  |  |  |  |  |  |  |  |  |  |  |  |  |  |  |  |  |
| 8220X-130 |  | 830 - Commencement Up Track 130+955 to 132+545 (1590m) UT ONLY | milestone | 0d | 2017-04-10 | 2017-04-10 | 8220B-12150 |  |  |  | -598d | 311.51d |  |  |  |  |  |  |  |  |  |  |  |  |  |  |  |
| 8220X-160 |  | 830 - Commencement Up Track 129+955 to 130+995 (1000m) UT ONLY | milestone | 0d | 2017-04-10 | 2017-04-10 | 8220B-12540 |  |  |  | -598d | 311.51d |  |  |  |  |  |  |  |  |  |  |  |  |  |  |  |
|  | 6 | **Area 6 : Main Tunnel North** |  |  | 2010-03-10 | 2017-04-11 |  |  |  |  |  |  |  |  |  |  |  |  |  |  |  |  |  |  |  |  |  |
|  | 1 | **Main Tunnel North D&B Excavation** |  |  | 2010-03-10 | 2014-03-14 |  |  |  |  |  |  |  |  |  |  |  |  |  |  |  |  |  |  |  |  |  |
|  | 9 | **Junction PH2A2** |  |  | 2012-05-31 | 2012-08-06 |  |  |  |  |  |  |  |  |  |  |  |  |  |  |  |  |  |  |  |  |  |
| 8220B-0350 |  | Square up Main Tunnel (EDL Heading) D&B |  | 12d | 2012-05-31 A | 2012-08-06 A | 8220A-8980, 8220C-1750, 8220A-8890 | 100% | 2012-06-09 | 2012-06-23 |  |  | W7 - 6 day - Double Shift (20H) - All Holidays | NEW | 822_AB_W010 | C822 | C19 | 05 | 0502 |  |  |  |  |  |  |  |  |
|  | 6 | **Type M - Heading South from PHVA** |  |  | 2012-06-04 | 2012-12-29 |  |  |  |  |  |  |  |  |  |  |  |  |  |  |  |  |  |  |  |  |  |
| 8220B-1990 |  | Main - Ch126.127 to Ch126.204 D&B (F) (77m) (179.8m²) (rate =5.2m/d ) |  | 14.8d | 2012-06-04 A | 2012-07-13 A | 8220B-0350 FS-8d | 100% | 2012-07-27 | 2012-08-13 |  |  |  | NEW | 822_AB_W010 | C822 | C19 | 05 | 0502 | DRV7 | COMB | 822 | BB | 2210 | TUNC | C090 | 701 |
| 8220B-0290 |  | Main - Ch126.204 to Ch126.304 D&B (F) (100m) (179.8m²) (rate = 5.2m/d) |  | 19.2d | 2012-07-13 A | 2012-08-09 A | 8220B-1990 | 100% | 2012-08-13 | 2012-09-04 |  |  |  | NEW | 822_AB_W010 | C822 | C19 | 05 | 0502 | DRV7 | COMB | 822 | BB | 2210 | TUNC | C090 | 701 |
| 8220B-0300 |  | Main - Ch126.304 to Ch126.330 D&B (F) (26m) (179.8m²) (rate = 5.2m/d) |  | 5d | 2012-08-09 A | 2012-08-16 A | 8220B-0290 | 100% | 2012-08-18 | 2012-08-23 |  |  |  | NEW | 822_AB_W010 | C822 | C19 | 05 | 0502 | DRV7 | COMB | 822 | BB | 2210 | TUNC | C090 | 701 |
| 8220B-11860 |  | Main - Ch126.330 to Ch126.404 D&B (M) (100m) (179.8m²) (rate = 5.2m/d) |  | 14d | 2012-08-16 A | 2012-09-01 A | 8220B-0300 | 100% | 2012-08-24 | 2012-09-08 |  |  |  | NEW | 822_AB_W010 |  |  |  |  |  |  |  |  |  |  |  |  |
| 8220B-0310 |  | Main - Ch126.404 to Ch126.504 D&B (M) (100m) (179.8m²) (rate = 5.2m/d) |  | 19.2d | 2012-09-01 A | 2012-09-24 A | 8220B-11860 | 100% | 2012-09-04 | 2012-09-26 |  |  |  | NEW | 822_AB_W010 | C822 | C19 | 05 | 0502 | DRV7 | COMB | 822 | BB | 2210 | TUNC | C090 | 701 |
| 8220B-0320 |  | Main - Ch126.504 to Ch126.604 D&B (M) (100m) (179.8m²) (rate = 5.2m/d) |  | 19.2d | 2012-09-24 A | 2012-10-20 A | 8220B-0310 | 100% | 2012-10-24 | 2012-11-15 |  |  |  | NEW | 822_AB_W010 | C822 | C19 | 05 | 0502 | DRV7 | COMB | 822 | BB | 2210 | TUNC | C090 | 701 |
| 8220B-0330 |  | Main - Ch126.604 to Ch126.704 D&B (M) (100m) (179.8m²) (rate = 5.2m/d) |  | 19.2d | 2012-10-19 A | 2012-11-08 A | 8220B-0320 | 100% | 2012-11-09 | 2012-12-01 |  |  |  | NEW | 822_AB_W010 | C822 | C19 | 05 | 0502 | DRV7 | COMB | 822 | BB | 2210 | TUNC | C090 | 701 |
| 8220B-0340 |  | Main - Ch126.704 to Ch126.804 D&B (M) (100m) (179.8m²) (rate = 5.2m/d) |  | 19.2d | 2012-11-08 A | 2012-12-28 A | 8220B-0330 | 100% | 2012-11-24 | 2012-12-17 |  |  |  | NEW | 822_AB_W010 | C822 | C19 | 05 | 0502 | DRV7 | COMB | 822 | BB | 2210 | TUNC | C090 | 701 |
| 8220B-0360 |  | Main - Ch126.804 to Ch126.810 D&B (M) (6m) (179.8m²) (rate = 5.2m/d) |  | 1d | 2012-12-28 A | 2012-12-29 A | 8220B-0340 | 100% | 2012-12-18 | 2012-12-19 |  |  |  | NEW | 822_AB_W010 | C822 | C19 | 05 | 0502 | DRV7 | COMB | 822 | BB | 2210 | TUNC | C090 | 701 |

Notes:
- 8220B-6110: P3 Activity Log Info: ????????4,900m / 32(m/d) ????
- 8220B-6130: P3 Activity Log Info: ????????4,900m / 32(m/d) ????
- 8220B-1140: P3 Activity Log Info: ????????3,825m / ??32(m/d)??
- 8220B-12150: P3 Activity Log Info: ????????4,900m / 32(m/d) ????
- 8220B-12160: P3 Activity Log Info: ????????4,900m / 32(m/d) ????
- 8220B-12540: P3 Activity Log Info: ????????4,900m / 32(m/d) ????
- 8220B-0360: P3 Activity Log Info: Includes +1 day time adjustment (Total 149days)

| ID | WBS | Activity | Duration | Start | Finish | Predecessors | Complete | Planned start | Planned finish | L1 : Project | L2 : Phase | L3 : Area | L4 : Sub-Area | L5 : Element | L6 : Sub-Element | M1: Contracts | M2 : Cost Centre | M4 : Location | M5 :Sub-Location | M6 : Areas/Rooms | Stef Temp A1 | 822_AB_W010 | L7 : System | L8: Section |
| --- | --- | --- | --- | --- | --- | --- | --- | --- | --- | --- | --- | --- | --- | --- | --- | --- | --- | --- | --- | --- | --- | --- | --- | --- |
|  | 7 | **Type E - Nozzle Joint Ch126.810 to Ch126.837** |  | 2012-11-29 | 2012-12-04 |  |  |  |  |  |  |  |  |  |  |  |  |  |  |  |  |  |  |  |
| 8220B-9800 |  | Main - Ch126.810 to Ch126.836 D&B (26m) (253m²m²) (rate = 5.2m/d) | 5.2d | 2012-11-29 A | 2012-12-04 A | 8220B-0360 | 100% | 2012-12-01 | 2012-12-07 | C822 | C16 | 05 | 0502 | DRV8 | SING | 822 | BB | 2210 | TUNS | C090 | NEW | 822_AB_W010 |  |  |
|  | 8 | **Type C - Heading South from Ch126.837 to Join Point** |  | 2012-12-05 | 2014-03-14 |  |  |  |  |  |  |  |  |  |  |  |  |  |  |  |  |  |  |  |
| 8220B-0370 |  | Main - Ch126.836 to Ch126.933 D&B (97m) (126.16m²) (rate = 8.7m/d) | 11.4d | 2012-12-05 A | 2012-12-26 A | 8220B-9800 | 100% | 2013-01-08 | 2013-01-21 | C822 | C19 | 05 | 0502 | DRV7 | SING | 822 | BB | 2210 | TUNM | C090 | NEW | 822_AB_W010 | 702 |  |
| 8220B-0380 |  | Main - Ch126.933 to Ch127.033 D&B (100m) (126.16m²) (rate = 8.7m/d) | 11.4d | 2012-12-26 A | 2013-01-10 A | 8220B-0370 | 100% | 2013-01-07 | 2013-01-19 | C822 | C19 | 05 | 0502 | DRV7 | SING | 822 | BB | 2210 | TUNM | C090 | NEW | 822_AB_W010 | 702 |  |
| 8220B-0390 |  | Main - Ch127.033 to Ch127.133 D&B (100m) (126.16m²) (rate = 8.7m/d) | 11.4d | 2013-01-10 A | 2013-01-25 A | 8220B-0380 | 100% | 2013-01-28 | 2013-02-09 | C822 | C19 | 05 | 0502 | DRV7 | SING | 822 | BB | 2210 | TUNM | C090 | NEW | 822_AB_W010 | 702 |  |
| 8220B-1540 |  | Main - MAJOR FAULT 1 - D&B Ch127.133 to 127.153 (20m) (rate = 4m/d) | 5d | 2013-01-25 A | 2013-01-28 A | 8220B-0390 | 100% | 2013-02-01 | 2013-02-06 | C822 | C19 | 06 | 0602 | DRV3 | SING |  |  |  |  |  | NEW | 822_AB_W010 |  |  |
| 8220B-0400 |  | Main - Ch127.153 to Ch127.233 D&B (80m) (126.16m²) (rate = 8.7m/d) | 9d | 2013-01-28 A | 2013-03-26 A | 8220B-1540 | 100% | 2013-02-07 | 2013-02-20 | C822 | C19 | 05 | 0502 | DRV7 | SING | 822 | BB | 2210 | TUNM | C090 | NEW | 822_AB_W010 | 702 |  |
| 8220B-0410 |  | Main - Ch127.233 to Ch127.333 D&B (100m) (126.16m²) (rate = 8.7m/d) | 11.4d | 2013-03-26 A | 2013-04-26 A | 8220B-0400 | 100% | 2013-04-03 | 2013-04-17 | C822 | C19 | 05 | 0502 | DRV7 | SING | 822 | BB | 2210 | TUNM | C090 | NEW | 822_AB_W010 | 702 |  |
| 8220B-0420 |  | Main - Ch127.333 to Ch127.450 D&B (83m) (126.16m²) (rate = 8.7m/d) | 9.5d | 2013-04-26 A | 2013-05-10 A | 8220B-0410 | 100% | 2013-04-23 | 2013-05-06 | C822 | C19 | 05 | 0502 | DRV7 | SING | 822 | BB | 2210 | TUNM | C090 | NEW | 822_AB_W010 | 702 |  |
| 8220B-1620 |  | Main - MAJOR FAULT 2 - D&B Ch127.450 to 127.475 (25m) (rate = 4m/d) | 6.25d | 2013-05-10 A | 2013-05-14 A | 8220B-0420 | 100% | 2013-05-23 | 2013-05-30 | C822 | C19 | 05 | 0602 | DRV3 | SING |  |  |  |  |  | NEW | 822_AB_W010 |  |  |
| 8220B-0745 |  | Main - Ch127.475 to Ch127.533 D&B (58m) (126.16m²) (rate = 8.7m/d) | 6.66d | 2013-05-14 A | 2013-05-21 A | 8220B-1620 | 100% | 2013-05-30 | 2013-06-07 | C822 | C19 | 05 | 0502 | DRV7 | SING | 822 | BB | 2210 | TUNM | C090 | NEW | 822_AB_W010 | 702 |  |
| 8220B-0440 |  | Main - Ch127.533 to Ch127.633 D&B (100m) (126.16m²) (rate = 8.7m/d) | 11.4d | 2013-05-21 A | 2013-06-18 A | 8220B-0745 | 100% | 2013-05-24 | 2013-06-07 | C822 | C19 | 05 | 0502 | DRV7 | SING | 822 | BB | 2210 | TUNM | C090 | NEW | 822_AB_W010 | 702 |  |
| 8220B-0450 |  | Main - Ch127.633 to Ch127.733 D&B (100m) (126.16m²) (rate = 8.7m/d) | 11.4d | 2013-06-18 A | 2013-07-06 A | 8220B-0440 | 100% | 2013-06-14 | 2013-06-27 | C822 | C19 | 05 | 0502 | DRV7 | SING | 822 | BB | 2210 | TUNM | C090 | NEW | 822_AB_W010 | 702 |  |
| 8220B-1610 |  | Main - Ch127.733 to Ch127.833 D&B (100m) (126.16m²) (rate = 8.7m/d) | 11.4d | 2013-07-07 A | 2013-07-20 A | 8220B-0450 | 100% | 2013-07-29 | 2013-08-10 | C822 | C19 | 05 | 0502 | DRV7 | SING | 822 | BB | 2210 | TUNC | C090 | NEW | 822_AB_W010 | 702 |  |
| 8220B-1590 |  | Main - Ch127.833 to Ch127.933 D&B (100m) (126.16m²) (rate = 8.7m/d) | 11.4d | 2013-07-20 A | 2013-07-31 A | 8220B-1610 | 100% | 2013-08-10 | 2013-08-23 | C822 | C19 | 05 | 0502 | DRV7 | SING | 822 | BB | 2210 | TUNC | C090 | NEW | 822_AB_W010 | 702 |  |
| 8220B-1595 |  | Main - Ch127.933 to Ch128.033 D&B (100m) (126.16m²) (rate = 8.7m/d) | 11.4d | 2013-07-31 A | 2013-08-10 A | 8220B-1590 | 100% | 2013-08-05 | 2013-08-19 | C822 | C19 | 05 | 0502 | DRV7 | SING | 822 | BB | 2210 | TUNC | C090 | NEW | 822_AB_W010 | 702 |  |
| 8220B-1600 |  | Main - Ch128.033 to Ch128.133 D&B (100m) (126.16m²) (rate = 8.7m/d) | 11.4d | 2013-08-10 A | 2013-08-26 A | 8220B-1595 | 100% | 2013-08-21 | 2013-09-03 | C822 | C19 | 05 | 0502 | DRV7 | SING | 822 | BB | 2210 | TUNC | C090 | NEW | 822_AB_W010 | 702 |  |
| 8220B-1980 |  | Main - Ch128.133 to Ch128.233 D&B (100m) (126.16m²) (rate = 8.7m/d) | 11.4d | 2013-08-26 A | 2013-09-16 A | 8220B-1600 | 100% | 2013-09-04 | 2013-09-17 | C822 | C19 | 05 | 0502 | DRV7 | SING | 822 | BB | 2210 | TUNC | C090 | NEW | 822_AB_W010 | 702 |  |
| 8220B-1580 |  | Main - Ch128.233 to Ch128.333 D&B (100m) (126.16m²) (rate = 8.7m/d) | 11.4d | 2013-09-16 A | 2013-10-02 A | 8220B-1980 | 100% | 2013-09-30 | 2013-10-16 | C822 | C19 | 05 | 0502 | DRV7 | SING | 822 | BB | 2210 | TUNC | C090 | NEW | 822_AB_W010 | 702 |  |
| 8220B-1570 |  | Main - Ch128.333 to Ch128.433 D&B (100m) (126.16m²) (rate = 8.7m/d) | 11.4d | 2013-10-03 A | 2013-10-23 A | 8220B-1580 | 100% | 2013-11-04 | 2013-11-16 | C822 | C19 | 05 | 0502 | DRV7 | SING | 822 | BB | 2210 | TUNC | C090 | NEW | 822_AB_W010 | 702 |  |
| 8220B-1560 |  | Main - Ch128.433 to Ch128.533 D&B (100m) (126.16m²) (rate = 8.7m/d) | 11.4d | 2013-10-24 A | 2013-11-02 A | 8220B-1570 | 100% | 2013-11-16 | 2013-11-30 | C822 | C19 | 05 | 0502 | DRV7 | SING | 822 | BB | 2210 | TUNC | C090 | NEW | 822_AB_W010 | 702 | A |
| 8220B-10280 |  | Main - Ch128.533 to Ch128.633 D&B (100m) (126.16m²) (rate = 8.7m/d) | 11.4d | 2013-11-03 A | 2013-11-19 A | 8220B-1560 | 100% | 2013-12-02 | 2013-12-14 | C822 | C19 | 05 | 0502 | DRV7 | SING | 822 | BB | 2210 | TUNC | C090 | NEW | 822_AB_W010 | 702 | A |
| 8220B-10290 |  | Main - Ch128.633 to Ch128.733 D&B (100m) (126.16m²) (rate = 8.7m/d) | 11.4d | 2013-11-20 A | 2013-12-07 A | 8220B-10280 | 100% | 2013-12-02 | 2013-12-14 | C822 | C19 | 05 | 0502 | DRV7 | SING | 822 | BB | 2210 | TUNC | C090 | NEW | 822_AB_W010 | 702 | A |
| 8220B-10300 |  | Main - Ch128.733 to Ch128.833 D&B (100m) (126.16m²) (rate = 8.7m/d) | 11.4d | 2013-12-08 A | 2013-12-22 A | 8220B-10290 | 100% | 2014-01-06 | 2014-01-18 | C822 | C19 | 05 | 0502 | DRV7 | SING | 822 | BB | 2210 | TUNC | C090 | NEW | 822_AB_W010 | 702 | A |
| 8220B-1520 |  | Main - Ch128.833 to Ch128.899 D&B (66m) (126.16m²) (rate = 8.7m/d) | 7.7d | 2013-12-23 A | 2014-01-05 A | 8220B-10300 | 100% | 2014-01-18 | 2014-01-28 | C822 | C19 | 05 | 0502 | DRV7 | SING | 822 | BB | 2210 | TUNC | C090 | NEW | 822_AB_W010 | 702 | A |
| 8220B-9910 |  | Main - Ch128.899 to Ch129.000 D&B (101m) (126m²) (rate = 8.7m/d) | 11.6d | 2014-01-05 A | 2014-01-20 A | 8220B-1520 | 100% | 2014-02-07 | 2014-02-20 | C822 | C19 | 06 | 0602 | DRV3 | SING | 822 | BB | 2210 | TUNC | C090 | NEW | 822_AB_W010 | 303 | A |
| 8220B-1420 |  | Main - Ch129.000 to Ch129.065 D&B (65m) (126m²) (rate = 8.7m/d) | 8d | 2014-01-20 A | 2014-01-30 A | 8220B-9910 | 100% | 2014-02-20 | 2014-03-01 | C822 | C19 | 06 | 0602 | DRV3 | SING | 822 | BB | 2210 | TUNC | C090 | NEW | 822_AB_W010 | 303 | A |
| 8220B-12580 |  | Main - Ch129.065 to Breakthrough Ch129.269 D&B (204m) | 24d | 2014-01-30 A | 2014-03-01 A | 8220B-1420 | 100% | 2014-02-20 | 2014-03-20 | C822 | C19 | 06 | 0602 | DRV3 | SING | 822 | BB | 2210 | TUNC | C090 | NEW | 822_AB_W010 | 303 | A |
| 8220B-12130 |  | Main - Demobilise prior to walkway commencement | 12d | 2014-03-01 A | 2014-03-14 A | 8220B-12580 | 100% | 2014-04-02 | 2014-04-16 |  |  |  |  |  |  |  |  |  |  |  | NEW | 822_AB_W010 |  |  |

Notes:
- 8220B-0440: P3 Activity Log Info: Includes -1 day time adjustment (Total 140 days)
- 8220B-0450: P3 Activity Log Info: Includes -1 day time adjustment (Total 140 days)
- 8220B-1610: P3 Activity Log Info: Includes 1 day time adjustment (Total 350 days)
- 8220B-1590: P3 Activity Log Info: Includes 1 day time adjustment (Total 350 days)
- 8220B-1595: P3 Activity Log Info: Includes 1 day time adjustment (Total 350 days)
- 8220B-1600: P3 Activity Log Info: Includes 1 day time adjustment (Total 350 days)
- 8220B-1580: P3 Activity Log Info: Includes 1 day time adjustment (Total 350 days)
- 8220B-1570: P3 Activity Log Info: Includes 1 day time adjustment (Total 350 days)
- 8220B-1560: P3 Activity Log Info: Includes 1 day time adjustment (Total 350 days)
- 8220B-10280: P3 Activity Log Info: Includes 1 day time adjustment (Total 350 days)
- 8220B-10290: P3 Activity Log Info: Includes 1 day time adjustment (Total 350 days)
- 8220B-10300: P3 Activity Log Info: Includes 1 day time adjustment (Total 350 days)
- 8220B-1520: P3 Activity Log Info: Includes 1 day time adjustment (Total 350 days)
- 8220B-9910: P3 Activity Log Info: Includes 1 day time adjustment (Total 350 days)
- 8220B-1420: P3 Activity Log Info: Drives Milestone B6 (50% of Main Tunnel Complete
- 8220B-12580: P3 Activity Log Info: Drives Milestone B6 (50% of Main Tunnel Complete
- 8220B-12130: P3 Activity Log Info: Drives Milestone B6 (50% of Main Tunnel Complete

| ID | WBS | Activity | Duration | Start | Finish | Predecessors | Complete | Planned start | Planned finish | L1 : Project | L2 : Phase | L3 : Area | L4 : Sub-Area | L5 : Element | L6 : Sub-Element | M1: Contracts | M2 : Cost Centre | M4 : Location | M5 :Sub-Location | M6 : Areas/Rooms | L7 : System | M9 : System | Stef Temp A1 | 822_AB_W010 |
| --- | --- | --- | --- | --- | --- | --- | --- | --- | --- | --- | --- | --- | --- | --- | --- | --- | --- | --- | --- | --- | --- | --- | --- | --- |
|  | 1 | **Type G - Heading South from the PHVAA** |  | 2012-05-01 | 2012-07-17 |  |  |  |  |  |  |  |  |  |  |  |  |  |  |  |  |  |  |  |
| 8220B-0540 |  | Main - Ch125.850 to Ch125.887 D&B (37m) (rate = 4m/d) | 9.25d | 2012-05-01 A | 2012-05-12 A | 8220C-2690 | 100% | 2012-06-01 | 2012-06-12 | C822 | C19 | 05 | 0502 | DRV9 | BIFI | 822 | BB | 2210 | TUNM | C090 | 901 | 4 | NEW | 822_AB_W010 |
| 8220B-0550 |  | Main - Ch125.887 to Ch125.987 D&B (100m) (rate = 4m/d) | 25d | 2012-05-14 A | 2012-06-20 A | 8220B-0540 | 100% | 2012-06-12 | 2012-07-12 | C822 | C19 | 05 | 0502 | DRV9 | BIFI | 822 | BB | 2210 | TUNM | C090 | 901 | 4 | NEW | 822_AB_W010 |
| 8220B-0560 |  | Main - Ch125.987 to Ch126.050 D&B (63m) (rate = 4m/d) | 15.75d | 2012-06-20 A | 2012-07-17 A | 8220B-0550 | 100% | 2012-08-10 | 2012-08-29 | C822 | C19 | 05 | 0502 | DRV9 | BIFI | 822 | BB | 2210 | TUNM | C090 | 901 | 4 | NEW | 822_AB_W010 |
|  | 5 | **Type E,D,L Ch126.050 to Ch126.128** |  | 2012-07-11 | 2013-01-18 |  |  |  |  |  |  |  |  |  |  |  |  |  |  |  |  |  |  |  |
| 8220B-0590 |  | Main - Ch126.050 to Ch126.120 D&B (70m) (rate = 3.3m/d) | 21.25d | 2012-07-11 A | 2012-08-06 A | 8220B-0560 | 100% | 2012-08-23 | 2012-09-17 | C822 | C19 | 05 | 0502 |  |  |  |  |  |  |  |  |  | NEW | 822_AB_W010 |
| 8220B-12010 |  | Main - Blast to end of ramp | 9d | 2012-08-07 A | 2012-08-18 A | 8220B-0590 | 100% | 2012-09-01 | 2012-09-11 |  |  |  |  |  |  |  |  |  |  |  |  |  | NEW | 822_AB_W010 |
| 8220B-12020 |  | Main - Invert prep | 18d | 2012-08-20 A | 2012-10-09 A | 8220B-12010 | 100% | 2012-09-12 | 2012-10-04 |  |  |  |  |  |  |  |  |  |  |  |  |  | NEW | 822_AB_W010 |
| 8220B-12030 |  | Main - Construct Temp Ramp up to PHVA | 10d | 2012-10-10 A | 2012-11-05 A | 8220B-12020 | 100% | 2013-01-08 | 2013-01-18 |  |  |  |  |  |  |  |  |  |  |  |  |  | NEW | 822_AB_W010 |
| 8220B-12050 |  | Main - Remove Temporary Ramp | 6d | 2013-01-08 A | 2013-01-18 A | 8220B-2870 | 100% | 2013-02-01 | 2013-02-07 |  |  |  |  |  |  |  |  |  |  |  |  |  | NEW | 822_AB_W010 |
|  | 2 | **Type G - Heading North from the PHVAA** |  | 2012-06-06 | 2012-12-01 |  |  |  |  |  |  |  |  |  |  |  |  |  |  |  |  |  |  |  |
| 8220B-10120 |  | Main - Ch125.783 to Ch125.739 D&B (44m) (rate = 2.5m/d) | 17.6d | 2012-06-06 A | 2012-09-18 A | 8220B-12010 | 100% | 2012-09-20 | 2012-10-12 | C822 | C19 | 05 | 0502 | DRV9 | BIFI | 822 | BB | 2210 | TUNM | C090 | 901 | 4 | NEW | 822_AB_W010 |
| 8220B-0480 |  | Main - Ch125.739 to Ch125.679 D&B (60m) (rate = 2.5m/d) | 24d | 2012-09-18 A | 2012-10-25 A | 8220B-10120 | 100% | 2012-10-13 | 2012-11-12 | C822 | C19 | 05 | 0502 | DRV8 | BIFI | 822 | BB | 2210 | TUNM | C090 | 80A | 4 | NEW | 822_AB_W010 |
| 8220B-0490 |  | Main - Ch125.679 to Ch125.620 D&B (59m) (rate = 2.5m/d) | 23.6d | 2012-10-26 A | 2012-12-01 A | 8220B-0480 | 100% | 2012-11-13 | 2012-12-11 | C822 | C19 | 05 | 0502 | DRV8 | BIFI | 822 | BB | 2210 | TUNM | C090 | 80A | 4 | NEW | 822_AB_W010 |
|  | 3 | **Type A - Heading North Twin Tunnels** |  | 2012-12-02 | 2013-11-11 |  |  |  |  |  |  |  |  |  |  |  |  |  |  |  |  |  |  |  |
|  | 1 | **Up Track Tunnel** |  | 2012-12-28 | 2013-04-24 |  |  |  |  |  |  |  |  |  |  |  |  |  |  |  |  |  |  |  |
| 8220B-0510 |  | Main - UT - Ch125.620 to Ch125.520 D&B (100m) (rate = 2.5m/d) | 40d | 2012-12-28 A | 2013-03-14 A | 8220B-0490 | 100% | 2013-02-01 | 2013-03-22 | C822 | C19 | 05 | 0502 | DRV8 | SING | 822 | BB | 2210 | TUNN | C090 | 80C |  | NEW | 822_AB_W010 |
| 8220B-0530 |  | Main - UT - Ch125.520 to Ch125.369 D&B (151m) (rate = 2.5m/d) | 37d | 2013-03-14 A | 2013-04-24 A | 8220B-0510 | 100% | 2013-04-09 | 2013-05-23 | C822 | C19 | 05 | 0502 | DRV8 | SING | 822 | BB | 2210 | TUNN | C090 | 80C |  | NEW | 822_AB_W010 |
|  | 3 | **Cross Passage Construction** |  | 2013-03-14 | 2013-11-11 |  |  |  |  |  |  |  |  |  |  |  |  |  |  |  |  |  |  |  |
| 8220B-0570 |  | Main SB - Cross Passage D&B | 12d | 2013-03-14 A | 2013-03-18 A | 8220B-0480, 8220B-0490 | 100% | 2013-05-02 | 2013-05-15 | C822 | C19B | 05 | 0502 | TC81 |  | 822 | BB |  | CP | C080 |  |  | NEW | 822_AB_W010 |
| 8220B-2020 |  | Install Temporary Support | 6d | 2013-03-19 A | 2013-03-21 A | 8220B-0570 | 100% | 2013-06-01 | 2013-06-07 | C822 | C19B | 05 | 0503 | TC81 |  | 822 | BB |  | CP | C080 |  |  | NEW | 822_AB_W010 |
| 8220B-2030 |  | Shotcrete Walls and Roof | 4d | 2013-03-23 A | 2013-03-27 A | 8220B-2020 | 100% | 2013-06-08 | 2013-06-13 | C822 | C19B | 05 | 0503 | TC81 |  | 822 | BB |  | CP | C080 |  |  | NEW | 822_AB_W010 |
| 8220B-0610 |  | Apply Waterproof Membrane to Roof and Walls | 4d | 2013-05-22 A | 2013-10-15 A | 8220B-2040 | 100% | 2013-06-06 | 2013-06-10 | C822 | C19B | 05 | 0503 | TC81 |  | 822 | BB |  | CP | C080 |  |  | NEW | 822_AB_W010 |
| 8220B-2040 |  | Install Geodrain CP82 | 4d | 2013-10-16 A | 2013-10-19 A | 8220B-2030 | 100% | 2014-01-02 | 2014-01-06 | C822 | C19B | 05 | 0503 | TC81 |  | 822 | BB |  | CP | C080 |  |  | NEW | 822_AB_W010 |
| 8220B-0620 |  | Concrete Line Walls and Roof | 4d | 2013-10-21 A | 2013-10-24 A | 8220B-0610 | 100% | 2014-01-02 | 2014-01-06 | C822 | C19B | 05 | 0503 | TC81 |  | 822 | BB |  | CP | C080 |  |  | NEW | 822_AB_W010 |
| 8220B-0630 |  | Construct End Walls of Cross Passage | 5d | 2013-10-25 A | 2013-10-30 A | 8220B-0620 | 100% | 2014-01-07 | 2014-01-11 | C822 | C19B | 05 | 0503 | TC81 |  | 822 | BB |  | CP | C080 |  |  | NEW | 822_AB_W010 |
| 8220B-0640 |  | Install Floor Drainage Layer | 4d | 2013-10-31 A | 2013-11-04 A | 8220B-0630 | 100% | 2014-01-13 | 2014-01-16 | C822 | C19B | 05 | 0503 | TC81 |  | 822 | BB |  | CP | C080 |  |  | NEW | 822_AB_W010 |
| 8220B-0650 |  | Construct Base Slab of Cross Passage | 6d | 2013-11-05 A | 2013-11-11 A | 8220B-0640 | 100% | 2014-01-17 | 2014-01-23 | C822 | C19B | 05 | 0503 | TC81 |  | 822 | BB |  | CP | C080 |  |  | NEW | 822_AB_W010 |

Notes:
- 8220B-0560: P3 Activity Log Info: Includes +1 day time adjustment (Total 36 days)
- 8220B-10120: P3 Activity Log Info: Includes +1 day time adjustment (Total 36 days)
- 8220B-0490: P3 Activity Log Info: Includes -1 day time adjustment (Total 69 days)
- 8220B-0530: P3 Activity Log Info: Includes -1 day time adjustment (Total 69 days)

| ID | WBS | Activity | Type | Duration | Start | Finish | Predecessors | Complete | Planned start | Planned finish | Constraint | Calendar | L1 : Project | L2 : Phase | L3 : Area | L4 : Sub-Area | L5 : Element | L6 : Sub-Element | M1: Contracts | M2 : Cost Centre | M4 : Location | M5 :Sub-Location | M6 : Areas/Rooms | L7 : System | M9 : System | Stef Temp A1 | 822_AB_W010 |
| --- | --- | --- | --- | --- | --- | --- | --- | --- | --- | --- | --- | --- | --- | --- | --- | --- | --- | --- | --- | --- | --- | --- | --- | --- | --- | --- | --- |
|  | 2 | **Down TrackTunnel** |  |  | 2012-12-02 | 2013-04-05 |  |  |  |  |  |  |  |  |  |  |  |  |  |  |  |  |  |  |  |  |  |
| 8220B-0500 |  | Main - DT - Ch125.620 to Ch125.520 D&B (100m) (rate = 2.5m/d) |  | 40d | 2012-12-02 A | 2013-01-22 A | 8220B-0490 | 100% | 2013-01-02 | 2013-02-20 |  |  | C822 | C19 | 05 | 0502 | DRV8 | SING | 822 | BB | 2210 | TUNS | C090 | 80B | 4 | NEW | 822_AB_W010 |
| 8220B-0520 |  | Main - DT - Ch125.520 to Ch125.369 D&B (151m) (rate = 2.5m/d) |  | 60.4d | 2013-01-22 A | 2013-04-05 A | 8220B-0500 | 100% | 2013-02-15 | 2013-04-27 |  |  | C822 | C19 | 05 | 0502 | DRV8 | SING | 822 | BB | 2210 | TUNS | C090 | 80B | 4 | NEW | 822_AB_W010 |
|  | 4 | **Type A&B - Soft Ground Mechanical Excavation from 823A** |  |  | 2010-03-10 | 2013-04-05 |  |  |  |  |  |  |  |  |  |  |  |  |  |  |  |  |  |  |  |  |  |
|  | 1 | **Soft Ground Excavation** |  |  |  |  |  |  |  |  |  |  |  |  |  |  |  |  |  |  |  |  |  |  |  |  |  |
|  | 2 | **General** |  |  | 2012-11-27 | 2013-04-05 |  |  |  |  |  |  |  |  |  |  |  |  |  |  |  |  |  |  |  |  |  |
| 8220B-10560 |  | C822 - Construct Crane Slab at Shaft |  | 10d | 2012-11-27 A | 2012-12-11 A | 8220B-10530 | 100% | 2013-01-02 | 2013-01-12 |  |  |  |  |  |  |  |  |  |  |  |  |  |  |  | NEW | 822_AB_W010 |
| 8220B-10590 |  | C822 - 24Hour Noise Permit Application |  | 26d | 2012-11-28 A | 2012-12-29 A | 8220B-10530 FF | 100% |  |  | as late as possible |  |  |  |  |  |  |  |  |  |  |  |  |  |  | NEW | 822_AB_W010 |
| 8220B-10710 |  | C822 - De-mobilise from TST Shaft |  | 10d | 2013-03-15 A | 2013-03-19 A | 8220B-11830 | 100% | 2013-04-18 | 2013-04-27 |  | M |  |  |  |  |  |  |  |  |  |  |  |  |  | NEW | 822_AB_W010 |
|  | 1 | **Down Track** |  |  | 2012-12-19 | 2013-04-05 |  |  |  |  |  |  |  |  |  |  |  |  |  |  |  |  |  |  |  |  |  |
| 8220B-10600 |  | C822 - Mobilisation |  | 10d | 2012-12-19 A | 2013-01-03 A | 8220B-10560 | 100% | 2012-12-19 | 2013-01-02 |  |  |  |  |  |  |  |  |  |  |  |  |  |  |  | NEW | 822_AB_W010 |
| 8220B-10630 |  | C822 - Main D/T - Spile First Set |  | 4d | 2013-01-10 A | 2013-03-09 A | 8220B-10600, 8220B-10590 | 100% | 2013-01-17 | 2013-01-21 |  |  |  |  |  |  |  |  |  |  |  |  |  |  |  | NEW | 822_AB_W010 |
| 8220B-10640 |  | C822 - Main D/T - Mech Excavation Ch125+353 to Ch125+358 (5m) (62.2m²) (0.5m/d) |  | 10d | 2013-01-21 A | 2013-03-15 A | 8220B-10630 | 100% | 2013-03-01 | 2013-03-12 |  |  |  |  |  |  |  |  |  |  |  |  |  |  |  | NEW | 822_AB_W010 |
| 8220B-12310 |  | Main - Demobilise, remedials following excavation |  | 12d | 2013-03-15 A | 2013-03-19 A | 8220B-11840 | 100% | 2013-04-24 | 2013-05-09 |  |  |  |  |  |  |  |  |  |  |  |  |  |  |  | NEW | 822_AB_W010 |
| 8220B-11820 |  | C822 - Main D/T - Mech Excavation Ch125+358 to Ch125+369 (11m) (62.2m²) (1m/d) |  | 11d | 2013-03-15 A | 2013-03-19 A | 8220B-10640 | 100% | 2013-04-11 | 2013-04-24 |  |  |  |  |  |  |  |  |  |  |  |  |  |  |  | NEW | 822_AB_W010 |
| 8220B-11840 |  | C822 - Main D/T - Breakthrough | milestone | 0d | 2013-04-05 A | 2013-04-05 A | 8220B-11820, 8220B-0520 | 100% | 2013-04-23 | 2013-04-23 |  |  |  |  |  |  |  |  |  |  |  |  |  |  |  | NEW | 822_AB_W010 |
|  | 2 | **Up Track** |  |  | 2013-01-15 | 2013-03-27 |  |  |  |  |  |  |  |  |  |  |  |  |  |  |  |  |  |  |  |  |  |
| 8220B-10670 |  | C822 - Main U/T - Spile First Set |  | 4d | 2013-01-15 A | 2013-01-19 A | 8220B-10630 | 100% | 2013-02-02 | 2013-02-06 |  |  |  |  |  |  |  |  |  |  |  |  |  |  |  | NEW | 822_AB_W010 |
| 8220B-10680 |  | C822 - Main U/T - Ch 125+353 to Ch125+358 Mechanical (5m) (65.2m²) (0.5m/d) |  | 10d | 2013-01-21 A | 2013-03-15 A | 8220B-10670, 8220B-10640 | 100% | 2013-02-16 | 2013-02-27 |  |  |  |  |  |  |  |  |  |  |  |  |  |  |  | NEW | 822_AB_W010 |
| 8220B-11830 |  | C822 - Main U/T - Mech Excavation C822 - Ch125+358 to Ch125+369 (11m) (62.2m²) (1m/d) |  | 10.78d | 2013-03-15 A | 2013-03-19 A | 8220B-10680 | 100% | 2013-04-04 | 2013-04-17 |  |  |  |  |  |  |  |  |  |  |  |  |  |  |  | NEW | 822_AB_W010 |
| 8220B-11850 |  | C822 - Main U/T - Breakthrough | milestone | 0d | 2013-03-27 A | 2013-03-27 A | 8220B-11830, 8220B-0530 | 100% | 2013-04-30 | 2013-04-30 |  |  |  |  |  |  |  |  |  |  |  |  |  |  |  | NEW | 822_AB_W010 |
|  | 3 | **By 823A** |  |  | 2010-03-10 | 2012-11-26 |  |  |  |  |  |  |  |  |  |  |  |  |  |  |  |  |  |  |  |  |  |
| 8220B-10540 |  | C823A - Dis-assemble TBM at the TUT Shaft after DT Drive (NA) |  | 26d | 2010-03-10 A | 2010-03-10 A | 8220B-10610 | 100% | 2013-05-25 | 2013-06-25 |  |  | C822 | C16 | 05 | 0502 | DRV8 | SING | 822 | BB | 2210 | TUNS | C090 | SB |  |  | 822_AB_W010 |
| 8220B-10570 |  | C823A - TBM Arrive at the TUT Shaft (UT Drive) (From 823A) (NA) | milestone | 0d | 2010-03-10 A | 2010-03-10 A | 8220B-10730 | 100% | 2013-07-31 | 2013-07-31 | finish on 2013-07-31 |  | C822 | C16 | 05 | 0502 | DRV8 | SING | 822 | BB | 2210 | TUNS | C090 | SB |  |  | 822_AB_W010 |
| 8220B-10610 |  | C823A - TBM Arrive at the TUT Shaft (DT Drive) (From 823A) (NA) | milestone | 0d | 2010-03-10 A | 2010-03-10 A | 8220B-10720 | 100% | 2013-05-24 | 2013-05-24 | finish on 2013-02-28 |  | C822 | C16 | 05 | 0502 | DRV8 | SING | 822 | BB | 2210 | TUNS | C090 | SB |  |  | 822_AB_W010 |
| 8220B-10620 |  | C823A - Dis-assemble TBM at the TUT Shaft after UT Drive (NA) |  | 26d | 2010-03-10 A | 2010-03-10 A | 8220B-10570 | 100% | 2013-07-31 | 2013-08-30 |  |  | C822 | C16 | 05 | 0502 | DRV8 | SING | 822 | BB | 2210 | TUNS | C090 | SB |  |  | 822_AB_W010 |
| 8220B-10720 |  | C823A - Preperation Works for TBM DT Retrieval (NA) |  | 36d | 2010-03-10 A | 2010-03-10 A |  | 100% | 2013-03-15 | 2013-04-27 | as late as possible |  | C822 | C16 | 05 | 0502 | DRV8 | SING | 822 | BB | 2210 | TUNS | C090 | SB |  |  | 822_AB_W010 |
| 8220B-10730 |  | C823A - Preperation Works for TBM UT Retrieval (NA) |  | 36d | 2010-03-10 A | 2010-03-10 A |  | 100% | 2013-06-18 | 2013-07-31 | as late as possible |  | C822 | C16 | 05 | 0502 | DRV8 | SING | 822 | BB | 2210 | TUNS | C090 | SB |  |  | 822_AB_W010 |
| 8220B-10530 |  | C823A - Complete Tse Uk Tseun Shaft | milestone | 0d | 2012-11-26 A | 2012-11-26 A |  | 100% | 2013-01-02 | 2013-01-02 | finish on 2012-10-31 |  | C822 | C16 | 05 | 0502 | DRV8 | SING | 822 | BB | 2210 | TUNS | C090 | SB |  |  | 822_AB_W010 |

Notes:
- 8220B-0520: P3 Activity Log Info: Includes -1 day time adjustment (Total 69 days)
- 8220B-10560: P3 Activity Log Info: ??32nr x 114dia. x ??12m @ 10nr/d (120m/d) + / Grout
- 8220B-10600: P3 Activity Log Info: ??32nr x 114dia. x ??12m @ 10nr/d (120m/d) + / Grout
- 8220B-10640: P3 Activity Log Info: ??32nr x 114dia. x ??12m @ 10nr/d (120m/d) + / Grout
- 8220B-12310: P3 Activity Log Info: Includes -1 day time adjustment (Total 69 days)
- 8220B-11820: P3 Activity Log Info: ????????80m2 1m @ 2day ??cycle??
- 8220B-10670: P3 Activity Log Info: ??32nr x 114dia. x ??12m @ 10nr/d (120m/d) + / Grout
- 8220B-10680: P3 Activity Log Info: 80m2 1m ??@ 2day cycle
- 8220B-10610: P3 Activity Log Info: ??32nr x 114dia. x ??12m @ 10nr/d (120m/d) + / Grout
- 8220B-10530: P3 Activity Log Info: ??32nr x 114dia. x ??12m @ 10nr/d (120m/d) + / Grout

| ID | WBS | Activity | Type | Duration | Start | Finish | Predecessors | Complete | Planned start | Planned finish | Constraint | L1 : Project | L2 : Phase | L3 : Area | L4 : Sub-Area | L5 : Element | L6 : Sub-Element | Stef Temp A1 | 822_AB_W010 | M1: Contracts | M2 : Cost Centre | M4 : Location | M5 :Sub-Location |
| --- | --- | --- | --- | --- | --- | --- | --- | --- | --- | --- | --- | --- | --- | --- | --- | --- | --- | --- | --- | --- | --- | --- | --- |
|  | 2 | **Main Tunnel North Permanent Lining Operations** |  |  | 2012-01-12 | 2017-04-11 |  |  |  |  |  |  |  |  |  |  |  |  |  |  |  |  |  |
|  | 2 | **Type M - Heading South From the PHVA Ch126.128 to Ch126.810** |  |  | 2012-01-12 | 2017-02-28 |  |  |  |  |  |  |  |  |  |  |  |  |  |  |  |  |  |
| 8220B-2840 |  | Place order for 1 x Type M Formwork Shutters | milestone | 0d | 2012-01-12 A | 2012-01-12 A |  | 100% | 2012-06-01 | 2012-06-01 | as late as possible | C822 | C10 | 05 | 0503 | 5 | 01 | NEW | 822_AB_W010 |  |  |  |  |
| 8220B-2850 |  | Fabrication of 1 x Type M Formwork Shutters |  | 100d | 2012-01-12 A | 2012-08-01 A | 8220B-2840 | 100% | 2012-01-12 | 2012-05-17 | as late as possible | C822 | C10 | 05 | 0503 | 5 | 01 | NEW | 822_AB_W010 |  |  |  |  |
| 8220B-2860 |  | Delivery to Hong Kong Pat Heung Site |  | 6d | 2012-08-02 A | 2012-08-15 A | 8220B-2850 | 100% | 2012-10-09 | 2012-10-15 | as late as possible | C822 | C10 | 05 | 0503 | 5 | 01 | NEW | 822_AB_W010 |  |  |  |  |
| 8220B-2870 |  | Assemble 1 x Type M Formwork in Tunnel |  | 36d | 2012-11-12 A | 2012-12-21 A | 8220B-2860, 8220B-12030 | 100% | 2012-12-01 | 2013-01-15 |  | C822 | C10 | 05 | 0503 | 5 | 01 | NEW | 822_AB_W010 |  |  |  |  |
| 8220B-12040 |  | Assemble 1 x Type M Waterproofing Gantry |  | 18d | 2012-12-05 A | 2012-12-20 A | 8220B-2870 SS | 100% | 2013-01-02 | 2013-01-22 |  |  |  |  |  |  |  | NEW | 822_AB_W010 |  |  |  |  |
| 8220B-9750 |  | Test and Commission Type M Formwork Shutters |  | 5.33d | 2012-12-22 A | 2013-01-02 A | 8220B-2870 | 100% | 2013-01-14 | 2013-01-21 |  | C822 | C10 | 05 | 0503 | 5 | 01 | NEW | 822_AB_W010 |  |  |  |  |
|  | 1 | **Rail, Kicker, Membrane** |  |  | 2013-02-16 | 2013-12-16 |  |  |  |  |  |  |  |  |  |  |  |  |  |  |  |  |  |
| 8220B-0750 |  | Main - 126+128 to 126+228 Kicker, Membrane (100m) (Learning Curve) (rate = 5.76m/d) |  | 17.4d | 2013-02-16 A | 2013-03-23 A | 8220B-12040 | 100% | 2013-03-01 | 2013-03-21 |  | C822 | C29A | 05 | 0503 | 5 | TWIN | NEW | 822_AB_W010 | 822 | BB | 2210 | TUNM |
| 8220B-2000 |  | Main - 126+228 to 126+328 Kicker, Membrane(100m) (Learning Curve) (rate = 5.76m/d) |  | 17.4d | 2013-03-25 A | 2013-05-06 A | 8220B-0750 | 100% | 2013-03-16 | 2013-04-08 |  | C822 | C29A | 05 | 0503 | 5 | TWIN | NEW | 822_AB_W010 | 822 | BB | 2210 | TUNM |
| 8220B-9760 |  | Main - 126+328 to 126+428 Kicker, Membrane (100m) (rate = 10m/d) |  | 10d | 2013-05-07 A | 2013-07-08 A | 8220B-2000 | 100% | 2013-06-05 | 2013-06-17 |  | C822 | C29A | 05 | 0503 | 5 | TWIN | NEW | 822_AB_W010 | 822 | BB | 2210 | TUNM |
| 8220B-9770 |  | Main - 126+428 to 126+528 Kicker, Membrane (100m) (rate = 10m/d) |  | 10d | 2013-07-09 A | 2013-08-09 A | 8220B-9760 | 100% | 2013-09-06 | 2013-09-17 |  | C822 | C29A | 05 | 0503 | 5 | TWIN | NEW | 822_AB_W010 | 822 | BB | 2210 | TUNM |
| 8220B-9780 |  | Main - 126+528 to 126+628 Kicker, Membrane (100m) (rate = 10m/d) |  | 10d | 2013-08-12 A | 2013-10-03 A | 8220B-9770 | 100% | 2013-09-02 | 2013-09-13 |  | C822 | C29A | 05 | 0503 | 5 | TWIN | NEW | 822_AB_W010 | 822 | BB | 2210 | TUNM |
| 8220B-2050 |  | Main - 126+628 to 126+728 Kicker, Membrane (100m) (rate = 10m/d) |  | 10d | 2013-10-03 A | 2013-10-29 A | 8220B-9780 | 100% | 2013-11-02 | 2013-11-14 |  | C822 | C29A | 05 | 0503 | 5 | TWIN | NEW | 822_AB_W010 | 822 | BB | 2210 | TUNM |
| 8220B-2070 |  | Main - 126+728 to 126+810 Kicker, Membrane (82m) (rate = 10m/d) |  | 8.2d | 2013-11-18 A | 2013-12-16 A | 8220B-2050 | 100% | 2013-12-02 | 2013-12-11 |  | C822 | C29A | 05 | 0503 | 5 | TWIN | NEW | 822_AB_W010 | 822 | BB | 2210 | TUNM |
|  | 2 | **Permanent Concrete Lining** |  |  | 2013-02-19 | 2014-06-01 |  |  |  |  |  |  |  |  |  |  |  |  |  |  |  |  |  |
| 8220B-0830 |  | Main - 126+128 to 126+228 Perm Concrete Lining (100m) (Learning Curve) (rate = 5.76m/d) |  | 17.4d | 2013-02-19 A | 2013-03-15 A | 8220B-9750 | 100% | 2013-03-01 | 2013-03-21 |  | C822 | C29C | 05 | 0503 | 5 | TWIN | NEW | 822_AB_W010 | 822 | BB | 2210 | TUNM |
| 8220B-3010 |  | Main - 126+228 to 126+328 Perm Concrete Lining (100m) (Learning Curve) (rate = 5.76m/d) |  | 17.4d | 2013-03-15 A | 2013-04-23 A | 8220B-12510 | 100% | 2013-04-08 | 2013-04-29 |  | C822 | C29C | 05 | 0503 | 5 | TWIN | NEW | 822_AB_W010 | 822 | BB | 2210 | TUNM |
| 8220B-12490 |  | Main - Push Back Type M Shutter to Ch126+076 |  | 2d | 2013-04-24 A | 2013-05-08 A | 8220B-0830 | 100% | 2013-05-02 | 2013-05-03 |  |  |  |  |  |  |  | NEW | 822_AB_W010 |  |  |  |  |
| 8220B-12500 |  | Main - Complete Type F Lining at the Junction |  | 12d | 2013-05-08 A | 2013-05-15 A | 8220B-12490 | 100% | 2013-06-01 | 2013-06-15 |  |  |  |  |  |  |  | NEW | 822_AB_W010 |  |  |  |  |
| 8220B-12510 |  | Main - Push Back Type M Shutter to Ch126+228 |  | 2d | 2013-07-26 A | 2013-07-27 A | 8220B-12500 | 100% | 2013-08-01 | 2013-08-02 |  |  |  |  |  |  |  | NEW | 822_AB_W010 |  |  |  |  |
| 8220B-3030 |  | Main - 126+328 to 126+428 Perm Concrete Lining (100m) (rate = 10m/d) |  | 10d | 2013-08-08 A | 2013-08-31 A | 8220B-3010 | 100% | 2013-06-14 | 2013-06-26 |  | C822 | C29C | 05 | 0503 | 5 | TWIN | NEW | 822_AB_W010 | 822 | BB | 2210 | TUNM |
| 8220B-3040 |  | Main - 126+428 to 126+528 Perm Concrete Lining (100m) (rate = 10m/d) |  | 10d | 2013-09-02 A | 2013-10-28 A | 8220B-3030 | 100% | 2013-09-02 | 2013-09-12 |  | C822 | C29C | 05 | 0503 | 5 | TWIN | NEW | 822_AB_W010 | 822 | BB | 2210 | TUNM |
| 8220B-3050 |  | Main - 126+528 to 126+628 Perm Concrete Lining (100m) (rate = 10m/d) |  | 10d | 2013-10-29 A | 2013-11-20 A | 8220B-3040 | 100% | 2013-11-02 | 2013-11-13 |  | C822 | C29C | 05 | 0503 | 5 | TWIN | NEW | 822_AB_W010 | 822 | BB | 2210 | TUNM |
| 8220B-3060 |  | Main - 126+628 to 126+728 Perm Concrete Lining (100m) (rate = 10m/d) |  | 10d | 2013-11-21 A | 2013-12-09 A | 8220B-3050 | 100% | 2013-12-11 | 2013-12-23 |  | C822 | C29C | 05 | 0503 | 5 | TWIN | NEW | 822_AB_W010 | 822 | BB | 2210 | TUNM |
| 8220B-3080 |  | Main - 126+728 to 126+810 Perm Concrete Lining (82m) (rate = 10m/d) |  | 8.2d | 2013-12-10 A | 2014-06-01 A | 8220B-2070 FF, 8220B-3060 | 100% | 2014-01-08 | 2014-01-17 |  | C822 | C29C | 05 | 0503 | 5 | TWIN | NEW | 822_AB_W010 | 822 | BB | 2210 | TUNM |
| 8220B-12520 |  | Main - Dismantle and remove Type M Shutter |  | 36d | 2014-05-26 A | 2014-06-01 A | 8220B-3080 | 100% | 2014-06-03 | 2014-07-17 |  |  |  |  |  |  |  | NEW | 822_AB_W010 |  |  |  |  |

Notes:
- 8220B-0750: P3 Activity Log Info: ??????????690m / 6m/d ??
- 8220B-2000: P3 Activity Log Info: ??????????690m / 6m/d ??
- 8220B-9760: P3 Activity Log Info: ??????????690m / 6m/d ??
- 8220B-9770: P3 Activity Log Info: ??????????690m / 6m/d ??
- 8220B-9780: P3 Activity Log Info: ??????????690m / 6m/d ??
- 8220B-2050: P3 Activity Log Info: ??????????690m / 6m/d ??
- 8220B-2070: P3 Activity Log Info: ??????????690m / 6m/d ??
- 8220B-0830: P3 Activity Log Info: ?????????? ??
- 8220B-3010: P3 Activity Log Info: ?????????? ??
- 8220B-12490: P3 Activity Log Info: ?????????? ??
- 8220B-12500: P3 Activity Log Info: ?????????? ??
- 8220B-12510: P3 Activity Log Info: ?????????? ??
- 8220B-3030: P3 Activity Log Info: ?????????? ??
- 8220B-3040: P3 Activity Log Info: ?????????? ??
- 8220B-3050: P3 Activity Log Info: ?????????? ??
- 8220B-3060: P3 Activity Log Info: ?????????? ??
- 8220B-3080: P3 Activity Log Info: ?????????? ??
- 8220B-12520: P3 Activity Log Info: ?????????? ??

| ID | WBS | Activity | Duration | Start | Finish | Predecessors | Complete | Planned start | Planned finish | Total float | Free float | L1 : Project | L2 : Phase | L3 : Area | L4 : Sub-Area | L5 : Element | L6 : Sub-Element | M1: Contracts | M2 : Cost Centre | M4 : Location | M5 :Sub-Location | Stef Temp A1 | 822_AB_W010 |
| --- | --- | --- | --- | --- | --- | --- | --- | --- | --- | --- | --- | --- | --- | --- | --- | --- | --- | --- | --- | --- | --- | --- | --- |
|  | 8 | **Suspended Slab** |  | 2013-06-29 | 2014-06-01 |  |  |  |  |  |  |  |  |  |  |  |  |  |  |  |  |  |  |
| 8220B-1130 |  | Main - 126+128 to 126+228 Suspended Slab (100m) (Learning Curve) (rate = 5.76m/d) | 17.4d | 2013-06-29 A | 2013-12-07 A | 8220B-12510 | 100% | 2013-07-04 | 2013-07-24 |  |  | C822 | C29D | 05 | 0503 | 5 | TWIN | 822 | BB | 2210 | TUNC | NEW | 822_AB_W010 |
| 8220B-4110 |  | Main - 126+228 to 126+328 Suspended Slab (100m) (Learning Curve) (rate = 5.76m/d) | 17.4d | 2013-12-07 A | 2013-12-30 A | 8220B-1130 | 100% | 2014-01-06 | 2014-01-27 |  |  | C822 | C29D | 05 | 0503 | 5 | TWIN | 822 | BB | 2210 | TUNC | NEW | 822_AB_W010 |
| 8220B-4130 |  | Main - 126+328 to 126+428 Suspended Slab (100m) (rate = 10m/d) | 10d | 2013-12-31 A | 2014-02-21 A | 8220B-4110 | 100% | 2014-01-27 | 2014-02-11 |  |  | C822 | C29D | 05 | 0503 | 5 | TWIN | 822 | BB | 2210 | TUNC | NEW | 822_AB_W010 |
| 8220B-4140 |  | Main - 126+428 to 126+528 Suspended Slab (100m) (rate = 10m/d) | 10d | 2014-02-21 A | 2014-03-13 A | 8220B-4130 | 100% | 2014-03-12 | 2014-03-24 |  |  | C822 | C29D | 05 | 0503 | 5 | TWIN | 822 | BB | 2210 | TUNC | NEW | 822_AB_W010 |
| 8220B-4150 |  | Main - 126+528 to 126+628 Suspended Slab (100m) (rate = 10m/d) | 10d | 2014-03-13 A | 2014-03-23 A | 8220B-4140 | 100% | 2014-04-10 | 2014-04-22 |  |  | C822 | C29D | 05 | 0503 | 5 | TWIN | 822 | BB | 2210 | TUNC | NEW | 822_AB_W010 |
| 8220B-4160 |  | Main - 126+628 to 126+728 Suspended Slab (100m) (rate = 10m/d) | 10d | 2014-03-23 A | 2014-04-01 A | 8220B-4150 | 100% | 2014-04-22 | 2014-05-05 |  |  | C822 | C29D | 05 | 0503 | 5 | TWIN | 822 | BB | 2210 | TUNC | NEW | 822_AB_W010 |
| 8220B-4180 |  | Main - 126+728 to 126+810 Suspended Slab (82m) (rate = 10m/d) | 8.2d | 2014-04-01 A | 2014-06-01 A | 8220B-3080 FF, 8220B-12520 | 100% | 2014-06-16 | 2014-06-26 |  |  | C822 | C29D | 05 | 0503 | 5 | TWIN | 822 | BB | 2210 | TUNC | NEW | 822_AB_W010 |
|  | 3 | **1st Invert Prep/Drainage** |  | 2013-10-10 | 2017-01-11 |  |  |  |  |  |  |  |  |  |  |  |  |  |  |  |  |  |  |
| 8220B-0920 |  | Main - 126+128 to 126+228 1st Half Invert Prep (100m) (Learning Curve) (rate = 5.76m/d) | 17.4d | 2013-10-10 A | 2014-01-14 A | 8220B-1130 FS-5d | 100% | 2013-11-11 | 2013-11-30 |  |  | C822 | C29B | 05 | 0503 | 5 | TWIN | 822 | BB | 2210 | TUNM | NEW | 822_AB_W010 |
| 8220B-6500 |  | Main - 126+228 to 126+328 1st Half Invert Prep (100m) (Learning Curve) (rate = 5.76m/d) | 17.4d | 2013-12-30 A | 2014-03-06 A | 8220B-0920 | 100% | 2014-01-21 | 2014-02-13 |  |  | C822 | C29B | 05 | 0503 | 5 | TWIN | 822 | BB | 2210 | TUNM | NEW | 822_AB_W010 |
| 8220B-6520 |  | Main - 126+328 to 126+428 1st Half Invert Prep (100m) (rate = 10m/d) | 10d | 2014-03-06 A | 2014-03-21 A | 8220B-6500 | 100% | 2014-04-01 | 2014-04-14 |  |  | C822 | C29B | 05 | 0503 | 5 | TWIN | 822 | BB | 2210 | TUNM | NEW | 822_AB_W010 |
| 8220B-6530 |  | Main - 126+428 to 126+528 1st Half Invert Prep (100m) (rate = 10m/d) | 10d | 2014-03-21 A | 2014-04-01 A | 8220B-6520 | 100% | 2014-04-14 | 2014-04-25 |  |  | C822 | C29B | 05 | 0503 | 5 | TWIN | 822 | BB | 2210 | TUNM | NEW | 822_AB_W010 |
| 8220B-6670 |  | Main - 126+528 to 126+628 1st Half Invert Prep (100m) (rate = 10m/d) | 10d | 2014-04-01 A | 2014-04-28 A | 8220B-6530 | 100% | 2014-05-09 | 2014-05-20 |  |  | C822 | C29B | 05 | 0503 | 5 | TWIN | 822 | BB | 2210 | TUNM | NEW | 822_AB_W010 |
| 8220B-6810 |  | Main - 126+628 to 126+728 1st Half Invert Prep (100m) (rate = 10m/d) | 10d | 2014-04-28 A | 2014-06-01 A | 8220B-6670 | 100% | 2014-05-21 | 2014-05-31 |  |  | C822 | C29B | 05 | 0503 | 5 | TWIN | 822 | BB | 2210 | TUNM | NEW | 822_AB_W010 |
| 8220B-6960 |  | Main - 126+728 to 126+810 1st Half Invert Prep (82m) (rate = 10m/d) | 8.2d | 2017-01-02 | 2017-01-11 | 8220B-4180 FF, 8220B-4180 |  |  |  | -1079.2d | 0d | C822 | C29B | 05 | 0503 | 5 | TWIN | 822 | BB | 2210 | TUNM | NEW |  |
|  | 5 | **1st Invert Slab** |  | 2013-10-10 | 2017-01-20 |  |  |  |  |  |  |  |  |  |  |  |  |  |  |  |  |  |  |
| 8220B-0930 |  | Main - 126+128 to 126+228 1st Half Invert Slab (100m) (Learning Curve) (rate = 5.76m/d) | 17.4d | 2013-10-10 A | 2014-01-14 A | 8220B-0920 FS-5d | 100% | 2013-11-25 | 2013-12-16 |  |  | C822 | C29I | 05 | 0503 | 5 | TWIN | 822 | BB | 2210 | TUNM | NEW | 822_AB_W010 |
| 8220B-6970 |  | Main - 126+228 to 126+328 1st Half Invert Slab (100m) (Learning Curve) (rate = 5.76m/d) | 17.4d | 2013-12-30 A | 2014-03-06 A | 8220B-0930 | 100% | 2014-01-21 | 2014-02-13 |  |  | C822 | C29I | 05 | 0503 | 5 | TWIN | 822 | BB | 2210 | TUNM | NEW | 822_AB_W010 |
| 8220B-6990 |  | Main - 126+328 to 126+428 1st Half Invert Slab (100m) (rate = 10m/d) | 10d | 2014-03-06 A | 2014-03-21 A | 8220B-6970 | 100% | 2014-04-01 | 2014-04-14 |  |  | C822 | C29I | 05 | 0503 | 5 | TWIN | 822 | BB | 2210 | TUNM | NEW | 822_AB_W010 |
| 8220B-6700 |  | Main - 126+428 to 126+528 1st Half Invert Slab (100m) (rate = 10m/d) | 10d | 2014-03-21 A | 2014-04-01 A | 8220B-6990 | 100% | 2014-04-14 | 2014-04-25 |  |  | C822 | C29I | 05 | 0503 | 5 | TWIN | 822 | BB | 2210 | TUNM | NEW | 822_AB_W010 |
| 8220B-6710 |  | Main - 126+528 to 126+628 1st Half Invert Slab (100m) (rate = 10m/d) | 10d | 2014-04-01 A | 2014-04-28 A | 8220B-6700 | 100% | 2014-05-09 | 2014-05-20 |  |  | C822 | C29I | 05 | 0503 | 5 | TWIN | 822 | BB | 2210 | TUNM | NEW | 822_AB_W010 |
| 8220B-6720 |  | Main - 126+628 to 126+728 1st Half Invert Slab (100m) (rate = 10m/d) | 10d | 2014-04-28 A | 2014-06-01 A | 8220B-6710 | 100% | 2014-05-21 | 2014-05-31 |  |  | C822 | C29I | 05 | 0503 | 5 | TWIN | 822 | BB | 2210 | TUNM | NEW | 822_AB_W010 |
| 8220B-6740 |  | Main - 126+728 to 126+810 1st Half Invert Slab (82m) (rate = 10m/d) | 8.2d | 2017-01-11 | 2017-01-20 | 8220B-6960 FF, 8220B-6960 |  |  |  | -1079.2d | 0d | C822 | C29I | 05 | 0503 | 5 | TWIN | 822 | BB | 2210 | TUNM | NEW |  |

Notes:
- 8220B-0920: P3 Activity Log Info: ??????????1,721m / 8m/d ??
- 8220B-6500: P3 Activity Log Info: ??????????1,721m / 8m/d ??
- 8220B-6520: P3 Activity Log Info: ??????????1,721m / 8m/d ??
- 8220B-6530: P3 Activity Log Info: ??????????1,721m / 8m/d ??
- 8220B-6670: P3 Activity Log Info: ??????????1,721m / 8m/d ??
- 8220B-6810: P3 Activity Log Info: ??????????1,721m / 8m/d ??
- 8220B-6960: P3 Activity Log Info: ??????????1,721m / 8m/d ??

| ID | WBS | Activity | Duration | Start | Finish | Predecessors | Complete | Planned start | Planned finish | Total float | Free float | L1 : Project | L2 : Phase | L3 : Area | L4 : Sub-Area | L5 : Element | L6 : Sub-Element | M1: Contracts | M2 : Cost Centre | M4 : Location | M5 :Sub-Location | Stef Temp A1 | 822_AB_W010 |
| --- | --- | --- | --- | --- | --- | --- | --- | --- | --- | --- | --- | --- | --- | --- | --- | --- | --- | --- | --- | --- | --- | --- | --- |
|  | 4 | **2nd Invert Prep/Drainage** |  | 2013-10-10 | 2017-01-30 |  |  |  |  |  |  |  |  |  |  |  |  |  |  |  |  |  |  |
| 8220B-0940 |  | Main - 126+128 to 126+228 2nd Half Invert Prep (100m) (Learning Curve) (rate = 5.76m/d) | 17.4d | 2013-10-10 A | 2014-01-14 A | 8220B-0930 FS-5d | 100% | 2013-12-10 | 2013-12-31 |  |  | C822 | C29J | 05 | 0503 | 5 | TWIN | 822 | BB | 2210 | TUNM | NEW | 822_AB_W010 |
| 8220B-6750 |  | Main - 126+228 to 126+328 2nd Half Invert Prep (100m) (Learning Curve) (rate = 5.76m/d) | 17.4d | 2013-12-30 A | 2014-03-06 A | 8220B-0940 | 100% | 2014-01-21 | 2014-02-13 |  |  | C822 | C29J | 05 | 0503 | 5 | TWIN | 822 | BB | 2210 | TUNM | NEW | 822_AB_W010 |
| 8220B-6770 |  | Main - 126+328 to 126+428 2nd Half Invert Prep (100m) (rate = 10m/d) | 10d | 2014-03-06 A | 2014-03-21 A | 8220B-6750 | 100% | 2014-04-01 | 2014-04-14 |  |  | C822 | C29J | 05 | 0503 | 5 | TWIN | 822 | BB | 2210 | TUNM | NEW | 822_AB_W010 |
| 8220B-6880 |  | Main - 126+428 to 126+528 2nd Half Invert Prep (100m) (rate = 10m/d) | 10d | 2014-03-21 A | 2014-04-01 A | 8220B-6770 | 100% | 2014-04-14 | 2014-04-25 |  |  | C822 | C29J | 05 | 0503 | 5 | TWIN | 822 | BB | 2210 | TUNM | NEW | 822_AB_W010 |
| 8220B-6890 |  | Main - 126+528 to 126+628 2nd Half Invert Prep (100m) (rate = 10m/d) | 10d | 2014-04-01 A | 2014-04-28 A | 8220B-6880 | 100% | 2014-05-09 | 2014-05-20 |  |  | C822 | C29J | 05 | 0503 | 5 | TWIN | 822 | BB | 2210 | TUNM | NEW | 822_AB_W010 |
| 8220B-6900 |  | Main - 126+628 to 126+728 2nd Half Invert Prep (100m) (rate = 10m/d) | 10d | 2014-04-28 A | 2014-06-01 A | 8220B-6890, 8220B-6720 FF | 100% | 2014-05-21 | 2014-05-31 |  |  | C822 | C29J | 05 | 0503 | 5 | TWIN | 822 | BB | 2210 | TUNM | NEW | 822_AB_W010 |
| 8220B-6920 |  | Main - 126+728 to 126+810 2nd Half Invert Prep (82m) (rate = 10m/d) | 8.2d | 2017-01-20 | 2017-01-30 | 8220B-6740 FF, 8220B-6740 |  |  |  | -1079.2d | 0d | C822 | C29J | 05 | 0503 | 5 | TWIN | 822 | BB | 2210 | TUNM | NEW |  |
|  | 6 | **2nd Invert Slab** |  | 2013-10-10 | 2017-02-08 |  |  |  |  |  |  |  |  |  |  |  |  |  |  |  |  |  |  |
| 8220B-0950 |  | Main - 126+128 to 126+228 2nd Half Invert Slab (100m) (Learning Curve) (rate = 5.76m/d) | 17.4d | 2013-10-10 A | 2014-01-14 A | 8220B-0940 FS-5d | 100% | 2013-12-24 | 2014-01-15 |  |  | C822 | C29K | 05 | 0503 | 5 | TWIN | 822 | BB | 2210 | TUNM | NEW | 822_AB_W010 |
| 8220B-6930 |  | Main - 126+228 to 126+328 2nd Half Invert Slab (100m) (Learning Curve) (rate = 5.76m/d) | 17.4d | 2013-12-30 A | 2014-03-06 A | 8220B-0950 | 100% | 2014-01-21 | 2014-02-13 |  |  | C822 | C29K | 05 | 0503 | 5 | TWIN | 822 | BB | 2210 | TUNM | NEW | 822_AB_W010 |
| 8220B-7110 |  | Main - 126+328 to 126+428 2nd Half Invert Slab (100m) (rate = 10m/d) | 10d | 2014-03-06 A | 2014-03-21 A | 8220B-6930 | 100% | 2014-04-01 | 2014-04-14 |  |  | C822 | C29K | 05 | 0503 | 5 | TWIN | 822 | BB | 2210 | TUNM | NEW | 822_AB_W010 |
| 8220B-7120 |  | Main - 126+428 to 126+528 2nd Half Invert Slab (100m) (rate = 10m/d) | 10d | 2014-03-21 A | 2014-04-01 A | 8220B-7110 | 100% | 2014-04-14 | 2014-04-25 |  |  | C822 | C29K | 05 | 0503 | 5 | TWIN | 822 | BB | 2210 | TUNM | NEW | 822_AB_W010 |
| 8220B-7130 |  | Main - 126+528 to 126+628 2nd Half Invert Slab (100m) (rate = 10m/d) | 10d | 2014-04-01 A | 2014-04-28 A | 8220B-7120 | 100% | 2014-05-09 | 2014-05-20 |  |  | C822 | C29K | 05 | 0503 | 5 | TWIN | 822 | BB | 2210 | TUNM | NEW | 822_AB_W010 |
| 8220B-7140 |  | Main - 126+628 to 126+728 2nd Half Invert Slab (100m) (rate = 10m/d) | 10d | 2014-04-28 A | 2014-06-01 A | 8220B-7130, 8220B-6900 FF | 100% | 2014-05-21 | 2014-05-31 |  |  | C822 | C29K | 05 | 0503 | 5 | TWIN | 822 | BB | 2210 | TUNM | NEW | 822_AB_W010 |
| 8220B-7160 |  | Main - 126+728 to 126+810 2nd Half Invert Slab (82m) (rate = 10m/d) | 8.2d | 2017-01-30 | 2017-02-08 | 8220B-6920 FF, 8220B-6920 |  |  |  | -1079.2d | 0d | C822 | C29K | 05 | 0503 | 5 | TWIN | 822 | BB | 2210 | TUNM | NEW |  |
|  | 7 | **Centre Wall** |  | 2014-04-26 | 2017-02-17 |  |  |  |  |  |  |  |  |  |  |  |  |  |  |  |  |  |  |
| 8220B-1100 |  | Main - 126+128 to 126+228 Centre Wall (100m) (Learning Curve) (rate = 5.76m/d) | 17.4d | 2014-04-26 A | 2014-05-04 A | 8220B-0950 FS-5d | 100% | 2014-05-02 | 2014-05-22 |  |  | C822 | C29F | 05 | 0503 | 5 | TWIN | 822 | BB | 2210 | TUNM | NEW | 822_AB_W010 |
| 8220B-5080 |  | Main - 126+228 to 126+328 Centre Wall (100m) (Learning Curve) (rate = 5.76m/d) | 17.4d | 2014-05-06 A | 2014-05-13 A | 8220B-1100 | 100% | 2014-06-14 | 2014-07-05 |  |  | C822 | C29F | 05 | 0503 | 5 | TWIN | 822 | BB | 2210 | TUNM | NEW | 822_AB_W010 |
| 8220B-5100 |  | Main - 126+328 to 126+428 Centre Wall (100m) (rate = 10m/d) | 10d | 2014-05-13 A | 2014-06-01 A | 8220B-5080 | 100% | 2014-07-05 | 2014-07-17 |  |  | C822 | C29F | 05 | 0503 | 5 | TWIN | 822 | BB | 2210 | TUNM | NEW | 822_AB_W010 |
| 8220B-5110 |  | Main - 126+428 to 126+528 Centre Wall (100m) (rate = 10m/d) | 10d | 2014-05-22 A | 2014-06-01 A | 8220B-5100 | 100% | 2014-07-17 | 2014-07-29 |  |  | C822 | C29F | 05 | 0503 | 5 | TWIN | 822 | BB | 2210 | TUNM | NEW | 822_AB_W010 |
| 8220B-5120 |  | Main - 126+528 to 126+628 Centre Wall (100m) (rate = 10m/d) | 10d | 2017-01-02 | 2017-01-12 | 8220B-5110 |  |  |  | -1014d | 0d | C822 | C29F | 05 | 0503 | 5 | TWIN | 822 | BB | 2210 | TUNM | NEW |  |
| 8220B-5130 |  | Main - 126+628 to 126+728 Centre Wall (100m) (rate = 10m/d) | 10d | 2017-01-13 | 2017-01-24 | 8220B-5120, 8220B-7140 FF |  |  |  | -1014d | 0d | C822 | C29F | 05 | 0503 | 5 | TWIN | 822 | BB | 2210 | TUNM | NEW |  |
| 8220D-5150 |  | Main - 126+728 to 126+810 Centre Wall (82m) (rate = 10m/d) | 8.2d | 2017-02-08 | 2017-02-17 | 8220B-7160 FF, 8220B-7160 |  |  |  | -1079.2d | 0d | C822 | C29F | 05 | 0503 | 5 | TWIN | 822 | BB | 2210 | TUNM | NEW |  |

Notes:
- 8220B-1100: P3 Activity Log Info: Drives MS B08 (70% of Tunnel Lining)
- 8220B-5080: P3 Activity Log Info: Drives MS B08 (70% of Tunnel Lining)
- 8220B-5100: P3 Activity Log Info: Drives MS B08 (70% of Tunnel Lining)
- 8220B-5110: P3 Activity Log Info: Drives MS B08 (70% of Tunnel Lining)
- 8220B-5120: P3 Activity Log Info: Drives MS B08 (70% of Tunnel Lining)
- 8220B-5130: P3 Activity Log Info: Drives MS B08 (70% of Tunnel Lining)
- 8220D-5150: P3 Activity Log Info: Drives MS B08 (70% of Tunnel Lining)

| ID | WBS | Activity | Type | Duration | Start | Finish | Predecessors | Complete | Planned start | Planned finish | Total float | Free float | Constraint | L1 : Project | L2 : Phase | L3 : Area | L4 : Sub-Area | L5 : Element | L6 : Sub-Element | M1: Contracts | M2 : Cost Centre | M4 : Location | M5 :Sub-Location | Stef Temp A1 | 822_AB_W010 | L8: Section |
| --- | --- | --- | --- | --- | --- | --- | --- | --- | --- | --- | --- | --- | --- | --- | --- | --- | --- | --- | --- | --- | --- | --- | --- | --- | --- | --- |
|  | 9 | **OHVD Centre Wall** |  |  | 2014-03-27 | 2017-02-28 |  |  |  |  |  |  |  |  |  |  |  |  |  |  |  |  |  |  |  |  |
| 8220B-1090 |  | Main - 126+128 to 126+228 OHVD Centre Wall (100m) (Learning Curve) (rate = 5.76m/d) |  | 17.4d | 2014-03-27 A | 2014-06-01 A | 8220B-1100 FS-5d | 100% | 2014-04-16 | 2014-05-10 |  |  |  | C822 | C29H | 05 | 0503 | 5 | TWIN | 822 | BB | 2210 | TUNM | NEW | 822_AB_W010 |  |
| 8220B-5010 |  | Main - 126+228 to 126+328 OHVD Centre Wall (100m) (Learning Curve) (rate = 5.76m/d) |  | 17.4d | 2014-04-07 A | 2014-04-20 A | 8220B-1090 | 100% | 2014-05-20 | 2014-06-10 |  |  |  | C822 | C29H | 05 | 0503 | 5 | TWIN | 822 | BB | 2210 | TUNM | NEW | 822_AB_W010 |  |
| 8220B-5020 |  | Main - 126+328 to 126+428 OHVD Centre Wall (100m) (rate = 10m/d) |  | 10d | 2014-04-21 A | 2014-04-30 A | 8220B-5010 | 100% | 2014-06-10 | 2014-06-23 |  |  |  | C822 | C29H | 05 | 0503 | 5 | TWIN | 822 | BB | 2210 | TUNM | NEW | 822_AB_W010 |  |
| 8220B-5030 |  | Main - 126+428 to 126+528 OHVD Centre Wall (100m) (rate = 10m/d) |  | 10d | 2014-04-30 A | 2014-05-11 A | 8220B-5020 | 100% | 2014-06-23 | 2014-07-05 |  |  |  | C822 | C29H | 05 | 0503 | 5 | TWIN | 822 | BB | 2210 | TUNM | NEW | 822_AB_W010 |  |
| 8220B-5040 |  | Main - 126+528 to 126+628 OHVD Centre Wall (100m) (rate = 10m/d) |  | 10d | 2014-05-11 A | 2014-05-19 A | 8220B-5030 | 100% | 2014-06-14 | 2014-06-25 |  |  |  | C822 | C29H | 05 | 0503 | 5 | TWIN | 822 | BB | 2210 | TUNM | NEW | 822_AB_W010 |  |
| 8220B-5050 |  | Main - 126+628 to 126+728 OHVD Centre Wall (100m) (rate = 10m/d) |  | 10d | 2014-05-19 A | 2014-06-01 A | 8220B-5040, 8220B-5130 FF | 100% | 2014-06-26 | 2014-07-08 |  |  |  | C822 | C29H | 05 | 0503 | 5 | TWIN | 822 | BB | 2210 | TUNM | NEW | 822_AB_W010 |  |
| 8220B-5070 |  | Main - 126+728 to 126+810 OHVD Centre Wall (82m) (rate = 10m/d) |  | 8.2d | 2017-02-18 | 2017-02-28 | 8220D-5150 FF, 8220D-5150 |  |  |  | -1079.2d | 0d |  | C822 | C29H | 05 | 0503 | 5 | TWIN | 822 | BB | 2210 | TUNM | NEW |  |  |
|  | 10 | **D/T Walkway and De-Railment Kurbs** |  |  |  |  |  |  |  |  |  |  |  |  |  |  |  |  |  |  |  |  |  |  |  |  |
|  | 3 | **Type C - Heading South from Ch126.837 to Join Point** |  |  | 2012-01-12 | 2017-01-21 |  |  |  |  |  |  |  |  |  |  |  |  |  |  |  |  |  |  |  |  |
| 822B-2820 |  | Place order for 1 x Type C Formwork Shutters | milestone | 0d | 2012-01-12 A | 2012-01-12 A |  | 100% | 2012-07-09 | 2012-07-09 |  |  | as late as possible | C822 | C10 | 05 | 0503 | 7 | 01 |  |  |  |  | NEW | 822_AB_W010 |  |
| 822B-2830 |  | Fabrication of 1 x Type C Formwork Shutters |  | 100d | 2012-01-12 A | 2012-05-15 A | 822B-2820 | 100% | 2012-07-09 | 2012-11-06 |  |  | as late as possible | C822 | C10 | 05 | 0503 | 7 | 01 |  |  |  |  | NEW | 822_AB_W010 |  |
| 822B-2840 |  | Delivery to Hong Kong Pat Heung Site |  | 6d | 2012-05-16 A | 2012-06-26 A | 822B-2830 | 100% | 2012-11-06 | 2012-11-13 |  |  | as late as possible | C822 | C10 | 05 | 0503 | 7 | 01 |  |  |  |  | NEW | 822_AB_W010 |  |
| 822B-2850 |  | Assemble 1 x Type C Formwork in Tunnel |  | 36d | 2012-07-03 A | 2012-09-07 A | 822B-2840 FS+30d | 100% | 2012-08-31 | 2012-10-13 |  |  |  | C822 | C10 | 05 | 0503 | 7 | 01 |  |  |  |  | NEW | 822_AB_W010 |  |
| 822B-2860 |  | Test and Commission Type C Form |  | 6d | 2012-09-07 A | 2012-09-15 A | 822B-2850 | 100% | 2012-10-03 | 2012-10-09 |  |  |  | C822 | C10 | 05 | 0503 | 7 | 01 |  |  |  |  | NEW | 822_AB_W010 |  |
| 8220B-11670 |  | Main - 126050 to 125942 Kicker and Membrane (rate = 5.76m/d) (108m) |  | 19d | 2012-10-07 A | 2013-03-30 A |  | 100% | 2012-12-01 | 2012-12-22 |  |  | as late as possible | C822 | C29A | 05 | 0503 | 7 | TWIN | 822 | BB | 2210 | TUNM | NEW | 822_AB_W010 |  |
|  | 1 | **Rail, Kicker, Membrane** |  |  | 2013-03-14 | 2014-03-31 |  |  |  |  |  |  |  |  |  |  |  |  |  |  |  |  |  |  |  |  |
| 8220B-0790 |  | Main - 126+837 to 126+935 Kicker and Membrane (98m) (Learning Curve) (rate = 5.76m/d) |  | 17d | 2013-03-14 A | 2013-04-22 A | 8220B-11680 | 100% | 2013-04-30 | 2013-05-21 |  |  |  | C822 | C29A | 05 | 0503 | 7 | TWIN | 822 | BB | 2210 | TUNM | NEW | 822_AB_W010 |  |
| 8220B-2080 |  | Main - 126+935 to 127+035 Kicker and Membrane (Learning Curve) (rate = 5.76m/d) (100m) |  | 17.3d | 2013-04-22 A | 2013-05-06 A | 8220B-0790 | 100% | 2013-07-03 | 2013-07-23 |  |  |  | C822 | C29A | 05 | 0503 | 7 | TWIN | 822 | BB | 2210 | TUNM | NEW | 822_AB_W010 |  |
| 8220B-2090 |  | Main - 127+035 to 127+135 Kicker and Membrane (rate = 10m/d) (100m) |  | 10d | 2013-05-06 A | 2013-05-20 A | 8220B-2080 | 100% | 2013-07-23 | 2013-08-03 |  |  |  | C822 | C29A | 05 | 0503 | 7 | TWIN | 822 | BB | 2210 | TUNM | NEW | 822_AB_W010 |  |
| 8220B-2100 |  | Main - 127135 to 127235 Kicker and Membrane (rate = 10m/d) (100m) |  | 10d | 2013-05-21 A | 2013-06-28 A | 8220B-2090 | 100% | 2013-07-04 | 2013-07-16 |  |  |  | C822 | C29A | 05 | 0503 | 7 | TWIN | 822 | BB | 2210 | TUNM | NEW | 822_AB_W010 |  |
| 8220B-2110 |  | Main - 127235 to 127335 Kicker and Membrane (rate = 10m/d) (100m) |  | 10d | 2013-06-29 A | 2013-07-14 A | 8220B-2100 | 100% | 2013-07-24 | 2013-08-03 |  |  |  | C822 | C29A | 05 | 0503 | 7 | TWIN | 822 | BB | 2210 | TUNM | NEW | 822_AB_W010 |  |
| 8220B-2120 |  | Main - 127335 to 127435 Kicker and Membrane (rate = 10m/d) (100m) |  | 10d | 2013-07-15 A | 2013-07-27 A | 8220B-2110 | 100% | 2013-08-26 | 2013-09-05 |  |  |  | C822 | C29A | 05 | 0503 | 7 | TWIN | 822 | BB | 2210 | TUNM | NEW | 822_AB_W010 |  |
| 8220B-2130 |  | Main - 127435 to 127535 Kicker and Membrane (rate = 10m/d) (100m) |  | 10d | 2013-07-29 A | 2013-08-10 A | 8220B-2120 | 100% | 2013-09-04 | 2013-09-14 |  |  |  | C822 | C29A | 05 | 0503 | 7 | TWIN | 822 | BB | 2210 | TUNM | NEW | 822_AB_W010 |  |
| 8220B-2140 |  | Main - 127535 to 127635 Kicker and Membrane (rate = 10m/d) (100m) |  | 10d | 2013-08-12 A | 2013-08-29 A | 8220B-2130 | 100% | 2013-09-12 | 2013-09-24 |  |  |  | C822 | C29A | 05 | 0503 | 7 | TWIN | 822 | BB | 2210 | TUNM | NEW | 822_AB_W010 |  |
| 8220B-2150 |  | Main - 127635 to 127735 Kicker and Membrane (rate = 10m/d) (100m) |  | 10d | 2013-08-30 A | 2013-09-11 A | 8220B-2140 | 100% | 2013-09-25 | 2013-10-07 |  |  |  | C822 | C29A | 05 | 0503 | 7 | TWIN | 822 | BB | 2210 | TUNM | NEW | 822_AB_W010 |  |
| 8220B-2160 |  | Main - 127735 to 127835 Kicker and Membrane (rate = 10m/d) (100m) |  | 10d | 2013-09-12 A | 2013-09-23 A | 8220B-2150 | 100% | 2013-10-08 | 2013-10-21 |  |  |  | C822 | C29A | 05 | 0503 | 7 | TWIN | 822 | BB | 2210 | TUNM | NEW | 822_AB_W010 |  |
| 8220B-2170 |  | Main - 127835 to 127935 Kicker and Membrane (rate = 10m/d) (100m) |  | 10d | 2013-09-24 A | 2013-10-19 A | 8220B-2160 | 100% | 2013-10-21 | 2013-11-01 |  |  |  | C822 | C29A | 05 | 0503 | 7 | TWIN | 822 | BB | 2210 | TUNM | NEW | 822_AB_W010 |  |
| 8220B-2180 |  | Main - 127935 to 128035 Kicker and Membrane (rate = 10m/d) (100m) |  | 10d | 2013-10-21 A | 2013-10-28 A | 8220B-2170 | 100% | 2013-11-28 | 2013-12-09 |  |  |  | C822 | C29A | 05 | 0503 | 7 | TWIN | 822 | BB | 2210 | TUNM | NEW | 822_AB_W010 |  |
| 8220B-2190 |  | Main - 128035 to 128135 Kicker and Membrane (rate = 10m/d) (100m) |  | 10d | 2013-10-28 A | 2013-11-09 A | 8220B-2180 | 100% | 2013-12-02 | 2013-12-13 |  |  |  | C822 | C29A | 05 | 0503 | 7 | TWIN | 822 | BB | 2210 | TUNM | NEW | 822_AB_W010 |  |
| 8220B-2640 |  | Main - 128135 to 128235 Kicker and Membrane (rate = 10m/d) (100m) |  | 10d | 2013-11-11 A | 2013-11-23 A | 8220B-2190 | 100% | 2013-12-07 | 2013-12-18 |  |  |  | C822 | C29A | 05 | 0503 | 7 | TWIN | 822 | BB | 2210 | TUNM | NEW | 822_AB_W010 |  |
| 8220B-2630 |  | Main - 128235 to 128335 Kicker and Membrane (rate = 10m/d) (100m) |  | 10d | 2013-11-25 A | 2013-12-08 A | 8220B-2640 | 100% | 2013-12-19 | 2013-12-31 |  |  |  | C822 | C29A | 05 | 0503 | 7 | TWIN | 822 | BB | 2210 | TUNM | NEW | 822_AB_W010 | B |
| 8220B-11240 |  | Main - 128335 to 128435 Kicker and Membrane (rate = 10m/d) (100m) |  | 10d | 2013-12-09 A | 2013-12-19 A | 8220B-2630 | 100% | 2014-01-07 | 2014-01-18 |  |  |  | C822 | C29A | 05 | 0503 | 7 | TWIN | 822 | BB | 2210 | TUNM | NEW | 822_AB_W010 |  |
| 8220B-11250 |  | Main - 128435 to 128535 Kicker and Membrane (rate = 10m/d) (100m) |  | 10d | 2013-12-20 A | 2014-01-08 A | 8220B-11240 | 100% | 2014-01-18 | 2014-01-30 |  |  |  | C822 | C29A | 05 | 0503 | 7 | TWIN | 822 | BB | 2210 | TUNM | NEW | 822_AB_W010 |  |
| 8220B-11260 |  | Main - 128535 to 128635 Kicker and Membrane (rate = 10m/d) (100m) |  | 10d | 2014-01-08 A | 2014-01-22 A | 8220B-11250 | 100% | 2014-02-10 | 2014-02-21 |  |  |  | C822 | C29A | 05 | 0503 | 7 | TWIN | 822 | BB | 2210 | TUNM | NEW | 822_AB_W010 |  |
| 8220B-11270 |  | Main - 128635 to 128735 Kicker and Membrane (rate = 10m/d) (100m) |  | 10d | 2014-01-22 A | 2014-02-17 A | 8220B-11260 | 100% | 2014-02-21 | 2014-03-05 |  |  |  | C822 | C29A | 05 | 0503 | 7 | TWIN | 822 | BB | 2210 | TUNM | NEW | 822_AB_W010 |  |
| 8220B-11280 |  | Main - 128735 to 128835 Kicker and Membrane (rate = 10m/d) (100m) |  | 10d | 2014-02-17 A | 2014-03-16 A | 8220B-11270 | 100% | 2014-03-10 | 2014-03-21 |  |  |  | C822 | C29A | 05 | 0503 | 7 | TWIN | 822 | BB | 2210 | TUNM | NEW | 822_AB_W010 |  |
| 8220B-11290 |  | Main - 128835 to 128935 Kicker and Membrane (rate = 10m/d) (100m) |  | 10d | 2014-03-16 A | 2014-03-26 A | 8220B-11280 | 100% | 2014-04-10 | 2014-04-22 |  |  |  | C822 | C29A | 05 | 0503 | 7 | TWIN | 822 | BB | 2210 | TUNM | NEW | 822_AB_W010 | B |
| 8220B-2590 |  | Main - 128935 to 128995 Kicker and Membrane (60m) (rate = 10m/d) |  | 6d | 2014-03-26 A | 2014-03-31 A | 8220B-11290 | 100% | 2014-04-22 | 2014-04-29 |  |  |  | C822 | C29A | 05 | 0503 | 7 | TWIN | 822 | BB | 2210 | TUNM | NEW | 822_AB_W010 | B |

Notes:
- 8220B-11670: P3 Activity Log Info: ??????????1,267m / 12m/d ??
- 8220B-0790: P3 Activity Log Info: ??????????1,267m / 12m/d ??
- 8220B-2080: P3 Activity Log Info: ??????????1,267m / 12m/d ??
- 8220B-2090: P3 Activity Log Info: ??????????1,267m / 12m/d ??
- 8220B-2100: P3 Activity Log Info: ??????????1,267m / 12m/d ??
- 8220B-2110: P3 Activity Log Info: ??????????1,267m / 12m/d ??
- 8220B-2120: P3 Activity Log Info: ??????????1,267m / 12m/d ??
- 8220B-2130: P3 Activity Log Info: ??????????1,267m / 12m/d ??
- 8220B-2140: P3 Activity Log Info: ??????????1,267m / 12m/d ??
- 8220B-2150: P3 Activity Log Info: ??????????1,267m / 12m/d ??
- 8220B-2160: P3 Activity Log Info: ??????????1,267m / 12m/d ??
- 8220B-2170: P3 Activity Log Info: ??????????1,267m / 12m/d ??
- 8220B-2180: P3 Activity Log Info: ??????????1,267m / 12m/d ??
- 8220B-2190: P3 Activity Log Info: ??????????1,267m / 12m/d ??
- 8220B-2640: P3 Activity Log Info: ??????????3142m / 12m/d??
- 8220B-2630: P3 Activity Log Info: 1 day deducted - 2797m = 242 days
- 8220B-11240: P3 Activity Log Info: ??????????1,267m / 12m/d ??
- 8220B-11250: P3 Activity Log Info: ??????????1,267m / 12m/d ??
- 8220B-11260: P3 Activity Log Info: ??????????1,267m / 12m/d ??
- 8220B-11270: P3 Activity Log Info: ??????????1,267m / 12m/d ??
- 8220B-11280: P3 Activity Log Info: ??????????3142m / 12m/d??
- 8220B-11290: P3 Activity Log Info: 1 day deducted - 2797m = 242 days
- 8220B-2590: P3 Activity Log Info: 1 day deducted - 2797m = 242 days

| ID | WBS | Activity | Duration | Start | Finish | Predecessors | Complete | Planned start | Planned finish | L1 : Project | L2 : Phase | L3 : Area | L4 : Sub-Area | L5 : Element | L6 : Sub-Element | M1: Contracts | M2 : Cost Centre | M4 : Location | M5 :Sub-Location | Stef Temp A1 | 822_AB_W010 | L8: Section |
| --- | --- | --- | --- | --- | --- | --- | --- | --- | --- | --- | --- | --- | --- | --- | --- | --- | --- | --- | --- | --- | --- | --- |
|  | 2 | **Permanent Concrete Lining** |  | 2013-03-25 | 2014-05-03 |  |  |  |  |  |  |  |  |  |  |  |  |  |  |  |  |  |
| 8220B-0860 |  | Main - 126837 to 126935 Perm Concrete Lining (98m) (Learning Curve) (rate = 5.76m/d) | 17d | 2013-03-25 A | 2013-04-24 A | 8220B-0790 FS-5d | 100% | 2013-05-09 | 2013-05-29 | C822 | C29C | 05 | 0503 | 7 | TWIN | 822 | BB | 2210 | TUNM | NEW | 822_AB_W010 |  |
| 8220B-3230 |  | Main - 126935 to 127035 Perm Concrete Lining (Learning Curve) (rate = 5.76m/d) (100m) | 17.3d | 2013-04-24 A | 2013-05-08 A | 8220B-0860 | 100% | 2013-06-14 | 2013-07-05 | C822 | C29C | 05 | 0503 | 7 | TWIN | 822 | BB | 2210 | TUNM | NEW | 822_AB_W010 |  |
| 8220B-3240 |  | Main - 127035 to 127135 Perm Concrete Lining (rate = 10m/d) | 10d | 2013-05-08 A | 2013-05-27 A | 8220B-3230 | 100% | 2013-06-20 | 2013-07-03 | C822 | C29C | 05 | 0503 | 7 | TWIN | 822 | BB | 2210 | TUNM | NEW | 822_AB_W010 |  |
| 8220B-3250 |  | Main - 127135 to 127235 Perm Concrete Lining (rate = 10m/d) | 10d | 2013-05-27 A | 2013-06-29 A | 8220B-3240 | 100% | 2013-06-25 | 2013-07-08 | C822 | C29C | 05 | 0503 | 7 | TWIN | 822 | BB | 2210 | TUNM | NEW | 822_AB_W010 |  |
| 8220B-3260 |  | Main - 127235 to 127335 Perm Concrete Lining (rate = 10m/d) | 10d | 2013-07-03 A | 2013-07-20 A | 8220B-3250 | 100% | 2013-08-16 | 2013-08-27 | C822 | C29C | 05 | 0503 | 7 | TWIN | 822 | BB | 2210 | TUNM | NEW | 822_AB_W010 |  |
| 8220B-3270 |  | Main - 127335 to 127435 Perm Concrete Lining (rate = 10m/d) | 10d | 2013-07-20 A | 2013-08-01 A | 8220B-3260 | 100% | 2013-08-28 | 2013-09-07 | C822 | C29C | 05 | 0503 | 7 | TWIN | 822 | BB | 2210 | TUNM | NEW | 822_AB_W010 |  |
| 8220B-3280 |  | Main - 127435 to 127535 Perm Concrete Lining (rate = 10m/d) | 10d | 2013-08-01 A | 2013-08-23 A | 8220B-3270 | 100% | 2013-09-18 | 2013-09-30 | C822 | C29C | 05 | 0503 | 7 | TWIN | 822 | BB | 2210 | TUNM | NEW | 822_AB_W010 |  |
| 8220B-3290 |  | Main - 127535 to 127635 Perm Concrete Lining (rate = 10m/d) | 10d | 2013-08-23 A | 2013-09-06 A | 8220B-3280 | 100% | 2013-10-02 | 2013-10-12 | C822 | C29C | 05 | 0503 | 7 | TWIN | 822 | BB | 2210 | TUNM | NEW | 822_AB_W010 |  |
| 8220B-3330 |  | Main - 127635 to 127735 Perm Concrete Lining (rate = 10m/d) | 10d | 2013-09-07 A | 2013-09-18 A | 8220B-3290 | 100% | 2013-10-22 | 2013-11-02 | C822 | C29C | 05 | 0503 | 7 | TWIN | 822 | BB | 2210 | TUNM | NEW | 822_AB_W010 |  |
| 8220B-3340 |  | Main - 127735 to 127835 Perm Concrete Lining (rate = 10m/d) | 10d | 2013-09-19 A | 2013-10-12 A | 8220B-3330 | 100% | 2013-11-02 | 2013-11-14 | C822 | C29C | 05 | 0503 | 7 | TWIN | 822 | BB | 2210 | TUNM | NEW | 822_AB_W010 |  |
| 8220B-3350 |  | Main - 127835 to 127935 Perm Concrete Lining (rate = 10m/d) | 10d | 2013-10-14 A | 2013-10-28 A | 8220B-3340 | 100% | 2013-11-29 | 2013-12-11 | C822 | C29C | 05 | 0503 | 7 | TWIN | 822 | BB | 2210 | TUNM | NEW | 822_AB_W010 |  |
| 8220B-3360 |  | Main - 127935 to 128035 Perm Concrete Lining (rate = 10m/d) | 10d | 2013-10-29 A | 2013-11-08 A | 8220B-3350 | 100% | 2013-12-11 | 2013-12-23 | C822 | C29C | 05 | 0503 | 7 | TWIN | 822 | BB | 2210 | TUNM | NEW | 822_AB_W010 |  |
| 8220B-3370 |  | Main - 128035 to 128135 Perm Concrete Lining (rate = 10m/d) | 10d | 2013-11-09 A | 2013-11-21 A | 8220B-3360 | 100% | 2013-12-10 | 2013-12-21 | C822 | C29C | 05 | 0503 | 7 | TWIN | 822 | BB | 2210 | TUNM | NEW | 822_AB_W010 |  |
| 8220B-3900 |  | Main - 128135 to 128235 Perm Concrete Lining (rate = 10m/d) | 10d | 2013-11-22 A | 2013-12-04 A | 8220B-3370 | 100% | 2013-12-21 | 2014-01-04 | C822 | C29C | 05 | 0503 | 7 | TWIN | 822 | BB | 2210 | TUNM | NEW | 822_AB_W010 |  |
| 8220B-3890 |  | Main - 128235 to 128335 Perm Concrete Lining (rate = 10m/d) | 10d | 2013-12-05 A | 2013-12-16 A | 8220B-3900 | 100% | 2014-01-03 | 2014-01-15 | C822 | C29C | 05 | 0503 | 7 | TWIN | 822 | BB | 2210 | TUNM | NEW | 822_AB_W010 | B |
| 8220B-11300 |  | Main - 128335 to 128435 Perm Concrete Lining (rate = 10m/d) | 10d | 2013-12-17 A | 2013-12-30 A | 8220B-3890 | 100% | 2014-01-15 | 2014-01-27 | C822 | C29C | 05 | 0503 | 7 | TWIN | 822 | BB | 2210 | TUNM | NEW | 822_AB_W010 |  |
| 8220B-11310 |  | Main - 128435 to 128535 Perm Concrete Lining (rate = 10m/d) | 10d | 2013-12-31 A | 2014-01-17 A | 8220B-11300 | 100% | 2014-01-27 | 2014-02-11 | C822 | C29C | 05 | 0503 | 7 | TWIN | 822 | BB | 2210 | TUNM | NEW | 822_AB_W010 |  |
| 8220B-11320 |  | Main - 128535 to 128635 Perm Concrete Lining (rate = 10m/d) | 10d | 2014-01-17 A | 2014-02-13 A | 8220B-11310 | 100% | 2014-02-13 | 2014-02-25 | C822 | C29C | 05 | 0503 | 7 | TWIN | 822 | BB | 2210 | TUNM | NEW | 822_AB_W010 |  |
| 8220B-11330 |  | Main - 128635 to 128735 Perm Concrete Lining (rate = 10m/d) | 10d | 2014-02-13 A | 2014-03-07 A | 8220B-11320 | 100% | 2014-03-06 | 2014-03-18 | C822 | C29C | 05 | 0503 | 7 | TWIN | 822 | BB | 2210 | TUNM | NEW | 822_AB_W010 |  |
| 8220B-11340 |  | Main - 128735 to 128835 Perm Concrete Lining (rate = 10m/d) | 10d | 2014-03-07 A | 2014-03-21 A | 8220B-11330 | 100% | 2014-04-04 | 2014-04-17 | C822 | C29C | 05 | 0503 | 7 | TWIN | 822 | BB | 2210 | TUNM | NEW | 822_AB_W010 |  |
| 8220B-11350 |  | Main - 128835 to 128935 Perm Concrete Lining (rate = 10m/d) | 10d | 2014-03-21 A | 2014-04-01 A | 8220B-11340 | 100% | 2014-04-17 | 2014-04-29 | C822 | C29C | 05 | 0503 | 7 | TWIN | 822 | BB | 2210 | TUNM | NEW | 822_AB_W010 | B |
| 8220B-3850 |  | Main - 128935 to 128995 Perm Concrete Lining (60m) (rate = 10m/d) | 6d | 2014-04-01 A | 2014-05-03 A | 8220B-2590 FF, 8220B-11350 | 100% | 2014-05-02 | 2014-05-09 | C822 | C29C | 05 | 0503 | 7 | TWIN | 822 | BB | 2210 | TUNM | NEW | 822_AB_W010 | B |
|  | 3 | **1st Invert Prep/Drainage** |  | 2013-05-29 | 2014-05-26 |  |  |  |  |  |  |  |  |  |  |  |  |  |  |  |  |  |
| 8220B-7290 |  | Main - 126935 to 127035 1st Half Invert Prep (Learning Curve) (rate = 5.76m/d) (100m) | 17.3d | 2013-05-29 A | 2013-08-06 A | 8220B-1000 | 100% | 2013-07-16 | 2013-08-05 | C822 | C29B | 05 | 0503 | 7 | TWIN | 822 | BB | 2210 | TUNM | NEW | 822_AB_W010 |  |
| 8220B-1000 |  | Main - 126837 to 126935 1st Half Invert Prep (98m) (Learning Curve) (rate = 5.76m/d) | 17d | 2013-08-07 A | 2013-08-16 A | 8220B-0860 FS-5d | 100% | 2013-09-02 | 2013-09-21 | C822 | C29B | 05 | 0503 | 7 | TWIN | 822 | BB | 2210 | TUNM | NEW | 822_AB_W010 |  |
| 8220B-7300 |  | Main - 127035 to 127135 1st Half Invert Prep (rate = 10m/d) | 10d | 2013-08-17 A | 2013-09-02 A | 8220B-7290 | 100% | 2013-09-18 | 2013-09-30 | C822 | C29B | 05 | 0503 | 7 | TWIN | 822 | BB | 2210 | TUNM | NEW | 822_AB_W010 |  |
| 8220B-7310 |  | Main - 127135 to 127235 1st Half Invert Prep (rate = 10m/d) | 10d | 2013-09-02 A | 2013-10-31 A | 8220B-7300 | 100% | 2013-11-30 | 2013-12-11 | C822 | C29B | 05 | 0503 | 7 | TWIN | 822 | BB | 2210 | TUNM | NEW | 822_AB_W010 |  |
| 8220B-7320 |  | Main - 127235 to 127335 1st Half Invert Prep (rate = 10m/d) | 10d | 2013-11-01 A | 2013-11-08 A | 8220B-7310 | 100% | 2013-12-02 | 2013-12-12 | C822 | C29B | 05 | 0503 | 7 | TWIN | 822 | BB | 2210 | TUNM | NEW | 822_AB_W010 |  |
| 8220B-7330 |  | Main - 127335 to 127435 1st Half Invert Prep (rate = 10m/d) | 10d | 2013-11-09 A | 2013-11-18 A | 8220B-7320 | 100% | 2013-12-13 | 2013-12-24 | C822 | C29B | 05 | 0503 | 7 | TWIN | 822 | BB | 2210 | TUNM | NEW | 822_AB_W010 |  |
| 8220B-7340 |  | Main - 127435 to 127535 1st Half Invert Prep (rate = 10m/d) | 10d | 2013-11-19 A | 2013-11-27 A | 8220B-7330 | 100% | 2013-12-26 | 2014-01-07 | C822 | C29B | 05 | 0503 | 7 | TWIN | 822 | BB | 2210 | TUNM | NEW | 822_AB_W010 |  |
| 8220B-7350 |  | Main - 127535 to 127635 1st Half Invert Prep (rate = 10m/d) | 10d | 2013-11-28 A | 2013-12-08 A | 8220B-7340 | 100% | 2014-01-08 | 2014-01-18 | C822 | C29B | 05 | 0503 | 7 | TWIN | 822 | BB | 2210 | TUNM | NEW | 822_AB_W010 |  |
| 8220B-7360 |  | Main - 127635 to 127735 1st Half Invert Prep (rate = 10m/d) | 10d | 2013-12-09 A | 2014-01-03 A | 8220B-7350 | 100% | 2014-01-14 | 2014-01-24 | C822 | C29B | 05 | 0503 | 7 | TWIN | 822 | BB | 2210 | TUNM | NEW | 822_AB_W010 |  |
| 8220B-7370 |  | Main - 127735 to 127835 1st Half Invert Prep (rate = 10m/d) | 10d | 2013-12-10 A | 2014-01-04 A | 8220B-7360 | 100% | 2014-01-25 | 2014-02-08 | C822 | C29B | 05 | 0503 | 7 | TWIN | 822 | BB | 2210 | TUNM | NEW | 822_AB_W010 |  |
| 8220B-7380 |  | Main - 127835 to 127935 1st Half Invert Prep (rate = 10m/d) | 10d | 2013-12-13 A | 2014-01-22 A | 8220B-7370 | 100% | 2014-02-10 | 2014-02-20 | C822 | C29B | 05 | 0503 | 7 | TWIN | 822 | BB | 2210 | TUNM | NEW | 822_AB_W010 |  |
| 8220B-7390 |  | Main - 127935 to 128035 1st Half Invert Prep (rate = 10m/d) | 10d | 2014-01-09 A | 2014-01-28 A | 8220B-7380 | 100% | 2014-02-08 | 2014-02-19 | C822 | C29B | 05 | 0503 | 7 | TWIN | 822 | BB | 2210 | TUNM | NEW | 822_AB_W010 |  |
| 8220B-7400 |  | Main - 128035 to 128135 1st Half Invert Prep (rate = 10m/d) | 10d | 2014-01-11 A | 2014-02-12 A | 8220B-7390 | 100% | 2014-02-20 | 2014-03-03 | C822 | C29B | 05 | 0503 | 7 | TWIN | 822 | BB | 2210 | TUNM | NEW | 822_AB_W010 |  |
| 8220B-8930 |  | Main - 128135 to 128235 1st Half Invert Prep (rate = 10m/d) | 10d | 2014-01-23 A | 2014-02-15 A | 8220B-7400 | 100% | 2014-03-04 | 2014-03-14 | C822 | C29B | 05 | 0503 | 7 | TWIN | 822 | BB | 2210 | TUNM | NEW | 822_AB_W010 |  |
| 8220B-8920 |  | Main - 128235 to 128335 1st Half Invert Prep (rate = 10m/d) | 10d | 2014-02-15 A | 2014-02-20 A | 8220B-8930 | 100% | 2014-03-06 | 2014-03-18 | C822 | C29B | 05 | 0503 | 7 | TWIN | 822 | BB | 2210 | TUNM | NEW | 822_AB_W010 | B |
| 8220B-11360 |  | Main - 128335 to 128435 1st Half Invert Prep (rate = 10m/d) | 10d | 2014-02-20 A | 2014-03-07 A | 8220B-8920 | 100% | 2014-03-18 | 2014-03-29 | C822 | C29B | 05 | 0503 | 7 | TWIN | 822 | BB | 2210 | TUNM | NEW | 822_AB_W010 |  |
| 8220B-11370 |  | Main - 128435 to 128535 1st Half Invert Prep (rate = 10m/d) | 10d | 2014-02-22 A | 2014-03-11 A | 8220B-11360 | 100% | 2014-03-29 | 2014-04-11 | C822 | C29B | 05 | 0503 | 7 | TWIN | 822 | BB | 2210 | TUNM | NEW | 822_AB_W010 |  |
| 8220B-11380 |  | Main - 128535 to 128635 1st Half Invert Prep (rate = 10m/d) | 10d | 2014-03-11 A | 2014-03-25 A | 8220B-11370 | 100% | 2014-04-10 | 2014-04-21 | C822 | C29B | 05 | 0503 | 7 | TWIN | 822 | BB | 2210 | TUNM | NEW | 822_AB_W010 |  |
| 8220B-11390 |  | Main - 128635 to 128735 1st Half Invert Prep (rate = 10m/d) | 10d | 2014-03-25 A | 2014-04-08 A | 8220B-11380 | 100% | 2014-04-22 | 2014-05-03 | C822 | C29B | 05 | 0503 | 7 | TWIN | 822 | BB | 2210 | TUNM | NEW | 822_AB_W010 |  |
| 8220B-11400 |  | Main - 128735 to 128835 1st Half Invert Prep (rate = 10m/d) | 10d | 2014-04-08 A | 2014-04-15 A | 8220B-11390 | 100% | 2014-05-05 | 2014-05-16 | C822 | C29B | 05 | 0503 | 7 | TWIN | 822 | BB | 2210 | TUNM | NEW | 822_AB_W010 |  |
| 8220B-11410 |  | Main - 128835 to 128935 1st Half Invert Prep (rate = 10m/d) | 10d | 2014-04-15 A | 2014-05-17 A | 8220B-11400 | 100% | 2014-05-16 | 2014-05-28 | C822 | C29B | 05 | 0503 | 7 | TWIN | 822 | BB | 2210 | TUNM | NEW | 822_AB_W010 | B |
| 8220B-8880 |  | Main - 128935 to 128995 1st Half Invert Prep (60m) (rate = 10m/d) | 6d | 2014-05-17 A | 2014-05-26 A | 8220B-3850 FF, 8220B-11410 | 100% | 2014-06-06 | 2014-06-14 | C822 | C29B | 05 | 0503 | 7 | TWIN | 822 | BB | 2210 | TUNM | NEW | 822_AB_W010 | B |

Notes:
- 8220B-0860: P3 Activity Log Info: ?????????? ??
- 8220B-3230: P3 Activity Log Info: ?????????? ??
- 8220B-3240: P3 Activity Log Info: ?????????? ??
- 8220B-3250: P3 Activity Log Info: ?????????? ??
- 8220B-3260: P3 Activity Log Info: ?????????? ??
- 8220B-3270: P3 Activity Log Info: ?????????? ??
- 8220B-3280: P3 Activity Log Info: ?????????? ??
- 8220B-3290: P3 Activity Log Info: ?????????? ??
- 8220B-3330: P3 Activity Log Info: ?????????? ??
- 8220B-3340: P3 Activity Log Info: ?????????? ??
- 8220B-3350: P3 Activity Log Info: ?????????? ??
- 8220B-3360: P3 Activity Log Info: ?????????? ??
- 8220B-3370: P3 Activity Log Info: ?????????? ??
- 8220B-3900: P3 Activity Log Info: ?????????? ?? ??
- 8220B-3890: P3 Activity Log Info: 1 day deducted - 2797m = 242 days
- 8220B-11300: P3 Activity Log Info: ?????????? ??
- 8220B-11310: P3 Activity Log Info: ?????????? ??
- 8220B-11320: P3 Activity Log Info: ?????????? ??
- 8220B-11330: P3 Activity Log Info: ?????????? ??
- 8220B-11340: P3 Activity Log Info: ?????????? ?? ??
- 8220B-11350: P3 Activity Log Info: 1 day deducted - 2797m = 242 days
- 8220B-3850: P3 Activity Log Info: 1 day deducted - 2797m = 242 days
- 8220B-8920: P3 Activity Log Info: 1 day deducted - 2797m = 242 days
- 8220B-11410: P3 Activity Log Info: 1 day deducted - 2797m = 242 days
- 8220B-8880: P3 Activity Log Info: 1 day deducted - 2797m = 242 days

| ID | WBS | Activity | Duration | Start | Finish | Predecessors | Complete | Planned start | Planned finish | L1 : Project | L2 : Phase | L3 : Area | L4 : Sub-Area | L5 : Element | L6 : Sub-Element | M1: Contracts | M2 : Cost Centre | M4 : Location | M5 :Sub-Location | Stef Temp A1 | 822_AB_W010 | L8: Section |
| --- | --- | --- | --- | --- | --- | --- | --- | --- | --- | --- | --- | --- | --- | --- | --- | --- | --- | --- | --- | --- | --- | --- |
|  | 5 | **1st Invert Slab** |  | 2013-05-29 | 2014-05-26 |  |  |  |  |  |  |  |  |  |  |  |  |  |  |  |  |  |
| 8220B-7410 |  | Main - 126935 to 127035 1st Half Invert Slab (Learning Curve) (rate = 5.76m/d) (100m) | 17.3d | 2013-05-29 A | 2013-08-06 A | 8220B-1010 | 100% | 2013-07-08 | 2013-07-27 | C822 | C29I | 05 | 0503 | 7 | TWIN | 822 | BB | 2210 | TUNM | NEW | 822_AB_W010 |  |
| 8220B-1010 |  | Main - 126837 to 126935 1st Half Invert Slab (98m) (Learning Curve) (rate = 5.76m/d) | 17d | 2013-08-07 A | 2013-08-16 A | 8220B-1000 FS-5d | 100% | 2013-09-02 | 2013-09-21 | C822 | C29I | 05 | 0503 | 7 | TWIN | 822 | BB | 2210 | TUNM | NEW | 822_AB_W010 |  |
| 8220B-7420 |  | Main - 127035 to 127135 1st Half Invert Slab (rate = 10m/d) (100m) | 10d | 2013-08-17 A | 2013-09-02 A | 8220B-7410 | 100% | 2013-09-18 | 2013-09-30 | C822 | C29I | 05 | 0503 | 7 | TWIN | 822 | BB | 2210 | TUNM | NEW | 822_AB_W010 |  |
| 8220B-7440 |  | Main - 127135 to 127235 1st Half Invert Slab (rate = 10m/d) (100m) | 10d | 2013-09-02 A | 2013-10-31 A | 8220B-7420 | 100% | 2013-11-30 | 2013-12-11 | C822 | C29I | 05 | 0503 | 7 | TWIN | 822 | BB | 2210 | TUNM | NEW | 822_AB_W010 |  |
| 8220B-7450 |  | Main - 127235 to 127335 1st Half Invert Slab (rate = 10m/d) (100m) | 10d | 2013-11-01 A | 2013-11-08 A | 8220B-7440 | 100% | 2013-12-02 | 2013-12-12 | C822 | C29I | 05 | 0503 | 7 | TWIN | 822 | BB | 2210 | TUNM | NEW | 822_AB_W010 |  |
| 8220B-7460 |  | Main - 127335 to 127435 1st Half Invert Slab (rate = 10m/d) (100m) | 10d | 2013-11-09 A | 2013-11-18 A | 8220B-7450 | 100% | 2013-12-13 | 2013-12-24 | C822 | C29I | 05 | 0503 | 7 | TWIN | 822 | BB | 2210 | TUNM | NEW | 822_AB_W010 |  |
| 8220B-7470 |  | Main - 127435 to 127535 1st Half Invert Slab (rate = 10m/d) (100m) | 10d | 2013-11-19 A | 2013-11-27 A | 8220B-7460 | 100% | 2013-12-26 | 2014-01-07 | C822 | C29I | 05 | 0503 | 7 | TWIN | 822 | BB | 2210 | TUNM | NEW | 822_AB_W010 |  |
| 8220B-7480 |  | Main - 127535 to 127635 1st Half Invert Slab (rate = 10m/d) (100m) | 10d | 2013-11-28 A | 2013-12-08 A | 8220B-7470 | 100% | 2014-01-08 | 2014-01-18 | C822 | C29I | 05 | 0503 | 7 | TWIN | 822 | BB | 2210 | TUNM | NEW | 822_AB_W010 |  |
| 8220B-7490 |  | Main - 127635 to 127735 1st Half Invert Slab (rate = 10m/d) (100m) | 10d | 2013-12-09 A | 2014-01-03 A | 8220B-7480 | 100% | 2014-01-14 | 2014-01-24 | C822 | C29I | 05 | 0503 | 7 | TWIN | 822 | BB | 2210 | TUNM | NEW | 822_AB_W010 |  |
| 8220B-7500 |  | Main - 127735 to 127835 1st Half Invert Slab (rate = 10m/d) (100m) | 10d | 2013-12-10 A | 2014-01-04 A | 8220B-7490 | 100% | 2014-01-25 | 2014-02-08 | C822 | C29I | 05 | 0503 | 7 | TWIN | 822 | BB | 2210 | TUNM | NEW | 822_AB_W010 |  |
| 8220B-7510 |  | Main - 127835 to 127935 1st Half Invert Slab (rate = 10m/d) (100m) | 10d | 2013-12-13 A | 2014-01-22 A | 8220B-7500 | 100% | 2014-02-10 | 2014-02-20 | C822 | C29I | 05 | 0503 | 7 | TWIN | 822 | BB | 2210 | TUNM | NEW | 822_AB_W010 |  |
| 8220B-7520 |  | Main - 127935 to 128035 1st Half Invert Slab (rate = 10m/d) (100m) | 10d | 2014-01-09 A | 2014-01-28 A | 8220B-7510 | 100% | 2014-02-08 | 2014-02-19 | C822 | C29I | 05 | 0503 | 7 | TWIN | 822 | BB | 2210 | TUNM | NEW | 822_AB_W010 |  |
| 8220B-7530 |  | Main - 128035 to 128135 1st Half Invert Slab (rate = 10m/d) (100m) | 10d | 2014-01-11 A | 2014-02-12 A | 8220B-7520 | 100% | 2014-02-20 | 2014-03-03 | C822 | C29I | 05 | 0503 | 7 | TWIN | 822 | BB | 2210 | TUNM | NEW | 822_AB_W010 |  |
| 8220B-9200 |  | Main - 128135 to 128235 1st Half Invert Slab (rate = 10m/d) (100m) | 10d | 2014-01-23 A | 2014-02-15 A | 8220B-7530 | 100% | 2014-03-04 | 2014-03-14 | C822 | C29I | 05 | 0503 | 7 | TWIN | 822 | BB | 2210 | TUNM | NEW | 822_AB_W010 |  |
| 8220B-9190 |  | Main - 128235 to 128335 1st Half Invert Slab (rate = 10m/d) (100m) | 10d | 2014-02-15 A | 2014-02-20 A | 8220B-9200 | 100% | 2014-03-06 | 2014-03-18 | C822 | C29I | 05 | 0503 | 7 | TWIN | 822 | BB | 2210 | TUNM | NEW | 822_AB_W010 | B |
| 8220B-11420 |  | Main - 128335 to 128435 1st Half Invert Slab (rate = 10m/d) (100m) | 10d | 2014-02-20 A | 2014-03-07 A | 8220B-9190 | 100% | 2014-03-18 | 2014-03-29 | C822 | C29I | 05 | 0503 | 7 | TWIN | 822 | BB | 2210 | TUNM | NEW | 822_AB_W010 |  |
| 8220B-11430 |  | Main - 128435 to 128535 1st Half Invert Slab (rate = 10m/d) (100m) | 10d | 2014-02-22 A | 2014-03-11 A | 8220B-11420 | 100% | 2014-03-29 | 2014-04-11 | C822 | C29I | 05 | 0503 | 7 | TWIN | 822 | BB | 2210 | TUNM | NEW | 822_AB_W010 |  |
| 8220B-11440 |  | Main - 128535 to 128635 1st Half Invert Slab (rate = 10m/d) (100m) | 10d | 2014-03-11 A | 2014-03-25 A | 8220B-11430 | 100% | 2014-04-10 | 2014-04-21 | C822 | C29I | 05 | 0503 | 7 | TWIN | 822 | BB | 2210 | TUNM | NEW | 822_AB_W010 |  |
| 8220B-11450 |  | Main - 128635 to 128835 1st Half Invert Slab (rate = 10m/d) (100m) | 10d | 2014-03-25 A | 2014-04-08 A | 8220B-11440 | 100% | 2014-04-22 | 2014-05-03 | C822 | C29I | 05 | 0503 | 7 | TWIN | 822 | BB | 2210 | TUNM | NEW | 822_AB_W010 |  |
| 8220B-11460 |  | Main - 128835 to 128835 1st Half Invert Slab (rate = 10m/d) (100m) | 10d | 2014-04-08 A | 2014-04-15 A | 8220B-11450 | 100% | 2014-05-05 | 2014-05-16 | C822 | C29I | 05 | 0503 | 7 | TWIN | 822 | BB | 2210 | TUNM | NEW | 822_AB_W010 |  |
| 8220B-11470 |  | Main - 128835 to 128935 1st Half Invert Slab (rate = 10m/d) (100m) | 10d | 2014-04-15 A | 2014-05-17 A | 8220B-11460 | 100% | 2014-05-16 | 2014-05-28 | C822 | C29I | 05 | 0503 | 7 | TWIN | 822 | BB | 2210 | TUNM | NEW | 822_AB_W010 | B |
| 8220B-9150 |  | Main - 128935 to 128995 1st Half Invert Slab (60m) (rate = 10m/d) | 6d | 2014-05-17 A | 2014-05-26 A | 8220B-8880 FF, 8220B-11470 | 100% | 2014-06-06 | 2014-06-14 | C822 | C29I | 05 | 0503 | 7 | TWIN | 822 | BB | 2210 | TUNM | NEW | 822_AB_W010 | B |
|  | 4 | **2nd Invert Prep/Drainage** |  | 2013-05-29 | 2014-05-26 |  |  |  |  |  |  |  |  |  |  |  |  |  |  |  |  |  |
| 8220B-7540 |  | Main - 126935 to 127035 2nd Half Invert Prep (Learning Curve) (rate = 5.76m/d) (100m) | 17.3d | 2013-05-29 A | 2013-08-06 A | 8220B-1020 | 100% | 2013-07-22 | 2013-08-10 | C822 | C29J | 05 | 0503 | 7 | TWIN | 822 | BB | 2210 | TUNM | NEW | 822_AB_W010 |  |
| 8220B-1020 |  | Main - 126837 to 126935 2nd Half Invert Prep (98m) (Learning Curve) (rate = 5.76m/d) | 17d | 2013-08-07 A | 2013-08-16 A | 8220B-1010 FS-5d | 100% | 2013-09-16 | 2013-10-07 | C822 | C29J | 05 | 0503 | 7 | TWIN | 822 | BB | 2210 | TUNM | NEW | 822_AB_W010 |  |
| 8220B-7550 |  | Main - 127035 to 127135 2nd Half Invert Prep (rate = 10m/d) (100m) | 10d | 2013-08-17 A | 2013-09-02 A | 8220B-7540 | 100% | 2013-09-18 | 2013-09-30 | C822 | C29J | 05 | 0503 | 7 | TWIN | 822 | BB | 2210 | TUNM | NEW | 822_AB_W010 |  |
| 8220B-7560 |  | Main - 127135 to 127235 2nd Half Invert Prep (rate = 10m/d) (100m) | 10d | 2013-09-02 A | 2013-10-31 A | 8220B-7550 | 100% | 2013-11-30 | 2013-12-11 | C822 | C29J | 05 | 0503 | 7 | TWIN | 822 | BB | 2210 | TUNM | NEW | 822_AB_W010 |  |
| 8220B-7570 |  | Main - 127235 to 127335 2nd Half Invert Prep (rate = 10m/d) (100m) | 10d | 2013-11-01 A | 2013-11-08 A | 8220B-7560 | 100% | 2013-12-02 | 2013-12-12 | C822 | C29J | 05 | 0503 | 7 | TWIN | 822 | BB | 2210 | TUNM | NEW | 822_AB_W010 |  |
| 8220B-7580 |  | Main - 127335 to 127435 2nd Half Invert Prep (rate = 10m/d) (100m) | 10d | 2013-11-09 A | 2013-11-18 A | 8220B-7570 | 100% | 2013-12-13 | 2013-12-24 | C822 | C29J | 05 | 0503 | 7 | TWIN | 822 | BB | 2210 | TUNM | NEW | 822_AB_W010 |  |
| 8220B-7590 |  | Main - 127435 to 127535 2nd Half Invert Prep (rate = 10m/d) (100m) | 10d | 2013-11-19 A | 2013-11-27 A | 8220B-7580 | 100% | 2013-12-26 | 2014-01-07 | C822 | C29J | 05 | 0503 | 7 | TWIN | 822 | BB | 2210 | TUNM | NEW | 822_AB_W010 |  |
| 8220B-7600 |  | Main - 127535 to 127635 2nd Half Invert Prep (rate = 10m/d) (100m) | 10d | 2013-11-28 A | 2013-12-08 A | 8220B-7590 | 100% | 2014-01-08 | 2014-01-18 | C822 | C29J | 05 | 0503 | 7 | TWIN | 822 | BB | 2210 | TUNM | NEW | 822_AB_W010 |  |
| 8220B-7610 |  | Main - 127635 to 127735 2nd Half Invert Prep (rate = 10m/d) (100m) | 10d | 2013-12-09 A | 2014-01-03 A | 8220B-7600 | 100% | 2014-01-14 | 2014-01-24 | C822 | C29J | 05 | 0503 | 7 | TWIN | 822 | BB | 2210 | TUNM | NEW | 822_AB_W010 |  |
| 8220B-7620 |  | Main - 127735 to 127835 2nd Half Invert Prep (rate = 10m/d) (100m) | 10d | 2013-12-10 A | 2014-01-04 A | 8220B-7610 | 100% | 2014-01-25 | 2014-02-08 | C822 | C29J | 05 | 0503 | 7 | TWIN | 822 | BB | 2210 | TUNM | NEW | 822_AB_W010 |  |
| 8220B-7630 |  | Main - 127835 to 127935 2nd Half Invert Prep (rate = 10m/d) (100m) | 10d | 2013-12-13 A | 2014-01-22 A | 8220B-7620 | 100% | 2014-02-10 | 2014-02-20 | C822 | C29J | 05 | 0503 | 7 | TWIN | 822 | BB | 2210 | TUNM | NEW | 822_AB_W010 |  |
| 8220B-7640 |  | Main - 127935 to 128035 2nd Half Invert Prep (rate = 10m/d) (100m) | 10d | 2014-01-09 A | 2014-01-28 A | 8220B-7630 | 100% | 2014-02-08 | 2014-02-19 | C822 | C29J | 05 | 0503 | 7 | TWIN | 822 | BB | 2210 | TUNM | NEW | 822_AB_W010 |  |
| 8220B-7650 |  | Main - 128035 to 128135 2nd Half Invert Prep (rate = 10m/d) (100m) | 10d | 2014-01-11 A | 2014-02-12 A | 8220B-7640 | 100% | 2014-02-20 | 2014-03-03 | C822 | C29J | 05 | 0503 | 7 | TWIN | 822 | BB | 2210 | TUNM | NEW | 822_AB_W010 |  |
| 8220B-9470 |  | Main - 128135 to 128235 2nd Half Invert Prep (rate = 10m/d) (100m) | 10d | 2014-01-23 A | 2014-02-15 A | 8220B-7650 | 100% | 2014-03-04 | 2014-03-14 | C822 | C29J | 05 | 0503 | 7 | TWIN | 822 | BB | 2210 | TUNM | NEW | 822_AB_W010 |  |
| 8220B-9460 |  | Main - 128235 to 128335 2nd Half Invert Prep (rate = 10m/d) (100m) | 10d | 2014-02-15 A | 2014-02-20 A | 8220B-9470 | 100% | 2014-03-06 | 2014-03-18 | C822 | C29J | 05 | 0503 | 7 | TWIN | 822 | BB | 2210 | TUNM | NEW | 822_AB_W010 | B |
| 8220B-11480 |  | Main - 128335 to 128435 2nd Half Invert Prep (rate = 10m/d) (100m) | 10d | 2014-02-20 A | 2014-03-07 A | 8220B-9460 | 100% | 2014-03-18 | 2014-03-29 | C822 | C29J | 05 | 0503 | 7 | TWIN | 822 | BB | 2210 | TUNM | NEW | 822_AB_W010 |  |
| 8220B-11490 |  | Main - 128435 to 128535 2nd Half Invert Prep (rate = 10m/d) (100m) | 10d | 2014-02-22 A | 2014-03-11 A | 8220B-11480 | 100% | 2014-03-29 | 2014-04-11 | C822 | C29J | 05 | 0503 | 7 | TWIN | 822 | BB | 2210 | TUNM | NEW | 822_AB_W010 |  |
| 8220B-11500 |  | Main - 128535 to 128635 2nd Half Invert Prep (rate = 10m/d) (100m) | 10d | 2014-03-11 A | 2014-03-25 A | 8220B-11490 | 100% | 2014-04-10 | 2014-04-21 | C822 | C29J | 05 | 0503 | 7 | TWIN | 822 | BB | 2210 | TUNM | NEW | 822_AB_W010 |  |
| 8220B-11510 |  | Main - 128635 to 128735 2nd Half Invert Prep (rate = 10m/d) (100m) | 10d | 2014-03-25 A | 2014-04-08 A | 8220B-11500 | 100% | 2014-04-22 | 2014-05-03 | C822 | C29J | 05 | 0503 | 7 | TWIN | 822 | BB | 2210 | TUNM | NEW | 822_AB_W010 |  |
| 8220B-11520 |  | Main - 128735 to 128835 2nd Half Invert Prep (rate = 10m/d) (100m) | 10d | 2014-04-08 A | 2014-04-15 A | 8220B-11510 | 100% | 2014-05-05 | 2014-05-16 | C822 | C29J | 05 | 0503 | 7 | TWIN | 822 | BB | 2210 | TUNM | NEW | 822_AB_W010 |  |
| 8220B-11530 |  | Main - 128835 to 128935 2nd Half Invert Prep (rate = 10m/d) (100m) | 10d | 2014-04-15 A | 2014-05-17 A | 8220B-11520 | 100% | 2014-05-16 | 2014-05-28 | C822 | C29J | 05 | 0503 | 7 | TWIN | 822 | BB | 2210 | TUNM | NEW | 822_AB_W010 | B |
| 8220B-9420 |  | Main -128935 to 128995 2nd Half Invert Prep (60m) (rate = 10m/d) | 6d | 2014-05-17 A | 2014-05-26 A | 8220B-9150 FF, 8220B-11530 | 100% | 2014-06-06 | 2014-06-14 | C822 | C29J | 05 | 0503 | 7 | TWIN | 822 | BB | 2210 | TUNM | NEW | 822_AB_W010 | B |

Notes:
- 8220B-9190: P3 Activity Log Info: 1 day deducted - 2797m = 242 days
- 8220B-11470: P3 Activity Log Info: 1 day deducted - 2797m = 242 days
- 8220B-9150: P3 Activity Log Info: 1 day deducted - 2797m = 242 days
- 8220B-9460: P3 Activity Log Info: 1 day deducted - 2797m = 242 days
- 8220B-11530: P3 Activity Log Info: 1 day deducted - 2797m = 242 days
- 8220B-9420: P3 Activity Log Info: 1 day deducted - 2797m = 242 days

| ID | WBS | Activity | Duration | Start | Finish | Predecessors | Complete | Planned start | Planned finish | Total float | Free float | L1 : Project | L2 : Phase | L3 : Area | L4 : Sub-Area | L5 : Element | L6 : Sub-Element | M1: Contracts | M2 : Cost Centre | M4 : Location | M5 :Sub-Location | Stef Temp A1 | 822_AB_W010 | L8: Section |
| --- | --- | --- | --- | --- | --- | --- | --- | --- | --- | --- | --- | --- | --- | --- | --- | --- | --- | --- | --- | --- | --- | --- | --- | --- |
|  | 6 | **2nd Invert Slab** |  | 2013-05-29 | 2014-05-26 |  |  |  |  |  |  |  |  |  |  |  |  |  |  |  |  |  |  |  |
| 8220B-1030 |  | Main - 126837 to 126935 2nd Half Invert Slab (98m) (Learning Curve) (rate = 5.76m/d) | 17d | 2013-05-29 A | 2013-08-06 A | 8220B-1020 FS-5d | 100% | 2013-09-02 | 2013-09-21 |  |  | C822 | C29K | 05 | 0503 | 7 | TWIN | 822 | BB | 2210 | TUNM | NEW | 822_AB_W010 |  |
| 8220B-7660 |  | Main - 126935 to 127035 2nd Half Invert Slab (Learning Curve) (rate = 5.76m/d) (100m) | 17.3d | 2013-08-06 A | 2013-08-16 A | 8220B-1030 | 100% | 2013-08-05 | 2013-08-24 |  |  | C822 | C29K | 05 | 0503 | 7 | TWIN | 822 | BB | 2210 | TUNM | NEW | 822_AB_W010 |  |
| 8220B-7670 |  | Main - 127035 to 127135 2nd Half Invert Slab (rate = 10m/d) (100m) | 10d | 2013-08-17 A | 2013-09-02 A | 8220B-7660 | 100% | 2013-09-18 | 2013-09-30 |  |  | C822 | C29K | 05 | 0503 | 7 | TWIN | 822 | BB | 2210 | TUNM | NEW | 822_AB_W010 |  |
| 8220B-7680 |  | Main - 127135 to 127235 2nd Half Invert Slab (rate = 10m/d) (100m) | 10d | 2013-09-03 A | 2013-10-31 A | 8220B-7670 | 100% | 2013-11-30 | 2013-12-11 |  |  | C822 | C29K | 05 | 0503 | 7 | TWIN | 822 | BB | 2210 | TUNM | NEW | 822_AB_W010 |  |
| 8220B-7690 |  | Main - 127235 to 127335 2nd Half Invert Slab (rate = 10m/d) (100m) | 10d | 2013-11-01 A | 2013-11-08 A | 8220B-7680 | 100% | 2013-12-02 | 2013-12-12 |  |  | C822 | C29K | 05 | 0503 | 7 | TWIN | 822 | BB | 2210 | TUNM | NEW | 822_AB_W010 |  |
| 8220B-7700 |  | Main - 127335 to 127435 2nd Half Invert Slab (rate = 10m/d) (100m) | 10d | 2013-11-09 A | 2013-11-18 A | 8220B-7690 | 100% | 2013-12-13 | 2013-12-24 |  |  | C822 | C29K | 05 | 0503 | 7 | TWIN | 822 | BB | 2210 | TUNM | NEW | 822_AB_W010 |  |
| 8220B-7710 |  | Main - 127435 to 127535 2nd Half Invert Slab (rate = 10m/d) (100m) | 10d | 2013-11-19 A | 2013-11-27 A | 8220B-7700 | 100% | 2013-12-26 | 2014-01-07 |  |  | C822 | C29K | 05 | 0503 | 7 | TWIN | 822 | BB | 2210 | TUNM | NEW | 822_AB_W010 |  |
| 8220B-7720 |  | Main - 127535 to 127635 2nd Half Invert Slab (rate = 10m/d) (100m) | 10d | 2013-11-28 A | 2013-12-08 A | 8220B-7710 | 100% | 2014-01-08 | 2014-01-18 |  |  | C822 | C29K | 05 | 0503 | 7 | TWIN | 822 | BB | 2210 | TUNM | NEW | 822_AB_W010 |  |
| 8220B-7730 |  | Main - 127635 to 127735 2nd Half Invert Slab (rate = 10m/d) (100m) | 10d | 2013-12-09 A | 2014-01-03 A | 8220B-7720 | 100% | 2014-01-14 | 2014-01-24 |  |  | C822 | C29K | 05 | 0503 | 7 | TWIN | 822 | BB | 2210 | TUNM | NEW | 822_AB_W010 |  |
| 8220B-7740 |  | Main - 127735 to 127835 2nd Half Invert Slab (rate = 10m/d) (100m) | 10d | 2013-12-10 A | 2014-01-04 A | 8220B-7730 | 100% | 2014-01-25 | 2014-02-08 |  |  | C822 | C29K | 05 | 0503 | 7 | TWIN | 822 | BB | 2210 | TUNM | NEW | 822_AB_W010 |  |
| 8220B-7750 |  | Main - 127835 to 127935 2nd Half Invert Slab (rate = 10m/d) (100m) | 10d | 2013-12-13 A | 2014-01-22 A | 8220B-7740 | 100% | 2014-02-10 | 2014-02-20 |  |  | C822 | C29K | 05 | 0503 | 7 | TWIN | 822 | BB | 2210 | TUNM | NEW | 822_AB_W010 |  |
| 8220B-7760 |  | Main - 127935 to 128035 2nd Half Invert Slab (rate = 10m/d) (100m) | 10d | 2014-01-09 A | 2014-01-28 A | 8220B-7750 | 100% | 2014-02-08 | 2014-02-19 |  |  | C822 | C29K | 05 | 0503 | 7 | TWIN | 822 | BB | 2210 | TUNM | NEW | 822_AB_W010 |  |
| 8220B-7770 |  | Main - 128035 to 128135 2nd Half Invert Slab (rate = 10m/d) (100m) | 10d | 2014-01-11 A | 2014-02-12 A | 8220B-7760 | 100% | 2014-02-20 | 2014-03-03 |  |  | C822 | C29K | 05 | 0503 | 7 | TWIN | 822 | BB | 2210 | TUNM | NEW | 822_AB_W010 |  |
| 8220B-9740 |  | Main - 128135 to 128235 2nd Half Invert Slab (rate = 10m/d) (100m) | 10d | 2014-01-23 A | 2014-02-15 A | 8220B-7770 | 100% | 2014-03-04 | 2014-03-14 |  |  | C822 | C29K | 05 | 0503 | 7 | TWIN | 822 | BB | 2210 | TUNM | NEW | 822_AB_W010 |  |
| 8220B-9730 |  | Main - 128235 to 128335 2nd Half Invert Slab (rate = 10m/d) (100m) | 10d | 2014-02-15 A | 2014-02-20 A | 8220B-9740 | 100% | 2014-03-06 | 2014-03-18 |  |  | C822 | C29K | 05 | 0503 | 7 | TWIN | 822 | BB | 2210 | TUNM | NEW | 822_AB_W010 | B |
| 8220B-11540 |  | Main - 128335 to 128435 2nd Half Invert Slab (rate = 10m/d) (100m) | 10d | 2014-02-20 A | 2014-03-07 A | 8220B-9730 | 100% | 2014-03-18 | 2014-03-29 |  |  | C822 | C29K | 05 | 0503 | 7 | TWIN | 822 | BB | 2210 | TUNM | NEW | 822_AB_W010 |  |
| 8220B-11550 |  | Main - 128435 to 128535 2nd Half Invert Slab (rate = 10m/d) (100m) | 10d | 2014-02-22 A | 2014-03-11 A | 8220B-11540 | 100% | 2014-03-29 | 2014-04-11 |  |  | C822 | C29K | 05 | 0503 | 7 | TWIN | 822 | BB | 2210 | TUNM | NEW | 822_AB_W010 |  |
| 8220B-11560 |  | Main - 128535 to 128635 2nd Half Invert Slab (rate = 10m/d) (100m) | 10d | 2014-03-11 A | 2014-03-25 A | 8220B-11550 | 100% | 2014-04-10 | 2014-04-21 |  |  | C822 | C29K | 05 | 0503 | 7 | TWIN | 822 | BB | 2210 | TUNM | NEW | 822_AB_W010 |  |
| 8220B-11570 |  | Main - 128635 to 128735 2nd Half Invert Slab (rate = 10m/d) (100m) | 10d | 2014-03-25 A | 2014-04-08 A | 8220B-11560 | 100% | 2014-04-22 | 2014-05-03 |  |  | C822 | C29K | 05 | 0503 | 7 | TWIN | 822 | BB | 2210 | TUNM | NEW | 822_AB_W010 |  |
| 8220B-11580 |  | Main - 128735 to 128835 2nd Half Invert Slab (rate = 10m/d) (100m) | 10d | 2014-04-08 A | 2014-04-15 A | 8220B-11570 | 100% | 2014-05-05 | 2014-05-16 |  |  | C822 | C29K | 05 | 0503 | 7 | TWIN | 822 | BB | 2210 | TUNM | NEW | 822_AB_W010 |  |
| 8220B-11590 |  | Main - 128835 to 128935 2nd Half Invert Slab (rate = 10m/d) (100m) | 10d | 2014-04-15 A | 2014-05-17 A | 8220B-11580 | 100% | 2014-05-16 | 2014-05-28 |  |  | C822 | C29K | 05 | 0503 | 7 | TWIN | 822 | BB | 2210 | TUNM | NEW | 822_AB_W010 | B |
| 8220B-9690 |  | Main - 128935 to 128995 2nd Half Invert Slab (60m) (rate = 10m/d) | 6d | 2014-05-17 A | 2014-05-26 A | 8220B-9420 FF, 8220B-11590 | 100% | 2014-06-06 | 2014-06-14 |  |  | C822 | C29K | 05 | 0503 | 7 | TWIN | 822 | BB | 2210 | TUNM | NEW | 822_AB_W010 | B |
|  | 7 | **Centre Wall** |  | 2013-10-12 | 2017-01-21 |  |  |  |  |  |  |  |  |  |  |  |  |  |  |  |  |  |  |  |
| 8220B-5190 |  | Main - 126935 to 127035 Centre Wall (Learning Curve) (rate = 5.76m/d) (100m) | 17.3d | 2013-10-12 A | 2013-10-29 A | 8220B-1120 | 100% | 2013-12-13 | 2014-01-04 |  |  | C822 | C29F | 05 | 0503 | 7 | TWIN | 822 | BB | 2210 | TUNM | NEW | 822_AB_W010 |  |
| 8220B-5200 |  | Main - 127035 to 127135 Centre Wall (rate = 10m/d) (100m) | 10d | 2013-10-25 A | 2014-01-04 A | 8220B-5190 | 100% | 2013-12-14 | 2013-12-27 |  |  | C822 | C29F | 05 | 0503 | 7 | TWIN | 822 | BB | 2210 | TUNM | NEW | 822_AB_W010 |  |
| 8220B-5210 |  | Main - 127135 to 127235 Centre Wall (rate = 10m/d) (100m) | 10d | 2013-11-04 A | 2013-11-14 A | 8220B-5200 | 100% | 2013-12-27 | 2014-01-09 |  |  | C822 | C29F | 05 | 0503 | 7 | TWIN | 822 | BB | 2210 | TUNM | NEW | 822_AB_W010 |  |
| 8220B-1120 |  | Main - 126837 to 126935 Centre Wall (98m) (Learning Curve) (rate = 5.76m/d) | 17d | 2013-11-05 A | 2014-06-01 A | 8220B-1030 FS-5d | 100% | 2013-11-23 | 2013-12-12 |  |  | C822 | C29F | 05 | 0503 | 7 | TWIN | 822 | BB | 2210 | TUNM | NEW | 822_AB_W010 |  |
| 8220B-5220 |  | Main - 127235 to 127335 Centre Wall (rate = 10m/d) (100m) | 10d | 2013-11-16 A | 2014-03-05 A | 8220B-5210 | 100% | 2014-01-09 | 2014-01-21 |  |  | C822 | C29F | 05 | 0503 | 7 | TWIN | 822 | BB | 2210 | TUNM | NEW | 822_AB_W010 |  |
| 8220B-5230 |  | Main - 127335 to 127435 Centre Wall (rate = 10m/d) (100m) | 10d | 2013-12-02 A | 2014-03-05 A | 8220B-5220 | 100% | 2014-01-02 | 2014-01-14 |  |  | C822 | C29F | 05 | 0503 | 7 | TWIN | 822 | BB | 2210 | TUNM | NEW | 822_AB_W010 |  |
| 8220B-5240 |  | Main - 127435 to 127535 Centre Wall (rate = 10m/d) (100m) | 10d | 2013-12-09 A | 2014-01-18 A | 8220B-5230 | 100% | 2014-01-14 | 2014-01-25 |  |  | C822 | C29F | 05 | 0503 | 7 | TWIN | 822 | BB | 2210 | TUNM | NEW | 822_AB_W010 |  |
| 8220B-5250 |  | Main - 127535 to 127635 Centre Wall (rate = 10m/d) (100m) | 10d | 2013-12-17 A | 2014-01-02 A | 8220B-5240 | 100% | 2014-01-25 | 2014-02-10 |  |  | C822 | C29F | 05 | 0503 | 7 | TWIN | 822 | BB | 2210 | TUNM | NEW | 822_AB_W010 |  |
| 8220B-5260 |  | Main - 127635 to 127735 Centre Wall (rate = 10m/d) (100m) | 10d | 2014-01-04 A | 2014-03-25 A | 8220B-5250 | 100% | 2014-02-04 | 2014-02-14 |  |  | C822 | C29F | 05 | 0503 | 7 | TWIN | 822 | BB | 2210 | TUNM | NEW | 822_AB_W010 |  |
| 8220B-5270 |  | Main - 127735 to 127835 Centre Wall (rate = 10m/d) (100m) | 10d | 2014-01-14 A | 2014-01-25 A | 8220B-5260 | 100% | 2014-02-06 | 2014-02-18 |  |  | C822 | C29F | 05 | 0503 | 7 | TWIN | 822 | BB | 2210 | TUNM | NEW | 822_AB_W010 |  |
| 8220B-5280 |  | Main - 127835 to 127935 Centre Wall (rate = 10m/d) (100m) | 10d | 2014-01-25 A | 2014-02-12 A | 8220B-5270 | 100% | 2014-02-18 | 2014-03-01 |  |  | C822 | C29F | 05 | 0503 | 7 | TWIN | 822 | BB | 2210 | TUNM | NEW | 822_AB_W010 |  |
| 8220B-5290 |  | Main - 127935 to 128035 Centre Wall (rate = 10m/d) (100m) | 10d | 2014-02-12 A | 2014-04-03 A | 8220B-5280 | 100% | 2014-03-07 | 2014-03-19 |  |  | C822 | C29F | 05 | 0503 | 7 | TWIN | 822 | BB | 2210 | TUNM | NEW | 822_AB_W010 |  |
| 8220B-5300 |  | Main - 128035 to 128135 Centre Wall (rate = 10m/d) (100m) | 10d | 2014-02-20 A | 2014-04-09 A | 8220B-5290 | 100% | 2014-03-19 | 2014-03-31 |  |  | C822 | C29F | 05 | 0503 | 7 | TWIN | 822 | BB | 2210 | TUNM | NEW | 822_AB_W010 |  |
| 8220B-5780 |  | Main - 128135 to 128235 Centre Wall (rate = 10m/d) (100m) | 10d | 2014-03-01 A | 2014-05-04 A | 8220B-5300 | 100% | 2014-04-03 | 2014-04-16 |  |  | C822 | C29F | 05 | 0503 | 7 | TWIN | 822 | BB | 2210 | TUNM | NEW | 822_AB_W010 |  |
| 8220B-5770 |  | Main - 128235 to 128335 Centre Wall (rate = 10m/d) (100m) | 10d | 2014-03-08 A | 2014-05-11 A | 8220B-5780 | 100% | 2014-04-16 | 2014-04-28 |  |  | C822 | C29F | 05 | 0503 | 7 | TWIN | 822 | BB | 2210 | TUNM | NEW | 822_AB_W010 | B |
| 8220B-11600 |  | Main - 128335 to 128435 Centre Wall (rate = 10m/d) (100m) | 10d | 2014-03-14 A | 2014-03-22 A | 8220B-5770 | 100% | 2014-04-28 | 2014-05-10 |  |  | C822 | C29F | 05 | 0503 | 7 | TWIN | 822 | BB | 2210 | TUNM | NEW | 822_AB_W010 |  |
| 8220B-11610 |  | Main - 128435 to 128535 Centre Wall (rate = 10m/d) (100m) | 10d | 2014-03-22 A | 2014-03-30 A | 8220B-11600 | 100% | 2014-05-10 | 2014-05-22 |  |  | C822 | C29F | 05 | 0503 | 7 | TWIN | 822 | BB | 2210 | TUNM | NEW | 822_AB_W010 |  |
| 8220B-11620 |  | Main - 128535 to 128635 Centre Wall (rate = 10m/d) (100m) | 10d | 2014-03-30 A | 2014-04-11 A | 8220B-11610 | 100% | 2014-05-22 | 2014-06-04 |  |  | C822 | C29F | 05 | 0503 | 7 | TWIN | 822 | BB | 2210 | TUNM | NEW | 822_AB_W010 |  |
| 8220B-11630 |  | Main - 128635 to 128735 Centre Wall (rate = 10m/d) (100m) | 10d | 2014-04-11 A | 2014-06-01 A | 8220B-11620 | 100% | 2014-05-13 | 2014-05-24 |  |  | C822 | C29F | 05 | 0503 | 7 | TWIN | 822 | BB | 2210 | TUNM | NEW | 822_AB_W010 |  |
| 8220B-11640 |  | Main - 128735 to 128835 Centre Wall (rate = 10m/d) (100m) | 10d | 2014-04-21 A | 2014-05-09 A | 8220B-11630 | 100% | 2014-05-24 | 2014-06-06 |  |  | C822 | C29F | 05 | 0503 | 7 | TWIN | 822 | BB | 2210 | TUNM | NEW | 822_AB_W010 |  |
| 8220B-11650 |  | Main - 128835 to 128935 Centre Wall (rate = 10m/d) (100m) | 10d | 2014-05-02 A | 2014-06-01 A | 8220B-11640 | 100% | 2014-06-03 | 2014-06-16 |  |  | C822 | C29F | 05 | 0503 | 7 | TWIN | 822 | BB | 2210 | TUNM | NEW | 822_AB_W010 | B |
| 8220B-5730 |  | Main - 128935 to 128995 Centre Wall (60m) (rate = 10m/d) | 6d | 2017-01-02 | 2017-01-07 | 8220B-9690 FF, 8220B-11650 |  |  |  | -1024d | 0d | C822 | C29F | 05 | 0503 | 7 | TWIN | 822 | BB | 2210 | TUNM | NEW |  | B |
| 8220B-12070 |  | Main - De-mobilise/Remedials/Repairs | 12d | 2017-01-09 | 2017-01-21 | 8220B-5730 |  |  |  | -1024d | 54d |  |  |  |  |  |  |  |  |  |  | NEW |  |  |

Notes:
- 8220B-9730: P3 Activity Log Info: 1 day deducted - 2797m = 242 days
- 8220B-11590: P3 Activity Log Info: 1 day deducted - 2797m = 242 days
- 8220B-9690: P3 Activity Log Info: 1 day deducted - 2797m = 242 days
- 8220B-5770: P3 Activity Log Info: 1 day deducted - 2797m = 242 days
- 8220B-11650: P3 Activity Log Info: 1 day deducted - 2797m = 242 days
- 8220B-5730: P3 Activity Log Info: 1 day deducted - 2797m = 242 days

| ID | WBS | Activity | Duration | Start | Finish | Predecessors | Complete | Planned start | Planned finish | Total float | Free float | Constraint | L1 : Project | L2 : Phase | L3 : Area | L4 : Sub-Area | L5 : Element | L6 : Sub-Element | Stef Temp A1 | 822_AB_W010 | M1: Contracts | M2 : Cost Centre | M4 : Location | M5 :Sub-Location |
| --- | --- | --- | --- | --- | --- | --- | --- | --- | --- | --- | --- | --- | --- | --- | --- | --- | --- | --- | --- | --- | --- | --- | --- | --- |
|  | 8 | **D/T Walkway and De-Railment Kurbs to 127+600** |  |  |  |  |  |  |  |  |  |  |  |  |  |  |  |  |  |  |  |  |  |  |
|  | 8 | **Earthmat Installation** |  |  |  |  |  |  |  |  |  |  |  |  |  |  |  |  |  |  |  |  |  |  |
|  | 4 | **Type E - Nozzle Joint Ch126.810 to Ch126.837** |  | 2014-01-06 | 2017-04-11 |  |  |  |  |  |  |  |  |  |  |  |  |  |  |  |  |  |  |  |
| 8220B-5225 |  | Main - 126+810 to 126+837 Membrane | 12d | 2014-01-06 A | 2014-02-28 A | 8220B-5215 | 100% | 2014-08-22 | 2014-09-05 |  |  |  | C822 | C29A | 05 | 0503 | 14 | TWIN | NEW | 822_AB_W010 |  |  |  |  |
| 8220B-5215 |  | Assemble 1 x Type E Formwork in Tunnel | 24d | 2014-02-10 A | 2014-03-19 A | 8220B-5070 | 100% | 2014-07-25 | 2014-08-22 |  |  |  | C822 | C29 | 05 | 0503 | 14 | TWIN | NEW | 822_AB_W010 |  |  |  |  |
| 8220B-5235 |  | Main - 126+810 to 126+837 Perm Conc Lining | 12d | 2014-03-20 A | 2014-06-01 A | 8220B-5225 | 100% | 2014-09-05 | 2014-09-20 |  |  |  | C822 | C29C | 05 | 0503 | 14 | TWIN | NEW | 822_AB_W010 |  |  |  |  |
| 8220B-5295 |  | Main - 126+810 to 126+837 Suspended Slab w/TVS | 12d | 2017-02-28 | 2017-03-14 | 8220B-5235 |  |  |  | -1079.2d | 0d |  | C822 | C29D | 05 | 0503 | 14 | TWIN | NEW |  |  |  |  |  |
| 8220B-5285 |  | Main - 126+810 to 126+837 2nd Centre Wall | 12d | 2017-03-14 | 2017-03-28 | 8220B-5295 |  |  |  | -1079.2d | 0d |  | C822 | C29F | 05 | 0503 | 14 | TWIN | NEW |  |  |  |  |  |
| 8220B-5305 |  | Main - 126+810 to 126+837 OHVD Duct Wall | 12d | 2017-03-28 | 2017-04-11 | 8220B-5285 |  |  |  | -1079.2d | 41d |  | C822 | C29H | 05 | 0503 | 14 | TWIN | NEW |  |  |  |  |  |
|  | 5 | **Type E,D,L Nozzle Joint Ch126.050 to Ch126.128** |  |  |  |  |  |  |  |  |  |  |  |  |  |  |  |  |  |  |  |  |  |  |
|  | 10 | **Junction PH2A2** |  | 2013-03-23 | 2017-02-25 |  |  |  |  |  |  |  |  |  |  |  |  |  |  |  |  |  |  |  |
| 8220B-5115 |  | PH2A2 Junction - Mass Fill Type L Ramp | 12d | 2013-03-23 A | 2013-04-08 A | 8220B-12500 | 100% | 2013-05-18 | 2013-05-31 |  |  |  | C822 | C29A | 05 | 0503 | 10 | TWIN | NEW | 822_AB_W010 |  |  |  |  |
| 8220B-5105 |  | PH2A2 Junction - Erect Scaffolding | 12d | 2013-04-09 A | 2013-04-22 A | 8220B-5115 | 100% | 2013-06-01 | 2013-06-15 |  |  |  | C822 | C29A | 05 | 0503 | 10 | TWIN | NEW | 822_AB_W010 |  |  |  |  |
| 8220B-5125 |  | PH2A2 Junction - Install Waterproof Membrane | 6d | 2013-04-24 A | 2013-11-22 A | 8220B-5105 | 100% | 2013-06-17 | 2013-06-22 |  |  |  | C822 | C29C | 05 | 0503 | 10 | TWIN | NEW | 822_AB_W010 |  |  |  |  |
| 8220B-5325 |  | PH2A2 Junction - Erect Steel reinforcement | 18d | 2013-11-27 A | 2014-02-27 A | 8220B-5125 | 100% | 2013-11-20 | 2013-12-10 |  |  |  | C822 | C29D | 05 | 0503 | 10 | TWIN | NEW | 822_AB_W010 |  |  |  |  |
| 8220B-5205 |  | PH2A2 Junction - Dismantle Scaffolding | 6d | 2013-12-19 A | 2014-02-27 A | 8220B-5325 | 100% | 2014-01-16 | 2014-01-23 |  |  |  | C822 | C29F | 05 | 0503 | 10 | TWIN | NEW | 822_AB_W010 |  |  |  |  |
| 8220B-5315 |  | PH2A2 Junction - Cast Walls | 12d | 2014-02-28 A | 2014-06-01 A | 8220B-5205, 8220B-12450 | 100% | 2014-03-20 | 2014-04-03 |  |  |  | C822 | C29H | 05 | 0503 | 10 | TWIN | NEW | 822_AB_W010 |  |  |  |  |
|  | 1 | **Shutter Assembly** |  | 2013-12-23 | 2017-02-25 |  |  |  |  |  |  |  |  |  |  |  |  |  |  |  |  |  |  |  |
| 8220B-12450 |  | PH2A2 Junction - Erect Wall Shutter | 18d | 2013-12-23 A | 2014-02-27 A |  | 100% | 2014-01-02 | 2014-01-22 |  |  | as late as possible |  |  |  |  |  |  | NEW | 822_AB_W010 |  |  |  |  |
| 8220B-12460 |  | PH2A2 Junction - Erect Wall Portal Frames, Crown Membrane and Steelwork | 36d | 2014-03-19 A | 2014-06-01 A | 8220B-5315 SS | 100% | 2014-04-01 | 2014-05-17 |  |  |  |  |  |  |  |  |  | NEW | 822_AB_W010 |  |  |  |  |
| 8220B-12470 |  | PH2A2 Junction - Complete Formwork, pour crown and headwalls | 36d | 2017-01-02 | 2017-02-11 | 8220B-12460 |  |  |  | -562d | 0d |  |  |  |  |  |  |  | NEW |  |  |  |  |  |
| 8220B-12480 |  | PH2A2 Junction - Complete Plenum Slab | 12d | 2017-02-13 | 2017-02-25 | 8220B-12470 |  |  |  | -562d | 347.51d |  |  |  |  |  |  |  | NEW |  |  |  |  |  |
|  | 6 | **Type G - Ch125.618 to Ch126.050** |  | 2012-10-02 | 2017-03-31 |  |  |  |  |  |  |  |  |  |  |  |  |  |  |  |  |  |  |  |
|  | 1 | **Rail, Kicker, Membrane** |  | 2012-10-02 | 2014-03-01 |  |  |  |  |  |  |  |  |  |  |  |  |  |  |  |  |  |  |  |
| 8220B-0900 |  | Main - 125+818 to 125+942 Kicker, Membrane (124m) (rate = 8m/d) | 16d | 2012-10-02 A | 2014-03-01 A | 8220B-0890 | 100% | 2013-03-09 | 2013-03-28 |  |  |  | C822 | C29A | 05 | 0503 | 6 | TWIN | NEW | 822_AB_W010 | 822 | BB | 2210 | TUNM |
| 8220B-12200 |  | Main - 125+618 to 126+050 Set Up Type G Membrane Gantry | 18d | 2012-11-25 A | 2012-12-18 A |  | 100% | 2013-01-02 | 2013-01-22 |  |  | start on 2012-12-11 |  |  |  |  |  |  | NEW | 822_AB_W010 |  |  |  |  |
| 8220B-0880 |  | Main - 125+618 to 125+718 Kicker, Membrane (100m) (rate = 4m/d) | 25d | 2013-04-08 A | 2013-09-12 A | 8220B-12200 | 100% | 2013-04-23 | 2013-05-22 |  |  |  | C822 | C29A | 05 | 0503 | 6 | TWIN | NEW | 822_AB_W010 | 822 | BB | 2210 | TUNM |
| 8220B-0890 |  | Main - 125+718 to 125+818 Kicker, Membrane (100m) (rate = 8m/d) | 12.5d | 2013-05-28 A | 2014-01-27 A | 8220B-0880 | 100% | 2013-07-03 | 2013-07-17 |  |  |  | C822 | C29A | 05 | 0503 | 6 | TWIN | NEW | 822_AB_W010 | 822 | BB | 2210 | TUNM |

Notes:
- 8220B-0900: P3 Activity Log Info: ??????????361m / 4m/d??
- 8220B-0880: P3 Activity Log Info: ??????????361m / 4m/d??
- 8220B-0890: P3 Activity Log Info: ??????????361m / 4m/d??

| ID | WBS | Activity | Duration | Start | Finish | Predecessors | Complete | Planned start | Planned finish | L1 : Project | L2 : Phase | L3 : Area | L4 : Sub-Area | L5 : Element | L6 : Sub-Element | M1: Contracts | M2 : Cost Centre | M4 : Location | M5 :Sub-Location | Stef Temp A1 | 822_AB_W010 |
| --- | --- | --- | --- | --- | --- | --- | --- | --- | --- | --- | --- | --- | --- | --- | --- | --- | --- | --- | --- | --- | --- |
|  | 3 | **1st Invert Prep/Drainage** |  | 2013-04-29 | 2014-06-01 |  |  |  |  |  |  |  |  |  |  |  |  |  |  |  |  |
| 8220B-0960 |  | Main - 125+618 to 125+718 1st Half Invert Prep (100m)(rate = 6m/d) | 17d | 2013-04-29 A | 2013-07-04 A | 8220B-3100 | 100% | 2013-09-30 | 2013-10-21 | C822 | C29B | 05 | 0503 | 6 | TWIN | 822 | BB | 2210 | TUNM | NEW | 822_AB_W010 |
| 8220B-7170 |  | Main - 125+718 to 125+818 1st Half Invert Prep (100m) (rate = 6m/d) | 17d | 2013-07-25 A | 2014-01-16 A | 8220B-0960 | 100% | 2013-08-21 | 2013-09-09 | C822 | C29B | 05 | 0503 | 6 | TWIN | 822 | BB | 2210 | TUNM | NEW | 822_AB_W010 |
| 8220B-7180 |  | Main - 125+818 to 125+918 1st Half Invert Prep (100m) (rate = 10m/d) | 10d | 2013-08-24 A | 2014-06-01 A | 8220B-7170 | 100% | 2013-12-24 | 2014-01-08 | C822 | C29B | 05 | 0503 | 6 | TWIN | 822 | BB | 2210 | TUNM | NEW | 822_AB_W010 |
| 8220B-12400 |  | Main - 125+918 to 126+027 1st Half Invert Prep (109m) (rate = 10m/d) | 11d | 2013-09-06 A | 2013-12-14 A | 8220B-7180 | 100% | 2013-12-04 | 2013-12-16 |  |  |  |  |  |  |  |  |  |  | NEW | 822_AB_W010 |
| 8220B-7190 |  | Main - 126+027 to 126+127 1st Half Invert Prep (100m) (rate = 10m/d) | 10d | 2013-10-08 A | 2013-12-06 A | 8220B-12400 | 100% | 2014-01-09 | 2014-01-21 | C822 | C29B | 05 | 0503 | 6 | TWIN | 822 | BB | 2210 | TUNM | NEW | 822_AB_W010 |
|  | 5 | **1st Invert Slab** |  | 2013-04-29 | 2014-06-01 |  |  |  |  |  |  |  |  |  |  |  |  |  |  |  |  |
| 8220B-0970 |  | Main - 125+618 to 125+718 1st Half Invert Slab (100m) (rate = 6m/d) | 17d | 2013-04-29 A | 2013-07-04 A | 8220B-0960 FS-5d | 100% | 2013-04-29 | 2013-05-18 | C822 | C29I | 05 | 0503 | 6 | TWIN | 822 | BB | 2210 | TUNM | NEW | 822_AB_W010 |
| 8220B-7200 |  | Main - 125+718 to 125+818 1st Half Invert Slab (100m) (rate = 6m/d) | 17d | 2013-07-25 A | 2014-01-16 A | 8220B-0970 | 100% | 2013-08-21 | 2013-09-09 | C822 | C29I | 05 | 0503 | 6 | TWIN | 822 | BB | 2210 | TUNM | NEW | 822_AB_W010 |
| 8220B-7210 |  | Main - 125+818 to 125+918 1st Half Invert Slab (100m) (rate = 10m/d) | 10d | 2013-08-24 A | 2014-06-01 A | 8220B-7200 | 100% | 2013-12-24 | 2014-01-08 | C822 | C29I | 05 | 0503 | 6 | TWIN | 822 | BB | 2210 | TUNM | NEW | 822_AB_W010 |
| 8220B-12410 |  | Main - 125+918 to 126+027 1st Half Invert Slab (109m) (rate = 10m/d) | 11d | 2013-09-06 A | 2013-12-14 A | 8220B-7210 | 100% | 2013-12-04 | 2013-12-16 |  |  |  |  |  |  |  |  |  |  | NEW | 822_AB_W010 |
| 8220B-7220 |  | Main - 126+027 to 126+127 1st Half Invert Slab (100m) (rate = 10m/d) | 10d | 2013-10-08 A | 2013-12-06 A | 8220B-12410, 8220B-7190 FF | 100% | 2014-01-09 | 2014-01-21 | C822 | C29I | 05 | 0503 | 6 | TWIN | 822 | BB | 2210 | TUNM | NEW | 822_AB_W010 |
|  | 4 | **2nd Invert Prep/Drainage** |  | 2013-04-29 | 2014-06-01 |  |  |  |  |  |  |  |  |  |  |  |  |  |  |  |  |
| 8220B-0980 |  | Main - 125+618 to 125+718 2nd Half Invert Prep (100m)(rate = 6m/d) | 17d | 2013-04-29 A | 2013-07-04 A | 8220B-0970 FS-5d | 100% | 2013-04-29 | 2013-05-20 | C822 | C29J | 05 | 0503 | 6 | TWIN | 822 | BB | 2210 | TUNM | NEW | 822_AB_W010 |
| 8220B-7230 |  | Main - 125+718 to 125+818 2nd Half Invert Prep (100m) (rate = 6m/d) | 17d | 2013-07-25 A | 2014-01-16 A | 8220B-0980 | 100% | 2013-09-04 | 2013-09-24 | C822 | C29J | 05 | 0503 | 6 | TWIN | 822 | BB | 2210 | TUNM | NEW | 822_AB_W010 |
| 8220B-7240 |  | Main - 125+818 to 125+918 2nd Half Invert Prep (100m) (rate = 10m/d) | 10d | 2013-08-24 A | 2014-06-01 A | 8220B-7230 | 100% | 2013-12-24 | 2014-01-08 | C822 | C29J | 05 | 0503 | 6 | TWIN | 822 | BB | 2210 | TUNM | NEW | 822_AB_W010 |
| 8220B-12420 |  | Main - 125+918 to 126+027 2nd Half Invert Prep (109m)(rate = 10m/d) | 11d | 2013-09-06 A | 2013-12-14 A | 8220B-7240 | 100% | 2013-12-04 | 2013-12-16 |  |  |  |  |  |  |  |  |  |  | NEW | 822_AB_W010 |
| 8220B-7250 |  | Main - 126+027 to 126+127 2nd Half Invert Prep (100m)(rate = 10m/d) | 10d | 2013-10-08 A | 2013-12-06 A | 8220B-12420, 8220B-7220 FF | 100% | 2014-01-09 | 2014-01-21 | C822 | C29J | 05 | 0503 | 6 | TWIN | 822 | BB | 2210 | TUNM | NEW | 822_AB_W010 |
|  | 6 | **2nd Invert Slab** |  | 2013-04-29 | 2014-06-01 |  |  |  |  |  |  |  |  |  |  |  |  |  |  |  |  |
| 8220B-0990 |  | Main - 125+618 to 125+718 2nd Half Invert Slab (100m) (rate = 6m/d) | 17d | 2013-04-29 A | 2013-07-04 A | 8220B-0980 FS-5d | 100% | 2013-08-29 | 2013-09-17 | C822 | C29K | 05 | 0503 | 6 | TWIN | 822 | BB | 2210 | TUNM | NEW | 822_AB_W010 |
| 8220B-7260 |  | Main - 125+718 to 125+818 2nd Half Invert Slab (100m) (rate = 6m/d) | 17d | 2013-07-25 A | 2014-01-16 A | 8220B-0990 | 100% | 2013-09-18 | 2013-10-09 | C822 | C29K | 05 | 0503 | 6 | TWIN | 822 | BB | 2210 | TUNM | NEW | 822_AB_W010 |
| 8220B-7270 |  | Main - 125+818 to 125+918 2nd Half Invert Slab (100m) ((rate = 10m/d) | 10d | 2013-08-24 A | 2014-06-01 A | 8220B-7260 | 100% | 2013-12-24 | 2014-01-08 | C822 | C29K | 05 | 0503 | 6 | TWIN | 822 | BB | 2210 | TUNM | NEW | 822_AB_W010 |
| 8220B-12430 |  | Main - 125+918 to 126+027 2nd Half Invert Slab (109m) ((rate = 10m/d) | 11d | 2013-09-06 A | 2013-12-14 A | 8220B-7270 | 100% | 2013-12-04 | 2013-12-16 |  |  |  |  |  |  |  |  |  |  | NEW | 822_AB_W010 |
| 8220B-7280 |  | Main - 126+027 to 126+127 2nd Half Invert Slab (100m) (rate = 10m/d) | 10d | 2013-10-08 A | 2013-12-06 A | 8220B-12430, 8220B-7250 FF | 100% | 2014-01-09 | 2014-01-21 | C822 | C29K | 05 | 0503 | 6 | TWIN | 822 | BB | 2210 | TUNM | NEW | 822_AB_W010 |

| ID | WBS | Activity | Duration | Start | Finish | Predecessors | Complete | Planned start | Planned finish | Total float | Free float | Stef Temp A1 | 822_AB_W010 | L1 : Project | L2 : Phase | L3 : Area | L4 : Sub-Area | L5 : Element | L6 : Sub-Element | M1: Contracts | M2 : Cost Centre | M4 : Location | M5 :Sub-Location |
| --- | --- | --- | --- | --- | --- | --- | --- | --- | --- | --- | --- | --- | --- | --- | --- | --- | --- | --- | --- | --- | --- | --- | --- |
|  | 9 | **Permanent Wall Lining** |  | 2013-07-08 | 2014-05-29 |  |  |  |  |  |  |  |  |  |  |  |  |  |  |  |  |  |  |
| 8220B-12210 |  | Main - 125+618 to 126+050 Set Up Type G Wall Shutter | 18d | 2013-07-08 A | 2013-09-16 A | 8220B-12200, 8220A-7405, 8220A-2855, 8220A-7250 | 100% | 2013-07-25 | 2013-08-14 |  |  | NEW | 822_AB_W010 |  |  |  |  |  |  |  |  |  |  |
| 8220B-12170 |  | Main - 125+618 to 125+718 Tunnel Walls (100m) (rate = 4m/d) | 25d | 2013-10-31 A | 2013-11-23 A | 8220B-12210 | 100% | 2013-12-02 | 2013-12-31 |  |  | NEW | 822_AB_W010 |  |  |  |  |  |  |  |  |  |  |
| 8220B-12180 |  | Main - 125+718 to 125+818 Tunnel Walls (100m) (rate = 8m/d) | 13d | 2013-11-25 A | 2014-04-17 A | 8220B-12170 | 100% | 2014-01-02 | 2014-01-16 |  |  | NEW | 822_AB_W010 |  |  |  |  |  |  |  |  |  |  |
| 8220B-12190 |  | Main - 125+818 to 125+942 Tunnel Walls (124m) (rate = 8m/d) | 16d | 2013-12-17 A | 2014-05-29 A | 8220B-12180, 8220B-7280 FF | 100% | 2014-01-09 | 2014-01-28 |  |  | NEW | 822_AB_W010 |  |  |  |  |  |  |  |  |  |  |
| 8220B-11680 |  | Main - 125+942 to 126+050 Perm Lining (rate = 5.76m/d) (108m) | 19d | 2014-01-03 A | 2014-01-18 A | 8220B-11670 FS-5d, 822B-2860, 8220B-12190 | 100% | 2014-02-10 | 2014-03-04 |  |  | NEW | 822_AB_W010 | C822 | C29A | 05 | 0503 | 8 | TWIN | 822 | BB | 2210 | TUNM |
|  | 2 | **Permanent Arch Lining** |  | 2013-12-06 | 2017-02-01 |  |  |  |  |  |  |  |  |  |  |  |  |  |  |  |  |  |  |
| 8220B-0680 |  | Main - 125+618 to 126+050 Set Up Type G Arch Shutter | 24d | 2013-12-06 A | 2014-02-28 A | 8220B-12210 | 100% | 2014-03-01 | 2014-03-28 |  |  | NEW | 822_AB_W010 | C822 | C29 | 05 | 0503 | 6 | TWIN | 822 | BB | 2210 | TUNM |
| 8220B-12360 |  | Main - 1st Modify the Type G Arch Lining Shutter | 6d | 2014-02-28 A | 2014-03-06 A | 8220B-0680 | 100% | 2014-03-29 | 2014-04-04 |  |  | NEW | 822_AB_W010 |  |  |  |  |  |  |  |  |  |  |
| 8220B-3090 |  | Main - 125+618 to 125+718 Perm Conc Arch Lining (100m) (rate = 6m/d) | 17d | 2014-03-07 A | 2014-04-11 A | 8220B-12360 | 100% | 2014-04-09 | 2014-04-28 |  |  | NEW | 822_AB_W010 | C822 | C29C | 05 | 0503 | 6 | TWIN | 822 | BB | 2210 | TUNM |
| 8220B-12370 |  | Main - 2nd Modify the Type G Arch Lining Shutter | 6d | 2014-03-21 A | 2014-04-06 A | 8220B-3090 | 100% | 2014-04-29 | 2014-05-06 |  |  | NEW | 822_AB_W010 |  |  |  |  |  |  |  |  |  |  |
| 8220B-3100 |  | Main - 125+718 to 125+818 Perm Conc Arch Lining (100m) (rate = 6m/d) | 17d | 2014-04-11 A | 2014-06-01 A | 8220B-12370 | 100% | 2014-05-06 | 2014-05-24 |  |  | NEW | 822_AB_W010 | C822 | C29C | 05 | 0503 | 6 | TWIN | 822 | BB | 2210 | TUNM |
| 8220B-12380 |  | Main - 3rd Modify the Type G Arch Lining Shutter | 6d | 2014-05-23 A | 2014-06-01 A | 8220B-3100 | 100% | 2014-06-05 | 2014-06-13 |  |  | NEW | 822_AB_W010 |  |  |  |  |  |  |  |  |  |  |
| 8220B-12530 |  | Main - 125+880 to 125+942 Perm Conc Arch Lining (62m) (rate = 6m/d) | 11d | 2017-01-02 | 2017-01-13 | 8220B-12380 |  |  |  | -1021d | 0d | NEW |  |  |  |  |  |  |  |  |  |  |  |
| 8220B-12390 |  | Main - 4th Modify the Type G Arch Lining Shutter | 6d | 2017-01-14 | 2017-01-20 | 8220B-12530 |  |  |  | -1021d | 0d | NEW |  |  |  |  |  |  |  |  |  |  |  |
| 8220B-3120 |  | Main - 125+818 to 125+880 Perm Conc Arch Lining (62m) (rate = 6m/d) | 10d | 2017-01-21 | 2017-02-01 | 8220B-0900 FF, 8220B-12190 FF, 8220B-12390 |  |  |  | -1021d | 50d | NEW |  | C822 | C29C | 05 | 0503 | 6 | TWIN | 822 | BB | 2210 | TUNM |
|  | 7 | **Centre Wall** |  | 2017-01-02 | 2017-03-31 |  |  |  |  |  |  |  |  |  |  |  |  |  |  |  |  |  |  |
| 8220B-1110 |  | Main - 125+618 to 125+718 Centre Walls (100m) (rate = 6m/d) | 17d | 2017-01-02 | 2017-01-20 | 8220B-0990 FS-5d, 8220B-12360 |  |  |  | -1071d | 0d | NEW |  | C822 | C29F | 05 | 0503 | 6 | TWIN | 822 | BB | 2210 | TUNM |
| 8220B-5160 |  | Main - 125+718 to 125+818 Centre Walls (100m) (rate = 6m/d) | 17d | 2017-01-21 | 2017-02-09 | 8220B-1110 |  |  |  | -1071d | 0d | NEW |  | C822 | C29F | 05 | 0503 | 6 | TWIN | 822 | BB | 2210 | TUNM |
| 8220B-5170 |  | Main - 125+818 to 125+918 Centre Walls (100m) (rate = 10m/d) | 10d | 2017-02-10 | 2017-02-21 | 8220B-5160 |  |  |  | -1071d | 0d | NEW |  | C822 | C29F | 05 | 0503 | 6 | TWIN | 822 | BB | 2210 | TUNM |
| 8220B-12440 |  | Main - 125+918 to 126+027 Centre Walls (109m) (rate = 10m/d) | 11d | 2017-02-22 | 2017-03-06 | 8220B-5170 |  |  |  | -1071d | 0d | NEW |  |  |  |  |  |  |  |  |  |  |  |
| 8220B-5180 |  | Main - 125+027 to 126+127 Centre Walls (100m) (rate = 10m/d) | 10d | 2017-03-07 | 2017-03-17 | 8220B-12440 |  |  |  | -1071d | 0d | NEW |  | C822 | C29F | 05 | 0503 | 6 | TWIN | 822 | BB | 2210 | TUNM |
| 8220B-12060 |  | Main - De-mobilise/Remedials/Repairs | 12d | 2017-03-18 | 2017-03-31 | 8220B-5180, 8220B-3120 FF |  |  |  | -1071d | 49.2d | NEW |  |  |  |  |  |  |  |  |  |  |  |
|  | 8 | **D/T Walkway and De-railment Kurb** |  |  |  |  |  |  |  |  |  |  |  |  |  |  |  |  |  |  |  |  |  |
|  | 1 | **Type A and B Tunnel Lining Ch125.618 to Ch125.354** |  | 2013-03-19 | 2017-01-28 |  |  |  |  |  |  |  |  |  |  |  |  |  |  |  |  |  |  |
|  | 2 | **Down Track Tunnel** |  | 2013-03-19 | 2014-06-01 |  |  |  |  |  |  |  |  |  |  |  |  |  |  |  |  |  |  |
| 8220B-12350 |  | Main - Type A/B Membrane Gantry Erection in bifircation | 12d | 2013-03-19 A | 2013-04-13 A | 8220B-12210 | 100% | 2013-06-10 | 2013-06-25 |  |  | NEW | 822_AB_W010 |  |  |  |  |  |  |  |  |  |  |
| 8220B-0690 |  | Main - Type A/B Lining Shutter Erection in bifurcation | 24d | 2013-05-07 A | 2013-09-02 A |  | 100% | 2013-06-07 | 2013-07-08 |  |  | NEW | 822_AB_W010 | C822 | C29 | 05 | 0503 | 8 | TWIN | 822 | BB | 2210 | TUNM |

Notes:
- 8220B-12170: P3 Activity Log Info: ??????????361m / 4m/d??
- 8220B-12180: P3 Activity Log Info: ??????????361m / 4m/d??
- 8220B-12190: P3 Activity Log Info: ??????????361m / 4m/d??
- 8220B-11680: P3 Activity Log Info: ??????????1,267m / 12m/d ??
- 8220B-12360: P3 Activity Log Info: ?????????? ??
- 8220B-3090: P3 Activity Log Info: ?????????? ??
- 8220B-12370: P3 Activity Log Info: ?????????? ??
- 8220B-3100: P3 Activity Log Info: ?????????? ??
- 8220B-12380: P3 Activity Log Info: ?????????? ??
- 8220B-12530: P3 Activity Log Info: ?????????? ??
- 8220B-12390: P3 Activity Log Info: ?????????? ??
- 8220B-3120: P3 Activity Log Info: ?????????? ??

| ID | WBS | Activity | Duration | Start | Finish | Predecessors | Complete | Planned start | Planned finish | Stef Temp A1 | 822_AB_W010 | L1 : Project | L2 : Phase | L3 : Area | L4 : Sub-Area | L5 : Element | L6 : Sub-Element | M1: Contracts | M2 : Cost Centre | M4 : Location | M5 :Sub-Location |
| --- | --- | --- | --- | --- | --- | --- | --- | --- | --- | --- | --- | --- | --- | --- | --- | --- | --- | --- | --- | --- | --- |
|  | 5 | **Type B Reinforcement works** |  | 2013-07-15 | 2013-09-09 |  |  |  |  |  |  |  |  |  |  |  |  |  |  |  |  |
| 8220B-12270 |  | Type B - Erect Access Scaffolding (32m) Ch125+353 to 125+385 | 12d | 2013-07-15 A | 2013-07-29 A | 8220B-10710, 8220B-12310 | 100% | 2013-08-01 | 2013-08-14 | NEW | 822_AB_W010 |  |  |  |  |  |  |  |  |  |  |
| 8220B-12280 |  | Type B - Kicker Membrane (32m) Ch125+353 to 125+385 | 6d | 2013-07-30 A | 2013-08-05 A | 8220B-12270 | 100% |  |  | NEW | 822_AB_W010 |  |  |  |  |  |  |  |  |  |  |
| 8220B-12290 |  | Type B - Erect Steelwork Reinforcement (32m) Ch125+353 to 125+385 | 18d | 2013-08-06 A | 2013-08-31 A | 8220B-12280 | 100% | 2013-08-06 | 2013-08-26 | NEW | 822_AB_W010 |  |  |  |  |  |  |  |  |  |  |
| 8220B-12300 |  | Type B - Dismantle Access Scaffolding (32m) Ch125+353 to 125+385 | 6d | 2013-09-03 A | 2013-09-09 A | 8220B-12290 | 100% | 2013-10-03 | 2013-10-10 | NEW | 822_AB_W010 |  |  |  |  |  |  |  |  |  |  |
|  | 1 | **Rail, Kicker, Membrane** |  | 2013-05-22 | 2013-07-10 |  |  |  |  |  |  |  |  |  |  |  |  |  |  |  |  |
| 8220B-0770 |  | Main - DT 125+385 to 125+453 Kicker, Membrane (68m) (rate = 4m/d) | 17d | 2013-05-22 A | 2013-06-15 A | 8220B-12310, 8220B-12350 | 100% | 2013-06-01 | 2013-06-21 | NEW | 822_AB_W010 | C822 | C29A | 05 | 0503 | 8 | SING | 822 | BB | 2210 | TUNS |
| 8220B-0780 |  | Main - DT 125+453 to 125+553 Kicker, Membrane (100m) (rate = 8m/d) | 12.5d | 2013-06-15 A | 2013-06-29 A | 8220B-0770 | 100% | 2013-07-16 | 2013-07-30 | NEW | 822_AB_W010 | C822 | C29A | 05 | 0503 | 8 | SING | 822 | BB | 2210 | TUNS |
| 8220B-2720 |  | Main - DT 125+553 to 125+617 Kicker, Membrane (64m) (rate = 8m/d) | 8d | 2013-07-02 A | 2013-07-10 A | 8220B-0780 | 100% | 2013-08-01 | 2013-08-09 | NEW | 822_AB_W010 | C822 | C29A | 05 | 0503 | 8 | SING | 822 | BB | 2210 | TUNS |
|  | 2 | **Permanent Concrete Lining** |  | 2013-09-03 | 2013-12-12 |  |  |  |  |  |  |  |  |  |  |  |  |  |  |  |  |
| 8220B-3400 |  | Main - DT 125+553 to 125+617 Perm Conc Lining (66m) (rate = 8m/d = 4 bays/week) | 8d | 2013-09-03 A | 2013-12-12 A | 8220B-12330 | 100% | 2013-10-31 | 2013-11-09 | NEW | 822_AB_W010 | C822 | C29C | 05 | 0503 | 8 | SING | 822 | BB | 2210 | TUNS |
| 8220B-12100 |  | Main - DT 125+617 Construct Head Wall | 12d | 2013-09-13 A | 2013-12-12 A | 8220B-3400 | 100% | 2013-09-13 | 2013-09-28 | NEW | 822_AB_W010 |  |  |  |  |  |  |  |  |  |  |
| 8220B-0710 |  | Main - DT 125+430 to 125+478 Perm Conc Lining (48m) (rate = 4m/d = 2 bays/week) | 12d | 2013-09-16 A | 2013-09-24 A | 8220B-0780, 8220B-0690, 8220B-12300 FF | 100% | 2013-09-27 | 2013-10-12 | NEW | 822_AB_W010 | C822 | C29C | 05 | 0503 | 8 | SING | 822 | BB | 2210 | TUNS |
| 8220B-12570 |  | Main - DT 125+478 to 125+553 Perm Conc Lining (75m) (rate = 8m/d = 4 bays/week) | 9.3d | 2013-09-25 A | 2013-10-05 A | 8220B-0710 | 100% | 2013-10-04 | 2013-10-17 | NEW | 822_AB_W010 |  |  |  |  |  |  |  |  |  |  |
| 8220B-0850 |  | Main - DT 125+385 to 125+430 Perm Conc Lining (45m) (rate = 8m/d) | 6d | 2013-10-05 A | 2013-10-18 A | 8220B-12550 | 100% | 2013-11-15 | 2013-11-22 | NEW | 822_AB_W010 | C822 | C29C | 05 | 0503 | 8 | SING | 822 | BB | 2210 | TUNS |
| 8220B-12550 |  | Main - DT Type B Reinforced Section - 125+353 to 125+385 Perm Conc Lining (32m) (rate = 4m/d) | 8d | 2013-10-21 A | 2013-10-28 A | 8220B-12100 | 100% | 2013-11-06 | 2013-11-15 | NEW | 822_AB_W010 |  |  |  |  |  |  |  |  |  |  |
| 8220B-12330 |  | Main - 1 week for Lining works at the D/T Cross Passage | 6d | 2013-10-28 A | 2013-11-15 A | 8220B-12570 | 100% | 2013-11-12 | 2013-11-19 | NEW | 822_AB_W010 |  |  |  |  |  |  |  |  |  |  |
|  | 3 | **Invert Slab** |  | 2013-12-30 | 2014-02-20 |  |  |  |  |  |  |  |  |  |  |  |  |  |  |  |  |
| 8220B-1040 |  | Main - DT 125+353 to 125+453 Invert Slab (100m) (rate = 4m/d) | 25d | 2013-12-30 A | 2014-02-08 A | 8220B-0850 FS-3.6d | 100% | 2014-01-02 | 2014-01-30 | NEW | 822_AB_W010 | C822 | C29B | 05 | 0503 | 8 | TWIN | 822 | BB | 2210 | TUNM |
| 8220B-1050 |  | Main - DT 125+453 to 125+553 Invert Slab (100m) (rate = 8m/d) | 12.5d | 2014-02-08 A | 2014-02-13 A | 8220B-1040 | 100% | 2014-03-04 | 2014-03-18 | NEW | 822_AB_W010 | C822 | C29B | 05 | 0503 | 8 | TWIN | 822 | BB | 2210 | TUNM |
| 8220B-7780 |  | Main - DT 125+553 to 125+619 Invert Slab (66m) (rate = 8m/d) | 8d | 2014-02-13 A | 2014-02-20 A | 8220B-1050 | 100% | 2014-03-18 | 2014-03-27 | NEW | 822_AB_W010 | C822 | C29B | 05 | 0503 | 8 | TWIN | 822 | BB | 2210 | TUNM |
|  | 4 | **Single Track Walkway** |  | 2014-01-03 | 2014-06-01 |  |  |  |  |  |  |  |  |  |  |  |  |  |  |  |  |
| 8220B-11800 |  | Main - DT Walkway & De-railment kurbs 125+353 to 125+619 (266m) (rate = 45m/d) | 6d | 2014-01-03 A | 2014-06-01 A | 8220B-7780 | 100% | 2014-03-01 | 2014-03-08 | NEW | 822_AB_W010 |  |  |  |  |  |  |  |  |  |  |
|  | 1 | **Up Track Tunnel** |  | 2013-07-10 | 2017-01-28 |  |  |  |  |  |  |  |  |  |  |  |  |  |  |  |  |
| 8220B-0720 |  | Main - UT Single Track Civil Works Mobilisation | 6d | 2013-12-13 A | 2013-12-18 A | 8220B-0850 | 100% | 2014-01-02 | 2014-01-08 | NEW | 822_AB_W010 | C822 | C29 | 05 | 0503 | 9 | TWIN | 822 | BB | 2210 | TUNM |

Notes:
- 8220B-0770: P3 Activity Log Info: ??????????32m / 6m/d??
- 8220B-0780: P3 Activity Log Info: ??????????233m / 6m/d??
- 8220B-2720: P3 Activity Log Info: ??????????233m / 6m/d??
- 8220B-3400: P3 Activity Log Info: ?????????? ??
- 8220B-12100: P3 Activity Log Info: ?????????? ??
- 8220B-0710: P3 Activity Log Info: ?????????? ??
- 8220B-12570: P3 Activity Log Info: ?????????? ??
- 8220B-0850: P3 Activity Log Info: ?????????? ??
- 8220B-12550: P3 Activity Log Info: ?????????? ??
- 8220B-12330: P3 Activity Log Info: ?????????? ??

| ID | WBS | Activity | Duration | Start | Finish | Predecessors | Complete | Planned start | Planned finish | Total float | Free float | Stef Temp A1 | 822_AB_W010 | L1 : Project | L2 : Phase | L3 : Area | L4 : Sub-Area | L5 : Element | L6 : Sub-Element | M1: Contracts | M2 : Cost Centre | M4 : Location | M5 :Sub-Location |
| --- | --- | --- | --- | --- | --- | --- | --- | --- | --- | --- | --- | --- | --- | --- | --- | --- | --- | --- | --- | --- | --- | --- | --- |
|  | 1 | **Rail, Kicker, Membrane** |  | 2013-07-10 | 2013-10-18 |  |  |  |  |  |  |  |  |  |  |  |  |  |  |  |  |  |  |
| 8220B-0800 |  | Main - UT 125+383 to 125+453 Kicker, Membrane (68m) (rate = 8m/d) | 9d | 2013-07-10 A | 2013-08-08 A | 8220B-2720 | 100% | 2013-08-10 | 2013-08-20 |  |  | NEW | 822_AB_W010 |  |  |  |  |  |  |  |  |  |  |
| 8220B-0810 |  | Main - UT 125+453 to 125+553 Kicker, Membrane (100m) (rate = 8m/d) | 13d | 2013-08-09 A | 2013-10-05 A | 8220B-0800 | 100% | 2013-09-02 | 2013-09-17 |  |  | NEW | 822_AB_W010 |  |  |  |  |  |  |  |  |  |  |
| 8220B-2700 |  | Main - UT 125+553 to 125+619 Kicker, Membrane (66m) (rate = 8m/d) | 8d | 2013-10-08 A | 2013-10-18 A | 8220B-0810 | 100% | 2013-11-04 | 2013-11-13 |  |  | NEW | 822_AB_W010 |  |  |  |  |  |  |  |  |  |  |
|  | 2 | **Permanent Concrete Lining** |  | 2013-12-19 | 2017-01-14 |  |  |  |  |  |  |  |  |  |  |  |  |  |  |  |  |  |  |
| 8220B-12560 |  | Main - UT Type B Reinforced Section - 125+353 to 125+385 Perm Conc Lining (32m) (rate = 4m/d) | 8d | 2013-12-19 A | 2014-02-27 A | 8220B-0720 | 100% | 2014-01-09 | 2014-01-17 |  |  | NEW | 822_AB_W010 |  |  |  |  |  |  |  |  |  |  |
| 8220B-3380 |  | Main - UT 125+553 to 125+619 Perm Conc Lining (66m) (rate = 8m/d = 4 bays/week) | 8d | 2013-12-28 A | 2014-06-01 A | 8220B-2700 FF, 8220B-12340 | 100% | 2014-03-10 | 2014-03-19 |  |  | NEW | 822_AB_W010 |  |  |  |  |  |  |  |  |  |  |
| 8220B-0730 |  | Main - UT 125+453 to 125+553 Perm Conc Lining (100m) (rate = 8m/d = 4 bays/week) | 12.5d | 2014-01-07 A | 2014-01-24 A | 8220B-0870 | 100% | 2014-03-08 | 2014-03-22 |  |  | NEW | 822_AB_W010 |  |  |  |  |  |  |  |  |  |  |
| 8220B-0870 |  | Main - UT 125+385 to 125+453 Perm Conc Lining (68m) (rate = 8m/d = 4 bays/week) | 9d | 2014-01-24 A | 2014-02-28 A | 8220B-12560 | 100% | 2014-02-06 | 2014-02-15 |  |  | NEW | 822_AB_W010 |  |  |  |  |  |  |  |  |  |  |
| 8220B-12110 |  | Main - UT 125+619 Construct Head Wall | 12d | 2014-02-05 A | 2014-02-19 A | 8220B-3380 | 100% | 2014-03-03 | 2014-03-17 |  |  | NEW | 822_AB_W010 |  |  |  |  |  |  |  |  |  |  |
| 8220B-12340 |  | Main - 1 week for Lining works at the U/T Cross Passage | 6d | 2014-02-27 A | 2014-03-05 A | 8220B-0730 | 100% | 2014-03-22 | 2014-03-29 |  |  | NEW | 822_AB_W010 |  |  |  |  |  |  |  |  |  |  |
| 8220B-12320 |  | Main - UT 125+619 Construct Divider Wall Splay | 12d | 2017-01-02 | 2017-01-14 | 8220B-12110 |  |  |  | -538d | 0d | NEW |  |  |  |  |  |  |  |  |  |  |  |
|  | 3 | **Invert Slab** |  | 2014-01-02 | 2014-05-13 |  |  |  |  |  |  |  |  |  |  |  |  |  |  |  |  |  |  |
| 8220B-1060 |  | Main - UT 125+353 to 125+453 Invert Slab (100m) (rate = 8m/d) | 13d | 2014-01-02 A | 2014-03-26 A | 8220B-0870 | 100% | 2014-02-11 | 2014-02-26 |  |  | NEW | 822_AB_W010 | C822 | C29B | 05 | 0503 | 9 | TWIN | 822 |  |  |  |
| 8220B-1070 |  | Main - UT 125+453 to 125+553 Invert Slab (100m) (rate = 8m/d) | 12.5d | 2014-03-26 A | 2014-04-10 A | 8220B-1060 | 100% | 2014-04-16 | 2014-04-30 |  |  | NEW | 822_AB_W010 |  |  |  |  |  |  |  |  |  |  |
| 8220B-7800 |  | Main - UT 125+553 to 125+619 Invert Slab (66m) (rate = 8m/d) | 8d | 2014-04-10 A | 2014-05-13 A | 8220B-1070 | 100% | 2014-05-09 | 2014-05-19 |  |  | NEW | 822_AB_W010 |  |  |  |  |  |  |  |  |  |  |
|  | 4 | **Single Track Walkway** |  | 2014-01-04 | 2017-01-28 |  |  |  |  |  |  |  |  |  |  |  |  |  |  |  |  |  |  |
| 8220B-11810 |  | Main - UT Walkway & De-railment kurbs 125+353 to 125+619 (266m) (rate = 45m/d) | 6d | 2014-01-04 A | 2014-06-01 A | 8220B-7800 FS+12d | 100% | 2014-03-27 | 2014-04-03 |  |  | NEW | 822_AB_W010 |  |  |  |  |  |  |  |  |  |  |
| 8220B-11230 |  | Main - 125+619 to 125+799 D/T and U/T Walkway & De-railment Kurb (190m) (rate =45m/d) | 4d | 2017-01-02 | 2017-01-05 | 8220B-11810, 8220B-11800 |  |  |  | -998d | 0d | NEW |  | C822 | C29F | 05 | 0503 | 6 | TWIN | 822 | BB | 2210 | TUNM |
| 8220B-12120 |  | Main - Snagging/Remedials/Repairs prior to Hand Over to C830 | 12d | 2017-01-16 | 2017-01-28 | 8220B-11230, 8220B-12320 |  |  |  | -538d | 0d | NEW |  |  |  |  |  |  |  |  |  |  |  |
|  | 7 | **Northern Upstand Walls, Walkway, Derailment Kerbs** |  | 2014-01-10 | 2017-01-28 |  |  |  |  |  |  |  |  |  |  |  |  |  |  |  |  |  |  |
| 8220B-6080 |  | Main - U/T and D/T 128+055 to 125+799 Walkway & De-railment kurbs (2276m) (rate = 45m/d) | 51d | 2014-01-10 A | 2014-06-01 A | 8220B-12130 | 100% | 2014-03-17 | 2014-05-21 |  |  | NEW | 822_AB_W010 | C822 | C29G | 05 | 0503 | TN04 | TWIN | 822 | BB | 2210 | TUNC |
| 8220B-10880 |  | Main - U/T and D/T 128+055 to 128+955 Walkway & De-railment kurbs (900m)(rate = 45m/d) | 20d | 2014-04-10 A | 2014-06-01 A | 8220B-11690 | 100% | 2014-06-28 | 2014-07-23 |  |  | NEW | 822_AB_W010 | C822 | C29F | 05 | 0503 | 7 | TWIN | 822 | BB | 2210 | TUNM |
| 8220B-11690 |  | Main - Snagging/Remedials/Repairs prior to Hand Over to C830 | 12d | 2017-01-02 | 2017-01-14 | 8220B-6080 |  |  |  | -1018d | 0d | NEW |  |  |  |  |  |  |  |  |  |  |  |
| 8220B-11790 |  | Main - Snagging/Remedials/Repairs prior to Hand Over to C830 | 12d | 2017-01-16 | 2017-01-28 | 8220B-10880 |  |  |  | -1018d | 60d | NEW |  |  |  |  |  |  |  |  |  |  |  |

Notes:
- 8220B-0800: P3 Activity Log Info: ??????????32m / 6m/d??
- 8220B-0810: P3 Activity Log Info: ??????????233m / 6m/d??
- 8220B-2700: P3 Activity Log Info: ??????????233m / 6m/d??
- 8220B-12560: P3 Activity Log Info: ?????????? ??
- 8220B-3380: P3 Activity Log Info: ?????????? ??
- 8220B-0730: P3 Activity Log Info: ?????????? ??
- 8220B-0870: P3 Activity Log Info: ?????????? ??
- 8220B-12110: P3 Activity Log Info: ?????????? ??
- 8220B-12340: P3 Activity Log Info: ?????????? ??
- 8220B-12320: P3 Activity Log Info: ?????????? ??
- 8220B-12120: P3 Activity Log Info: ????????4,900m / 32(m/d) ????
- 8220B-6080: P3 Activity Log Info: ????????3,825m / ??32(m/d)??
- 8220B-11690: P3 Activity Log Info: ????????3,825m / ??32(m/d)??

| ID | WBS | Activity | Type | Duration | Start | Finish | Predecessors | Complete | Planned start | Planned finish | Total float | Free float | Constraint | 822_AB_W010 |
| --- | --- | --- | --- | --- | --- | --- | --- | --- | --- | --- | --- | --- | --- | --- |
|  | 9 | **C830 Permanent Way and Overhead Line Installation North** |  |  | 2017-01-16 | 2017-04-10 |  |  |  |  |  |  |  |  |
| 8220X-90 |  | 830 - Commencement Tunnel Up and Down Track from 125+779 to 128+055 (2276m) | milestone | 0d | 2017-01-16 | 2017-01-16 | 8220B-11690 |  |  |  | -526d | 383.51d |  |  |
| 8220X-0010 |  | 830 - Commencement Tunnel Up and Down Track 125+353 to 125+779 (426m) | milestone | 0d | 2017-01-30 | 2017-01-30 | 8220B-10620, 8220B-7800, 8220B-12120 |  |  |  | -538d | 0d |  |  |
| 8220X-100 |  | 830 - Commencement Tunnel Up and Down Track from 128+055 to 129+955 (1900m) | milestone | 0d | 2017-04-10 | 2017-04-10 | 8220B-11700, 8220B-11790, 8220B-12160 |  |  |  | -598d | 311.51d |  |  |
|  | 7 | **Area 7 : Tai Shu Ha Explosives Magazine** |  |  | 2010-07-02 | 2017-02-20 |  |  |  |  |  |  |  |  |
|  | 1 | **Enabling Works** |  |  | 2010-07-02 | 2010-10-29 |  |  |  |  |  |  |  |  |
| 8220H-0720 |  | TSH - Mobilisation & Site Establishment |  | 10.67d | 2010-07-02 A | 2010-10-29 A | 8220H-0710 | 100% | 2010-07-02 | 2010-07-14 |  |  |  | 822_AB_W010 |
| 8220H-0710 |  | TSH - Initial Site Survey & Record, Tree Survey |  | 10.67d | 2010-07-03 A | 2010-07-30 A |  | 100% | 2010-07-03 | 2010-07-15 |  |  |  | 822_AB_W010 |
| 8220H-0730 |  | TSH - Site Clearance, Site Formation, Excavation |  | 21.33d | 2010-07-05 A | 2010-10-22 A | 8220H-0720 | 100% | 2010-07-05 | 2010-07-29 |  |  |  | 822_AB_W010 |
| 8220H-0770 |  | TSH - Fence & Gate |  | 16.89d | 2010-07-13 A | 2010-08-23 A | 8220H-0740 | 100% | 2010-07-13 | 2010-07-31 |  |  |  | 822_AB_W010 |
|  | 2 | **Structural Works** |  |  | 2010-10-06 | 2017-02-20 |  |  |  |  |  |  |  |  |
| 8220H-0740 |  | TSH - Underground Pipe, Pit & Conduit |  | 20.44d | 2010-10-06 A | 2010-12-06 A | 8220H-0730 | 100% | 2010-10-06 | 2010-10-30 |  |  |  | 822_AB_W010 |
| 8220H-0750 |  | TSH - Structure Construction |  | 29.33d | 2010-10-12 A | 2010-12-10 A | 8220H-0740 | 100% | 2010-10-12 | 2010-11-16 |  |  |  | 822_AB_W010 |
| 8220H-0760 |  | TSH - Building Services |  | 26.67d | 2010-12-11 A | 2011-01-22 A | 8220H-0750, 8220H-0770 FF+10.67d | 100% | 2010-12-11 | 2011-01-15 |  |  |  | 822_AB_W010 |
| 8220H-0780 |  | TSH - Sign, Hard & Soft Landscaping |  | 17.78d | 2010-12-28 A | 2011-01-31 A | 8220H-0750 | 100% | 2010-12-28 | 2011-01-18 |  |  |  | 822_AB_W010 |
| 8220A-5360 |  | TSH - Mines Inspect TSH Magazine & Grant License |  | 24.89d | 2011-01-23 A | 2011-07-28 A | 8220H-0780, 8220H-0760 | 100% | 2011-01-24 | 2011-02-24 |  |  |  | 822_AB_W010 |
| 8220H-1280 |  | Demolish and Resinstate TSH |  | 42.67d | 2017-01-02 | 2017-02-20 | 8220B-12580 |  |  |  | -1036.67d | 83.53d |  |  |
|  | 8 | **Area 8 : So Kwan Wat Explosives Magazine** |  |  | 2010-03-24 | 2017-02-20 |  |  |  |  |  |  |  |  |
|  | 1 | **Enabling Works** |  |  | 2010-03-24 | 2010-06-28 |  |  |  |  |  |  |  |  |
| 8220H-0790 |  | SKW - Initial Site Survey & Record, Tree Survey |  | 10.67d | 2010-03-24 A | 2010-04-06 A |  | 100% | 2010-03-24 | 2010-04-09 |  |  |  | 822_AB_W010 |
| 8220H-0800 |  | SKW - Mobilisation & Site Establishment |  | 10.67d | 2010-03-31 A | 2010-04-13 A | 8220H-0790 SS+5.33d, 8220H-0790 FF+5.33d | 100% | 2010-03-31 | 2010-04-16 |  |  |  | 822_AB_W010 |
| 8220H-0820 |  | SKW - Preparartion Works for Diversion of CLP cables |  | 10.67d | 2010-04-20 A | 2010-04-30 A |  | 100% | 2010-04-20 | 2010-05-01 |  |  | as late as possible | 822_AB_W010 |
| 8220H-0830 |  | SKW - CLP Diversion of Overhead Cables |  | 40d | 2010-04-30 A | 2010-06-28 A | 8220H-0820 | 100% | 2010-04-30 | 2010-06-17 |  |  |  | 822_AB_W010 |
|  | 2 | **Structural Works** |  |  | 2010-05-12 | 2017-02-20 |  |  |  |  |  |  |  |  |
| 8220H-0810 |  | SKW - Site Clearance, Site Formation & Excavavation |  | 32d | 2010-05-12 A | 2010-07-22 A | 8220H-0800 | 100% | 2010-05-12 | 2010-06-19 |  |  |  | 822_AB_W010 |
| 8220H-0880 |  | SKW - Road Widening & New Road |  | 56.89d | 2010-05-19 A | 2010-09-30 A | 8220H-0810 SS | 100% | 2010-05-19 | 2010-07-27 |  |  |  | 822_AB_W010 |
| 8220H-0870 |  | SKW - Fence & Gate |  | 10.67d | 2010-06-02 A | 2010-08-28 A | 8220H-0850 | 100% | 2010-06-02 | 2010-06-14 |  |  |  | 822_AB_W010 |
| 8220H-0840 |  | SKW - Underground Pipe, Pit & Conduit |  | 12.44d | 2010-06-10 A | 2010-06-26 A | 8220H-0810 | 100% | 2010-06-10 | 2010-06-25 |  |  |  | 822_AB_W010 |
| 8220H-0850 |  | SKW - Structure Construction |  | 32d | 2010-06-29 A | 2010-09-25 A | 8220H-0840 FS-5.33d | 100% | 2010-06-29 | 2010-08-05 |  |  |  | 822_AB_W010 |
| 8220H-0890 |  | SKW - Signage, Hard & Soft Landscaping |  | 29.33d | 2010-08-31 A | 2010-10-08 A | 8220H-0810, 8220H-0880 | 100% | 2010-08-31 | 2010-10-06 |  |  |  | 822_AB_W010 |
| 8220H-0860 |  | SKW - Building Services |  | 25.78d | 2010-09-18 A | 2010-10-06 A | 8220H-0850, 8220H-0830, 8220H-0870, 8220H-0890 FF | 100% | 2010-09-18 | 2010-10-21 |  |  |  | 822_AB_W010 |
| 8220A-5740 |  | SKW - Mines Inspect SKW Magazine & Grant License-SY |  | 3.56d | 2010-10-22 A | 2011-01-27 A | 8220H-0860 | 100% | 2010-10-22 | 2010-10-26 |  |  |  | 822_AB_W010 |
| 8220H-1270 |  | SKW - Demolish and Resinstate |  | 42.67d | 2017-01-02 | 2017-02-20 | 8220B-2760 |  |  |  | -1036.67d | 83.53d |  |  |

Notes:
- 8220H-0730: P3 Activity Log Info: Exc 596m3 + ??Fill 1,840m3
- 8220H-0770: P3 Activity Log Info: 245m + ??3nr
- 8220H-0740: P3 Activity Log Info: 245m pipe ??+ 3 pits + 40m conduit
- 8220H-0750: P3 Activity Log Info: 2 x 4.7m x ??2.7m x 2.7m + pillar box + guard / house
- 8220H-0780: P3 Activity Log Info: 2,800m2
- 8220H-0810: P3 Activity Log Info: Exc 2,399m3 + ??Fill 694m3
- 8220H-0880: P3 Activity Log Info: Widen 370m + ??New 320m
- 8220H-0870: P3 Activity Log Info: 414m + ??5nr
- 8220H-0840: P3 Activity Log Info: 341m pipe + ??14 pits + 40m conduit
- 8220H-0850: P3 Activity Log Info: 4 x 4.7m x ??2.7m x 2.7m + pillar box + guard / house
- 8220H-0890: P3 Activity Log Info: 2,000m2

| ID | WBS | Activity | Duration | Start | Finish | Predecessors | Complete | Planned start | Planned finish | Constraint | 822_AB_W010 |
| --- | --- | --- | --- | --- | --- | --- | --- | --- | --- | --- | --- |
|  | 10 | **Area 10 : Kwai Chung Temporary Offices** |  | 2010-03-17 | 2010-08-30 |  |  |  |  |  |  |
|  | 1 | **Enabling Works** |  | 2010-03-17 | 2010-08-30 |  |  |  |  |  |  |
| 8220A-4770 |  | Initial Site Survey | 30.22d | 2010-03-17 A | 2010-04-24 A | 8220A-5025 SS | 100% | 2010-03-17 | 2010-04-26 |  | 822_AB_W010 |
| 8220A-5025 |  | ENG - Apply for and Obtain Excavation Permit for Kwai Chung Office | 26.67d | 2010-03-23 A | 2010-04-30 A |  | 100% | 2010-03-23 | 2010-04-27 | as late as possible | 822_AB_W010 |
| 8220A-4800 |  | ENG : Complete Contractors Accomodation | 34.67d | 2010-04-30 A | 2010-07-26 A | 8220A-6390, 8220A-4810 | 100% | 2010-04-30 | 2010-06-10 |  | 822_AB_W010 |
| 8220A-4810 |  | Provide Transport and Equipment for the Engineer | 10.67d | 2010-08-13 A | 2010-08-30 A | 8220A-5025 SS | 100% | 2010-08-13 | 2010-08-25 |  | 822_AB_W010 |
|  | 2 | **Structural Works** |  | 2010-05-13 | 2010-08-28 |  |  |  |  |  |  |
| 8220A-4860 |  | ENG - Steel Fabrication | 9.78d | 2010-05-13 A | 2010-06-03 A | 8220A-4770 | 100% | 2010-05-13 | 2010-05-25 |  | 822_AB_W010 |
| 8220A-4850 |  | ENG - Concrete Foundation Work | 5.33d | 2010-06-03 A | 2010-06-09 A | 8220A-4860 SS+2.67d | 100% |  |  |  | 822_AB_W010 |
| 8220A-5380 |  | ENG - Erect Steel works/Roof & Wall Panel | 16d | 2010-06-10 A | 2010-08-05 A | 8220A-4850 FF, 8220A-4860 FS-1.78d | 100% | 2010-06-10 | 2010-06-29 |  | 822_AB_W010 |
| 8220A-5390 |  | ENG - E&M Fixing | 19.56d | 2010-07-21 A | 2010-08-24 A | 8220A-5380 SS+6.22d | 100% | 2010-07-21 | 2010-08-12 |  | 822_AB_W010 |
| 8220A-5660 |  | ENG - Internal Fitting Out | 16d | 2010-07-27 A | 2010-08-20 A | 8220A-5390 SS+3.56d | 100% | 2010-07-27 | 2010-08-13 | as late as possible | 822_AB_W010 |
| 8220A-6390 |  | ENG - FSI Installation | 16d | 2010-08-02 A | 2010-08-21 A | 8220A-5660 SS, 8220A-5670 FF, 8220A-6220 FF | 100% | 2010-08-02 | 2010-08-19 |  | 822_AB_W010 |
| 8220A-5670 |  | ENG - Vinyl Tiling for G/F & 1st Floor | 3.56d | 2010-08-12 A | 2010-08-26 A | 8220A-5660 FF, 8220A-6210, 8220A-6220 | 100% | 2010-08-12 | 2010-08-16 |  | 822_AB_W010 |
| 8220A-6210 |  | ENG - Telephone Wiring | 4.44d | 2010-08-14 A | 2010-08-28 A |  | 100% | 2010-08-14 | 2010-08-19 | as late as possible | 822_AB_W010 |
| 8220A-6220 |  | ENG - Computer Cabling | 4.44d | 2010-08-17 A | 2010-08-28 A |  | 100% | 2010-08-17 | 2010-08-21 | as late as possible | 822_AB_W010 |

## Activity codes

| Code | Value | Meaning |
| --- | --- | --- |
| 822_AB_W010 | 822_AB_W010 | 822 As-built W010 |
| L1 : Project | C822 | MTR XRL C822 - Tse Uk Tseun to Shek Yam Tunnels |
| L2 : Phase | B30 | Project Key Dates |
| L2 : Phase | B32 | Project Dates |
| L2 : Phase | B35 | IPS Milestones |
| L2 : Phase | B37 | Contractor (Internal) Milestones |
| L2 : Phase | B40 | TTM Scheme Design & Approval |
| L2 : Phase | B50 | Contractors Permanent Works Design & Approval |
| L2 : Phase | B51 | Contractors Temporary Works Design & Approval |
| L2 : Phase | B55 | Contractural Obligation |
| L2 : Phase | B60 | Major Submissions |
| L2 : Phase | B61 | Specified Plans |
| L2 : Phase | B62 | Access Constraints |
| L2 : Phase | B64 | Permits to Operate |
| L2 : Phase | B65 | Interfacing Works Contractors (DC's) |
| L2 : Phase | B70 | Site Establishment Works |
| L2 : Phase | C10 | Procurement/Manufacturing/Delivery |
| L2 : Phase | C12 | Site Survey/Investigation/Instrumentation |
| L2 : Phase | C15A | Civil Works - Shek Yam Decking |
| L2 : Phase | C16 | Civil Works - Mechanical Excavation |
| L2 : Phase | C17 | Civil Works - Strutting and Lateral Support |
| L2 : Phase | C18 | Noise Barrier |
| L2 : Phase | C19 | Civil Works - Drill & Blast Excavation |
| L2 : Phase | C19B | Tunnel Works - Cross Passage Construction |
| L2 : Phase | C29 | Civil Works - Tunnel Fit Out |
| L2 : Phase | C29A | Civils : Tunnel Fit Out - Kicker & Membrane |
| L2 : Phase | C29B | Civils : Tunnel Fit Out - 1st Invert Prep |
| L2 : Phase | C29C | Civils : Tunnel Fit Out - Perm Conc Lining |
| L2 : Phase | C29D | Civils : Tunnel Fit Out - Suspended Slab |
| L2 : Phase | C29F | Civils : Tunnel Fit out - Centre Wall |
| L2 : Phase | C29G | Civils : Tunnel Fit Out - Derailment Upstand |
| L2 : Phase | C29H | Civils : Tunnel Fit Out - OHVD Duct Wall |
| L2 : Phase | C29I | Civils : Tunnel Fit Out - 1st Invert Slab |
| L2 : Phase | C29J | Civils : Tunnel Fit Out - 2nd Invert Prep |
| L2 : Phase | C29K | Civils : Tunnel Fit Out - 2nd Invert Slab |
| L2 : Phase | C45 | Civil Works - Backfill and Reinstatement |
| L3 : Area | 01 | Area 1 : General / Site Wide |
| L3 : Area | 02 | Area 2 : Pat Heung |
| L3 : Area | 03 | Area 3 : Shing Mun |
| L3 : Area | 04 | Area 4 : Shek Yam |
| L3 : Area | 05 | Area 5 : Northern Tunnel Section |
| L3 : Area | 06 | Area 6 : Southern Tunnel Section |
| L3 : Area | 07 | Area 7 : Tai Shu Ha Magazine (Area 6.11) |
| L3 : Area | 08 | Area 8 : So Kwun Wat Magazine (Area 6.8) |
| L3 : Area | 09 | Area 9 : Tsing Chau Tsai Barging Point |
| L3 : Area | 10 | Ares 10 : Kwai Chung Site Offices |
| L4 : Sub-Area | 0201 | Pat Heung : General |
| L4 : Sub-Area | 0202 | Pat Heung : Ventilation Adit (PHVA) |
| L4 : Sub-Area | 0203 | Pat Heung : Vehical Access Adit (PHVAA) |
| L4 : Sub-Area | 0204 | Pat Heung : Ventilation Building (VB4) |
| L4 : Sub-Area | 0301 | Shing Mun : General |
| L4 : Sub-Area | 0303 | Shing Mun - Cofferdam Construction |
| L4 : Sub-Area | 0305 | Shing Mun - Vertical Vent Shaft |
| L4 : Sub-Area | 0306 | Shing Mun - Ventilation building (VB5) |
| L4 : Sub-Area | 0401 | Shek Yam : General |
| L4 : Sub-Area | 0402 | Shek Yam - Portal and Adit |
| L4 : Sub-Area | 0403 | Shek Yam - Surface Works |
| L4 : Sub-Area | 0501 | Northern Tunnels : General |
| L4 : Sub-Area | 0502 | Northern Tunnels : Drill & Blast Excavation |
| L4 : Sub-Area | 0503 | Northern Tunnels : Tunnel Civil Works |
| L4 : Sub-Area | 0601 | Southern Tunnel : General |
| L4 : Sub-Area | 0602 | Southern Tunnels : Drill & Blast Excavation |
| L4 : Sub-Area | 0603 | Southern Tunnels : Tunnel Civil Works |
| L4 : Sub-Area | 0701 | Tai Shu Ha : General |
| L4 : Sub-Area | 0801 | So Kwan Wat : General |
| L4 : Sub-Area | 0901 | Barging Area : General |
| L4 : Sub-Area | G001 | General |
| L5 : Element | 10 | 10 : Type E&D Connection Ch126+120 to Ch126+045 |
| L5 : Element | 11 | 11 : PHVAA |
| L5 : Element | 14 | 14 : Type E Connection - Ch126+810 to Ch126+835 |
| L5 : Element | 5 | 5 : Ch126+120 to Ch126+810 |
| L5 : Element | 6 | 6 : Ch125+979 to Ch125+618 |
| L5 : Element | 7 | 7 : Ch126+835 to Ch128+823 |
| L5 : Element | 8 | 8 : SB Ch125+353 to Ch125+618 |
| L5 : Element | 9 | 9 : NB Ch125+353 to Ch125+618 |
| L5 : Element | DRV2 | Shek Yam Construction Adit |
| L5 : Element | DRV3 | Main Tunnel - Ch132.532 to Breakthrough > North |
| L5 : Element | DRV7 | Main Tunnel Ch126.052 to Breakthrough > South |
| L5 : Element | DRV8 | Twin Tunnels Ch125.787 to C823 Breakthrough |
| L5 : Element | DRV9 | Main Tunnel Ch125.787 to Ch126.052 > South |
| L5 : Element | GD01 | General |
| L5 : Element | GD02 | Specified Plans |
| L5 : Element | P1 | P1 - Tunnel Lining |
| L5 : Element | P2 | P2 - Tunnel Internal Structures |
| L5 : Element | P3 | P3 - Tunnel Alternative Design |
| L5 : Element | PH07 | Pat Heung Tunnel Ventilation System |
| L5 : Element | SY01 | Shek Yam - Aquased Facility |
| L5 : Element | SY02 | Shek Yam - Car Wash Facility |
| L5 : Element | SY03 | Shek Yam - 2 Story Site Office |
| L5 : Element | SY04 | Shek Yam - Stockpile Facility |
| L5 : Element | SY05 | Shek Yam - Workshop |
| L5 : Element | SY06 | Shek Yam - Retaining Wall |
| L5 : Element | SY07 | Shek Yam - Ventilation System |
| L5 : Element | SY09 | Shek Yam CLP SubStation |
| L5 : Element | SY10 | Shek Yam Drainage |
| L5 : Element | SY12 | Shek Yam - Steel Decking |
| L5 : Element | SY13 | Noise Barrier |
| L5 : Element | T2 | T2 - Tunnel Internal Structures |
| L5 : Element | T3 | T3 - Portal |
| L5 : Element | T4 | T4 - Site Formation, Slope, Ground Works, ELS |
| L5 : Element | T9 | Tunnel Temporary Support |
| L5 : Element | TC81 | Tunnel Cross Passage |
| L5 : Element | TN04 | Tunnel Fit-Out |
| L6 : Sub-Element | 01 | Permanent Tunnel Lining |
| L6 : Sub-Element | 04 | Safety, Quality & Environmental |
| L6 : Sub-Element | 05 | Professional Indemnity Insurance |
| L6 : Sub-Element | 07 | Operations and Maintenance Manuals |
| L6 : Sub-Element | 08 | Environmental monitoring |
| L6 : Sub-Element | 11 | Engineers Site Accomodation |
| L6 : Sub-Element | 13 | Quality Plan |
| L6 : Sub-Element | 14 | Safety plan |
| L6 : Sub-Element | 15 | Planning & Programming |
| L6 : Sub-Element | 16 | Waste management Plan |
| L6 : Sub-Element | 19 | Method of Construction |
| L6 : Sub-Element | 20 | Geotechnical Instrumentation & Monitoring Plan |
| L6 : Sub-Element | 28 | System Assurance Plan |
| L6 : Sub-Element | 35 | Site Plan |
| L6 : Sub-Element | 36 | Sub Contract Management Plan |
| L6 : Sub-Element | 37 | Design for Safety and Construction |
| L6 : Sub-Element | 38 | Noise Management Plan |
| L6 : Sub-Element | 39 | Monitoring & Emergency Responce |
| L6 : Sub-Element | 40 | Vibration Management Plan |
| L6 : Sub-Element | 41 | Submission Schedule |
| L6 : Sub-Element | 42 | EPD Permits |
| L6 : Sub-Element | 67 | Major Procurement Items |
| L6 : Sub-Element | A1 | Area 1 - Gridline A to F |
| L6 : Sub-Element | A2 | Area 2 - Gridline F to I |
| L6 : Sub-Element | A3 | Area 3 - Gridline 10 to 18 |
| L6 : Sub-Element | A4 | Area 4 - Gridline 1 to 9 |
| L6 : Sub-Element | A5 | Area 5 - Gridline 0 to 23 |
| L6 : Sub-Element | ACCC | Site Area Access |
| L6 : Sub-Element | BIFI | Bifurcation Zone |
| L6 : Sub-Element | CCAM | Cost Center A - Milestones |
| L6 : Sub-Element | CCBM | Cost Center B - Milestones |
| L6 : Sub-Element | CCCM | Cost Center C - Milestones |
| L6 : Sub-Element | CCDM | Cost Center D - Milestones |
| L6 : Sub-Element | CCEM | Cost Center E - Milestones |
| L6 : Sub-Element | CCFM | Cost Center F - Milestones |
| L6 : Sub-Element | CCGM | Cost Center G - Milestones |
| L6 : Sub-Element | CCHM | Cost Center H : Milestones |
| L6 : Sub-Element | COMB | Combined Single Tunnel/Vent Adit |
| L6 : Sub-Element | GEN | General |
| L6 : Sub-Element | KD | Project Key Dates |
| L6 : Sub-Element | NB1 | Noise Barrier |
| L6 : Sub-Element | NB2 | Noise Barrier Extension |
| L6 : Sub-Element | P01 | 21 : Perm Lining Twin Track Tunnel |
| L6 : Sub-Element | P03 | 17 : Connection btw PHVAA & Junction PH1 |
| L6 : Sub-Element | P04 | 18 : Connection btw PHVA & Junction PH3A2 |
| L6 : Sub-Element | P06 | 16 : Perm Lining for EAP & Adit Junction |
| L6 : Sub-Element | P07 | 24 : Internal Structure for Shing Mun EAP Adit |
| L6 : Sub-Element | P11 | 19 :Interface with 823A (Undrained Mined Tunnel) |
| L6 : Sub-Element | P12 | 14 : Interface with 821 (Drained D&B Tunnel) |
| L6 : Sub-Element | P13 | Shek Yam Near Portal Section |
| L6 : Sub-Element | P15 | 15 : Perm Lining for Main Tunnel w/OHVD |
| L6 : Sub-Element | P16 | 25 : Internal Structure for Bifircation Tunnel |
| L6 : Sub-Element | P17 | 20 : Permanent Lining for Bifircation Tunnel |
| L6 : Sub-Element | P18 | 26 : Internal Structure for Tunnels with Nozzles |
| L6 : Sub-Element | P19 | 91 : Tunnel Alternative Ventilation Design |
| L6 : Sub-Element | P23 | 23 : Internal Structure for Typical Main Tunnel |
| L6 : Sub-Element | PDPD | Project Dates |
| L6 : Sub-Element | PDPO | Schedule of Power on Date |
| L6 : Sub-Element | PDSI | Works Required for Statutory Inspection |
| L6 : Sub-Element | PDTA | Schedule of Closing Temp Tunnel Access Openings |
| L6 : Sub-Element | SING | Single Tunnel |
| L6 : Sub-Element | T1 | 1 : Temp Support for SY Adit Portal |
| L6 : Sub-Element | T10 | 10 : Temp Support btw Tunnel, 823A & XP |
| L6 : Sub-Element | T11 | 11 : Temp Support - Birfircation and and Nozzle |
| L6 : Sub-Element | T12 | 12 : Temp Support at Twin Track crossover |
| L6 : Sub-Element | T13 | 13 : Design of 823A and 821 Bulkheads |
| L6 : Sub-Element | T2 | 2 : Temp Support btw Adit and Tunnel |
| L6 : Sub-Element | T3 | 3 : Temp Support btw Tunnel and C821 |
| L6 : Sub-Element | T32 | 27 : Shek Yam Temp Site Formation Design |
| L6 : Sub-Element | T33 | 30 : Shek Yam Noise Barrier |
| L6 : Sub-Element | T34 | 28 : Shek Yam Blast Door/Screen Design |
| L6 : Sub-Element | T35 | 29 : Shek Yam Temp Steel Decking Design |
| L6 : Sub-Element | T4 | 4 : Temp Support for Tunnel with OHVD |
| L6 : Sub-Element | T42 | 37 : Shing Mun Site Formation (Slope & Butress) |
| L6 : Sub-Element | T43 | 38 : Pat Heung - Site Formation Design |
| L6 : Sub-Element | T44 | 31 : Shing Mun Cofferdam and ELS Design |
| L6 : Sub-Element | T45 | 38A : Pat Heung - Stream Course Diversion |
| L6 : Sub-Element | T46 | 41 : Pat Heung - Working Platform |
| L6 : Sub-Element | T47 | 42 : Pat Heung - Permanent Access Road Design |
| L6 : Sub-Element | T48 | 39 : Pat Heung - Temporary Cofferdam and ELS |
| L6 : Sub-Element | T49 | 40 : Pat Heung - Noise Barriers |
| L6 : Sub-Element | T5 | 5 : Temp Support btw EAP and Main Tunnel |
| L6 : Sub-Element | T6 | 6 : Temp Support btw PHVAA and Soft Ground Tunne |
| L6 : Sub-Element | T63 | 45 : SKW - Site Formation Design |
| L6 : Sub-Element | T64 | 45A : SKW - Structural & BS Design |
| L6 : Sub-Element | T65 | 46 : TSH - Site Formation Design |
| L6 : Sub-Element | T66 | 46A : TSH - Structureal and BS Design |
| L6 : Sub-Element | T67 | 46B : Fire Services Design Report |
| L6 : Sub-Element | T68 | 46B : Fire Services Design Report |
| L6 : Sub-Element | T7 | 7 : Temp Support btw PHVAA and Tunnel |
| L6 : Sub-Element | T8 | 8 : Temp Support btw PHVA and Soft Ground Tunnel |
| L6 : Sub-Element | T82 | 43 : Blast Door/Screen PHVAA |
| L6 : Sub-Element | T83 | 44 : Blast Door/Screen - PHVA |
| L6 : Sub-Element | T84 | 42A - Excavation and ELS for Drainage in KSR |
| L6 : Sub-Element | T85 | 32 : Temp Support for Circular Shaft |
| L6 : Sub-Element | T86 | 35 : Temp Noise Enlosure and Blast Door |
| L6 : Sub-Element | T87 | 36 : Foundation of Gantry/Tower Crane |
| L6 : Sub-Element | T88 | ABWF Works - Pat Heung VB4 |
| L6 : Sub-Element | T89 | ABWF Works - Pat Heung VA Adit & Vent Adit |
| L6 : Sub-Element | T9 | 9 : Temp Support btw PHVA and Tunnel |
| L6 : Sub-Element | T90 | Green Roof Works - Pat Heung VB4 |
| L6 : Sub-Element | T91 | Green Roof Works - Shing Mun VB5 |
| L6 : Sub-Element | TWIN | Twin Tunnels |
| L6 : Sub-Element | V01 | BAR - Design Principle |
| L6 : Sub-Element | V02 | BAR - Shek Yam Construction Adit |
| L6 : Sub-Element | V03 | BAR - Shing Mun VB5 Shaft & EAP |
| L6 : Sub-Element | V04 | BAR - Main Tunnel CH132100 to CH133000 - Vol 4A |
| L6 : Sub-Element | V05 | BAR - Main Tunnel CH132100 to CH130800 - Vol 4B |
| L6 : Sub-Element | V06 | BAR - Main Tunnel CH130800 to CH126990 - Vol 4C |
| L6 : Sub-Element | V07 | BAR - Main Tunnel CH126100 to CH126990 - Vol 4D |
| L6 : Sub-Element | V08 | BAR - Main Tunnel CH126100 to CH125360 - Vol 4E |
| L6 : Sub-Element | V09 | BAR - Pat Heung VA Adit and Vent Adit - Vol 5 |
| L6 : Sub-Element | VCCC | Site Area Vacate |
| L7 : System | 00 | General |
| L7 : System | 201 | Shek Yam Construction Adit D&B |
| L7 : System | 202 | Shek Yam Crusher Adit/Feeder Apron D&B |
| L7 : System | 203 | C8203 - Construction Stage mobile Phone Network |
| L7 : System | 303 | Shek Yam Driving North from Combined Section |
| L7 : System | 304 | Shek Yam Noise Barrier |
| L7 : System | 305 | Shek Yam Noise Barrier Portal Extention |
| L7 : System | 701 | Pat Heung Combined Driving South |
| L7 : System | 702 | Pat Heung Driving South from Combined Section |
| L7 : System | 801 | C801 - Tree Transplant/Felling |
| L7 : System | 80A | Pat Heung VA Adit Driving North to Twin Tunnels |
| L7 : System | 80B | Driving North Single SB Tunnel |
| L7 : System | 80C | Driving North Single NB Tunnel |
| L7 : System | 823 | C823A - Kam Tin Tunnels |
| L7 : System | 827 | C827 - Cross Passage Doors |
| L7 : System | 830 | C830 - Trackwork & Overhead Line System |
| L7 : System | 841 | C841A - Signalling System - Trackside |
| L7 : System | 842 | C841B - Signalling System - Train Boune |
| L7 : System | 843 | C843 - Tunnel Environmental Control Systems |
| L7 : System | 844 | C844 - Power Supply by CLP |
| L7 : System | 845 | C845 - Power Supply System |
| L7 : System | 846 | C846 - Trackside Auxiliaries |
| L7 : System | 847 | C847 - Lifts |
| L7 : System | 849 | C849 - Radio Communication Systems |
| L7 : System | 850 | C850 - Passenger Mobile Communication System |
| L7 : System | 851 | C851 - Fixed Communication System |
| L7 : System | 853 | C853 - Main Control Systems |
| L7 : System | 854 | C854 - Security Access Management System (SAMS) |
| L7 : System | 855 | C855 - Building Services for TVS & ERS |
| L7 : System | 901 | Pat Heung VA Adit Driving South to Combined |
| L7 : System | ACO | Designated Contractor Access Opening |
| L7 : System | EQ1 | Waste Water Treatment System |
| L7 : System | EQ3 | Conveyor System |
| L7 : System | EQ4 | Drilling Jumbos |
| L7 : System | EQ5 | Tunnel Loaders |
| L7 : System | EQ6 | Shotcrete Batching Plant |
| L7 : System | EQ7 | Tunnel Ventilation System |
| L7 : System | EQ8 | Rock Crushing Plant |
| L7 : System | EQ9 | Dump Trucks |
| L7 : System | EQA | Excavators |
| L7 : System | EQB | Pipe Piles |
| L7 : System | MIL | IPS Milestones |
| L7 : System | SB | Southbound Tunnel |
| L7 : System | ST1 | Design - Stage 1 - Approval in Principal |
| L7 : System | ST2 | Design - Stage 2 - Detailed Design Submissions |
| L7 : System | ST3 | Design - Stage 3 - Issue for Construction |
| L7 : System | T01 | TTM For Site Access |
| L7 : System | T02 | TTM for Temporary Foul Sewer |
| L7 : System | T03 | TTM for Shek Yam Geotechnical Instrumentation |
| L7 : System | T04 | TTM for Shek Yam Site Access |
| L7 : System | T05 | TTM for barging Point Site Access |
| L7 : System | T06 | TTM for Barging Point Access Road - Sunny Bay Rd |
| L7 : System | T07 | TTM for Haul Route Operations at Sunny Bay Rd |
| L7 : System | T08 | TTM for Explosives Magazine Site Access |
| L7 : System | T09 | TTM for Shing Mun (6 Stages) |
| L7 : System | T10 | TTM for Pat Heung Site Access |
| L7 : System | T11 | TTM for Shek Yam Noise Barrier |
| L8: Section | A | Breakthrough Point |
| L8: Section | B | Main Tunnels |
| L8: Section | C | Shek Yam Temporary Adit |
| L8: Section | D | Crusher Cavern & Adits |
| L8: Section | E | Conveyor/Crusher |
| M1: Contracts | 801 | 801 - Tree Transplanting |
| M1: Contracts | 822 | 822 - Tse Uk Tseun to Shek Yam Tunnels |
| M2 : Cost Centre | AA | CCA - Preliminaries |
| M2 : Cost Centre | BB | CCB - Pat Heung to Shek Yam Tunnels |
| M2 : Cost Centre | CC | CCC - Adit Connection btw VB4 & Track Alignment |
| M2 : Cost Centre | DD | CCD - Pat Heung Ventilation Building (VB4) |
| M2 : Cost Centre | EE | CCE - Adits Connecting Shing Mun Vent Shaft |
| M2 : Cost Centre | FF | CCF - Shing Mun EAP & Vent Shaft |
| M2 : Cost Centre | GG | CCG - Shing Mun Vent Building (VB5) |
| M2 : Cost Centre | HH | CCH - Associated Works |
| M3 : Works Area | 61 | Works Area 6.1 |
| M3 : Works Area | 613 | Works Area 6.13 |
| M3 : Works Area | 71 | Works Area 7.1 |
| M3 : Works Area | 73 | Works Area 7.3 |
| M3 : Works Area | 74 | Works Area 7.4 |
| M3 : Works Area | 85 | Works Area 8.5 |
| M4 : Location | 2210 | 822 - Drill and Blast Tunnels |
| M4 : Location | 2220 | VB5 - Shing Mun Ventilation Building |
| M4 : Location | 2230 | VB4 - Pat Heung Ventilation Building |
| M4 : Location | 2240 | Shek Yam Adit |
| M4 : Location | 2260 | Shing Mun EAP Adit |
| M4 : Location | 2270 | Pat Heung Ventilation Adit |
| M4 : Location | 2280 | Pat Heung Vehicular Access Adit |
| M4 : Location | 3010 | Magazine Site - So Kwun Wai |
| M4 : Location | 3140 | Barging Point - Tsing Chau Wan |
| M5 :Sub-Location | CP | Cross Passages |
| M5 :Sub-Location | TUNC | Tunnels - Combined Vent/Tunnel |
| M5 :Sub-Location | TUNM | Tunnels - Single Twin Track |
| M5 :Sub-Location | TUNN | Tunnels - Northbound |
| M5 :Sub-Location | TUNS | Tunnels - Southbound |
| M6 : Areas/Rooms | C010 | Design 7 Approval |
| M6 : Areas/Rooms | C020 | Preparation/Enabling/Utilities |
| M6 : Areas/Rooms | C030 | Procurement/Manufacture/Delivery |
| M6 : Areas/Rooms | C040 | TTMS Implementation |
| M6 : Areas/Rooms | C070 | Excavation |
| M6 : Areas/Rooms | C080 | Structural Works |
| M6 : Areas/Rooms | C090 | Tunnelling Works |
| Stef Temp A1 | 3MRP | 3 month rolling Prog |
| Stef Temp A1 | LINk | LINK STRUCTURE |
| Stef Temp A1 | NEW | NEW SORT |
| Stef Temp A1 | SM | Shing Mun |
