,task_id,proj_id,wbs_id,clndr_id,est_wt,phys_complete_pct,rev_fdbk_flag,lock_plan_flag,auto_compute_act_flag,complete_pct_type,task_type,duration_type,review_type,status_code,task_code,task_name,rsrc_id,total_float_hr_cnt,free_float_hr_cnt,remain_drtn_hr_cnt,act_work_qty,remain_work_qty,target_work_qty,target_drtn_hr_cnt,target_equip_qty,act_equip_qty,remain_equip_qty,cstr_date,act_start_date,act_end_date,late_start_date,late_end_date,expect_end_date,early_start_date,early_end_date,restart_date,reend_date,target_start_date,target_end_date,review_end_date,rem_late_start_date,rem_late_end_date,cstr_type,priority_type,suspend_date,resume_date,float_path,float_path_order,guid,tmpl_guid,cstr_date2,cstr_type2,driving_path_flag,act_this_per_work_qty,act_this_per_equip_qty,external_early_start_date,external_late_end_date,create_date,update_date,create_user,update_user
0,49427827,751235,10651456,1227199,1,100,N,N,N,CP_Drtn,TT_Task,DT_FixedDUR2,RV_OK,TK_Complete,823A-PRE-SPM-1060,Implement and Maintain Specified Plans and satisfactorily confirmed by Engineer for 2nd audit,,,,0,0,0,0,1160,0,0,0,,2011-01-29 08:00,2011-07-29 18:00,2017-06-12 18:00,2017-06-12 18:00,,2017-01-01 00:00,2017-01-01 00:00,,,2011-01-29 08:00,2011-07-29 18:00,,,,,PT_Normal,,,,,87VVStIDSpStW5ZMcuiw+Q,+DpYIIdl8UKBC/AACk8KYw,,,N,0,0,,,2017-01-24 14:41,2017-01-24 15:36,CLEMENTL,CLEMENTL
1,49427828,751235,10651456,1227199,1,100,N,N,N,CP_Drtn,TT_Task,DT_FixedDUR2,RV_OK,TK_Complete,823A-PRE-SPM-1070,Implement and Maintain Specified Plans and satisfactorily confirmed by Engineer for 3rd audit,,,,0,0,0,0,1176,0,0,0,,2011-07-30 08:00,2012-01-27 18:00,2017-06-12 18:00,2017-06-12 18:00,,2017-01-01 00:00,2017-01-01 00:00,,,2011-07-30 08:00,2012-01-27 18:00,,,,,PT_Normal,,,,,DTAf1oOoQ+m1efOG0q1cgg,wlxpv6albUGDAt2YDyue+Q,,,N,0,0,,,2017-01-24 14:41,2017-01-24 15:36,CLEMENTL,CLEMENTL
2,49427829,751235,10651456,1227199,1,100,N,N,N,CP_Drtn,TT_Task,DT_FixedDUR2,RV_OK,TK_Complete,823A-PRE-SPM-1080,Implement and Maintain Specified Plans and satisfactorily confirmed by Engineer for 4th audit,,,,0,0,0,0,1184,0,0,0,,2012-01-28 08:00,2012-07-27 18:00,2017-06-12 18:00,2017-06-12 18:00,,2017-01-01 00:00,2017-01-01 00:00,,,2012-01-28 08:00,2012-07-27 18:00,,,,,PT_Normal,,,,,LJVImFMrSIO8o6avvaj8zg,0W+mrwgGS0+i0isauSFowQ,,,N,0,0,,,2017-01-24 14:41,2017-01-24 15:36,CLEMENTL,CLEMENTL
3,49427830,751235,10651456,1227199,1,100,N,N,N,CP_Drtn,TT_Task,DT_FixedDUR2,RV_OK,TK_Complete,823A-PRE-SPM-1090,Implement and Maintain Specified Plans and satisfactorily confirmed by Engineer for 5th audit,,,,0,0,0,0,1200,0,0,0,,2012-07-28 08:00,2013-01-25 18:00,2017-06-12 18:00,2017-06-12 18:00,,2017-01-01 00:00,2017-01-01 00:00,,,2012-07-28 08:00,2013-01-25 18:00,,,,,PT_Normal,,,,,swogCIfGRuS/D880nkkyzw,RMZehi3glU+FKU7P0QW8Iw,,,N,0,0,,,2017-01-24 14:41,2017-01-24 15:36,CLEMENTL,CLEMENTL
4,49427831,751235,10651456,1227199,1,100,N,N,N,CP_Drtn,TT_Task,DT_FixedDUR2,RV_OK,TK_Complete,823A-PRE-SPM-1100,Implement and Maintain Specified Plans and satisfactorily confirmed by Engineer for 6th audit,,,,0,0,0,0,1160,0,0,0,,2013-01-26 08:00,2013-07-26 18:00,2017-06-12 18:00,2017-06-12 18:00,,2017-01-01 00:00,2017-01-01 00:00,,,2013-07-02 08:00,2013-12-20 18:00,,,,,PT_Normal,,,,,3NDzM8h8SIeQ8Kf1niOq3g,J3xnl3S6mUyWrG5use6O5Q,,,N,0,0,,,2017-01-24 14:41,2017-01-24 15:36,CLEMENTL,CLEMENTL
5,49427832,751235,10651456,1227199,1,100,N,N,N,CP_Drtn,TT_Task,DT_FixedDUR2,RV_OK,TK_Complete,823A-PRE-SPM-1110,Implement and Maintain Specified Plans and satisfactorily confirmed by Engineer for 7th audit,,,,0,0,0,0,1200,0,0,0,,2013-07-27 08:00,2014-01-24 18:00,2017-06-12 18:00,2017-06-12 18:00,,2017-01-01 00:00,2017-01-01 00:00,,,2013-11-28 08:00,2014-06-05 18:00,,,,,PT_Normal,,,,,lT/pLA4vSKaMq1z0G1TbVA,0lJJ7LFGWEmDG9lFKfexGg,,,N,0,0,,,2017-01-24 14:41,2017-01-24 15:36,CLEMENTL,CLEMENTL
6,49427833,751235,10651456,1227199,1,100,N,N,N,CP_Drtn,TT_Task,DT_FixedDUR2,RV_OK,TK_Complete,823A-PRE-SPM-1120,Health and Safety Plan - Prepare and submit [G3.6.1],,,,0,0,0,0,480,0,0,0,,2010-07-19 08:00,2010-09-27 18:00,2017-06-12 18:00,2017-06-12 18:00,,2017-01-01 00:00,2017-01-01 00:00,,,2010-07-19 08:00,2010-09-27 18:00,,,,,PT_Normal,,,,,HBTpFRazQ+6UvZqKfoCj/w,bvel3dBBnkWK5Vash1KdHg,,,N,0,0,,,2017-01-24 14:41,2017-01-24 15:36,CLEMENTL,CLEMENTL
7,49427834,751235,10651456,1227199,1,100,N,N,N,CP_Drtn,TT_Task,DT_FixedDUR2,RV_OK,TK_Complete,823A-PRE-SPM-1130,System Assurance Plan - Prepare and submit for approval [PS Appendix P3.1],,,,0,0,0,0,224,0,0,0,,2010-07-19 08:00,2010-08-19 18:00,2017-06-12 18:00,2017-06-12 18:00,,2017-01-01 00:00,2017-01-01 00:00,,,2010-07-19 08:00,2010-08-19 18:00,,,,,PT_Normal,,,,,p5cnrtsWTnyZppQGqKxASQ,FYcyiYiezUmiaGtaNPbHAQ,,,N,0,0,,,2017-01-24 14:41,2017-01-24 15:36,CLEMENTL,CLEMENTL
8,49427835,751235,10651456,1227199,1,100,N,N,N,CP_Drtn,TT_Task,DT_FixedDUR2,RV_OK,TK_Complete,823A-PRE-SPM-1140,System Assurance Plan - Approval period,,,,0,0,0,0,224,0,0,0,,2010-08-20 08:00,2010-09-21 18:00,2017-06-12 18:00,2017-06-12 18:00,,2017-01-01 00:00,2017-01-01 00:00,,,2010-08-20 08:00,2010-09-21 18:00,,,,,PT_Normal,,,,,4afuOJ4GRyeCkaO513KXnQ,6BRyILxiQkysg+zAfWre+Q,,,N,0,0,,,2017-01-24 14:41,2017-01-24 15:36,CLEMENTL,CLEMENTL
9,49427836,751235,10651456,1227199,1,100,N,N,N,CP_Drtn,TT_Task,DT_FixedDUR2,RV_OK,TK_Complete,823A-PRE-SPM-1150,Design for Safety & Constructability Plan - Prepare and submit for approval [PS37.1],,,,0,0,0,0,224,0,0,0,,2010-07-19 08:00,2010-08-19 18:00,2017-06-12 18:00,2017-06-12 18:00,,2017-01-01 00:00,2017-01-01 00:00,,,2010-07-19 08:00,2010-08-19 18:00,,,,,PT_Normal,,,,,mfPBvf+nTy20pd/yVlvkLQ,iKTcBspQz0OeDdN6+bJkIw,,,N,0,0,,,2017-01-24 14:41,2017-01-24 15:36,CLEMENTL,CLEMENTL
10,49427837,751235,10651456,1227199,1,100,N,N,N,CP_Drtn,TT_Task,DT_FixedDUR2,RV_OK,TK_Complete,823A-PRE-SPM-1160,Design for Safety & Constructability Plan - Approval period,,,,0,0,0,0,224,0,0,0,,2010-08-20 08:00,2010-09-21 18:00,2017-06-12 18:00,2017-06-12 18:00,,2017-01-01 00:00,2017-01-01 00:00,,,2010-08-20 08:00,2010-09-21 18:00,,,,,PT_Normal,,,,,3f6PKqIFQJK/lQpiNtVvDw,t4ZWMLqa1kaZh1XL6iymEA,,,N,0,0,,,2017-01-24 14:41,2017-01-24 15:36,CLEMENTL,CLEMENTL
11,49427838,751235,10651456,1227199,1,100,N,N,N,CP_Drtn,TT_Task,DT_FixedDUR2,RV_OK,TK_Complete,823A-PRE-SPM-1050,Implement and Maintain Specified Plans and satisfactorily confirmed by Engineer for 1st audit,,,,0,0,0,0,768,0,0,0,,2010-10-05 08:00,2011-01-28 18:00,2017-06-12 18:00,2017-06-12 18:00,,2017-01-01 00:00,2017-01-01 00:00,,,2010-10-05 08:00,2011-01-28 18:00,,,,,PT_Normal,,,,,xZdntjLNRNq+aOKA3IwYHQ,lrgkABIJUUeEYt+1FhVqeA,,,N,0,0,,,2017-01-24 14:41,2017-01-24 15:36,CLEMENTL,CLEMENTL
12,49427839,751235,10651456,1227199,1,100,N,N,N,CP_Drtn,TT_Task,DT_FixedDUR2,RV_OK,TK_Complete,823A-PRE-SPM-1010,Environmental Management Plan - Prepare and submit for approval [GS5.1.10],,,,0,0,0,0,224,0,0,0,,2010-07-19 08:00,2010-08-19 18:00,2014-10-11 18:00,2014-10-11 18:00,,2017-01-01 00:00,2017-01-01 00:00,,,2010-07-19 08:00,2010-08-19 18:00,,,,,PT_Normal,,,,,iMcp6fUSRfq/nZ7imOqXgQ,skr2m800HkW+2aHFscRUSQ,,,N,0,0,,,2017-01-24 14:41,2017-01-24 14:53,CLEMENTL,CLEMENTL
13,49427840,751235,10651456,1227199,1,100,N,N,N,CP_Drtn,TT_Task,DT_FixedDUR2,RV_OK,TK_Complete,823A-PRE-SPM-1020,Environmental Management Plan - Approval period,,,,0,0,0,0,296,0,0,0,,2010-08-20 08:00,2010-10-04 18:00,2014-10-11 18:00,2014-10-11 18:00,,2017-01-01 00:00,2017-01-01 00:00,,,2010-08-20 08:00,2010-10-04 18:00,,,,,PT_Normal,,,,,APSG2Ki7Scar+BowvxGkxA,m0nwmipdJE68FIPjGrOKLA,,,N,0,0,,,2017-01-24 14:41,2017-01-24 14:53,CLEMENTL,CLEMENTL
14,49427841,751235,10651456,1227199,1,100,N,N,N,CP_Drtn,TT_Task,DT_FixedDUR2,RV_OK,TK_Complete,823A-PRE-SPM-1030,Quality Plan - Prepare and submit for approval [GS9.2.1],,,,0,0,0,0,224,0,0,0,,2010-07-19 08:00,2010-08-19 18:00,2017-06-12 18:00,2017-06-12 18:00,,2017-01-01 00:00,2017-01-01 00:00,,,2010-07-19 08:00,2010-08-19 18:00,,,,,PT_Normal,,,,,3nAWs0HoR7W2i8hRsbIkXA,yv4NNRGhaU6eKXJpttjNMg,,,N,0,0,,,2017-01-24 14:41,2017-01-24 15:36,CLEMENTL,CLEMENTL
15,49427842,751235,10651456,1227199,1,100,N,N,N,CP_Drtn,TT_Task,DT_FixedDUR2,RV_OK,TK_Complete,823A-PRE-SPM-1040,Quality Plan - Approval period,,,,0,0,0,0,296,0,0,0,,2010-08-20 08:00,2010-10-04 18:00,2017-06-12 18:00,2017-06-12 18:00,,2017-01-01 00:00,2017-01-01 00:00,,,2010-08-20 08:00,2010-10-04 18:00,,,,,PT_Normal,,,,,hcQ43FcrSYKeCZmzCp9NWw,c3envuwlnUKn/h0xzVWMHg,,,N,0,0,,,2017-01-24 14:41,2017-01-24 15:36,CLEMENTL,CLEMENTL
16,49427843,751235,10651457,1227199,1,100,N,N,N,CP_Drtn,TT_Task,DT_FixedDUR2,RV_OK,TK_Complete,823A-PRE-OMABD-1010,Prepare and Submit Draft Operation and Maintenance Manual [PS33.1],,,,0,0,0,0,744,0,0,0,,2014-07-28 08:00,2016-06-01 18:00,2014-07-24 08:00,2014-07-24 08:00,,2017-01-01 00:00,2017-01-01 00:00,,,2015-08-24 08:00,2015-12-12 18:00,,,,,PT_Normal,,,,,P2X44SECQdSb1B7uDcfKiA,AX0Kov56p0+iltfQt6BF6g,,,Y,0,0,,,2017-01-24 14:41,2017-01-24 15:36,CLEMENTL,CLEMENTL
17,49427844,751235,10651457,1227199,1,50,N,N,N,CP_Drtn,TT_Task,DT_FixedDUR2,RV_OK,TK_Active,823A-PRE-OMABD-1020,Review and approval period of Draft Operation and Maintenance Manual,,-5808,0,120,0,0,0,240,0,0,0,,2016-06-02 08:00,,2014-07-24 08:00,2014-08-09 18:00,,2017-01-02 08:00,2017-01-18 18:00,2017-01-02 08:00,2017-01-18 18:00,2016-08-10 08:00,2016-09-13 18:00,,2014-07-24 08:00,2014-08-09 18:00,,PT_Normal,,,,,plpA4SsFQsaJT48bM6u/CQ,TcVOHI5KtkOa7G22og0yQw,,,Y,0,0,,,2017-01-24 14:41,2017-01-24 15:36,CLEMENTL,CLEMENTL
18,49427845,751235,10651457,1227199,1,20,N,N,N,CP_Drtn,TT_Task,DT_FixedDUR2,RV_OK,TK_Active,823A-PRE-OMABD-1030,Prepare and Submit Final Operation and Maintenance Manual [PS33.1],,-5600,0,824,0,0,0,1032,0,0,0,,2016-06-02 08:00,,2014-09-11 08:00,2015-01-14 18:00,,2017-01-19 08:00,2017-05-18 18:00,2017-01-19 08:00,2017-05-18 18:00,2016-09-14 08:00,2017-02-16 18:00,,2014-09-11 08:00,2015-01-14 18:00,,PT_Normal,,,,,zjd6qB+wTAGrCid1Rks9bQ,z7rJ9IqGaEeV7ZWjnFvKZg,,,Y,0,0,,,2017-01-24 14:41,2017-01-24 15:36,CLEMENTL,CLEMENTL
19,49427846,751235,10651457,1227199,1,38,N,N,N,CP_Drtn,TT_Task,DT_FixedDUR2,RV_OK,TK_Active,823A-PRE-OMABD-1040,Provide Engineer with As-Built Drawing for the Whole of the Works [PS33.2],,-5600,0,104,0,0,0,168,0,0,0,,2016-07-02 08:00,,2015-01-15 08:00,2015-01-29 18:00,,2017-05-19 08:00,2017-06-02 18:00,2017-05-19 08:00,2017-06-02 18:00,2016-11-21 08:00,2016-12-14 18:00,,2015-01-15 08:00,2015-01-29 18:00,,PT_Normal,,,,,kfxx0AH1QxWQQoRl6TnGrg,O7wMrOl5VEaivxRs+LryFA,,,Y,0,0,,,2017-01-24 14:41,2017-01-24 15:36,CLEMENTL,CLEMENTL
20,49427847,751235,10651457,1227199,1,0,N,N,N,CP_Drtn,TT_Task,DT_FixedDUR2,RV_OK,TK_NotStart,823A-PRE-OMABD-1050,Provide Engineer with Asset Registration Information [PS33.3],,-5600,0,168,0,0,0,168,0,0,0,,,,2015-01-15 08:00,2015-02-07 18:00,,2017-05-19 08:00,2017-06-12 18:00,2017-05-19 08:00,2017-06-12 18:00,2017-05-19 08:00,2017-06-12 18:00,,2015-01-15 08:00,2015-02-07 18:00,,PT_Normal,,,,,6bv1tpGTQECN99uQV0IQtg,3wuEpzqtfUa/MmdWIBI94g,,,Y,0,0,,,2017-01-24 14:41,2017-01-24 15:36,CLEMENTL,CLEMENTL
21,49427848,751235,10651458,1227199,1,100,N,N,N,CP_Drtn,TT_Task,DT_FixedDUR2,RV_OK,TK_Complete,823A-PRE-SASE-1020,Provide Engineer with suitably qualified full time Survey Assistant - 4 nos. [PS41.3.1],,,,0,0,0,0,192,0,0,0,,2010-07-19 08:00,2010-08-14 18:00,2017-06-12 18:00,2017-06-12 18:00,,2017-01-01 00:00,2017-01-01 00:00,,,2010-07-19 08:00,2010-08-14 18:00,,,,,PT_Normal,,,,,yEw+RlJ+T5eT52JuJS0OWA,lE0o/0NFOkSfP1igRpeHcA,,,N,0,0,,,2017-01-24 14:41,2017-01-24 15:39,CLEMENTL,CLEMENTL
22,49427849,751235,10651458,1227199,1,100,N,N,N,CP_Drtn,TT_Task,DT_FixedDUR2,RV_OK,TK_Complete,823A-PRE-SASE-1030,Provide Engineer with site transportation as detailed in PS42.1,,,,0,0,0,0,48,0,0,0,,2010-07-19 08:00,2010-07-24 18:00,2017-06-12 18:00,2017-06-12 18:00,,2017-01-01 00:00,2017-01-01 00:00,,,2010-07-19 08:00,2010-07-24 18:00,,,,,PT_Normal,,,,,P5+1kQttRHemVjcurEIjcw,Of0uFHqR3USvD06+trvrPw,,,N,0,0,,,2017-01-24 14:41,2017-01-24 15:39,CLEMENTL,CLEMENTL
23,49427850,751235,10651458,1227199,1,100,N,N,N,CP_Drtn,TT_Task,DT_FixedDUR2,RV_OK,TK_Complete,823A-PRE-SASE-1040,"Submit details of qualified drivers to be assigned to the Engineer, for review [PS42.2.1]",,,,0,0,0,0,112,0,0,0,,2010-07-19 08:00,2010-08-03 18:00,2017-06-12 18:00,2017-06-12 18:00,,2017-01-01 00:00,2017-01-01 00:00,,,2010-07-19 08:00,2010-08-03 18:00,,,,,PT_Normal,,,,,KE2723wFRcOJyeWiQ8Wtog,/xcVccz/lU+VCOPQVHXt5A,,,N,0,0,,,2017-01-24 14:41,2017-01-24 15:39,CLEMENTL,CLEMENTL
24,49427851,751235,10651458,1227199,1,100,N,N,N,CP_Drtn,TT_Task,DT_FixedDUR2,RV_OK,TK_Complete,823A-PRE-SASE-1060,Provide services and equipment for the Engineer,,,,0,0,0,0,11232,3654720,3654720,0,,2010-08-04 08:00,2015-05-02 18:00,2017-06-12 18:00,2017-06-12 18:00,,2017-01-01 00:00,2017-01-01 00:00,,,2010-08-04 08:00,2015-05-02 18:00,,,,,PT_Normal,,,,,2GCqBxH9Qfui+6FpM1/4ZQ,l8NFjxsYnkieia57VGrcuQ,,,N,0,3654720,,,2017-01-24 14:41,2017-01-24 15:39,CLEMENTL,CLEMENTL
25,49427852,751235,10651458,1227199,1,100,N,N,N,CP_Drtn,TT_Task,DT_FixedDUR2,RV_OK,TK_Complete,823A-PRE-SASE-1050,"Install, service and maintain 10 container offices for use by the Engineer's Site Staff",,,,0,0,0,0,10312,0,0,0,,2010-12-20 08:00,2015-05-02 18:00,2017-06-12 18:00,2017-06-12 18:00,,2017-01-01 00:00,2017-01-01 00:00,,,2010-12-20 08:00,2015-05-02 18:00,,,,,PT_Normal,,,,,YCFdb2z9S6GbPRgzGMivUw,nsHztWHQpkKWTbw4Z5pS5w,,,N,0,0,,,2017-01-24 14:41,2017-01-24 15:39,CLEMENTL,CLEMENTL
26,49427853,751235,10651458,1227199,1,100,N,N,N,CP_Drtn,TT_Task,DT_FixedDUR2,RV_OK,TK_Complete,823A-PRE-SASE-1010,Supply Engineer with Survey Equipment [PS41.1.1],,,,0,0,0,0,192,0,0,0,,2010-07-19 08:00,2010-08-14 18:00,2017-06-12 18:00,2017-06-12 18:00,,2017-01-01 00:00,2017-01-01 00:00,,,2010-07-19 08:00,2010-08-14 18:00,,,,,PT_Normal,,,,,z7FzMhAGQFeJz6+kD7/VLQ,2ylslEBAC0Cmj9TrDDZFCg,,,N,0,0,,,2017-01-24 14:41,2017-01-24 15:39,CLEMENTL,CLEMENTL
27,49427854,751235,10651459,1239098,1,100,N,N,N,CP_Drtn,TT_Task,DT_FixedDUR2,RV_OK,TK_Complete,823A-PRE-GS-1060,Survey Method Statement (Survey Control of Tunnel) - Approval period,,,,0,0,0,0,192,0,0,0,,2010-10-18 08:00,2010-11-13 18:00,2014-10-11 18:00,2014-10-11 18:00,,2017-01-01 00:00,2017-01-01 00:00,,,2010-10-18 08:00,2010-11-13 18:00,,,,,PT_Normal,,,,,v4R2cVrGSK26zVCZpl2XRA,fo5NWkccBk6FFtchUK6XKQ,,,N,0,0,,,2017-01-24 14:41,2017-01-24 14:53,CLEMENTL,CLEMENTL
28,49427855,751235,10651459,1227199,1,100,N,N,N,CP_Drtn,TT_Task,DT_FixedDUR2,RV_OK,TK_Complete,823A-PRE-GS-1090,Independent Checking Engineer - Appoint and submit for approval [PS7.1.8],,,,0,0,0,0,192,0,0,0,,2010-07-19 08:00,2010-08-14 18:00,2014-10-11 18:00,2014-10-11 18:00,,2017-01-01 00:00,2017-01-01 00:00,,,2010-07-19 08:00,2010-08-14 18:00,,,,,PT_Normal,,,,,B2qcs9wvSzm6ZKjzazOgIg,nAIlhAiJ1kyyaIxAnHiNxg,,,N,0,0,,,2017-01-24 14:41,2017-01-24 14:53,CLEMENTL,CLEMENTL
29,49427856,751235,10651459,1227199,1,100,N,N,N,CP_Drtn,TT_Task,DT_FixedDUR2,RV_OK,TK_Complete,823A-PRE-GS-1100,Independent Checking Engineer - Approval period,,,,0,0,0,0,192,0,0,0,,2010-08-16 08:00,2010-09-11 18:00,2014-10-11 18:00,2014-10-11 18:00,,2017-01-01 00:00,2017-01-01 00:00,,,2010-08-16 08:00,2010-09-11 18:00,,,,,PT_Normal,,,,,mP9DAC4BTKmyrr6PD42tpg,6viwDygZlUWquSrB+VrUXw,,,N,0,0,,,2017-01-24 14:41,2017-01-24 14:53,CLEMENTL,CLEMENTL
30,49427857,751235,10651459,1227199,1,100,N,N,N,CP_Drtn,TT_Task,DT_FixedDUR2,RV_OK,TK_Complete,823A-PRE-GS-1110,Sub-contract Management Plan - Prepare and submit [PS34.1],,,,0,0,0,0,160,0,0,0,,2010-07-19 08:00,2010-08-10 18:00,2014-10-11 18:00,2014-10-11 18:00,,2017-01-01 00:00,2017-01-01 00:00,,,2010-07-19 08:00,2010-08-10 18:00,,,,,PT_Normal,,,,,kTGvffxRRoG8pXZ/vi3Kow,YLBd9L1XRkKx+WEX7sfJ3g,,,N,0,0,,,2017-01-24 14:41,2017-01-24 14:53,CLEMENTL,CLEMENTL
31,49427858,751235,10651459,1227199,1,100,N,N,N,CP_Drtn,TT_Task,DT_FixedDUR2,RV_OK,TK_Complete,823A-PRE-GS-1120,Schedule of Utilities Services Arrangement [GS7.5.1],,,,0,0,0,0,480,0,0,0,,2010-07-19 08:00,2010-09-27 18:00,2014-10-11 18:00,2014-10-11 18:00,,2017-01-01 00:00,2017-01-01 00:00,,,2010-07-19 08:00,2010-09-27 18:00,,,,,PT_Normal,,,,,5hYMLbAyTgWrXypTbulqeg,D3U9OhBXuUOcHhUi2h2WCA,,,N,0,0,,,2017-01-24 14:41,2017-01-24 14:53,CLEMENTL,CLEMENTL
32,49427859,751235,10651459,1227199,1,100,N,N,N,CP_Drtn,TT_Task,DT_FixedDUR2,RV_OK,TK_Complete,823A-PRE-GS-1260,Proposed Outline TTM Scheme - Prepare & submit to the: Engineer for Review / SLG for Approval [PS19.3],,,,0,0,0,0,336,0,0,0,,2010-07-19 08:00,2010-09-04 18:00,2014-07-24 08:00,2014-07-24 08:00,,2017-01-01 00:00,2017-01-01 00:00,,,2010-07-19 08:00,2010-09-04 18:00,,,,,PT_Normal,,,,,tQ/Uh3USRIqBua2hMdivRg,jOXST7ZBNE+IMgZwmGLoLA,,,Y,0,0,,,2017-01-24 14:41,2017-01-24 14:53,CLEMENTL,CLEMENTL
33,49427860,751235,10651459,1227199,1,100,N,N,N,CP_Drtn,TT_Task,DT_FixedDUR2,RV_OK,TK_Complete,823A-PRE-GS-1270,Reviewal Period / Approval Process by Engineer/SLG of the Proposed TTM Scheme [PS19.4],,,,0,0,0,0,552,0,0,0,,2010-09-06 08:00,2010-11-27 18:00,2014-07-24 08:00,2014-07-24 08:00,,2017-01-01 00:00,2017-01-01 00:00,,,2010-09-06 08:00,2010-11-27 18:00,,,,,PT_Normal,,,,,aAexHkOsRNqksE6hiHV4Qg,4UgYCttNHk6gecVGcel62w,,,Y,0,0,,,2017-01-24 14:41,2017-01-24 14:53,CLEMENTL,CLEMENTL
34,49427861,751235,10651459,1227199,1,100,N,N,N,CP_Drtn,TT_Task,DT_FixedDUR2,RV_OK,TK_Complete,823A-PRE-GS-1280,Resubmission of Proposed Outline TTM Scheme (if required),,,,0,0,0,0,264,0,0,0,,2010-11-29 08:00,2011-01-08 18:00,2014-07-24 08:00,2014-07-24 08:00,,2017-01-01 00:00,2017-01-01 00:00,,,2010-11-29 08:00,2011-01-08 18:00,,,,,PT_Normal,,,,,2W0HHplQRviLVjh/fsDwWA,OSkl7WCDyU++Y4Uh6uJXgQ,,,Y,0,0,,,2017-01-24 14:41,2017-01-24 14:53,CLEMENTL,CLEMENTL
35,49427862,751235,10651459,1227199,1,100,N,N,N,CP_Drtn,TT_Task,DT_FixedDUR2,RV_OK,TK_Complete,823A-PRE-GS-1290,Reviewal Period / Approval Process by Engineer/SLG of the Resubmitted Proposed Outline TTM Scheme [PS19.4],,,,0,0,0,0,336,0,0,0,,2011-01-10 08:00,2011-03-02 18:00,2014-07-24 08:00,2014-07-24 08:00,,2017-01-01 00:00,2017-01-01 00:00,,,2011-01-10 08:00,2011-03-02 18:00,,,,,PT_Normal,,,,,TcTh+rrjRkG+PgDYkwKVaw,f8C1PLOJXk+AWOV4ur3Jcg,,,Y,0,0,,,2017-01-24 14:41,2017-01-24 14:53,CLEMENTL,CLEMENTL
36,49427863,751235,10651459,1227199,1,100,N,N,N,CP_Drtn,TT_Task,DT_FixedDUR2,RV_OK,TK_Complete,823A-PRE-GS-1300,Notification Period of the Approved TTM Scheme prior to implementation [PS19.4],,,,0,0,0,0,80,0,0,0,,2011-03-03 08:00,2011-03-14 18:00,2014-07-24 08:00,2014-07-24 08:00,,2017-01-01 00:00,2017-01-01 00:00,,,2011-03-03 08:00,2011-03-14 18:00,,,,,PT_Normal,,,,,/lqIHgE8Tb+dJbIlznXLOA,+6a+V27cV0Wqkn4wgvXKOw,,,Y,0,0,,,2017-01-24 14:41,2017-01-24 14:53,CLEMENTL,CLEMENTL
37,49427864,751235,10651459,1227199,1,100,N,N,N,CP_Drtn,TT_Task,DT_FixedDUR2,RV_OK,TK_Complete,823A-PRE-GS-1210,Noise Management Plan [P22.3.9],,,,0,0,0,0,360,0,0,0,,2010-07-19 08:00,2010-09-08 18:00,2014-10-11 18:00,2014-10-11 18:00,,2017-01-01 00:00,2017-01-01 00:00,,,2010-07-19 08:00,2010-09-08 18:00,,,,,PT_Normal,,,,,RNKUf5epRNq1nhVszGaFrw,3zopPlNu9Uq91rUjZjKaiw,,,N,0,0,,,2017-01-24 14:41,2017-01-24 14:53,CLEMENTL,CLEMENTL
38,49427865,751235,10651459,1227199,1,100,N,N,N,CP_Drtn,TT_Task,DT_FixedDUR2,RV_OK,TK_Complete,823A-PRE-GS-1220,Air Quality Management Plan [P22.4.3],,,,0,0,0,0,360,0,0,0,,2010-07-19 08:00,2010-09-08 18:00,2014-10-11 18:00,2014-10-11 18:00,,2017-01-01 00:00,2017-01-01 00:00,,,2010-07-19 08:00,2010-09-08 18:00,,,,,PT_Normal,,,,,SwebOfWVRxyQ/iMg/P+a0A,dKq4bmGRk0SkiBDMH5RURg,,,N,0,0,,,2017-01-24 14:41,2017-01-24 14:53,CLEMENTL,CLEMENTL
39,49427866,751235,10651459,1227199,1,100,N,N,N,CP_Drtn,TT_Task,DT_FixedDUR2,RV_OK,TK_Complete,823A-PRE-GS-1230,Detailed Proposal for Water Pollution Control Measures and Proposed Monitoring [PS22.5.1],,,,0,0,0,0,360,0,0,0,,2010-07-19 08:00,2010-09-08 18:00,2014-10-11 18:00,2014-10-11 18:00,,2017-01-01 00:00,2017-01-01 00:00,,,2010-07-19 08:00,2010-09-08 18:00,,,,,PT_Normal,,,,,Sn3EByeoSduHwt00saiMJg,FMucdPAYMEiz9U9l/dNmgw,,,N,0,0,,,2017-01-24 14:41,2017-01-24 14:53,CLEMENTL,CLEMENTL
40,49427867,751235,10651459,1227199,1,100,N,N,N,CP_Drtn,TT_Task,DT_FixedDUR2,RV_OK,TK_Complete,823A-PRE-GS-1240,Groundwater Monitoring and Response Plan [PS22.5.2],,,,0,0,0,0,224,0,0,0,,2010-07-19 08:00,2010-08-19 18:00,2017-06-12 18:00,2017-06-12 18:00,,2017-01-01 00:00,2017-01-01 00:00,,,2010-07-19 08:00,2010-08-19 18:00,,,,,PT_Normal,,,,,CPskSYzyTbWPXxoqNunYkg,4Pz7v+NB8EOKMC9i5vgD1w,,,N,0,0,,,2017-01-24 14:41,2017-01-24 15:36,CLEMENTL,CLEMENTL
41,49427868,751235,10651459,1227199,1,100,N,N,N,CP_Drtn,TT_Task,DT_FixedDUR2,RV_OK,TK_Complete,823A-PRE-GS-1250,Vibration Monitoring Plan [PS22.8.1],,,,0,0,0,0,240,0,0,0,,2010-07-19 08:00,2010-08-21 18:00,2014-10-11 18:00,2014-10-11 18:00,,2017-01-01 00:00,2017-01-01 00:00,,,2010-07-19 08:00,2010-08-21 18:00,,,,,PT_Normal,,,,,A0dICC/PTWeHBAu/VYYRyg,w6bjfl1sEUiihKLvMVxxlQ,,,N,0,0,,,2017-01-24 14:41,2017-01-24 14:53,CLEMENTL,CLEMENTL
42,49427869,751235,10651459,1227199,1,100,N,N,N,CP_Drtn,TT_Task,DT_FixedDUR2,RV_OK,TK_Complete,823A-PRE-GS-1190,Site Safety Supervision Plan for Tunnel Works - Prepare and Submit,,,,0,0,0,0,96,0,0,0,,2010-10-28 08:00,2010-11-10 18:00,2014-10-11 18:00,2014-10-11 18:00,,2017-01-01 00:00,2017-01-01 00:00,,,2010-10-28 08:00,2010-11-10 18:00,,,,,PT_Normal,,,,,ghMwNbCYTXeQh0KtadXNRA,LaBSC58fJUuYSQJBJ+w5cw,,,N,0,0,,,2017-01-24 14:41,2017-01-24 14:53,CLEMENTL,CLEMENTL
43,49427870,751235,10651459,1227199,1,100,N,N,N,CP_Drtn,TT_Task,DT_FixedDUR2,RV_OK,TK_Complete,823A-PRE-GS-1040,Contractor's Submission Schedule - Approval period,,,,0,0,0,0,328,0,0,0,,2010-08-16 08:00,2010-10-04 18:00,2017-06-12 18:00,2017-06-12 18:00,,2017-01-01 00:00,2017-01-01 00:00,,,2010-08-16 08:00,2010-10-04 18:00,,,,,PT_Normal,,,,,6jtcr9deTkqF4nAvYdbYMg,cX5gzXw81EOdzqHz6FFmTg,,,N,0,0,,,2017-01-24 14:41,2017-01-24 15:36,CLEMENTL,CLEMENTL
44,49427871,751235,10651459,1227199,1,100,N,N,N,CP_Drtn,TT_Task,DT_FixedDUR2,RV_OK,TK_Complete,823A-PRE-GS-1200,Site Safety Supervision Plan for Tunnel Works - Approval Period,,,,0,0,0,0,192,0,0,0,,2010-11-11 08:00,2010-12-08 18:00,2014-10-11 18:00,2014-10-11 18:00,,2017-01-01 00:00,2017-01-01 00:00,,,2010-11-11 08:00,2010-12-08 18:00,,,,,PT_Normal,,,,,YMQxIWfEQgSfNbo8ZwnFUA,Bx6c4kB+8EmhhTWq61a9tw,,,N,0,0,,,2017-01-24 14:41,2017-01-24 14:53,CLEMENTL,CLEMENTL
45,49427872,751235,10651459,1227199,1,100,N,N,N,CP_Drtn,TT_Task,DT_FixedDUR2,RV_OK,TK_Complete,823A-PRE-GS-1130,Site Safety Supervision Plan for Site Formation - Prepare and Submit,,,,0,0,0,0,96,0,0,0,,2010-07-19 08:00,2010-07-31 18:00,2014-10-11 18:00,2014-10-11 18:00,,2017-01-01 00:00,2017-01-01 00:00,,,2010-07-19 08:00,2010-07-31 18:00,,,,,PT_Normal,,,,,jK17rkoFSX6dRfMNZ4g8qg,RbprfXIos02nRTLWIOpMOg,,,N,0,0,,,2017-01-24 14:41,2017-01-24 14:53,CLEMENTL,CLEMENTL
46,49427873,751235,10651459,1227199,1,100,N,N,N,CP_Drtn,TT_Task,DT_FixedDUR2,RV_OK,TK_Complete,823A-PRE-GS-1140,Site Safety Supervision Plan for Site Formation - Approval period,,,,0,0,0,0,192,0,0,0,,2010-08-02 08:00,2010-08-28 18:00,2014-10-11 18:00,2014-10-11 18:00,,2017-01-01 00:00,2017-01-01 00:00,,,2010-08-02 08:00,2010-08-28 18:00,,,,,PT_Normal,,,,,MwVLft3QR+Ky6ZNKrO+PRg,WwjXf6kjOUSjqzRVmaQxTw,,,N,0,0,,,2017-01-24 14:41,2017-01-24 14:53,CLEMENTL,CLEMENTL
47,49427874,751235,10651459,1227199,1,100,N,N,N,CP_Drtn,TT_Task,DT_FixedDUR2,RV_OK,TK_Complete,823A-PRE-GS-1150,Site Safety Supervision Plan for Site Investigation - Prepare and Submit,,,,0,0,0,0,96,0,0,0,,2010-08-02 08:00,2010-08-14 18:00,2014-10-11 18:00,2014-10-11 18:00,,2017-01-01 00:00,2017-01-01 00:00,,,2010-08-02 08:00,2010-08-14 18:00,,,,,PT_Normal,,,,,1Iz9uN//TNSbmB05Df275g,TGLhYXRB20qEWXmwkJOeAQ,,,N,0,0,,,2017-01-24 14:41,2017-01-24 14:53,CLEMENTL,CLEMENTL
48,49427875,751235,10651459,1227199,1,100,N,N,N,CP_Drtn,TT_Task,DT_FixedDUR2,RV_OK,TK_Complete,823A-PRE-GS-1160,Site Safety Supervision Plan for Site Investigation - Approval period,,,,0,0,0,0,192,0,0,0,,2010-08-16 08:00,2010-09-11 18:00,2014-10-11 18:00,2014-10-11 18:00,,2017-01-01 00:00,2017-01-01 00:00,,,2010-08-16 08:00,2010-09-11 18:00,,,,,PT_Normal,,,,,prIjd8mnQMWdhiW766E6dA,xvQ1LoEbPECm982s1SqOZQ,,,N,0,0,,,2017-01-24 14:41,2017-01-24 14:53,CLEMENTL,CLEMENTL
49,49427876,751235,10651459,1227199,1,100,N,N,N,CP_Drtn,TT_Task,DT_FixedDUR2,RV_OK,TK_Complete,823A-PRE-GS-1170,Site Safety Supervision Plan for ELS - Prepare and Submit,,,,0,0,0,0,96,0,0,0,,2010-09-13 08:00,2010-09-27 18:00,2014-10-11 18:00,2014-10-11 18:00,,2017-01-01 00:00,2017-01-01 00:00,,,2010-09-13 08:00,2010-09-27 18:00,,,,,PT_Normal,,,,,wF/jZQcsTS2709oz2Q0JCA,78ZkLL7upkqA3C9Zp0M5xA,,,N,0,0,,,2017-01-24 14:41,2017-01-24 14:53,CLEMENTL,CLEMENTL
50,49427877,751235,10651459,1227199,1,100,N,N,N,CP_Drtn,TT_Task,DT_FixedDUR2,RV_OK,TK_Complete,823A-PRE-GS-1180,Site Safety Supervision Plan for ELS - Approval Period,,,,0,0,0,0,192,0,0,0,,2010-09-28 08:00,2010-10-27 18:00,2014-10-11 18:00,2014-10-11 18:00,,2017-01-01 00:00,2017-01-01 00:00,,,2010-09-28 08:00,2010-10-27 18:00,,,,,PT_Normal,,,,,wYilyOJ2S6msWBilbD1h3g,FAbnofg0/06wprnXNRNusw,,,N,0,0,,,2017-01-24 14:41,2017-01-24 14:53,CLEMENTL,CLEMENTL
51,49427878,751235,10651459,1239098,1,100,N,N,N,CP_Drtn,TT_Task,DT_FixedDUR2,RV_OK,TK_Complete,823A-PRE-GS-1010,Methods of Construction - Prepare and submit for approval [GS12.1.1],,,,0,0,0,0,192,0,0,0,,2010-07-19 08:00,2010-08-14 18:00,2017-06-12 18:00,2017-06-12 18:00,,2017-01-01 00:00,2017-01-01 00:00,,,2010-07-19 08:00,2010-08-14 18:00,,,,,PT_Normal,,,,,xIsKrk+GRXObVZy/kefRSQ,o6FOCVvHXkax6VbAevz7fA,,,N,0,0,,,2017-01-24 14:41,2017-01-24 15:36,CLEMENTL,CLEMENTL
52,49427879,751235,10651459,1239098,1,100,N,N,N,CP_Drtn,TT_Task,DT_FixedDUR2,RV_OK,TK_Complete,823A-PRE-GS-1020,Methods of Construction - Approval period,,,,0,0,0,0,328,0,0,0,,2010-08-16 08:00,2010-10-04 18:00,2017-06-12 18:00,2017-06-12 18:00,,2017-01-01 00:00,2017-01-01 00:00,,,2010-08-16 08:00,2010-10-04 18:00,,,,,PT_Normal,,,,,T/uBZK+bSlmbVj8zgSOcSw,67liNN4xw0Kh0O7Q9MG80g,,,N,0,0,,,2017-01-24 14:41,2017-01-24 15:36,CLEMENTL,CLEMENTL
53,49427880,751235,10651459,1227199,1,100,N,N,N,CP_Drtn,TT_Task,DT_FixedDUR2,RV_OK,TK_Complete,823A-PRE-GS-1030,Contractor's Submission Schedule - Prepare and submit for approval [GS12.11.1],,,,0,0,0,0,192,0,0,0,,2010-07-19 08:00,2010-08-14 18:00,2017-06-12 18:00,2017-06-12 18:00,,2017-01-01 00:00,2017-01-01 00:00,,,2010-07-19 08:00,2010-08-14 18:00,,,,,PT_Normal,,,,,NLCul60cR9KHnlaQFbVE7Q,7CV2rJoNNU2jBCFrzOe54Q,,,N,0,0,,,2017-01-24 14:41,2017-01-24 15:36,CLEMENTL,CLEMENTL
54,49427881,751235,10651459,1227199,1,100,N,N,N,CP_Drtn,TT_Task,DT_FixedDUR2,RV_OK,TK_Complete,823A-PRE-GS-1050,Survey Method Statement (Survey Control of Tunnel) [PS13.3.1],,,,0,0,0,0,600,0,0,0,,2010-07-19 08:00,2010-10-15 18:00,2014-10-11 18:00,2014-10-11 18:00,,2017-01-01 00:00,2017-01-01 00:00,,,2010-07-19 08:00,2010-10-15 18:00,,,,,PT_Normal,,,,,7jng6DEYQQKOctsIPgRTpA,ylw49lBCGES/HPemK9e9NA,,,N,0,0,,,2017-01-24 14:41,2017-01-24 14:53,CLEMENTL,CLEMENTL
55,49427882,751235,10651459,1227199,1,100,N,N,N,CP_Drtn,TT_Task,DT_FixedDUR2,RV_OK,TK_Complete,823A-PRE-GS-1070,Spoil Disposal Plan [PS17.7.1],,,,0,0,0,0,176,0,0,0,,2010-07-19 08:00,2010-08-12 18:00,2014-10-11 18:00,2014-10-11 18:00,,2017-01-01 00:00,2017-01-01 00:00,,,2010-07-19 08:00,2010-08-12 18:00,,,,,PT_Normal,,,,,c/yuXZFfQxaW0HkgV85TBQ,b3XFuU7g8EmG3wTeCS0acQ,,,N,0,0,,,2017-01-24 14:41,2017-01-24 14:53,CLEMENTL,CLEMENTL
56,49427883,751235,10651459,1227199,1,100,N,N,N,CP_Drtn,TT_Task,DT_FixedDUR2,RV_OK,TK_Complete,823A-PRE-GS-1080,Waste Management Plan [PS22.10.1],,,,0,0,0,0,176,0,0,0,,2010-07-19 08:00,2010-08-12 18:00,2014-10-11 18:00,2014-10-11 18:00,,2017-01-01 00:00,2017-01-01 00:00,,,2010-07-19 08:00,2010-08-12 18:00,,,,,PT_Normal,,,,,dVWplduSReGjIY/K8frXSQ,WiLs/EUXjkes6atYpIG9cQ,,,N,0,0,,,2017-01-24 14:41,2017-01-24 14:53,CLEMENTL,CLEMENTL
57,49427884,751235,10651460,1227199,1,100,N,N,N,CP_Drtn,TT_Task,DT_FixedDUR2,RV_OK,TK_Complete,823A-PRE-TW-1050,Marine Survey at Barging Point [PS4.3] (before construction of barging facilities),,,,0,0,0,0,504,0,0,0,,2010-07-19 08:00,2010-09-30 00:00,2017-06-12 18:00,2017-06-12 18:00,,2017-01-01 00:00,2017-01-01 00:00,,,2010-07-19 08:00,2010-09-30 18:00,,,,,PT_Normal,,,,,v5jN161vRTy3ieSjGXbLrA,/AGLd5eML0GtkPm9AAuruw,,,N,0,0,,,2017-01-24 14:41,2017-01-24 15:36,CLEMENTL,CLEMENTL
58,49427885,751235,10651460,1227199,1,100,N,N,N,CP_Drtn,TT_Task,DT_FixedDUR2,RV_OK,TK_Complete,823A-PRE-TW-1060,Construct barging facilities,268571,,,0,4224,0,4224,264,23040,23040,0,,2010-10-02 00:00,2010-11-10 18:00,2017-06-12 18:00,2017-06-12 18:00,,2017-01-01 00:00,2017-01-01 00:00,,,2010-10-02 08:00,2010-11-10 18:00,,,,,PT_Normal,,,,,/IQ5G5+xTiGPAsNC44LdBw,hvDE0XL/dU2HMtjQfnPZqQ,,,N,4224,23040,,,2017-01-24 14:41,2017-01-24 15:36,CLEMENTL,CLEMENTL
59,49427886,751235,10651460,1227199,1,100,N,N,N,CP_Drtn,TT_Task,DT_FixedDUR2,RV_OK,TK_Complete,823A-PRE-TW-1070,Operation Plan for the Barging Facility - Prepare and Submit for Approval [PS17.1.9],,,,0,0,0,0,192,0,0,0,,2010-11-11 08:00,2010-12-08 18:00,2017-06-12 18:00,2017-06-12 18:00,,2017-01-01 00:00,2017-01-01 00:00,,,2010-11-11 08:00,2010-12-08 18:00,,,,,PT_Normal,,,,,m8Q2AmMcRPC1u4uy1uv/cA,7yRJ5qIzoUqVIOgl+9z9xg,,,N,0,0,,,2017-01-24 14:41,2017-01-24 15:36,CLEMENTL,CLEMENTL
60,49427887,751235,10651460,1227199,1,100,N,N,N,CP_Drtn,TT_Task,DT_FixedDUR2,RV_OK,TK_Complete,823A-PRE-TW-1020,"Erection of Metal Steel Hoarding, Gate, and Chainlink Fence at Works Areas 3.1, 3.2, 3.3 and 3.3A [PS4.6.1]",268572,,,0,4608,0,4608,192,3072,3072,0,,2010-12-20 08:00,2011-01-19 18:00,2014-10-11 18:00,2014-10-11 18:00,,2017-01-01 00:00,2017-01-01 00:00,,,2010-12-20 08:00,2011-01-19 18:00,,,,,PT_Normal,,,,,Ui3+By9kTVWAmpcEHe5edw,10MTzRsWKE24ua8g5H47Vg,,,N,4608,3072,,,2017-01-24 14:41,2017-01-24 14:53,CLEMENTL,CLEMENTL
61,49427888,751235,10651460,1227199,1,100,N,N,N,CP_Drtn,TT_Task,DT_FixedDUR2,RV_OK,TK_Complete,823A-PRE-TW-1030,"Erection of Metal Steel Hoarding, Gate, and Chainlink Fence at Works Areas 4.9, 4.10, 4.11, 4.12A~C, and 4.15 [PS4.6.1]",268577,,,0,4608,0,4608,192,3072,3072,0,,2010-12-20 08:00,2011-01-19 18:00,2014-10-11 18:00,2014-10-11 18:00,,2017-01-01 00:00,2017-01-01 00:00,,,2010-12-20 08:00,2011-01-19 18:00,,,,,PT_Normal,,,,,fGEw3uRyTxyYHoKGJJ4LrA,58AjsBur10OmN3wDanb5rA,,,N,4608,3072,,,2017-01-24 14:41,2017-01-24 14:53,CLEMENTL,CLEMENTL
62,49427889,751235,10651460,1227199,1,100,N,N,N,CP_Drtn,TT_Task,DT_FixedDUR2,RV_OK,TK_Complete,823A-PRE-TW-1040,Project Signboard Erection [PS4.6.8],268577,,,0,3840,0,3840,96,1536,1536,0,,2010-12-20 08:00,2011-01-05 18:00,2014-10-11 18:00,2014-10-11 18:00,,2017-01-01 00:00,2017-01-01 00:00,,,2010-12-20 08:00,2011-01-05 18:00,,,,,PT_Normal,,,,,5ky1xWd6T1y35XAn400uKw,vluj1RzJT0CYaqmdrL9DAg,,,N,3840,1536,,,2017-01-24 14:41,2017-01-24 14:53,CLEMENTL,CLEMENTL
63,49427890,751235,10651460,1227199,1,100,N,N,N,CP_Drtn,TT_Task,DT_FixedDUR2,RV_OK,TK_Complete,823A-PRE-TW-1080,Operation Plan for the Barging Facility - Review and Approval Period,,,,0,0,0,0,288,0,0,0,,2010-12-09 08:00,2011-01-22 18:00,2017-06-12 18:00,2017-06-12 18:00,,2017-01-01 00:00,2017-01-01 00:00,,,2010-12-09 08:00,2011-01-22 18:00,,,,,PT_Normal,,,,,ehyVSfU3QT+HeE6L3vQn4g,Dr1jqzLfEUKVWoVLPIPz+Q,,,N,0,0,,,2017-01-24 14:41,2017-01-24 15:36,CLEMENTL,CLEMENTL
64,49427891,751235,10651460,1227199,1,100,N,N,N,CP_Drtn,TT_Task,DT_FixedDUR2,RV_OK,TK_Complete,823A-PRE-TW-1010,Erection of Hoarding with Gate (WA3.11),268577,,,0,768,0,768,32,512,512,0,,2010-08-19 08:00,2010-08-23 18:00,2014-10-11 18:00,2014-10-11 18:00,,2017-01-01 00:00,2017-01-01 00:00,,,2010-08-19 08:00,2010-08-23 18:00,,,,,PT_Normal,,,,,uf1CNohMTOq5seS82vGNQg,zS+2n1XrskeMlxYi9+kwYg,,,N,768,512,,,2017-01-24 14:41,2017-01-24 14:53,CLEMENTL,CLEMENTL
65,49427892,751235,10651461,1227199,1,100,N,N,N,CP_Drtn,TT_Task,DT_FixedDUR2,RV_OK,TK_Complete,823A-PRE-GSADC-1010,General and Special Attendance for Designated Contractors,268571,,,0,66048,0,66048,4128,962280,962280,0,2012-12-01 08:00,2013-07-02 08:00,2015-03-25 18:00,2017-06-12 18:00,2017-06-12 18:00,,2017-01-01 00:00,2017-01-01 00:00,,,2013-12-02 08:00,2015-08-31 18:00,,,,CS_MSOA,PT_Normal,,,,,AjLp1x9qQLOHV4DDxt9Xfw,GoXewOsj2E2lyJvDDQhFCw,,,N,66048,962280,,,2017-01-24 14:41,2017-01-24 15:39,CLEMENTL,CLEMENTL
66,49427893,751235,10651463,1227199,1,100,N,N,N,CP_Drtn,TT_Task,DT_FixedDUR2,RV_OK,TK_Complete,823A-PRE-PW-IM-1010,Installation of ground settlement markers,,,,0,0,0,0,768,0,0,0,,2011-01-20 08:00,2011-05-21 18:00,2017-06-12 18:00,2017-06-12 18:00,,2017-01-01 00:00,2017-01-01 00:00,,,2011-01-20 08:00,2011-05-21 18:00,,,,,PT_Normal,,,,,OCggQqG5QG28ofcWUDl6ww,2WTT7yoZ7UuGzDEeP0OXRA,,,N,0,0,,,2017-01-24 14:41,2017-01-24 15:36,CLEMENTL,CLEMENTL
67,49427894,751235,10651463,1227199,1,100,N,N,N,CP_Drtn,TT_Task,DT_FixedDUR2,RV_OK,TK_Complete,823A-PRE-PW-IM-1020,Settlement monitoring and submit report,,,,0,0,0,0,1632,0,0,0,,2011-05-23 08:00,2012-01-27 18:00,2017-06-12 18:00,2017-06-12 18:00,,2017-01-01 00:00,2017-01-01 00:00,,,2011-05-23 08:00,2012-01-27 18:00,,,,,PT_Normal,,,,,RLmqs9sVTTSWoyTyF1MZZg,I48ecopZiUSvO7G3ft16Ig,,,N,0,0,,,2017-01-24 14:41,2017-01-24 15:36,CLEMENTL,CLEMENTL
68,49427895,751235,10651463,1227199,1,100,N,N,N,CP_Drtn,TT_Task,DT_FixedDUR2,RV_OK,TK_Complete,823A-PRE-PW-IM-1030,Settlement monitoring and submit report,,,,0,0,0,0,952,0,0,0,,2012-01-28 08:00,2012-06-21 18:00,2017-06-12 18:00,2017-06-12 18:00,,2017-01-01 00:00,2017-01-01 00:00,,,2012-01-28 08:00,2012-06-21 18:00,,,,,PT_Normal,,,,,UVtjt8WrR3i/S8EPz5zx0Q,/L2vTb+Wg0Og6X8deXEb6Q,,,N,0,0,,,2017-01-24 14:41,2017-01-24 15:36,CLEMENTL,CLEMENTL
69,49427896,751235,10651463,1227199,1,100,N,N,N,CP_Drtn,TT_Task,DT_FixedDUR2,RV_OK,TK_Complete,823A-PRE-PW-IM-1040,Settlement monitoring and submit report,,,,0,0,0,0,1600,0,0,0,,2012-06-22 08:00,2013-02-22 18:00,2017-06-12 18:00,2017-06-12 18:00,,2017-01-01 00:00,2017-01-01 00:00,,,2012-06-22 08:00,2013-02-22 18:00,,,,,PT_Normal,,,,,eTxlhW3eTqKQk+R+gGKSJw,Cuth8iaizUS5TNO7RX281A,,,N,0,0,,,2017-01-24 14:41,2017-01-24 15:36,CLEMENTL,CLEMENTL
70,49427897,751235,10651463,1227199,1,100,N,N,N,CP_Drtn,TT_Task,DT_FixedDUR2,RV_OK,TK_Complete,823A-PRE-PW-IM-1050,Settlement monitoring and submit report,,,,0,0,0,0,992,0,0,0,,2013-02-23 08:00,2013-07-26 18:00,2017-06-12 18:00,2017-06-12 18:00,,2017-01-01 00:00,2017-01-01 00:00,,,2013-08-01 08:00,2013-12-28 18:00,,,,,PT_Normal,,,,,KaMXv/2xQ36yf1n5Dx1tSg,7CIXTa6ZWkmPDlNb7YY/pw,,,N,0,0,,,2017-01-24 14:41,2017-01-24 15:36,CLEMENTL,CLEMENTL
71,49427898,751235,10651463,1227199,1,100,N,N,N,CP_Drtn,TT_Task,DT_FixedDUR2,RV_OK,TK_Complete,823A-PRE-PW-IM-1060,Settlement monitoring and submit report,,,,0,0,0,0,1368,0,0,0,,2013-07-27 08:00,2014-02-21 18:00,2017-06-12 18:00,2017-06-12 18:00,,2017-01-01 00:00,2017-01-01 00:00,,,2013-08-01 08:00,2014-02-26 18:00,,,,,PT_Normal,,,,,0Qrg6HLWRbSW966Oj8x53w,2qIOBedFc0Oit2V+qwkgsg,,,N,0,0,,,2017-01-24 14:41,2017-01-24 15:36,CLEMENTL,CLEMENTL
72,49427899,751235,10651463,1227199,1,100,N,N,N,CP_Drtn,TT_Task,DT_FixedDUR2,RV_OK,TK_Complete,823A-PRE-PW-IM-1070,Settlement monitoring and submit report,,,,0,0,0,0,992,0,0,0,,2014-02-22 08:00,2014-07-25 18:00,2017-06-12 18:00,2017-06-12 18:00,,2017-01-01 00:00,2017-01-01 00:00,,,2014-02-22 08:00,2014-07-25 18:00,,,,,PT_Normal,,,,,oE4Z8nP8SPe3GZD59Es55Q,QCp623O7ukqL0m2qcbaApg,,,N,0,0,,,2017-01-24 14:41,2017-01-24 15:36,CLEMENTL,CLEMENTL
73,49427900,751235,10651464,1227199,1,100,N,N,N,CP_Drtn,TT_Task,DT_FixedDUR2,RV_OK,TK_Complete,823A-PRE-PW-GS-1030,"Initial Site Survey & Condition Survey (WA3.1, 3.2, 3.3, 3.3A, 3.3B, 4.2, 4.3, 4.4)",,,,0,0,0,0,96,23328,23328,0,,2010-12-06 08:00,2010-12-18 18:00,2014-10-11 18:00,2014-10-11 18:00,,2017-01-01 00:00,2017-01-01 00:00,,,2010-12-06 08:00,2010-12-18 18:00,,,,,PT_Normal,,,,,PdB6Py12QaSUH1xnPOnD0Q,LipiImXnXU6rOrDBhyx1tA,,,N,0,23328,,,2017-01-24 14:41,2017-01-24 14:53,CLEMENTL,CLEMENTL
74,49427901,751235,10651464,1227199,1,100,N,N,N,CP_Drtn,TT_Task,DT_FixedDUR2,RV_OK,TK_Complete,823A-PRE-PW-GS-1040,"Initial Site Survey Report (WA3.1, 3.2, 3.3, 3.3A, 3.3B, 4.2, 4.3, 4.4)",,,,0,0,0,0,112,0,0,0,,2010-12-20 08:00,2011-01-07 18:00,2014-10-11 18:00,2014-10-11 18:00,,2017-01-01 00:00,2017-01-01 00:00,,,2010-12-20 08:00,2011-01-07 18:00,,,,,PT_Normal,,,,,R2ATCdWAS+SkK5F+FrL5Bw,KrGr1j4jF02EtWOVeDSPkQ,,,N,0,0,,,2017-01-24 14:41,2017-01-24 14:53,CLEMENTL,CLEMENTL
75,49427902,751235,10651464,1227199,1,100,N,N,N,CP_Drtn,TT_Task,DT_FixedDUR2,RV_OK,TK_Complete,823A-PRE-PW-GS-1070,"Temporary Occupation Area: Conduct, prepare and submit TOA Record Survey for Works Areas 4.9 & 4.12A [PS4.2]",,,,0,0,0,0,224,54432,54432,0,,2010-12-06 08:00,2011-01-10 18:00,2014-01-05 18:00,2014-01-05 18:00,,2017-01-01 00:00,2017-01-01 00:00,,,2010-12-06 08:00,2011-01-10 18:00,,,,,PT_Normal,,,,,Elp28jv+QKu50rPGct8zxw,BnLbeE6wHE6oBtgJ8liL3g,,,Y,0,54432,,,2017-01-24 14:41,2017-01-24 14:53,CLEMENTL,CLEMENTL
76,49427903,751235,10651464,1227199,1,100,N,N,N,CP_Drtn,TT_Task,DT_FixedDUR2,RV_OK,TK_Complete,823A-PRE-PW-GS-1090,Proposal for Site Clearance Works [PS4.4.1],,,,0,0,0,0,48,0,0,0,,2011-01-08 08:00,2011-01-14 18:00,2014-10-11 18:00,2014-10-11 18:00,,2017-01-01 00:00,2017-01-01 00:00,,,2011-01-08 08:00,2011-01-14 18:00,,,,,PT_Normal,,,,,6+W/BaraR2iG6AXGPBlijg,3tHmiH8HzEqrWpsEYv18Xw,,,N,0,0,,,2017-01-24 14:41,2017-01-24 14:53,CLEMENTL,CLEMENTL
77,49427904,751235,10651464,1227199,1,100,N,N,N,CP_Drtn,TT_Task,DT_FixedDUR2,RV_OK,TK_Complete,823A-PRE-PW-GS-1100,Site Clearance / Site Formation Works (including demolition of EBS),268571,,,0,27264,0,27264,568,9088,9088,0,,2011-01-20 08:00,2011-04-16 18:00,2014-10-11 18:00,2014-10-11 18:00,,2017-01-01 00:00,2017-01-01 00:00,,,2011-01-20 08:00,2011-04-16 18:00,,,,,PT_Normal,,,,,nMptK8MjTOSO6O5uDxKxLA,mBKoZK0OE0mTIB/wsopC1Q,,,N,27264,9088,,,2017-01-24 14:41,2017-01-24 14:53,CLEMENTL,CLEMENTL
78,49427905,751235,10651464,1227199,1,100,N,N,N,CP_Drtn,TT_Task,DT_FixedDUR2,RV_OK,TK_Complete,823A-PRE-PW-GS-1110,"Backfill existing stream courses in Works Area 4.9, 4.10 and 4.11 [PS18.5.1]",268571,,,0,10112,0,10112,632,10112,10112,0,,2011-01-11 08:00,2011-04-16 18:00,2014-01-05 18:00,2014-01-05 18:00,,2017-01-01 00:00,2017-01-01 00:00,,,2011-01-11 08:00,2011-04-16 18:00,,,,,PT_Normal,,,,,5iuFubf7SBmPyuGsr4pOpw,TPfe25TaNESA2I9QwxUfvA,,,Y,10112,10112,,,2017-01-24 14:41,2017-01-24 14:53,CLEMENTL,CLEMENTL
79,49427906,751235,10651464,1227199,1,100,N,N,N,CP_Drtn,TT_Task,DT_FixedDUR2,RV_OK,TK_Complete,823A-PRE-PW-GS-1200,"Contamination Assessment Plan (CAP) - Prepare and Submit to EPD for Approval (WA 3.1, 3.2, 3.3 remaining, 3.3A)",,,,0,0,0,0,96,0,0,0,,2010-10-05 08:00,2010-10-19 18:00,2014-10-11 18:00,2014-10-11 18:00,,2017-01-01 00:00,2017-01-01 00:00,,,2010-10-05 08:00,2010-10-19 18:00,,,,,PT_Normal,,,,,zjaB9myFTbqToUt/Hyu66w,WhKIfRAahESfiXL40ioWMw,,,N,0,0,,,2017-01-24 14:41,2017-01-24 14:53,CLEMENTL,CLEMENTL
80,49427907,751235,10651464,1227199,1,100,N,N,N,CP_Drtn,TT_Task,DT_FixedDUR2,RV_OK,TK_Complete,823A-PRE-PW-GS-1210,"Contamination Assessment Plan (CAP) - Approval Period (WA 3.1, 3.2, 3.3 remaining, 3.3A)",,,,0,0,0,0,288,0,0,0,,2010-10-20 08:00,2010-11-30 18:00,2014-10-11 18:00,2014-10-11 18:00,,2017-01-01 00:00,2017-01-01 00:00,,,2010-10-20 08:00,2010-11-30 18:00,,,,,PT_Normal,,,,,rtnPZBdVS7SKuJJLf7EMZQ,KOXwxC7SDk2ULLqTZwky+w,,,N,0,0,,,2017-01-24 14:41,2017-01-24 14:53,CLEMENTL,CLEMENTL
81,49427908,751235,10651464,1227199,1,100,N,N,N,CP_Drtn,TT_Task,DT_FixedDUR2,RV_OK,TK_Complete,823A-PRE-PW-GS-1220,"Conduct Contamination Assessment in accordance with the Approved CAP (WA 3.1, 3.2, 3.3 remaining, 3.3A)",,,,0,0,0,0,240,0,0,0,,2010-12-06 08:00,2011-01-12 18:00,2014-10-11 18:00,2014-10-11 18:00,,2017-01-01 00:00,2017-01-01 00:00,,,2010-12-06 08:00,2011-01-12 18:00,,,,,PT_Normal,,,,,EF2hNLTBQqiAy35wNwLKUQ,Zril+43GoUCYfwYncPK6rQ,,,N,0,0,,,2017-01-24 14:41,2017-01-24 14:53,CLEMENTL,CLEMENTL
82,49427909,751235,10651464,1227199,1,100,N,N,N,CP_Drtn,TT_Task,DT_FixedDUR2,RV_OK,TK_Complete,823A-PRE-PW-GS-1280,Conduct remediation for Area Q in accordance with method proposed in the approved Remediation Action Plan [PS22.9.2],,,,0,0,0,0,960,0,0,0,,2010-12-06 08:00,2011-05-06 18:00,2014-10-11 18:00,2014-10-11 18:00,,2017-01-01 00:00,2017-01-01 00:00,,,2010-12-06 08:00,2011-05-06 18:00,,,,,PT_Normal,,,,,sy8kFuisRWyUHdX1CpHPGQ,ixgyHZDSb0K4QJ1Wcag6ng,,,N,0,0,,,2017-01-24 14:41,2017-01-24 14:53,CLEMENTL,CLEMENTL
83,49427910,751235,10651464,1227199,1,100,N,N,N,CP_Drtn,TT_Task,DT_FixedDUR2,RV_OK,TK_Complete,823A-PRE-PW-GS-1290,Remediation Report - Prepare and submit for Approval [PS22.9.2] (Area Q),,,,0,0,0,0,192,0,0,0,,2011-05-07 08:00,2011-06-04 18:00,2014-10-11 18:00,2014-10-11 18:00,,2017-01-01 00:00,2017-01-01 00:00,,,2011-05-07 08:00,2011-06-04 18:00,,,,,PT_Normal,,,,,KgQKdAoMQfmTC9WT09Q/iw,MZ+ljTs2mk6Nw5OgbuBiDg,,,N,0,0,,,2017-01-24 14:41,2017-01-24 14:53,CLEMENTL,CLEMENTL
84,49427911,751235,10651464,1227199,1,100,N,N,N,CP_Drtn,TT_Task,DT_FixedDUR2,RV_OK,TK_Complete,823A-PRE-PW-GS-1080,"Temporary Occupation Area: Conduct, prepare and submit TOA Record Survey for Works Areas 5.1 & 5.3 [PS4.2.3]",,,,0,0,0,0,224,0,0,0,,2011-01-03 08:00,2011-02-07 18:00,2014-10-11 18:00,2014-10-11 18:00,,2017-01-01 00:00,2017-01-01 00:00,,,2011-01-03 08:00,2011-02-07 18:00,,,,,PT_Normal,,,,,FJCyeT+LS+2bB80X1V9eYA,1cwh8toA1kytzfx8wgAplQ,,,N,0,0,,,2017-01-24 14:41,2017-01-24 14:53,CLEMENTL,CLEMENTL
85,49427912,751235,10651464,1227199,1,100,N,N,N,CP_Drtn,TT_Task,DT_FixedDUR2,RV_OK,TK_Complete,823A-PRE-PW-GS-1230,"Contamination Assessment Report & Remediation Action Plan - Prepare & Submit to EPD for Approval (WA3.1, 3.2, 3.3, 3.3A)",,,,0,0,0,0,192,0,0,0,,2010-12-13 08:00,2011-01-12 18:00,2014-10-11 18:00,2014-10-11 18:00,,2017-01-01 00:00,2017-01-01 00:00,,,2010-12-13 08:00,2011-01-12 18:00,,,,,PT_Normal,,,,,WjM1wjb/S/uJyN18hktyAw,HD0+DGJihk+QccbmQ/uFkg,,,N,0,0,,,2017-01-24 14:41,2017-01-24 14:53,CLEMENTL,CLEMENTL
86,49427913,751235,10651464,1227199,1,100,N,N,N,CP_Drtn,TT_Task,DT_FixedDUR2,RV_OK,TK_Complete,823A-PRE-PW-GS-1250,"Conduct remediation in accordance with the approved Remediation Action Plan (WA 3.1, 3.2, 3.3 remaining, 3.3A)",268571,,,0,76800,0,76800,960,0,0,0,,2011-02-28 08:00,2011-07-26 18:00,2014-10-11 18:00,2014-10-11 18:00,,2017-01-01 00:00,2017-01-01 00:00,,,2011-02-28 08:00,2011-07-26 18:00,,,,,PT_Normal,,,,,7o0wJiQgShGH7K4ya58xEg,EWdblw7WqkyhO4dHt9xx/A,,,N,76800,0,,,2017-01-24 14:41,2017-01-24 14:53,CLEMENTL,CLEMENTL
87,49427914,751235,10651464,1227199,1,100,N,N,N,CP_Drtn,TT_Task,DT_FixedDUR2,RV_OK,TK_Complete,823A-PRE-PW-GS-1260,"Remediation Report - Prepare and submit for Approval (WA 3.1, 3.2, 3.3 remaining, 3.3A)",,,,0,0,0,0,192,0,0,0,,2011-07-13 08:00,2011-08-09 18:00,2014-10-11 18:00,2014-10-11 18:00,,2017-01-01 00:00,2017-01-01 00:00,,,2011-07-13 08:00,2011-08-09 18:00,,,,,PT_Normal,,,,,36HoTWPPSvKlBXadpIXJRw,ABYnL0iXEUiQrNB4R7pI5A,,,N,0,0,,,2017-01-24 14:41,2017-01-24 14:53,CLEMENTL,CLEMENTL
88,49427915,751235,10651464,1227199,1,100,N,N,N,CP_Drtn,TT_Task,DT_FixedDUR2,RV_OK,TK_Complete,823A-PRE-PW-GS-1320,Condition Survey EBS for presence of Asbestos and gather samples,,,,0,0,0,0,96,0,0,0,,2010-12-06 08:00,2010-12-18 18:00,2014-10-11 18:00,2014-10-11 18:00,,2017-01-01 00:00,2017-01-01 00:00,,,2010-12-06 08:00,2010-12-18 18:00,,,,,PT_Normal,,,,,gbPqyJPURCi36/8FEGlhDw,7ermWDmZIkaUzMJPGCl51Q,,,N,0,0,,,2017-01-24 14:41,2017-01-24 14:53,CLEMENTL,CLEMENTL
89,49427916,751235,10651464,1227199,1,100,N,N,N,CP_Drtn,TT_Task,DT_FixedDUR2,RV_OK,TK_Complete,823A-PRE-PW-GS-1330,Testing of gathered samples,,,,0,0,0,0,48,0,0,0,,2010-12-20 08:00,2010-12-28 18:00,2014-10-11 18:00,2014-10-11 18:00,,2017-01-01 00:00,2017-01-01 00:00,,,2010-12-20 08:00,2010-12-28 18:00,,,,,PT_Normal,,,,,DdOMc0FCRWGi9b0bvRSRwA,3IQPyYwwI06edAkWyOypQA,,,N,0,0,,,2017-01-24 14:41,2017-01-24 14:53,CLEMENTL,CLEMENTL
90,49427917,751235,10651464,1227199,1,100,N,N,N,CP_Drtn,TT_Task,DT_FixedDUR2,RV_OK,TK_Complete,823A-PRE-PW-GS-1340,Prepare and submit Asbestos Investigation Report (AIR) & Asbestos Abatement Plan (AAP),,,,0,0,0,0,96,0,0,0,,2010-12-29 08:00,2011-01-12 18:00,2014-10-11 18:00,2014-10-11 18:00,,2017-01-01 00:00,2017-01-01 00:00,,,2010-12-29 08:00,2011-01-12 18:00,,,,,PT_Normal,,,,,ZOQrThlcRTC5ARRi1jU8dw,KKHJrHjM5UCGQfcTcVTrsg,,,N,0,0,,,2017-01-24 14:41,2017-01-24 14:53,CLEMENTL,CLEMENTL
91,49427918,751235,10651464,1227199,1,100,N,N,N,CP_Drtn,TT_Task,DT_FixedDUR2,RV_OK,TK_Complete,823A-PRE-PW-GS-1350,Approval period of AIR & AAP,,,,0,0,0,0,240,0,0,0,,2011-01-13 08:00,2011-02-19 18:00,2014-10-11 18:00,2014-10-11 18:00,,2017-01-01 00:00,2017-01-01 00:00,,,2011-01-13 08:00,2011-02-19 18:00,,,,,PT_Normal,,,,,UeQSZmVLRAqAjgTNapFnfg,tqeH/v6/S0CEvvjxJ+tJbg,,,N,0,0,,,2017-01-24 14:41,2017-01-24 14:53,CLEMENTL,CLEMENTL
92,49427919,751235,10651464,1227199,1,100,N,N,N,CP_Drtn,TT_Task,DT_FixedDUR2,RV_OK,TK_Complete,823A-PRE-PW-GS-1370,Asbestos abatement works,268571,,,0,10752,0,10752,192,3072,3072,0,,2011-03-25 08:00,2011-04-26 18:00,2014-10-11 18:00,2014-10-11 18:00,,2017-01-01 00:00,2017-01-01 00:00,,,2011-03-25 08:00,2011-04-26 18:00,,,,,PT_Normal,,,,,vv8s23hnRTa9MCiGXz/LUg,tK1IB2dHEEeYGdqf0vc8Mg,,,N,10752,3072,,,2017-01-24 14:41,2017-01-24 14:53,CLEMENTL,CLEMENTL
93,49427920,751235,10651464,1227199,1,100,N,N,N,CP_Drtn,TT_Task,DT_FixedDUR2,RV_OK,TK_Complete,823A-PRE-PW-GS-1380,Demolition of EBS,268571,,,0,12288,0,12288,192,3072,3072,0,,2011-03-25 08:00,2011-04-26 18:00,2014-10-11 18:00,2014-10-11 18:00,,2017-01-01 00:00,2017-01-01 00:00,,,2011-03-25 08:00,2011-04-26 18:00,,,,,PT_Normal,,,,,MoH5dvctRO2bofiCXjuaJQ,iN4wXHgyikK3ix8zpmd/dg,,,N,12288,3072,,,2017-01-24 14:41,2017-01-24 14:53,CLEMENTL,CLEMENTL
94,49427921,751235,10651464,1227199,1,100,N,N,N,CP_Drtn,TT_Task,DT_FixedDUR2,RV_OK,TK_Complete,823A-PRE-PW-GS-1050,"Initial Site Survey  & Condition Survey (WA4.9A, 4.10, 4.10A, 4.11, 4.12B, 4.12C, 4.15, 4.15A, 4.15B)",,,,0,0,0,0,96,23328,23328,0,,2010-12-06 08:00,2010-12-18 18:00,2014-01-05 18:00,2014-01-05 18:00,,2017-01-01 00:00,2017-01-01 00:00,,,2010-12-06 08:00,2010-12-18 18:00,,,,,PT_Normal,,,,,7ZNHeIvITgap0s/Eyhz1Kg,TBUE9ARSLEGR8u7fypWbUA,,,Y,0,23328,,,2017-01-24 14:41,2017-01-24 14:53,CLEMENTL,CLEMENTL
95,49427922,751235,10651464,1227199,1,100,N,N,N,CP_Drtn,TT_Task,DT_FixedDUR2,RV_OK,TK_Complete,823A-PRE-PW-GS-1060,"Initial Site Survey Report (WA4.9A, 4.10, 4.10A, 4.11, 4.12B, 4.12C, 4.15, 4.15A, 4.15B)",,,,0,0,0,0,112,0,0,0,,2010-12-20 08:00,2011-01-07 18:00,2014-01-05 18:00,2014-01-05 18:00,,2017-01-01 00:00,2017-01-01 00:00,,,2010-12-20 08:00,2011-01-07 18:00,,,,,PT_Normal,,,,,wCo5ftGDS/CK3ceVYg8xRg,JeWi2DCoDkGoAzB/wi3HoA,,,Y,0,0,,,2017-01-24 14:41,2017-01-24 14:53,CLEMENTL,CLEMENTL
96,49427923,751235,10651464,1227199,1,100,N,N,N,CP_Drtn,TT_Task,DT_FixedDUR2,RV_OK,TK_Complete,823A-PRE-PW-GS-1010,Initial Site Survey (WA3.11),,,,0,0,0,0,24,972,972,0,,2010-08-16 08:00,2010-08-18 18:00,2014-10-11 18:00,2014-10-11 18:00,,2017-01-01 00:00,2017-01-01 00:00,,,2010-08-16 08:00,2010-08-18 18:00,,,,,PT_Normal,,,,,mm5wOAtbT32OZuP8wccUdg,H7vq5P1g30iRr6gRjoivSQ,,,N,0,972,,,2017-01-24 14:41,2017-01-24 14:53,CLEMENTL,CLEMENTL
97,49427924,751235,10651464,1227199,1,100,N,N,N,CP_Drtn,TT_Task,DT_FixedDUR2,RV_OK,TK_Complete,823A-PRE-PW-GS-1020,Initial Site Survey Report (WA3.11),,,,0,0,0,0,48,0,0,0,,2010-08-19 08:00,2010-08-25 18:00,2014-10-11 18:00,2014-10-11 18:00,,2017-01-01 00:00,2017-01-01 00:00,,,2010-08-19 08:00,2010-08-25 18:00,,,,,PT_Normal,,,,,1wsbMEwaSgWXNjrsKlXfdQ,RL4Q1fyAUkmRB1+kCK5uTg,,,N,0,0,,,2017-01-24 14:41,2017-01-24 14:53,CLEMENTL,CLEMENTL
98,49427925,751235,10651464,1227199,1,100,N,N,N,CP_Drtn,TT_Task,DT_FixedDUR2,RV_OK,TK_Complete,823A-PRE-PW-GS-1390,Confirmation of tree survey,,,,0,0,0,0,112,0,0,0,,2011-01-03 08:00,2011-01-18 18:00,2014-10-11 18:00,2014-10-11 18:00,,2017-01-01 00:00,2017-01-01 00:00,,,2011-01-03 08:00,2011-01-18 18:00,,,,,PT_Normal,,,,,QlSdv2RlSfqe5UBC3iQGFw,qSQYlZQBnkOoEj1pQdGLHw,,,N,0,0,,,2017-01-24 14:41,2017-01-24 14:53,CLEMENTL,CLEMENTL
99,49427926,751235,10651464,1227199,1,100,N,N,N,CP_Drtn,TT_Task,DT_FixedDUR2,RV_OK,TK_Complete,823A-PRE-PW-GS-1360,Notification period to Engineer and EPD prior to Asbestos abatement works,,,,0,0,0,0,224,0,0,0,,2011-02-21 08:00,2011-03-24 18:00,2014-10-11 18:00,2014-10-11 18:00,,2017-01-01 00:00,2017-01-01 00:00,,,2011-02-21 08:00,2011-03-24 18:00,,,,,PT_Normal,,,,,9bsuslVgRA65NEKacxXH3A,sIyjkmmjy0OMRCfBHVDujw,,,N,0,0,,,2017-01-24 14:41,2017-01-24 14:53,CLEMENTL,CLEMENTL
100,49427927,751235,10651464,1227199,1,100,N,N,N,CP_Drtn,TT_Task,DT_FixedDUR2,RV_OK,TK_Complete,823A-PRE-PW-GS-1120,"Contamination Assessment Plan (CAP) - Prepare and submit to EPD for Approval (WA3.3 - Area M, I, L)",,,,0,0,0,0,96,0,0,0,,2010-10-05 08:00,2010-10-19 18:00,2014-10-11 18:00,2014-10-11 18:00,,2017-01-01 00:00,2017-01-01 00:00,,,2010-10-05 08:00,2010-10-19 18:00,,,,,PT_Normal,,,,,qnSq9td6S/SkvrrK9HW3ZQ,Fujme8odU0WzMJ5Rtd/dgg,,,N,0,0,,,2017-01-24 14:41,2017-01-24 14:53,CLEMENTL,CLEMENTL
101,49427928,751235,10651464,1227199,1,100,N,N,N,CP_Drtn,TT_Task,DT_FixedDUR2,RV_OK,TK_Complete,823A-PRE-PW-GS-1130,"Contamination Assessment Plan (CAP) - Approval Period (WA3.3 - Area M, I, L)",,,,0,0,0,0,288,0,0,0,,2010-10-20 08:00,2010-11-30 18:00,2014-10-11 18:00,2014-10-11 18:00,,2017-01-01 00:00,2017-01-01 00:00,,,2010-10-20 08:00,2010-11-30 18:00,,,,,PT_Normal,,,,,ek5G30a0RzKw8oyBU6Fw7A,bB0loSSZr0iA2LrTFCVFLA,,,N,0,0,,,2017-01-24 14:41,2017-01-24 14:53,CLEMENTL,CLEMENTL
102,49427929,751235,10651464,1227199,1,100,N,N,N,CP_Drtn,TT_Task,DT_FixedDUR2,RV_OK,TK_Complete,823A-PRE-PW-GS-1140,"Conduct Contamination Assessment in accordance with the Approved CAP (WA3.3 - Area M, I, L)",,,,0,0,0,0,192,0,0,0,,2010-12-06 08:00,2011-01-05 18:00,2014-10-11 18:00,2014-10-11 18:00,,2017-01-01 00:00,2017-01-01 00:00,,,2010-12-06 08:00,2011-01-05 18:00,,,,,PT_Normal,,,,,t5VqDiycSdS1p8T+3YHrig,TNsVBoTnpECVqeP/DPnV+Q,,,N,0,0,,,2017-01-24 14:41,2017-01-24 14:53,CLEMENTL,CLEMENTL
103,49427930,751235,10651464,1227199,1,100,N,N,N,CP_Drtn,TT_Task,DT_FixedDUR2,RV_OK,TK_Complete,823A-PRE-PW-GS-1150,"Contamination Assessment Report & Remediation Action Plan - Prepare & Submit to EPD for Approval (WA3.3 - Area M, I, L)",,,,0,0,0,0,192,0,0,0,,2010-12-06 08:00,2011-01-05 18:00,2014-10-11 18:00,2014-10-11 18:00,,2017-01-01 00:00,2017-01-01 00:00,,,2010-12-06 08:00,2011-01-05 18:00,,,,,PT_Normal,,,,,XYeOchBgRbytN3backFjiQ,aLLIni1xt0ySo3X0+lNGQg,,,N,0,0,,,2017-01-24 14:41,2017-01-24 14:53,CLEMENTL,CLEMENTL
104,49427931,751235,10651464,1227199,1,100,N,N,N,CP_Drtn,TT_Task,DT_FixedDUR2,RV_OK,TK_Complete,823A-PRE-PW-GS-1170,"Conduct remediation in accordance with the approved Remediation Action Plan (WA3.3 - Area M, I, L)",268571,,,0,76800,0,76800,960,0,0,0,,2011-02-21 08:00,2011-07-19 18:00,2014-10-11 18:00,2014-10-11 18:00,,2017-01-01 00:00,2017-01-01 00:00,,,2011-02-21 08:00,2011-07-19 18:00,,,,,PT_Normal,,,,,lgU891LESem9eDC2pUy8Ug,HlcvQo9FT0qXPa1E88CBbA,,,N,76800,0,,,2017-01-24 14:41,2017-01-24 14:53,CLEMENTL,CLEMENTL
105,49427932,751235,10651464,1227199,1,100,N,N,N,CP_Drtn,TT_Task,DT_FixedDUR2,RV_OK,TK_Complete,823A-PRE-PW-GS-1180,"Remediation Report - Prepare and submit for Approval (WA3.3 - Area M, I, L)",,,,0,0,0,0,144,0,0,0,,2011-07-20 08:00,2011-08-09 18:00,2014-10-11 18:00,2014-10-11 18:00,,2017-01-01 00:00,2017-01-01 00:00,,,2011-07-20 08:00,2011-08-09 18:00,,,,,PT_Normal,,,,,d46QcyZUSZCJaRX5Os/kiQ,tJAMbMXZUUGie84F39zfGQ,,,N,0,0,,,2017-01-24 14:41,2017-01-24 14:53,CLEMENTL,CLEMENTL
106,49427933,751235,10651464,1227199,1,100,N,N,N,CP_Drtn,TT_Task,DT_FixedDUR2,RV_OK,TK_Complete,823A-PRE-PW-GS-1190,"Remediation Report - Approval (WA3.3 - Area M, I, L)",,,,0,0,0,0,288,0,0,0,,2011-08-10 08:00,2011-09-21 18:00,2014-10-11 18:00,2014-10-11 18:00,,2017-01-01 00:00,2017-01-01 00:00,,,2011-08-10 08:00,2011-09-21 18:00,,,,,PT_Normal,,,,,Z4g4/KYSRTmxQStfZtFt8Q,5DNhZO8kBEiNhN8gyqY4TQ,,,N,0,0,,,2017-01-24 14:41,2017-01-24 14:53,CLEMENTL,CLEMENTL
107,49427934,751235,10651464,1227199,1,100,N,N,N,CP_Drtn,TT_Task,DT_FixedDUR2,RV_OK,TK_Complete,823A-PRE-PW-GS-1240,"Contamination Assessment Report & Remediation Action Plan - Approval (WA3.1, 3.2, 3.3, 3.3A)",,,,0,0,0,0,288,0,0,0,,2011-01-13 08:00,2011-02-26 18:00,2014-10-11 18:00,2014-10-11 18:00,,2017-01-01 00:00,2017-01-01 00:00,,,2011-01-13 08:00,2011-02-26 18:00,,,,,PT_Normal,,,,,jQhB/GhTTladFqgvntTTPA,6m5X8o3gHEyP116sqBXNQw,,,N,0,0,,,2017-01-24 14:41,2017-01-24 14:53,CLEMENTL,CLEMENTL
108,49427935,751235,10651464,1227199,1,100,N,N,N,CP_Drtn,TT_Task,DT_FixedDUR2,RV_OK,TK_Complete,823A-PRE-PW-GS-1300,Remediation Report - Approval (Area Q),,,,0,0,0,0,288,0,0,0,,2011-06-07 08:00,2011-07-19 18:00,2014-10-11 18:00,2014-10-11 18:00,,2017-01-01 00:00,2017-01-01 00:00,,,2011-06-07 08:00,2011-07-19 18:00,,,,,PT_Normal,,,,,ojTOwBB4QpGdf/lyqk3oWw,+m0vEEEGykKf4kydCKmmqA,,,N,0,0,,,2017-01-24 14:41,2017-01-24 14:53,CLEMENTL,CLEMENTL
109,49427936,751235,10651464,1227199,1,100,N,N,N,CP_Drtn,TT_Task,DT_FixedDUR2,RV_OK,TK_Complete,823A-PRE-PW-GS-1310,"Removal of contaminated soil at North Tunnels (Area N,O,P,Q,R,S)",,,,0,0,0,0,464,0,0,0,,2011-09-22 08:00,2011-11-30 18:00,2014-10-11 18:00,2014-10-11 18:00,,2017-01-01 00:00,2017-01-01 00:00,,,2011-09-22 08:00,2011-11-30 18:00,,,,,PT_Normal,,,,,YAwf1dPeRMmbpLnwHEcraA,nYtmIb8s0kGGZFPYCrfiSA,,,N,0,0,,,2017-01-24 14:41,2017-01-24 14:53,CLEMENTL,CLEMENTL
110,49427937,751235,10651464,1227199,1,100,N,N,N,CP_Drtn,TT_Task,DT_FixedDUR2,RV_OK,TK_Complete,823A-PRE-PW-GS-1270,"Remediation Report - Approval (WA 3.1, 3.2, 3.3 remaining, 3.3A)",,,,0,0,0,0,288,0,0,0,,2011-08-10 08:00,2011-09-21 18:00,2014-10-11 18:00,2014-10-11 18:00,,2017-01-01 00:00,2017-01-01 00:00,,,2011-08-10 08:00,2011-09-21 18:00,,,,,PT_Normal,,,,,B8Hf6BU0TdGJxRiYe9arbg,uOFgHarM5EyXLZZFTSy90Q,,,N,0,0,,,2017-01-24 14:41,2017-01-24 14:53,CLEMENTL,CLEMENTL
111,49427938,751235,10651464,1227199,1,100,N,N,N,CP_Drtn,TT_Task,DT_FixedDUR2,RV_OK,TK_Complete,823A-PRE-PW-GS-1160,"Contamination Assessment Report & Remediation Action Plan - Approval (WA3.3 - Area M, I, L)",,,,0,0,0,0,288,0,0,0,,2011-01-06 08:00,2011-02-19 18:00,2014-10-11 18:00,2014-10-11 18:00,,2017-01-01 00:00,2017-01-01 00:00,,,2011-01-06 08:00,2011-02-19 18:00,,,,,PT_Normal,,,,,2mnk83e2QD6BDOF8Iqc4GA,Xdl2l9P5KEG8RLewid1mYg,,,N,0,0,,,2017-01-24 14:41,2017-01-24 14:53,CLEMENTL,CLEMENTL
112,49427939,751235,10651465,1227199,1,100,N,N,N,CP_Drtn,TT_Task,DT_FixedDUR2,RV_OK,TK_Complete,823APRE-PW-ASR-1010,Permit Applications (incl. License to Search and Excavate Antiquities and Excavation Permit),,,,0,0,0,0,368,0,0,0,,2011-01-03 08:00,2011-02-28 18:00,2014-10-11 18:00,2014-10-11 18:00,,2017-01-01 00:00,2017-01-01 00:00,,,2011-01-03 08:00,2011-02-28 18:00,,,,,PT_Normal,,,,,rir2nJb1Q2+rsUpAGoTRfQ,za4UP6m8FESajcVpFNIxgw,,,N,0,0,,,2017-01-24 14:41,2017-01-24 14:53,CLEMENTL,CLEMENTL
113,49427940,751235,10651465,1227199,1,100,N,N,N,CP_Drtn,TT_Task,DT_FixedDUR2,RV_OK,TK_Complete,823APRE-PW-ASR-1020,Check for underground utilities,,,,0,0,0,0,24,0,0,0,,2011-03-01 08:00,2011-03-03 18:00,2014-10-11 18:00,2014-10-11 18:00,,2017-01-01 00:00,2017-01-01 00:00,,,2011-03-01 08:00,2011-03-03 18:00,,,,,PT_Normal,,,,,vDA6M6MpRy2bYxooMXnP8Q,dp13pSdo+k+8HCKiL5KV3Q,,,N,0,0,,,2017-01-24 14:41,2017-01-24 14:53,CLEMENTL,CLEMENTL
114,49427941,751235,10651465,1227199,1,100,N,N,N,CP_Drtn,TT_Task,DT_FixedDUR2,RV_OK,TK_Complete,823APRE-PW-ASR-1030,Field walking and hand augering,,,,0,0,0,0,48,0,0,0,,2011-03-04 08:00,2011-03-10 18:00,2014-10-11 18:00,2014-10-11 18:00,,2017-01-01 00:00,2017-01-01 00:00,,,2011-03-04 08:00,2011-03-10 18:00,,,,,PT_Normal,,,,,Q6vIDddAT0SIB71wwfWMNQ,fbtvYNEwE0+rzygTyVrZ6A,,,N,0,0,,,2017-01-24 14:41,2017-01-24 14:53,CLEMENTL,CLEMENTL
115,49427942,751235,10651465,1227199,1,100,N,N,N,CP_Drtn,TT_Task,DT_FixedDUR2,RV_OK,TK_Complete,823APRE-PW-ASR-1040,Excavation of trial pits,268572,,,0,768,0,768,48,0,0,0,,2011-03-11 08:00,2011-03-17 18:00,2014-10-11 18:00,2014-10-11 18:00,,2017-01-01 00:00,2017-01-01 00:00,,,2011-03-11 08:00,2011-03-17 18:00,,,,,PT_Normal,,,,,QQxytKqdSwmJIQ8RKGVfGA,BqbAsk3PRkKvtflXQxsHRQ,,,N,768,0,,,2017-01-24 14:41,2017-01-24 14:53,CLEMENTL,CLEMENTL
116,49427943,751235,10651465,1227199,1,100,N,N,N,CP_Drtn,TT_Task,DT_FixedDUR2,RV_OK,TK_Complete,823APRE-PW-ASR-1050,Rescue excavation rescue works (if required),,,,0,0,0,0,720,0,0,0,,2011-03-18 08:00,2011-07-09 18:00,2014-10-11 18:00,2014-10-11 18:00,,2017-01-01 00:00,2017-01-01 00:00,,,2011-03-18 08:00,2011-07-09 18:00,,,,,PT_Normal,,,,,ICzMQCw9R+Ctiu/uWACEcQ,JV3q1RN+1EuhORAXXxYQ5w,,,N,0,0,,,2017-01-24 14:41,2017-01-24 14:53,CLEMENTL,CLEMENTL
117,49427944,751235,10651466,1227199,1,100,N,N,N,CP_Drtn,TT_Task,DT_FixedDUR2,RV_OK,TK_Complete,823A-PRE-PMS-1060,Implement and Maintain Programme Management System for 2nd Audit,,,,0,0,0,0,2360,0,0,0,,2011-07-30 08:00,2012-07-27 18:00,2017-06-12 18:00,2017-06-12 18:00,,2017-01-01 00:00,2017-01-01 00:00,,,2011-07-30 08:00,2012-07-27 18:00,,,,,PT_Normal,,,,,dbSq++RwQeeCDhvfxHCR6g,elZPuKIAwU2K5OMgwtr5wQ,,,N,0,0,,,2017-01-24 14:41,2017-01-24 15:36,CLEMENTL,CLEMENTL
118,49427945,751235,10651466,1227199,1,100,N,N,N,CP_Drtn,TT_Task,DT_FixedDUR2,RV_OK,TK_Complete,823A-PRE-PMS-1070,Implement and Maintain Programme Management System for 3rd Audit,,,,0,0,0,0,2360,0,0,0,,2012-07-28 08:00,2013-07-26 18:00,2017-06-12 18:00,2017-06-12 18:00,,2017-01-01 00:00,2017-01-01 00:00,,,2012-07-28 08:00,2013-07-26 18:00,,,,,PT_Normal,,,,,dbTQLE4cT26URHbzbCA34Q,lhWo3KFPw0Wepd8vEkUd9A,,,N,0,0,,,2017-01-24 14:41,2017-01-24 15:36,CLEMENTL,CLEMENTL
119,49427946,751235,10651466,1227199,1,100,N,N,N,CP_Drtn,TT_Task,DT_FixedDUR2,RV_OK,TK_Complete,823A-PRE-PMS-1030,Time Chainage Programme - Prepare and submit for approval [GS4.11.1],,,,0,0,0,0,296,0,0,0,,2010-07-19 08:00,2010-08-30 18:00,2017-06-12 18:00,2017-06-12 18:00,,2017-01-01 00:00,2017-01-01 00:00,,,2010-07-19 08:00,2010-08-30 18:00,,,,,PT_Normal,,,,,oj+A62AeRPuOkr1dyVVI5g,uFZ1wjJylkCafLsjRNdo9g,,,N,0,0,,,2017-01-24 14:41,2017-01-24 15:36,CLEMENTL,CLEMENTL
120,49427947,751235,10651466,1227199,1,100,N,N,N,CP_Drtn,TT_Task,DT_FixedDUR2,RV_OK,TK_Complete,823A-PRE-PMS-1010,Master Programme - Prepare and submit for approval [GS4.6.1],,,,0,0,0,0,296,0,0,0,,2010-07-19 08:00,2010-08-30 18:00,2017-06-12 18:00,2017-06-12 18:00,,2017-01-01 00:00,2017-01-01 00:00,,,2010-07-19 08:00,2010-08-30 18:00,,,,,PT_Normal,,,,,X9bBxnCsTE6wpXo/ILgRZQ,aWXSJFzEZ0CrmpU5eA/5bA,,,N,0,0,,,2017-01-24 14:41,2017-01-24 15:36,CLEMENTL,CLEMENTL
121,49427948,751235,10651466,1227199,1,100,N,N,N,CP_Drtn,TT_Task,DT_FixedDUR2,RV_OK,TK_Complete,823A-PRE-PMS-1020,"Master Programme - Comments , Resubmission and Approval period",,,,0,0,0,0,224,0,0,0,,2010-08-31 08:00,2010-10-04 18:00,2017-06-12 18:00,2017-06-12 18:00,,2017-01-01 00:00,2017-01-01 00:00,,,2010-08-31 08:00,2010-10-04 18:00,,,,,PT_Normal,,,,,fMy+LUnIRTGbRHU9WvjO/w,lzVd26dtd0ez+1GWj9vCMQ,,,N,0,0,,,2017-01-24 14:41,2017-01-24 15:36,CLEMENTL,CLEMENTL
122,49427949,751235,10651466,1227199,1,100,N,N,N,CP_Drtn,TT_Task,DT_FixedDUR2,RV_OK,TK_Complete,823A-PRE-PMS-1040,Time Chainage Programme - Approval period,,,,0,0,0,0,224,0,0,0,,2010-08-31 08:00,2010-10-04 18:00,2017-06-12 18:00,2017-06-12 18:00,,2017-01-01 00:00,2017-01-01 00:00,,,2010-08-31 08:00,2010-10-04 18:00,,,,,PT_Normal,,,,,EWRGyU2xSuC3YQFqcYdB0w,XWQI4yIpOkCqHncqRNSQVg,,,N,0,0,,,2017-01-24 14:41,2017-01-24 15:36,CLEMENTL,CLEMENTL
123,49427950,751235,10651466,1227199,1,100,N,N,N,CP_Drtn,TT_Task,DT_FixedDUR2,RV_OK,TK_Complete,823A-PRE-PMS-1050,Implement and Maintain Programme Management System for 1st Audit,,,,0,0,0,0,1928,0,0,0,,2010-10-05 08:00,2011-07-29 18:00,2017-06-12 18:00,2017-06-12 18:00,,2017-01-01 00:00,2017-01-01 00:00,,,2010-10-05 08:00,2011-07-29 18:00,,,,,PT_Normal,,,,,q1I6Uc04Q2qEf4Q+8dhSUg,auUc+mC+mkedKfSoZC1Erw,,,N,0,0,,,2017-01-24 14:41,2017-01-24 15:36,CLEMENTL,CLEMENTL
124,49427951,751235,10651467,1239098,1,100,N,N,N,CP_Drtn,TT_Task,DT_FixedDUR2,RV_OK,TK_Complete,823A-PRE-DIS-1010,Prepare and Submit Detailed Interface Specification,,,,0,0,0,0,480,0,0,0,,2011-10-08 08:00,2011-12-16 18:00,2017-06-12 18:00,2017-06-12 18:00,,2017-01-01 00:00,2017-01-01 00:00,,,2011-10-08 08:00,2011-12-16 18:00,,,,,PT_Normal,,,,,nYfAMCJMRTGORDfw2V9M7g,xCVXbQmgqE6i/GjDYHmCsw,,,N,0,0,,,2017-01-24 14:41,2017-01-24 15:36,CLEMENTL,CLEMENTL
125,49427952,751235,10651467,1239098,1,100,N,N,N,CP_Drtn,TT_Task,DT_FixedDUR2,RV_OK,TK_Complete,823A-PRE-DIS-1040,Approval of Detailed Interface Plan,,,,0,0,0,0,240,0,0,0,,2012-06-21 08:00,2012-07-27 18:00,2017-06-12 18:00,2017-06-12 18:00,,2017-01-01 00:00,2017-01-01 00:00,,,2012-06-21 08:00,2012-07-27 18:00,,,,,PT_Normal,,,,,KwNXwsxLT961PlxVYHZliQ,6hSScTJa50SsPHRUTst+7Q,,,N,0,0,,,2017-01-24 14:41,2017-01-24 15:36,CLEMENTL,CLEMENTL
126,49427953,751235,10651467,1239098,1,100,N,N,N,CP_Drtn,TT_Task,DT_FixedDUR2,RV_OK,TK_Complete,823A-PRE-DIS-1020,Approval of Detailed Interface Plan,,,,0,0,0,0,240,0,0,0,,2011-12-17 08:00,2012-01-27 18:00,2017-06-12 18:00,2017-06-12 18:00,,2017-01-01 00:00,2017-01-01 00:00,,,2011-12-17 08:00,2012-01-27 18:00,,,,,PT_Normal,,,,,Dus5IwHfR2aK68BU0UV2Vg,hobv0+vOj0uizUVK1K1k1A,,,N,0,0,,,2017-01-24 14:41,2017-01-24 15:36,CLEMENTL,CLEMENTL
127,49427954,751235,10651467,1239098,1,100,N,N,N,CP_Drtn,TT_Task,DT_FixedDUR2,RV_OK,TK_Complete,823A-PRE-DIS-1030,Prepare and Submit Detailed Interface Specification,,,,0,0,0,0,480,0,0,0,,2012-04-10 08:00,2012-06-20 18:00,2017-06-12 18:00,2017-06-12 18:00,,2017-01-01 00:00,2017-01-01 00:00,,,2012-04-10 08:00,2012-06-20 18:00,,,,,PT_Normal,,,,,JafLl3jgT56tCou7xL22FA,gP/tfSMb6Eet2821UwGgqg,,,N,0,0,,,2017-01-24 14:41,2017-01-24 15:36,CLEMENTL,CLEMENTL
128,49427955,751235,10651472,1239098,1,100,N,N,N,CP_Drtn,TT_Task,DT_FixedDUR2,RV_OK,TK_Complete,823A-NT-NLS-NB-1180,Remaining wall and roof slab (Closing of DC access opening),268570,,,0,0,0,27840,232,1856,0,0,,2016-06-18 08:00,2016-06-18 18:00,2017-06-12 18:00,2017-06-12 18:00,,2017-01-01 00:00,2017-01-01 00:00,,,2016-07-15 08:00,2016-08-17 18:00,,,,,PT_Normal,,,,,YbsxKjQaT1GmQjqHWYepIg,,,,N,0,0,,,2017-01-24 14:41,2017-01-24 15:39,CLEMENTL,CLEMENTL
129,49427956,751235,10651472,1239098,1,100,N,N,N,CP_Drtn,TT_Task,DT_FixedDUR2,RV_OK,TK_Complete,823A-NT-NLS-NB-1170,Access opening to DC (DC access period),,,,0,0,0,0,176,0,0,0,,2016-06-18 08:00,2016-06-18 18:00,2017-06-12 18:00,2017-06-12 18:00,,2017-01-01 00:00,2017-01-01 00:00,,,2016-06-18 08:00,2016-07-14 18:00,,,,,PT_Normal,,,,,J3EO1opBSf+6WOy3x2ZYYQ,,,,N,0,0,,,2017-01-24 14:41,2017-01-24 15:39,CLEMENTL,CLEMENTL
130,49427957,751235,10651472,1227199,1,100,N,N,N,CP_Drtn,TT_Task,DT_FixedDUR2,RV_OK,TK_Complete,823A-NT-NLS-NB-1010,Placing of waterproof member T-lock & testing (Base Slab),268571,,,0,0,0,256,16,0,0,0,,2016-04-12 08:00,2016-04-13 18:00,2014-10-11 18:00,2014-10-11 18:00,,2017-01-01 00:00,2017-01-01 00:00,,,2016-05-20 08:00,2016-05-21 18:00,,,,,PT_Normal,,,,,Xl3qy4nPSX6lhlczslIL+g,AQ3+hgX6E0esS+YC8H4KNQ,,,N,0,0,,,2017-01-24 14:41,2017-01-24 14:53,CLEMENTL,CLEMENTL
131,49427958,751235,10651472,1227199,1,100,N,N,N,CP_Drtn,TT_Task,DT_FixedDUR2,RV_OK,TK_Complete,823A-NT-NLS-NB-1020,Erect external formwork (Base Slab),,,,0,0,0,640,16,128,0,0,,2016-04-14 08:00,2016-04-15 18:00,2014-10-11 18:00,2014-10-11 18:00,,2017-01-01 00:00,2017-01-01 00:00,,,2016-05-23 08:00,2016-05-24 18:00,,,,,PT_Normal,,,,,Kbg99VVvSViNDa26/3NA8g,IEbhU6kpvkWmIZL3JMmFxA,,,N,0,0,,,2017-01-24 14:41,2017-01-24 14:53,CLEMENTL,CLEMENTL
132,49427959,751235,10651472,1227199,1,100,N,N,N,CP_Drtn,TT_Task,DT_FixedDUR2,RV_OK,TK_Complete,823A-NT-NLS-NB-1030,Rebar fixing (Base Slab),,,,0,0,0,1728,24,192,0,0,,2016-04-16 08:00,2016-04-19 18:00,2014-10-11 18:00,2014-10-11 18:00,,2017-01-01 00:00,2017-01-01 00:00,,,2016-05-25 08:00,2016-05-27 18:00,,,,,PT_Normal,,,,,fptsxuVUT86VcniN+Hppwg,dp0HCwB9xkiqtiuASYUQ5w,,,N,0,0,,,2017-01-24 14:41,2017-01-24 14:53,CLEMENTL,CLEMENTL
133,49427960,751235,10651472,1227199,1,100,N,N,N,CP_Drtn,TT_Task,DT_FixedDUR2,RV_OK,TK_Complete,823A-NT-NLS-NB-1040,Erect internal kicker formwork (Base Slab),,,,0,0,0,640,16,128,0,0,,2016-04-20 08:00,2016-04-21 18:00,2014-10-11 18:00,2014-10-11 18:00,,2017-01-01 00:00,2017-01-01 00:00,,,2016-05-28 08:00,2016-05-30 18:00,,,,,PT_Normal,,,,,OXiwSrrORdWMAleaVNXRpw,9tVbNtXBREOOzVRf28fvlA,,,N,0,0,,,2017-01-24 14:42,2017-01-24 14:53,CLEMENTL,CLEMENTL
134,49427961,751235,10651472,1227199,1,100,N,N,N,CP_Drtn,TT_Task,DT_FixedDUR2,RV_OK,TK_Complete,823A-NT-NLS-NB-1050,Concreting (Base Slab) (225m3),268581,,,0,0,0,768,8,128,0,0,,2016-04-22 08:00,2016-04-22 18:00,2014-10-11 18:00,2014-10-11 18:00,,2017-01-01 00:00,2017-01-01 00:00,,,2016-05-31 08:00,2016-05-31 18:00,,,,,PT_Normal,,,,,XU0kCsAKQpeteiCldteyZQ,f89fghl0U0e5LP5GFcFaCg,,,N,0,0,,,2017-01-24 14:42,2017-01-24 14:53,CLEMENTL,CLEMENTL
135,49427962,751235,10651472,1227199,1,100,N,N,N,CP_Drtn,TT_Task,DT_FixedDUR2,RV_OK,TK_Complete,823A-NT-NLS-NB-1060,Curing (Base Slab),,,,0,0,0,448,56,0,0,0,,2016-04-23 08:00,2016-04-29 18:00,2014-10-11 18:00,2014-10-11 18:00,,2017-01-01 00:00,2017-01-01 00:00,,,2016-06-01 08:00,2016-06-08 18:00,,,,,PT_Normal,,,,,EfamummuQ4yM7xnVyWlezQ,zvM5xvkpKUeNnjuMjHPcaw,,,N,0,0,,,2017-01-24 14:42,2017-01-24 14:53,CLEMENTL,CLEMENTL
136,49427963,751235,10651472,1227199,1,100,N,N,N,CP_Drtn,TT_Task,DT_FixedDUR2,RV_OK,TK_Complete,823A-NT-NLS-NB-1080,Removal of formwork (Base Slab),,,,0,0,0,320,8,64,0,0,,2016-05-09 08:00,2016-05-10 18:00,2014-10-11 18:00,2014-10-11 18:00,,2017-01-01 00:00,2017-01-01 00:00,,,2016-05-24 08:00,2016-05-24 18:00,,,,,PT_Normal,,,,,9/SeZDJAQYmkm1ys6soLqw,AlX13Pdx0EOeZrCotB3jeg,,,N,0,0,,,2017-01-24 14:42,2017-01-24 14:53,CLEMENTL,CLEMENTL
137,49427964,751235,10651472,1227199,1,100,N,N,N,CP_Drtn,TT_Task,DT_FixedDUR2,RV_OK,TK_Complete,823A-NT-NLS-NB-1100,Rebar fixing (Wall & Roof),,,,0,0,0,1728,24,192,0,0,,2016-05-17 08:00,2016-05-19 18:00,2014-10-11 18:00,2014-10-11 18:00,,2017-01-01 00:00,2017-01-01 00:00,,,2016-05-30 08:00,2016-06-01 18:00,,,,,PT_Normal,,,,,ijudZI1OQgSsGDb/luXqPw,LDG9GLY9x0eJQTp1W5IxHw,,,N,0,0,,,2017-01-24 14:42,2017-01-24 14:53,CLEMENTL,CLEMENTL
138,49427965,751235,10651472,1227199,1,100,N,N,N,CP_Drtn,TT_Task,DT_FixedDUR2,RV_OK,TK_Complete,823A-NT-NLS-NB-1110,Erect external formwork (Wall & Roof),,,,0,0,0,1664,16,128,0,0,,2016-05-20 08:00,2016-05-21 18:00,2014-10-11 18:00,2014-10-11 18:00,,2017-01-01 00:00,2017-01-01 00:00,,,2016-06-02 08:00,2016-06-03 18:00,,,,,PT_Normal,,,,,Hx9U8i77Srmrr/pRoKdtdA,WqoQVHgRQk+vCYgaATDRGg,,,N,0,0,,,2017-01-24 14:42,2017-01-24 14:53,CLEMENTL,CLEMENTL
139,49427966,751235,10651472,1227199,1,100,N,N,N,CP_Drtn,TT_Task,DT_FixedDUR2,RV_OK,TK_Complete,823A-NT-NLS-NB-1120,Concreting (Wall & Roof) (444m3),268581,,,0,0,0,896,8,128,0,0,,2016-05-23 08:00,2016-05-23 18:00,2014-10-11 18:00,2014-10-11 18:00,,2017-01-01 00:00,2017-01-01 00:00,,,2016-06-04 08:00,2016-06-04 18:00,,,,,PT_Normal,,,,,M+shz2mdQRCklmy3tMKqZg,xOwGVKyrbU+tF1hz3URdfw,,,N,0,0,,,2017-01-24 14:42,2017-01-24 14:53,CLEMENTL,CLEMENTL
140,49427967,751235,10651472,1227199,1,100,N,N,N,CP_Drtn,TT_Task,DT_FixedDUR2,RV_OK,TK_Complete,823A-NT-NLS-NB-1150,Removal external formwork (Wall),,,,0,0,0,320,8,64,0,0,,2016-06-01 08:00,2016-06-01 18:00,2017-06-12 18:00,2017-06-12 18:00,,2017-01-01 00:00,2017-01-01 00:00,,,2016-06-01 08:00,2016-06-01 18:00,,,,,PT_Normal,,,,,tj0QDc1pSZWws3HnhzTMRA,Q7cOmNyATUqxHk77XXkUVw,,,N,0,0,,,2017-01-24 14:42,2017-01-24 15:39,CLEMENTL,CLEMENTL
141,49427968,751235,10651472,1227199,1,100,N,N,N,CP_Drtn,TT_Task,DT_FixedDUR2,RV_OK,TK_Complete,823A-NT-NLS-NB-1130,Curing (Wall & Roof),,,,0,0,0,448,56,0,0,0,,2016-05-24 08:00,2016-05-30 18:00,2017-06-12 18:00,2017-06-12 18:00,,2017-01-01 00:00,2017-01-01 00:00,,,2016-06-06 08:00,2016-06-14 18:00,,,,,PT_Normal,,,,,kg+V81qoQnCem5uB9n5lqg,W1wb8stp1U2B7uxJ39NhsA,,,N,0,0,,,2017-01-24 14:42,2017-01-24 15:39,CLEMENTL,CLEMENTL
142,49427969,751235,10651472,1227199,1,100,N,N,N,CP_Drtn,TT_Task,DT_FixedDUR2,RV_OK,TK_Complete,823A-NT-NLS-NB-1160,Side walkway and cable bracket (102m3),268581,,,0,0,0,9152,104,1664,0,0,,2016-06-02 08:00,2016-06-17 18:00,2017-06-12 18:00,2017-06-12 18:00,,2017-01-01 00:00,2017-01-01 00:00,,,2016-06-02 08:00,2016-06-17 18:00,,,,,PT_Normal,,,,,G6wzdMyOQvKx462MjCaCZQ,oYx9zk1Z/Uif2Ki3bCYfig,,,N,0,0,,,2017-01-24 14:42,2017-01-24 15:39,CLEMENTL,CLEMENTL
143,49427970,751235,10651472,1239098,1,100,N,N,N,CP_Drtn,TT_Task,DT_FixedDUR2,RV_OK,TK_Complete,823A-NT-NLS-NB-1140,Preparation of construction joint for wall and roof,268572,,,0,0,0,128,8,0,0,0,,2016-05-31 08:00,2016-05-31 18:00,2017-06-12 18:00,2017-06-12 18:00,,2017-01-01 00:00,2017-01-01 00:00,,,2016-06-15 08:00,2016-06-15 18:00,,,,,PT_Normal,,,,,54uSiNT4TU+Xotmnyl+SiA,VQsjcgXoa0qJNAwDdC117A,,,N,0,0,,,2017-01-24 14:42,2017-01-24 15:39,CLEMENTL,CLEMENTL
144,49427971,751235,10651472,1239098,1,100,N,N,N,CP_Drtn,TT_Task,DT_FixedDUR2,RV_OK,TK_Complete,823A-NT-NLS-NB-1070,Preparation of construction joint for base slab,268572,,,0,0,0,128,8,0,0,0,,2016-04-30 08:00,2016-04-30 18:00,2014-10-11 18:00,2014-10-11 18:00,,2017-01-01 00:00,2017-01-01 00:00,,,2016-06-01 08:00,2016-06-01 18:00,,,,,PT_Normal,,,,,rppf9qujQEqN9Ltrm30QqA,,,,N,0,0,,,2017-01-24 14:42,2017-01-24 14:53,CLEMENTL,CLEMENTL
145,49427972,751235,10651472,1227199,1,100,N,N,N,CP_Drtn,TT_Task,DT_FixedDUR2,RV_OK,TK_Complete,823A-NT-NLS-NB-1090,Erect internal formwork & Falsework (Wall & Roof),,,,0,0,0,3328,32,256,0,0,,2016-05-11 08:00,2016-05-16 18:00,2014-10-11 18:00,2014-10-11 18:00,,2017-01-01 00:00,2017-01-01 00:00,,,2016-05-25 08:00,2016-05-28 18:00,,,,,PT_Normal,,,,,nmxB6SujRwyWU6bS8Rh0kw,bJ3v4k7cTEyqU9oxlPijBA,,,N,0,0,,,2017-01-24 14:42,2017-01-24 14:53,CLEMENTL,CLEMENTL
146,49427973,751235,10651473,1227199,1,100,N,N,N,CP_Drtn,TT_Task,DT_FixedDUR2,RV_OK,TK_Complete,823A-NT-NLS-SB-1010,Placing of waterproof member T-lock & testing (Base Slab),268571,,,0,0,0,256,16,0,0,0,,2014-12-05 08:00,2014-12-06 18:00,2017-06-12 18:00,2017-06-12 18:00,,2017-01-01 00:00,2017-01-01 00:00,,,2014-12-06 08:00,2014-12-08 18:00,,,,,PT_Normal,,,,,62WVwaVYS/KJGgvitk3nsw,Cz85j4LheEyGvrxctkP3uA,,,N,0,0,,,2017-01-24 14:42,2017-01-24 15:39,CLEMENTL,CLEMENTL
147,49427974,751235,10651473,1227199,1,100,N,N,N,CP_Drtn,TT_Task,DT_FixedDUR2,RV_OK,TK_Complete,823A-NT-NLS-SB-1020,Erect external formwork (Base Slab),,,,0,0,0,640,16,128,0,0,,2014-12-08 08:00,2014-12-09 18:00,2017-06-12 18:00,2017-06-12 18:00,,2017-01-01 00:00,2017-01-01 00:00,,,2014-12-09 08:00,2014-12-10 18:00,,,,,PT_Normal,,,,,OYwtTY+BQ3aDYJ058z8xrQ,0qJpYrLpNE6NhNDFrCGLAA,,,N,0,0,,,2017-01-24 14:42,2017-01-24 15:39,CLEMENTL,CLEMENTL
148,49427975,751235,10651473,1227199,1,100,N,N,N,CP_Drtn,TT_Task,DT_FixedDUR2,RV_OK,TK_Complete,823A-NT-NLS-SB-1030,Rebar fixing (Base Slab),,,,0,0,0,1728,24,192,0,0,,2014-12-10 08:00,2014-12-12 18:00,2017-06-12 18:00,2017-06-12 18:00,,2017-01-01 00:00,2017-01-01 00:00,,,2014-12-11 08:00,2014-12-13 18:00,,,,,PT_Normal,,,,,qlE2k/XyQ8CGJn+Xu7OYxw,AMUWBILEVk2PUFtkRP6RCQ,,,N,0,0,,,2017-01-24 14:42,2017-01-24 15:39,CLEMENTL,CLEMENTL
149,49427976,751235,10651473,1227199,1,100,N,N,N,CP_Drtn,TT_Task,DT_FixedDUR2,RV_OK,TK_Complete,823A-NT-NLS-SB-1040,Erect internal kicker formwork (Base Slab),,,,0,0,0,896,16,128,0,0,,2014-12-13 08:00,2014-12-15 18:00,2017-06-12 18:00,2017-06-12 18:00,,2017-01-01 00:00,2017-01-01 00:00,,,2014-12-15 08:00,2014-12-16 18:00,,,,,PT_Normal,,,,,Lkya/KYTTLO54x+izg7vuA,PhTt4jIWfkyAZIcJBEgoEw,,,N,0,0,,,2017-01-24 14:42,2017-01-24 15:39,CLEMENTL,CLEMENTL
150,49427977,751235,10651473,1227199,1,100,N,N,N,CP_Drtn,TT_Task,DT_FixedDUR2,RV_OK,TK_Complete,823A-NT-NLS-SB-1050,Concreting (Base Slab) (225m3),268581,,,0,0,0,768,8,128,0,0,,2014-12-16 08:00,2014-12-16 18:00,2017-06-12 18:00,2017-06-12 18:00,,2017-01-01 00:00,2017-01-01 00:00,,,2014-12-17 08:00,2014-12-17 18:00,,,,,PT_Normal,,,,,tA5DzX3KQsig7SLsFqA3Dg,CN499iG7eEWzNSMFX1V69A,,,N,0,0,,,2017-01-24 14:42,2017-01-24 15:39,CLEMENTL,CLEMENTL
151,49427978,751235,10651473,1227199,1,100,N,N,N,CP_Drtn,TT_Task,DT_FixedDUR2,RV_OK,TK_Complete,823A-NT-NLS-SB-1060,Curing (Base Slab),,,,0,0,0,448,56,0,0,0,,2014-12-17 08:00,2014-12-23 18:00,2017-06-12 18:00,2017-06-12 18:00,,2017-01-01 00:00,2017-01-01 00:00,,,2014-12-18 08:00,2014-12-27 18:00,,,,,PT_Normal,,,,,ItCtFabmSjuruTi4x62VjQ,9g/QHWzQdkSehT3n6QAzqA,,,N,0,0,,,2017-01-24 14:42,2017-01-24 15:39,CLEMENTL,CLEMENTL
152,49427979,751235,10651473,1227199,1,100,N,N,N,CP_Drtn,TT_Task,DT_FixedDUR2,RV_OK,TK_Complete,823A-NT-NLS-SB-1080,Erect internal formwork & Falsework (Wall & Roof),,,,0,0,0,2496,24,192,0,0,,2015-06-06 08:00,2015-06-09 18:00,2017-06-12 18:00,2017-06-12 18:00,,2017-01-01 00:00,2017-01-01 00:00,,,2015-06-06 08:00,2015-06-09 18:00,,,,,PT_Normal,,,,,CyerQXd7T4abOjsPxJINLA,mh0E0nFEhUWmg/fOuq+aVw,,,N,0,0,,,2017-01-24 14:42,2017-01-24 15:39,CLEMENTL,CLEMENTL
153,49427980,751235,10651473,1227199,1,100,N,N,N,CP_Drtn,TT_Task,DT_FixedDUR2,RV_OK,TK_Complete,823A-NT-NLS-SB-1090,Rebar fixing (Wall & Roof),,,,0,0,0,1728,24,192,0,0,,2015-06-22 08:00,2015-06-24 18:00,2017-06-12 18:00,2017-06-12 18:00,,2017-01-01 00:00,2017-01-01 00:00,,,2015-06-10 08:00,2015-06-12 18:00,,,,,PT_Normal,,,,,xdmm0TakTvSBOm4cy+F27w,+OKNh20V+Eevj+IpLoMLeA,,,N,0,0,,,2017-01-24 14:42,2017-01-24 15:39,CLEMENTL,CLEMENTL
154,49427981,751235,10651473,1227199,1,100,N,N,N,CP_Drtn,TT_Task,DT_FixedDUR2,RV_OK,TK_Complete,823A-NT-NLS-SB-1100,Erect external formwork (Wall & Roof),,,,0,0,0,1664,16,128,0,0,,2015-06-25 01:00,2015-06-29 18:00,2017-06-12 18:00,2017-06-12 18:00,,2017-01-01 00:00,2017-01-01 00:00,,,2015-06-13 08:00,2015-06-15 18:00,,,,,PT_Normal,,,,,2woIxO+iT+SZ44EzyiAmzw,4dgFfmdop0C+Lwm6fYchrg,,,N,0,0,,,2017-01-24 14:42,2017-01-24 15:39,CLEMENTL,CLEMENTL
155,49427982,751235,10651473,1227199,1,100,N,N,N,CP_Drtn,TT_Task,DT_FixedDUR2,RV_OK,TK_Complete,823A-NT-NLS-SB-1110,Concreting (Wall & Roof) (444m3),268581,,,0,0,0,896,8,128,0,0,,2015-06-30 08:00,2015-06-30 18:00,2017-06-12 18:00,2017-06-12 18:00,,2017-01-01 00:00,2017-01-01 00:00,,,2015-06-16 08:00,2015-06-16 18:00,,,,,PT_Normal,,,,,omhhTTMBS2KDWodiUN2VBQ,2WX0PGnC5EiMbATP6OMzIg,,,N,0,0,,,2017-01-24 14:42,2017-01-24 15:39,CLEMENTL,CLEMENTL
156,49427983,751235,10651473,1227199,1,100,N,N,N,CP_Drtn,TT_Task,DT_FixedDUR2,RV_OK,TK_Complete,823A-NT-NLS-SB-1140,Removal external formwork (Wall),,,,0,0,0,320,8,64,0,0,,2015-07-17 08:00,2015-07-17 18:00,2017-06-12 18:00,2017-06-12 18:00,,2017-01-01 00:00,2017-01-01 00:00,,,2015-07-17 08:00,2015-07-17 18:00,,,,,PT_Normal,,,,,QSNT4QvASp6q4D5SvSj8qg,eICdZP+mxkyZrGvXHSn+lA,,,N,0,0,,,2017-01-24 14:42,2017-01-24 15:39,CLEMENTL,CLEMENTL
157,49427984,751235,10651473,1227199,1,100,N,N,N,CP_Drtn,TT_Task,DT_FixedDUR2,RV_OK,TK_Complete,823A-NT-NLS-SB-1120,Curing (Wall & Roof),,,,0,0,0,448,56,0,0,0,,2015-07-08 08:00,2015-07-15 18:00,2017-06-12 18:00,2017-06-12 18:00,,2017-01-01 00:00,2017-01-01 00:00,,,2015-07-08 08:00,2015-07-15 18:00,,,,,PT_Normal,,,,,qGViHd/OSIWPDXnUxhvbfw,Dn8E1oBxU0SmFmHhoER5VQ,,,N,0,0,,,2017-01-24 14:42,2017-01-24 15:39,CLEMENTL,CLEMENTL
158,49427985,751235,10651473,1227199,1,100,N,N,N,CP_Drtn,TT_Task,DT_FixedDUR2,RV_OK,TK_Complete,823A-NT-NLS-SB-1150,Side walkway and cable bracket (360m3),,,,0,9600,0,9600,120,1920,1920,0,,2015-07-18 08:00,2015-10-05 18:00,2017-06-12 18:00,2017-06-12 18:00,,2017-01-01 00:00,2017-01-01 00:00,,,2015-07-18 08:00,2015-08-04 18:00,,,,,PT_Normal,,,,,bkKta4GUTfuGM239kEU53A,6DfjA4hSm0y9r3cHItZxqQ,,,N,9600,1920,,,2017-01-24 14:42,2017-01-24 15:39,CLEMENTL,CLEMENTL
159,49427986,751235,10651473,1239098,1,100,N,N,N,CP_Drtn,TT_Task,DT_FixedDUR2,RV_OK,TK_Complete,823A-NT-NLS-SB-1130,Preparation of construction joint for wall and roof,268571,,,0,0,0,128,8,0,0,0,,2015-07-16 08:00,2015-07-16 18:00,2017-06-12 18:00,2017-06-12 18:00,,2017-01-01 00:00,2017-01-01 00:00,,,2015-07-16 08:00,2015-07-16 18:00,,,,,PT_Normal,,,,,tpbMW6LBQ4WbAkN0f5SM2A,lpXr98mNPEGUiH7+I1IKrw,,,N,0,0,,,2017-01-24 14:42,2017-01-24 15:39,CLEMENTL,CLEMENTL
160,49427987,751235,10651473,1239098,1,100,N,N,N,CP_Drtn,TT_Task,DT_FixedDUR2,RV_OK,TK_Complete,823A-NT-NLS-SB-1170,Remaining wall and roof slab (Closing of DC access opening),268571,,,0,0,0,27840,232,1856,0,0,,2015-11-03 00:00,2015-11-30 18:00,2017-06-12 18:00,2017-06-12 18:00,,2017-01-01 00:00,2017-01-01 00:00,,,2015-12-12 08:00,2016-01-18 18:00,,,,,PT_Normal,,,,,W1OOSuDKRmGjLhCkP1atBA,N2U4PN+tCUeBA+tBWJE38g,,,N,0,0,,,2017-01-24 14:42,2017-01-24 15:39,CLEMENTL,CLEMENTL
161,49427988,751235,10651473,1239098,1,100,N,N,N,CP_Drtn,TT_Task,DT_FixedDUR2,RV_OK,TK_Complete,823A-NT-NLS-SB-1160,Access opening to DC (DC access period),,,,0,0,0,0,984,0,0,0,,2015-10-06 08:00,2015-11-02 18:00,2017-06-12 18:00,2017-06-12 18:00,,2017-01-01 00:00,2017-01-01 00:00,,,2015-10-06 08:00,2016-03-04 18:00,,,,,PT_Normal,,,,,2KoZB2uhQZeWrFA/doVoZw,j0FQAwXoEUKXeKAKS2EiYg,,,N,0,0,,,2017-01-24 14:42,2017-01-24 15:39,CLEMENTL,CLEMENTL
162,49427989,751235,10651473,1227199,1,100,N,N,N,CP_Drtn,TT_Task,DT_FixedDUR2,RV_OK,TK_Complete,823A-NT-NLS-SB-1070,Removal of formwork (Base Slab),,,,0,0,0,320,8,64,0,0,,2014-12-24 08:00,2014-12-24 18:00,2017-06-12 18:00,2017-06-12 18:00,,2017-01-01 00:00,2017-01-01 00:00,,,2014-12-19 08:00,2014-12-19 18:00,,,,,PT_Normal,,,,,WO4hiAaoTWGBE5Jy82M+UA,uX7pqID8XUqg/m8DHJRX8w,,,N,0,0,,,2017-01-24 14:42,2017-01-24 15:39,CLEMENTL,CLEMENTL
163,49427990,751235,10651474,1239098,1,100,N,N,N,CP_Drtn,TT_Task,DT_FixedDUR2,RV_OK,TK_Complete,823A-NT-CC7A-1150,Remove Strut S1,,,,0,0,0,0,16,0,0,0,,2016-10-11 08:00,2016-11-01 18:00,2017-06-12 18:00,2017-06-12 18:00,,2017-01-01 00:00,2017-01-01 00:00,,,2016-10-22 08:00,2016-10-24 18:00,,,,,PT_Normal,,,,,4cEM4KkmQZyf344YdOuaJA,,,,N,0,0,,,2017-01-24 14:42,2017-01-24 15:39,CLEMENTL,CLEMENTL
164,49427991,751235,10651474,1239098,1,100,N,N,N,CP_Drtn,TT_Task,DT_FixedDUR2,RV_OK,TK_Complete,823A-NT-CC7A-1160,Backfilling up top S0 Soffit,,,,0,0,0,0,48,0,0,0,,2016-11-01 08:00,2016-11-05 18:00,2017-06-12 18:00,2017-06-12 18:00,,2017-01-01 00:00,2017-01-01 00:00,,,2016-11-07 08:00,2016-11-12 18:00,,,,,PT_Normal,,,,,DkAYSOaCSvWIsnJ53AgFsQ,,,,N,0,0,,,2017-01-24 14:42,2017-01-24 15:39,CLEMENTL,CLEMENTL
165,49427992,751235,10651474,1239098,1,100,N,N,N,CP_Drtn,TT_Task,DT_FixedDUR2,RV_OK,TK_Complete,823A-NT-CC7A-1170,Remove Strut S0,,,,0,0,0,0,16,0,0,0,,2016-11-07 08:00,2016-11-08 18:00,2017-06-12 18:00,2017-06-12 18:00,,2017-01-01 00:00,2017-01-01 00:00,,,2016-11-14 08:00,2016-11-15 18:00,,,,,PT_Normal,,,,,XueQj9biQgC8e/vI17KflA,,,,N,0,0,,,2017-01-24 14:42,2017-01-24 15:39,CLEMENTL,CLEMENTL
166,49427993,751235,10651474,1239098,1,100,N,N,N,CP_Drtn,TT_Task,DT_FixedDUR2,RV_OK,TK_Complete,823A-NT-CC7A-1130,Remove Strut S2,,,,0,0,0,0,24,0,0,0,,2016-10-03 08:00,2016-10-11 18:00,2017-06-12 18:00,2017-06-12 18:00,,2017-01-01 00:00,2017-01-01 00:00,,,2016-10-03 08:00,2016-10-05 18:00,,,,,PT_Normal,,,,,2FQc9ofLTvulg4mBIUZqXQ,,,,N,0,0,,,2017-01-24 14:42,2017-01-24 15:39,CLEMENTL,CLEMENTL
167,49427994,751235,10651474,1239098,1,100,N,N,N,CP_Drtn,TT_Task,DT_FixedDUR2,RV_OK,TK_Complete,823A-NT-CC7A-1140,Backfilling up top S1 Soffit,,,,0,0,0,0,104,0,0,0,,2016-10-28 08:00,2016-11-01 18:00,2017-06-12 18:00,2017-06-12 18:00,,2017-01-01 00:00,2017-01-01 00:00,,,2016-10-06 08:00,2016-10-21 18:00,,,,,PT_Normal,,,,,hm1O6LFaQOm2jFfOBwYZzw,,,,N,0,0,,,2017-01-24 14:42,2017-01-24 15:39,CLEMENTL,CLEMENTL
168,49427995,751235,10651474,1239098,1,100,N,N,N,CP_Drtn,TT_Task,DT_FixedDUR2,RV_OK,TK_Complete,823A-NT-CC7A-1180,Backfilling up to ground level,,,,0,0,0,0,24,0,0,0,,2016-11-09 08:00,2016-11-11 18:00,2017-06-12 18:00,2017-06-12 18:00,,2017-01-01 00:00,2017-01-01 00:00,,,2016-11-16 08:00,2016-11-18 18:00,,,,,PT_Normal,,,,,Ijofn91AR7yMuks3QQA8eA,,,,N,0,0,,,2017-01-24 14:42,2017-01-24 15:39,CLEMENTL,CLEMENTL
169,49427996,751235,10651474,1239098,1,100,N,N,N,CP_Drtn,TT_Task,DT_FixedDUR2,RV_OK,TK_Complete,823A-NT-CC7A-1120,Backfilling between tunnels (2000m3),268580,,,0,0,0,22016,112,8256,0,0,,2016-09-13 08:00,2016-09-30 18:00,2017-06-12 18:00,2017-06-12 18:00,,2017-01-01 00:00,2017-01-01 00:00,,,2016-09-01 08:00,2016-09-17 18:00,,,,,PT_Normal,,,,,HWKMIP+MTzmEQIVtET4NtQ,,,,N,0,0,,,2017-01-24 14:42,2017-01-24 15:39,CLEMENTL,CLEMENTL
170,49427997,751235,10651475,1239098,0,100,N,N,N,CP_Drtn,TT_FinMile,DT_FixedDrtn,RV_OK,TK_Complete,823A-NT-NLS-ELS-1120,Handover to TBM Team,,,,0,0,0,0,0,0,0,0,,2012-05-31 18:00,2012-05-31 18:00,2014-10-11 18:00,2014-10-11 18:00,,2017-01-01 00:00,2017-01-01 00:00,,,2012-05-31 18:00,2012-05-31 18:00,,,,,PT_Normal,,,,,Q/HQCDivQRO+KHJ8Ye2SvA,,,,N,0,0,,,2017-01-24 14:42,2017-01-24 14:53,CLEMENTL,CLEMENTL
171,49427998,751235,10651475,1227199,1,100,N,N,N,CP_Drtn,TT_Task,DT_FixedDUR2,RV_OK,TK_Complete,823A-NT-NLS-ELS-1010,Excavate up to +10.5mPD (369m3),268580,,,0,1152,0,1152,16,896,896,0,,2011-12-01 08:00,2011-12-02 18:00,2014-10-11 18:00,2014-10-11 18:00,,2017-01-01 00:00,2017-01-01 00:00,,,2011-12-01 08:00,2011-12-02 18:00,,,,,PT_Normal,,,,,9O7460DCQGecUUe0waJ50w,s57QuyGiRiCrKK7U6iBfzw,,,N,1152,896,,,2017-01-24 14:42,2017-01-24 14:53,CLEMENTL,CLEMENTL
172,49427999,751235,10651475,1227199,1,100,N,N,N,CP_Drtn,TT_Task,DT_FixedDUR2,RV_OK,TK_Complete,823A-NT-NLS-ELS-1020,Install Strut S0 +11.0mPD,,,,0,2304,0,2304,32,1280,1280,0,,2011-12-03 08:00,2011-12-07 18:00,2014-10-11 18:00,2014-10-11 18:00,,2017-01-01 00:00,2017-01-01 00:00,,,2011-12-03 08:00,2011-12-07 18:00,,,,,PT_Normal,,,,,fjcvaGTpTtGbgmerDycfGw,RFE5NPJgT1CA2CTFeMMYvA,,,N,2304,1280,,,2017-01-24 14:42,2017-01-24 14:53,CLEMENTL,CLEMENTL
173,49428000,751235,10651475,1227199,1,100,N,N,N,CP_Drtn,TT_Task,DT_FixedDUR2,RV_OK,TK_Complete,823A-NT-NLS-ELS-1030,Excavate up to +8.0mPD (1525m3),268580,,,0,5888,0,5888,48,5120,5120,0,,2011-12-06 08:00,2011-12-12 18:00,2014-10-11 18:00,2014-10-11 18:00,,2017-01-01 00:00,2017-01-01 00:00,,,2011-12-06 08:00,2011-12-12 18:00,,,,,PT_Normal,,,,,YSDdvL/gRwG/NDBjaR4IhA,4YC6QReMTCepVc2Aa/3o7g,,,N,5888,5120,,,2017-01-24 14:42,2017-01-24 14:53,CLEMENTL,CLEMENTL
174,49428001,751235,10651475,1227199,1,100,N,N,N,CP_Drtn,TT_Task,DT_FixedDUR2,RV_OK,TK_Complete,823A-NT-NLS-ELS-1040,Install Strut S1 +8.5mPD,,,,0,2304,0,2304,32,1280,1280,0,,2011-12-10 08:00,2011-12-14 18:00,2014-10-11 18:00,2014-10-11 18:00,,2017-01-01 00:00,2017-01-01 00:00,,,2011-12-10 08:00,2011-12-14 18:00,,,,,PT_Normal,,,,,bzlZswx3SWuUJgkzb23UBg,jzysMJt9QY2jjB3zGNCAQg,,,N,2304,1280,,,2017-01-24 14:42,2017-01-24 14:53,CLEMENTL,CLEMENTL
175,49428002,751235,10651475,1227199,1,100,N,N,N,CP_Drtn,TT_Task,DT_FixedDUR2,RV_OK,TK_Complete,823A-NT-NLS-ELS-1050,Excavate up to +4.5mPD (2135m3),268580,,,0,6272,0,6272,56,5376,5376,0,,2011-12-13 08:00,2011-12-20 18:00,2014-10-11 18:00,2014-10-11 18:00,,2017-01-01 00:00,2017-01-01 00:00,,,2011-12-13 08:00,2011-12-20 18:00,,,,,PT_Normal,,,,,RFu/ihUERAmcLFqvmae1yQ,Aq/8ews1SqCHGK9LRsOpwg,,,N,6272,5376,,,2017-01-24 14:42,2017-01-24 14:53,CLEMENTL,CLEMENTL
176,49428003,751235,10651475,1227199,1,100,N,N,N,CP_Drtn,TT_Task,DT_FixedDUR2,RV_OK,TK_Complete,823A-NT-NLS-ELS-1060,Install Strut S2 +5.0mPD,,,,0,2304,0,2304,32,1280,1280,0,,2011-12-19 08:00,2011-12-22 18:00,2014-10-11 18:00,2014-10-11 18:00,,2017-01-01 00:00,2017-01-01 00:00,,,2011-12-19 08:00,2011-12-22 18:00,,,,,PT_Normal,,,,,X7CZFUShQ8mBzKRqChl+7w,9Xre4E0oTxqea3mw5noLsA,,,N,2304,1280,,,2017-01-24 14:42,2017-01-24 14:53,CLEMENTL,CLEMENTL
177,49428004,751235,10651475,1227199,1,100,N,N,N,CP_Drtn,TT_Task,DT_FixedDUR2,RV_OK,TK_Complete,823A-NT-NLS-ELS-1070,Excavate up to +0.5mPD (2440m3),268580,,,0,9856,0,9856,112,8288,8288,0,,2011-12-21 08:00,2012-01-09 18:00,2014-10-11 18:00,2014-10-11 18:00,,2017-01-01 00:00,2017-01-01 00:00,,,2011-12-21 08:00,2012-01-09 18:00,,,,,PT_Normal,,,,,9YV5q1B7TEClpVl1AyObXw,FdPOjH9eS8W42S31SiYNTg,,,N,9856,8288,,,2017-01-24 14:42,2017-01-24 14:53,CLEMENTL,CLEMENTL
178,49428005,751235,10651475,1227199,1,100,N,N,N,CP_Drtn,TT_Task,DT_FixedDUR2,RV_OK,TK_Complete,823A-NT-NLS-ELS-1080,Install Strut S3 +1.0mPD,,,,0,2304,0,2304,32,1280,1280,0,,2012-01-07 08:00,2012-01-11 18:00,2014-10-11 18:00,2014-10-11 18:00,,2017-01-01 00:00,2017-01-01 00:00,,,2012-01-07 08:00,2012-01-11 18:00,,,,,PT_Normal,,,,,KDnfuYqjQByJUmAPHp5O/Q,AD5TtUzvSXiyUGJZrWxjIw,,,N,2304,1280,,,2017-01-24 14:42,2017-01-24 14:53,CLEMENTL,CLEMENTL
179,49428006,751235,10651475,1227199,1,100,N,N,N,CP_Drtn,TT_Task,DT_FixedDUR2,RV_OK,TK_Complete,823A-NT-NLS-ELS-1090,Excavate up to -6.5mPD (4340m3),268580,,,0,54080,0,54080,848,47488,47488,0,,2012-01-10 08:00,2012-05-22 18:00,2014-10-11 18:00,2014-10-11 18:00,,2017-01-01 00:00,2017-01-01 00:00,,,2012-01-10 08:00,2012-05-22 18:00,,,,,PT_Normal,,,,,unWcusyASzuZtymRl2W72A,HH3d13d9S26cSkhDo5nD0w,,,N,54080,47488,,,2017-01-24 14:42,2017-01-24 14:53,CLEMENTL,CLEMENTL
180,49428007,751235,10651475,1227199,1,100,N,N,N,CP_Drtn,TT_Task,DT_FixedDUR2,RV_OK,TK_Complete,823A-NT-NLS-ELS-1100,Install rock dowel and tie back,268581,,,0,40704,0,40704,848,27136,27136,0,,2012-01-16 08:00,2012-05-28 18:00,2014-10-11 18:00,2014-10-11 18:00,,2017-01-01 00:00,2017-01-01 00:00,,,2012-01-16 08:00,2012-05-28 18:00,,,,,PT_Normal,,,,,plmIUaduSBCinhvQ3/mRig,aHXWHFchQluSVdkBfZjIFw,,,N,40704,27136,,,2017-01-24 14:42,2017-01-24 14:53,CLEMENTL,CLEMENTL
181,49428008,751235,10651475,1227199,1,100,N,N,N,CP_Drtn,TT_Task,DT_FixedDUR2,RV_OK,TK_Complete,823A-NT-NLS-ELS-1110,Construction of temporary slab and entrance seal (622m3),268581,,,0,9408,0,9408,56,896,896,0,,2012-05-24 08:00,2012-05-31 18:00,2014-10-11 18:00,2014-10-11 18:00,,2017-01-01 00:00,2017-01-01 00:00,,,2012-05-24 08:00,2012-05-31 18:00,,,,,PT_Normal,,,,,/9A8Y60MSk6Q8lbsPDqy+g,0vhzyfIhQACU+poSjkEnpQ,,,N,9408,896,,,2017-01-24 14:42,2017-01-24 14:53,CLEMENTL,CLEMENTL
182,49428009,751235,10651476,1239098,1,100,N,N,N,CP_Drtn,TT_Task,DT_FixedDUR2,RV_OK,TK_Complete,823A-NT-NLS-DW-1020,Pre-drill and guide wall,268571,,,0,41600,0,41600,520,8320,8320,0,,2010-12-15 08:00,2011-03-07 18:00,2014-10-11 18:00,2014-10-11 18:00,,2017-01-01 00:00,2017-01-01 00:00,,,2010-12-15 08:00,2011-03-07 18:00,,,,,PT_Normal,,,,,l57GGV1YS4+mBTpQlRX9xA,,,,N,41600,8320,,,2017-01-24 14:42,2017-01-24 14:53,CLEMENTL,CLEMENTL
183,49428010,751235,10651476,1239098,1,100,N,N,N,CP_Drtn,TT_Task,DT_FixedDUR2,RV_OK,TK_Complete,823A-NT-NLS-DW-1010,Site Possession and Site set up and Mobilization,268571,,,0,2048,0,2048,64,1024,1024,0,,2010-12-06 08:00,2010-12-14 18:00,2014-07-11 08:00,2014-07-11 08:00,,2017-01-01 00:00,2017-01-01 00:00,,,2010-12-06 08:00,2010-12-14 18:00,,,,,PT_Normal,,,,,kIqWvVtcRJCVmrXeFTuauQ,,,,N,2048,1024,,,2017-01-24 14:42,2017-01-24 15:40,CLEMENTL,CLEMENTL
184,49428011,751235,10651476,1227199,1,100,N,N,N,CP_Drtn,TT_Task,DT_FixedDUR2,RV_OK,TK_Complete,823A-NT-NLS-DW-1030,D-wall construction (1084m3),268581,,,0,54720,0,54720,760,24320,24320,0,,2011-03-08 08:00,2011-07-05 18:00,2014-10-11 18:00,2014-10-11 18:00,,2017-01-01 00:00,2017-01-01 00:00,,,2011-03-08 08:00,2011-07-05 18:00,,,,,PT_Normal,,,,,UkqXzE+ZTf2A8JCc/UK9Fg,+O4zHFDLTCeO6IAAwKMfMw,,,N,54720,24320,,,2017-01-24 14:42,2017-01-24 14:53,CLEMENTL,CLEMENTL
185,49428012,751235,10651476,1227199,1,100,N,N,N,CP_Drtn,TT_Task,DT_FixedDUR2,RV_OK,TK_Complete,823A-NT-NLS-DW-1040,"Sonic test, shear pin, toe grout and pumping test",268581,,,0,55552,0,55552,992,47616,47616,0,,2011-07-06 08:00,2011-11-30 18:00,2014-10-11 18:00,2014-10-11 18:00,,2017-01-01 00:00,2017-01-01 00:00,,,2011-07-06 08:00,2011-11-30 18:00,,,,,PT_Normal,,,,,KoLkvWVdSt+LSVJOwxeTDg,x+oTuQ+JTXeeYKf3YULnfw,,,N,55552,47616,,,2017-01-24 14:42,2017-01-24 14:53,CLEMENTL,CLEMENTL
186,49428013,751235,10651476,1239098,1,100,N,N,N,CP_Drtn,TT_Task,DT_FixedDUR2,RV_OK,TK_Complete,823A-NT-NLS-DW-1050,Wang Toi Shan Shan Tsuen Road diversion works,268571,,,0,46080,0,46080,960,7680,7680,0,,2011-07-26 08:00,2011-12-15 18:00,2014-10-11 18:00,2014-10-11 18:00,,2017-01-01 00:00,2017-01-01 00:00,,,2011-07-26 08:00,2011-12-15 18:00,,,,,PT_Normal,,,,,qjgGvOUTQJmYYuxt3tj1JQ,,,,N,46080,7680,,,2017-01-24 14:42,2017-01-24 14:53,CLEMENTL,CLEMENTL
187,49428014,751235,10651479,1227199,1,100,N,N,N,CP_Drtn,TT_Task,DT_FixedDrtn,RV_OK,TK_Complete,823A-NT-CP27-1000,Install temporary support inside Main Tunnel for CP27 Stage 1 (From Downtrack to Centre of CP),,,,0,0,0,0,112,0,0,0,,2014-01-02 08:00,2014-07-31 18:00,2017-06-12 18:00,2017-06-12 18:00,,2017-01-01 00:00,2017-01-01 00:00,,,2014-03-11 08:00,2014-03-26 18:00,,,,,PT_Normal,,,,,rRRItlJwQC+K5D58heCWkw,se5o0zc1QoieoAy6+DiUaQ,,,N,0,0,,,2017-01-24 14:42,2017-01-24 15:36,CLEMENTL,CLEMENTL
188,49428015,751235,10651479,1227199,1,100,N,N,N,CP_Drtn,TT_Task,DT_FixedRate,RV_OK,TK_Complete,823A-NT-CP27-1010,Probe/Grout,,,,0,0,0,0,72,0,0,0,,2014-11-04 08:00,2014-11-12 18:00,2017-06-12 18:00,2017-06-12 18:00,,2017-01-01 00:00,2017-01-01 00:00,,,2014-11-04 11:12,2014-11-14 11:12,,,,,PT_Normal,,,,,OIz6YhuTTjiWjG0nbLQ2zg,28JYm1TDTMOGMyCi7d50tQ,,,N,0,0,,,2017-01-24 14:42,2017-01-24 15:36,CLEMENTL,CLEMENTL
189,49428016,751235,10651479,1227199,1,100,N,N,N,CP_Drtn,TT_Task,DT_FixedRate,RV_OK,TK_Complete,823A-NT-CP27-1020,Coring of Segment,,,,0,0,0,0,32,0,0,0,,2014-11-13 08:00,2014-11-17 18:00,2017-06-12 18:00,2017-06-12 18:00,,2017-01-01 00:00,2017-01-01 00:00,,,2014-11-14 11:12,2014-11-19 11:12,,,,,PT_Normal,,,,,SUW30Tu9S9iXm/0FV5ZDSw,1obe6fhuTsie28rQKA5nmg,,,N,0,0,,,2017-01-24 14:42,2017-01-24 15:36,CLEMENTL,CLEMENTL
190,49428017,751235,10651479,1227199,1,100,N,N,N,CP_Drtn,TT_Task,DT_FixedRate,RV_OK,TK_Complete,823A-NT-CP27-1030,Removal of segment,,,,0,0,0,0,24,0,0,0,,2014-11-18 08:00,2014-11-20 18:00,2017-06-12 18:00,2017-06-12 18:00,,2017-01-01 00:00,2017-01-01 00:00,,,2014-11-19 11:12,2014-11-22 11:12,,,,,PT_Normal,,,,,mX8b7x6uSFKYqhXp9jtMkg,jKspGPh7RtyD8gtM7ma5rA,,,N,0,0,,,2017-01-24 14:42,2017-01-24 15:36,CLEMENTL,CLEMENTL
191,49428018,751235,10651479,1227199,1,100,N,N,N,CP_Drtn,TT_Task,DT_FixedRate,RV_OK,TK_Complete,823A-NT-CP27-1040,Excavation 0-4mts with Shotcrete,,,,0,0,0,0,112,0,0,0,,2014-11-22 08:00,2014-12-02 18:00,2017-06-12 18:00,2017-06-12 18:00,,2017-01-01 00:00,2017-01-01 00:00,,,2014-11-22 11:12,2014-12-09 11:12,,,,,PT_Normal,,,,,lwsoXG5aSFWKQ5Z9Z/Xgng,l5jeyUTcRxG0yNgpRTn35w,,,N,0,0,,,2017-01-24 14:42,2017-01-24 15:36,CLEMENTL,CLEMENTL
192,49428019,751235,10651479,1227199,1,100,N,N,N,CP_Drtn,TT_Task,DT_FixedRate,RV_OK,TK_Complete,823A-NT-CP27-1060,Wall and Roof concrete,,,,0,0,0,0,112,0,0,0,,2014-12-13 08:00,2014-12-31 18:00,2017-06-12 18:00,2017-06-12 18:00,,2017-01-01 00:00,2017-01-01 00:00,,,2014-12-13 08:00,2014-12-31 18:00,,,,,PT_Normal,,,,,M4Sc3VZhQhKZu/IpEKqtRA,jo+lxHByQCKYnst2XAZmxQ,,,N,0,0,,,2017-01-24 14:42,2017-01-24 15:36,CLEMENTL,CLEMENTL
193,49428020,751235,10651479,1227199,1,100,N,N,N,CP_Drtn,TT_Task,DT_FixedRate,RV_OK,TK_Complete,823A-NT-CP27-1070,Dismantle Temporary frame,,,,0,0,0,0,56,0,0,0,,2015-01-02 08:00,2015-01-09 18:00,2017-06-12 18:00,2017-06-12 18:00,,2017-01-01 00:00,2017-01-01 00:00,,,2015-01-02 08:00,2015-01-09 18:00,,,,,PT_Normal,,,,,6gW92CyhQWG9W4tGN6BMeA,2ahUmYZ6Q6qX6JlflMBeUA,,,N,0,0,,,2017-01-24 14:42,2017-01-24 15:36,CLEMENTL,CLEMENTL
194,49428021,751235,10651479,1227199,1,100,N,N,N,CP_Drtn,TT_Task,DT_FixedRate,RV_OK,TK_Complete,823A-NT-CP27-1080,Install Door to Cross Passage (By contract 827),,,,0,0,0,0,32,0,0,0,,2015-01-10 08:00,2015-01-14 18:00,2017-06-12 18:00,2017-06-12 18:00,,2017-01-01 00:00,2017-01-01 00:00,,,2015-01-10 08:00,2015-01-14 18:00,,,,,PT_Normal,,,,,5Hk0iTsHRLGMLsqaimVx+Q,nBA1EUAWRX24sAu02ZxD3A,,,N,0,0,,,2017-01-24 14:42,2017-01-24 15:36,CLEMENTL,CLEMENTL
195,49428022,751235,10651479,1227199,1,100,N,N,N,CP_Drtn,TT_Task,DT_FixedDrtn,RV_OK,TK_Complete,823A-NT-CP27-1090,Install temporary support inside Main Tunnel for CP27 Stage 2 (From Centre of CP to Uptrack),,,,0,0,0,0,88,0,0,0,,2015-03-09 08:00,2015-03-20 18:00,2017-06-12 18:00,2017-06-12 18:00,,2017-01-01 00:00,2017-01-01 00:00,,,2015-05-21 08:00,2015-06-03 18:00,,,,,PT_Normal,,,,,IYbHF2P5RDqCyjzKzOg39Q,8JM4KscEQ0G+jgT1wy0NVw,,,N,0,0,,,2017-01-24 14:42,2017-01-24 15:36,CLEMENTL,CLEMENTL
196,49428023,751235,10651479,1227199,1,100,N,N,N,CP_Drtn,TT_Task,DT_FixedRate,RV_OK,TK_Complete,823A-NT-CP27-1100,Probe/Grout,,,,0,0,0,0,72,0,0,0,,2015-05-04 08:00,2015-05-13 18:00,2017-06-12 18:00,2017-06-12 18:00,,2017-01-01 00:00,2017-01-01 00:00,,,2015-07-06 08:00,2015-07-15 18:00,,,,,PT_Normal,,,,,56kV6vFfTumaC4k5Av41lA,QVB4iKPpQUu0Hx3U3U6VCQ,,,N,0,0,,,2017-01-24 14:42,2017-01-24 15:36,CLEMENTL,CLEMENTL
197,49428024,751235,10651479,1227199,1,100,N,N,N,CP_Drtn,TT_Task,DT_FixedRate,RV_OK,TK_Complete,823A-NT-CP27-1110,Coring of Segment,,,,0,0,0,0,32,0,0,0,,2015-05-14 08:00,2015-05-18 18:00,2017-06-12 18:00,2017-06-12 18:00,,2017-01-01 00:00,2017-01-01 00:00,,,2015-07-16 08:00,2015-07-20 18:00,,,,,PT_Normal,,,,,g5tDVTWsQHeMx76TaxxXTQ,gQUD+nOeQA6pUESF7cGrbQ,,,N,0,0,,,2017-01-24 14:42,2017-01-24 15:36,CLEMENTL,CLEMENTL
198,49428025,751235,10651479,1227199,1,100,N,N,N,CP_Drtn,TT_Task,DT_FixedRate,RV_OK,TK_Complete,823A-NT-CP27-1120,Removal of segment,,,,0,0,0,0,24,0,0,0,,2015-05-19 08:00,2015-05-21 18:00,2017-06-12 18:00,2017-06-12 18:00,,2017-01-01 00:00,2017-01-01 00:00,,,2015-07-21 08:00,2015-07-23 18:00,,,,,PT_Normal,,,,,xZI4/qcSS2KF0axko3KaXg,J26w2TRYQ7+vI5bmh4/39Q,,,N,0,0,,,2017-01-24 14:42,2017-01-24 15:36,CLEMENTL,CLEMENTL
199,49428026,751235,10651479,1227199,1,100,N,N,N,CP_Drtn,TT_Task,DT_FixedRate,RV_OK,TK_Complete,823A-NT-CP27-1130,Excavation 0-4mts with Shotcrete,,,,0,0,0,0,80,0,0,0,,2015-05-22 08:00,2015-06-29 18:00,2017-06-12 18:00,2017-06-12 18:00,,2017-01-01 00:00,2017-01-01 00:00,,,2015-07-24 08:00,2015-08-04 18:00,,,,,PT_Normal,,,,,ngYgu/2QT1mdRX22boyPSw,tvIhBiwLS5iq4ENbsQ96Zw,,,N,0,0,,,2017-01-24 14:42,2017-01-24 15:36,CLEMENTL,CLEMENTL
200,49428027,751235,10651479,1227199,1,100,N,N,N,CP_Drtn,TT_Task,DT_FixedRate,RV_OK,TK_Complete,823A-NT-CP27-1140,Invert Concrete,,,,0,0,0,0,72,0,0,0,,2015-06-30 08:00,2015-07-08 18:00,2017-06-12 18:00,2017-06-12 18:00,,2017-01-01 00:00,2017-01-01 00:00,,,2015-08-08 08:00,2015-08-18 18:00,,,,,PT_Normal,,,,,VGaH9OeTQY2UZ2jmCQrbXQ,3cFJy+1kR3iXG0k0OwO4+Q,,,N,0,0,,,2017-01-24 14:42,2017-01-24 15:36,CLEMENTL,CLEMENTL
201,49428028,751235,10651479,1227199,1,100,N,N,N,CP_Drtn,TT_Task,DT_FixedRate,RV_OK,TK_Complete,823A-NT-CP27-1150,Wall and Roof concrete,,,,0,0,0,0,96,0,0,0,,2015-07-09 08:00,2015-08-15 18:00,2017-06-12 18:00,2017-06-12 18:00,,2017-01-01 00:00,2017-01-01 00:00,,,2015-08-25 08:00,2015-09-07 18:00,,,,,PT_Normal,,,,,Y7sjEJjSScSy8tLc5c9Yzw,tjANN3cbRKSGSHenKTU3Zg,,,N,0,0,,,2017-01-24 14:42,2017-01-24 15:36,CLEMENTL,CLEMENTL
202,49428029,751235,10651479,1227199,1,100,N,N,N,CP_Drtn,TT_Task,DT_FixedRate,RV_OK,TK_Complete,823A-NT-CP27-1160,Dismantle Temporary frame,,,,0,0,0,0,56,0,0,0,,2015-08-17 08:00,2015-09-02 18:00,2017-06-12 18:00,2017-06-12 18:00,,2017-01-01 00:00,2017-01-01 00:00,,,2015-09-22 08:00,2015-09-30 18:00,,,,,PT_Normal,,,,,XFuzH3HLSESmbtdMAAsSzA,SR/gI5QMRb+nYKX38m9ENg,,,N,0,0,,,2017-01-24 14:42,2017-01-24 15:36,CLEMENTL,CLEMENTL
203,49428030,751235,10651479,1227199,1,100,N,N,N,CP_Drtn,TT_Task,DT_FixedRate,RV_OK,TK_Complete,823A-NT-CP27-1170,Install Door to Cross Passage (By contract 827),,,,0,0,0,0,32,0,0,0,,2015-11-02 08:00,2015-11-05 18:00,2017-06-12 18:00,2017-06-12 18:00,,2017-01-01 00:00,2017-01-01 00:00,,,2015-12-12 08:00,2015-12-16 18:00,,,,,PT_Normal,,,,,nGYoMcQSTYiQWf9ZmcUtTQ,w9x4XWAvTpCd9QYs8+oENg,,,N,0,0,,,2017-01-24 14:42,2017-01-24 15:36,CLEMENTL,CLEMENTL
204,49428031,751235,10651479,1227199,1,100,N,N,N,CP_Drtn,TT_Task,DT_FixedRate,RV_OK,TK_Complete,823A-NT-CP27-1050,Invert Concrete,,,,0,0,0,0,72,0,0,0,,2014-12-03 08:00,2014-12-12 18:00,2017-06-12 18:00,2017-06-12 18:00,,2017-01-01 00:00,2017-01-01 00:00,,,2014-12-03 08:00,2014-12-12 18:00,,,,,PT_Normal,,,,,sq8a6lGTQV2fCRccxiKmRw,3g0kRCQoQRSSIZ+9RbXRRQ,,,N,0,0,,,2017-01-24 14:42,2017-01-24 15:36,CLEMENTL,CLEMENTL
205,49428032,751235,10651480,1227199,1,100,N,N,N,CP_Drtn,TT_Task,DT_FixedRate,RV_OK,TK_Complete,823A-NT-CP26-1110,Coring of Segment,,,,0,0,0,0,32,0,0,0,,2015-04-11 08:00,2015-04-15 18:00,2017-06-12 18:00,2017-06-12 18:00,,2017-01-01 00:00,2017-01-01 00:00,,,2015-07-07 08:00,2015-07-10 18:00,,,,,PT_Normal,,,,,e4gVfnV6RkaynS5k+8rdXQ,RyHjcLMOukK3ZUDUNJ4l4w,,,N,0,0,,,2017-01-24 14:42,2017-01-24 15:36,CLEMENTL,CLEMENTL
206,49428033,751235,10651480,1227199,1,100,N,N,N,CP_Drtn,TT_Task,DT_FixedRate,RV_OK,TK_Complete,823A-NT-CP26-1120,Removal of segment,,,,0,0,0,0,24,0,0,0,,2015-04-16 08:00,2015-04-18 18:00,2017-06-12 18:00,2017-06-12 18:00,,2017-01-01 00:00,2017-01-01 00:00,,,2015-07-11 08:00,2015-07-14 18:00,,,,,PT_Normal,,,,,uVOweL0mQDS9cquUNUnb3A,CW3i5ZnBr0SjmqU47+YbcQ,,,N,0,0,,,2017-01-24 14:42,2017-01-24 15:36,CLEMENTL,CLEMENTL
207,49428034,751235,10651480,1227199,1,100,N,N,N,CP_Drtn,TT_Task,DT_FixedRate,RV_OK,TK_Complete,823A-NT-CP26-1130,Excavation 0-4mts with Shotcrete,,,,0,0,0,0,80,0,0,0,,2015-04-20 08:00,2015-04-30 18:00,2017-06-12 18:00,2017-06-12 18:00,,2017-01-01 00:00,2017-01-01 00:00,,,2015-07-15 08:00,2015-07-25 18:00,,,,,PT_Normal,,,,,gu7SNRHJRF+sBfasL200eQ,gNP/njpTYEuzG8ncbetAhQ,,,N,0,0,,,2017-01-24 14:42,2017-01-24 15:36,CLEMENTL,CLEMENTL
208,49428035,751235,10651480,1227199,1,100,N,N,N,CP_Drtn,TT_Task,DT_FixedRate,RV_OK,TK_Complete,823A-NT-CP26-1140,Invert Concrete,,,,0,0,0,0,72,0,0,0,,2015-05-07 08:00,2015-05-12 18:00,2017-06-12 18:00,2017-06-12 18:00,,2017-01-01 00:00,2017-01-01 00:00,,,2015-07-18 08:00,2015-07-28 18:00,,,,,PT_Normal,,,,,PZgTZpYETle7zV9z5rISdQ,1BVMchXwQ0i5QHY8tiKf0g,,,N,0,0,,,2017-01-24 14:42,2017-01-24 15:36,CLEMENTL,CLEMENTL
209,49428036,751235,10651480,1227199,1,100,N,N,N,CP_Drtn,TT_Task,DT_FixedRate,RV_OK,TK_Complete,823A-NT-CP26-1150,Wall and Roof concrete,,,,0,0,0,0,96,0,0,0,,2015-05-13 08:00,2015-05-21 18:00,2017-06-12 18:00,2017-06-12 18:00,,2017-01-01 00:00,2017-01-01 00:00,,,2015-07-29 08:00,2015-08-11 18:00,,,,,PT_Normal,,,,,RGdS1oreRAWqS1i4xye5eQ,X8uWH93Uy06zfxqx16/+Dg,,,N,0,0,,,2017-01-24 14:42,2017-01-24 15:36,CLEMENTL,CLEMENTL
210,49428037,751235,10651480,1227199,1,100,N,N,N,CP_Drtn,TT_Task,DT_FixedRate,RV_OK,TK_Complete,823A-NT-CP26-1160,Dismantle Temporary frame,,,,0,0,0,0,56,0,0,0,,2016-01-26 08:00,2016-02-04 18:00,2017-06-12 18:00,2017-06-12 18:00,,2017-01-01 00:00,2017-01-01 00:00,,,2016-01-19 08:00,2016-01-26 18:00,,,,,PT_Normal,,,,,lyr/2FJfTaK9vLQbyMhAmg,dZts3spOA0ecseeDdjErSQ,,,N,0,0,,,2017-01-24 14:42,2017-01-24 15:36,CLEMENTL,CLEMENTL
211,49428038,751235,10651480,1227199,1,100,N,N,N,CP_Drtn,TT_Task,DT_FixedRate,RV_OK,TK_Complete,823A-NT-CP26-1170,Install Door to Cross Passage (By contract 827),,,,0,0,0,0,32,0,0,0,,2016-02-05 08:00,2016-02-06 18:00,2017-06-12 18:00,2017-06-12 18:00,,2017-01-01 00:00,2017-01-01 00:00,,,2016-02-22 08:00,2016-02-25 18:00,,,,,PT_Normal,,,,,2MaNNr9xR1iKAhLxt1i+4w,991I7R6ua0+34npZkhNztA,,,N,0,0,,,2017-01-24 14:42,2017-01-24 15:36,CLEMENTL,CLEMENTL
212,49428039,751235,10651480,1227199,1,100,N,N,N,CP_Drtn,TT_Task,DT_FixedDrtn,RV_OK,TK_Complete,823A-NT-CP26-1000,Install temporary support inside Main Tunnel for CP26 Stage 1 (From Downtrack to Centre of CP),,,,0,0,0,0,112,0,0,0,,2014-02-04 08:00,2014-06-28 18:00,2017-06-12 18:00,2017-06-12 18:00,,2017-01-01 00:00,2017-01-01 00:00,,,2014-04-10 08:00,2014-04-29 18:00,,,,,PT_Normal,,,,,fwof6GPvQZ+oFfSfg16ojQ,uDGAbMrvyEOddFi5ybsETQ,,,N,0,0,,,2017-01-24 14:42,2017-01-24 15:36,CLEMENTL,CLEMENTL
213,49428040,751235,10651480,1227199,1,100,N,N,N,CP_Drtn,TT_Task,DT_FixedRate,RV_OK,TK_Complete,823A-NT-CP26-1010,Probe/Grout,,,,0,0,0,0,72,0,0,0,,2014-11-04 08:00,2014-11-09 18:00,2017-06-12 18:00,2017-06-12 18:00,,2017-01-01 00:00,2017-01-01 00:00,,,2014-11-04 11:12,2014-11-14 11:12,,,,,PT_Normal,,,,,MPrwMEBcQ8GaGS/K5Hj1xQ,goxG7uc7TkqSNG5zEMWYog,,,N,0,0,,,2017-01-24 14:42,2017-01-24 15:36,CLEMENTL,CLEMENTL
214,49428041,751235,10651480,1227199,1,100,N,N,N,CP_Drtn,TT_Task,DT_FixedRate,RV_OK,TK_Complete,823A-NT-CP26-1020,Coring of Segment,,,,0,0,0,0,32,0,0,0,,2014-11-10 18:00,2014-11-13 18:00,2017-06-12 18:00,2017-06-12 18:00,,2017-01-01 00:00,2017-01-01 00:00,,,2014-11-14 11:12,2014-11-19 11:12,,,,,PT_Normal,,,,,AEDYml2uQwOGurRom1WN+A,ySuh/KOpH02qiuBO1iYSlA,,,N,0,0,,,2017-01-24 14:42,2017-01-24 15:36,CLEMENTL,CLEMENTL
215,49428042,751235,10651480,1227199,1,100,N,N,N,CP_Drtn,TT_Task,DT_FixedRate,RV_OK,TK_Complete,823A-NT-CP26-1030,Removal of segment,,,,0,0,0,0,24,0,0,0,,2014-11-14 18:00,2014-11-17 18:00,2017-06-12 18:00,2017-06-12 18:00,,2017-01-01 00:00,2017-01-01 00:00,,,2014-11-19 11:12,2014-11-22 11:12,,,,,PT_Normal,,,,,Oikwk0MnTfaBzZdNzFSjoQ,Opnanygft0CD96Co5zdiuw,,,N,0,0,,,2017-01-24 14:42,2017-01-24 15:36,CLEMENTL,CLEMENTL
216,49428043,751235,10651480,1227199,1,100,N,N,N,CP_Drtn,TT_Task,DT_FixedRate,RV_OK,TK_Complete,823A-NT-CP26-1050,Invert Concrete,,,,0,0,0,0,72,0,0,0,,2015-04-01 08:00,2015-04-15 18:00,2017-06-12 18:00,2017-06-12 18:00,,2017-01-01 00:00,2017-01-01 00:00,,,2015-04-01 08:00,2015-04-15 18:00,,,,,PT_Normal,,,,,l2aIB4TYTk+rAH4PJkvDTQ,DcpXTU2gFEuO/ObWz4WF4w,,,N,0,0,,,2017-01-24 14:42,2017-01-24 15:36,CLEMENTL,CLEMENTL
217,49428044,751235,10651480,1227199,1,100,N,N,N,CP_Drtn,TT_Task,DT_FixedRate,RV_OK,TK_Complete,823A-NT-CP26-1060,Wall and Roof concrete,,,,0,0,0,0,112,0,0,0,,2015-04-16 08:00,2015-05-06 18:00,2017-06-12 18:00,2017-06-12 18:00,,2017-01-01 00:00,2017-01-01 00:00,,,2015-04-16 08:00,2015-05-02 18:00,,,,,PT_Normal,,,,,e3Q8Uw+kQQufDhw1AyCJ0g,IcJRYOMWI02dZP3rlAALWA,,,N,0,0,,,2017-01-24 14:42,2017-01-24 15:36,CLEMENTL,CLEMENTL
218,49428045,751235,10651480,1227199,1,100,N,N,N,CP_Drtn,TT_Task,DT_FixedRate,RV_OK,TK_Complete,823A-NT-CP26-1070,Dismantle Temporary frame,,,,0,0,0,0,56,0,0,0,,2015-07-02 08:00,2015-07-09 18:00,2017-06-12 18:00,2017-06-12 18:00,,2017-01-01 00:00,2017-01-01 00:00,,,2015-07-02 08:00,2015-07-09 18:00,,,,,PT_Normal,,,,,1ihb6xinSPizfDr1cCx+uA,JMJfcxHTTUeZYrMQdstqEQ,,,N,0,0,,,2017-01-24 14:42,2017-01-24 15:36,CLEMENTL,CLEMENTL
219,49428046,751235,10651480,1227199,1,100,N,N,N,CP_Drtn,TT_Task,DT_FixedRate,RV_OK,TK_Complete,823A-NT-CP26-1080,Install Door to Cross Passage (By contract 827),,,,0,0,0,0,32,0,0,0,,2015-07-10 08:00,2015-07-14 18:00,2017-06-12 18:00,2017-06-12 18:00,,2017-01-01 00:00,2017-01-01 00:00,,,2015-07-10 08:00,2015-07-14 18:00,,,,,PT_Normal,,,,,c197zfm6Sl2XOGbQTTrGcA,UB+bv0CFGUaBjQ2nHwpPvA,,,N,0,0,,,2017-01-24 14:42,2017-01-24 15:36,CLEMENTL,CLEMENTL
220,49428047,751235,10651480,1227199,1,100,N,N,N,CP_Drtn,TT_Task,DT_FixedDrtn,RV_OK,TK_Complete,823A-NT-CP26-1090,Install temporary support inside Main Tunnel for CP26 Stage 2 (From Centre of CP to Uptrack),,,,0,0,0,0,88,0,0,0,,2015-09-07 08:00,2015-12-01 18:00,2017-06-12 18:00,2017-06-12 18:00,,2017-01-01 00:00,2017-01-01 00:00,,,2015-10-17 08:00,2015-10-30 18:00,,,,,PT_Normal,,,,,SwEjBLujTIC2YaresUzI0w,o3PPd1SP4kiHZC9z81n1zg,,,N,0,0,,,2017-01-24 14:42,2017-01-24 15:36,CLEMENTL,CLEMENTL
221,49428048,751235,10651480,1227199,1,100,N,N,N,CP_Drtn,TT_Task,DT_FixedRate,RV_OK,TK_Complete,823A-NT-CP26-1100,Probe/Grout,,,,0,0,0,0,72,0,0,0,,2015-04-01 08:00,2015-04-10 18:00,2017-06-12 18:00,2017-06-12 18:00,,2017-01-01 00:00,2017-01-01 00:00,,,2015-06-25 08:00,2015-07-06 18:00,,,,,PT_Normal,,,,,G9So9coqTQCrBm4kWlY4zA,12OdoEESC029dH4ctDgdFw,,,N,0,0,,,2017-01-24 14:42,2017-01-24 15:36,CLEMENTL,CLEMENTL
222,49428049,751235,10651480,1227199,1,100,N,N,N,CP_Drtn,TT_Task,DT_FixedRate,RV_OK,TK_Complete,823A-NT-CP26-1040,Excavation 0-4mts with Shotcrete,,,,0,0,0,0,112,0,0,0,,2015-02-23 08:00,2015-03-30 18:00,2017-06-12 18:00,2017-06-12 18:00,,2017-01-01 00:00,2017-01-01 00:00,,,2015-02-02 08:00,2015-02-17 18:00,,,,,PT_Normal,,,,,C9WHK3nlQpiFYL5ar8SYTw,2QH9mLi98E2Rd8WO22qz1A,,,N,0,0,,,2017-01-24 14:42,2017-01-24 15:36,CLEMENTL,CLEMENTL
223,49428050,751235,10651481,1227199,1,100,N,N,N,CP_Drtn,TT_Task,DT_FixedDrtn,RV_OK,TK_Complete,823A-NT-CP28-1000,Install temporary support inside Main Tunnel for CP28 Stage 1 (From Downtrack to Centre of CP),,,,0,0,0,0,112,0,0,0,,2014-01-02 08:00,2014-05-24 18:00,2017-06-12 18:00,2017-06-12 18:00,,2017-01-01 00:00,2017-01-01 00:00,,,2014-01-02 08:00,2014-01-17 18:00,,,,,PT_Normal,,,,,M+dP6LUZQw2khoKTvBJ2AA,jHylBIPAPkuC4SN8hWK8+g,,,N,0,0,,,2017-01-24 14:42,2017-01-24 15:36,CLEMENTL,CLEMENTL
224,49428051,751235,10651481,1227199,1,100,N,N,N,CP_Drtn,TT_Task,DT_FixedRate,RV_OK,TK_Complete,823A-NT-CP28-1010,Probe/Grout,,,,0,0,0,0,72,0,0,0,,2014-11-01 08:00,2014-11-08 18:00,2017-06-12 18:00,2017-06-12 18:00,,2017-01-01 00:00,2017-01-01 00:00,,,2014-11-04 11:12,2014-11-14 11:12,,,,,PT_Normal,,,,,JMpYotHfR0ux+Krb1EjAPA,xrXpBnVq5UK5mx5+mkBMhw,,,N,0,0,,,2017-01-24 14:42,2017-01-24 15:36,CLEMENTL,CLEMENTL
225,49428052,751235,10651481,1227199,1,100,N,N,N,CP_Drtn,TT_Task,DT_FixedRate,RV_OK,TK_Complete,823A-NT-CP28-1020,Coring of Segment,,,,0,0,0,0,32,0,0,0,,2014-11-10 08:00,2014-11-13 18:00,2017-06-12 18:00,2017-06-12 18:00,,2017-01-01 00:00,2017-01-01 00:00,,,2014-11-14 11:12,2014-11-19 11:12,,,,,PT_Normal,,,,,9ONlEXeNS/OuM7okn1Q6aw,QrvbA+A75UeV3ov478Yy7Q,,,N,0,0,,,2017-01-24 14:42,2017-01-24 15:36,CLEMENTL,CLEMENTL
226,49428053,751235,10651481,1227199,1,100,N,N,N,CP_Drtn,TT_Task,DT_FixedRate,RV_OK,TK_Complete,823A-NT-CP28-1030,Removal of segment,,,,0,0,0,0,24,0,0,0,,2014-11-14 08:00,2014-11-15 18:00,2017-06-12 18:00,2017-06-12 18:00,,2017-01-01 00:00,2017-01-01 00:00,,,2014-11-19 11:12,2014-11-22 11:12,,,,,PT_Normal,,,,,tfsj/+YWRBSbjjlWtxrgbg,JtpAdnxJH0yZSnxcDsS/mg,,,N,0,0,,,2017-01-24 14:42,2017-01-24 15:36,CLEMENTL,CLEMENTL
227,49428054,751235,10651481,1227199,1,100,N,N,N,CP_Drtn,TT_Task,DT_FixedRate,RV_OK,TK_Complete,823A-NT-CP28-1040,Excavation 0-4mts with Shotcrete,,,,0,0,0,0,112,0,0,0,,2014-11-17 08:00,2014-11-29 18:00,2017-06-12 18:00,2017-06-12 18:00,,2017-01-01 00:00,2017-01-01 00:00,,,2014-11-22 11:12,2014-12-09 11:12,,,,,PT_Normal,,,,,oDkoyJnNQWW5w1ZEN/bYJw,5yoNQAxqRE2loUQwE/35xQ,,,N,0,0,,,2017-01-24 14:42,2017-01-24 15:36,CLEMENTL,CLEMENTL
228,49428055,751235,10651481,1227199,1,100,N,N,N,CP_Drtn,TT_Task,DT_FixedRate,RV_OK,TK_Complete,823A-NT-CP28-1050,Invert Concrete,,,,0,0,0,0,72,0,0,0,,2014-12-01 08:00,2014-12-10 18:00,2017-06-12 18:00,2017-06-12 18:00,,2017-01-01 00:00,2017-01-01 00:00,,,2014-12-01 08:00,2014-12-10 18:00,,,,,PT_Normal,,,,,/XA5xuutT2Ce9BcAh7Gpxg,RFPkTcNyK0GF3FV247crVg,,,N,0,0,,,2017-01-24 14:42,2017-01-24 15:36,CLEMENTL,CLEMENTL
229,49428056,751235,10651481,1227199,1,100,N,N,N,CP_Drtn,TT_Task,DT_FixedRate,RV_OK,TK_Complete,823A-NT-CP28-1060,Wall and Roof concrete,,,,0,0,0,0,112,0,0,0,,2014-12-11 08:00,2014-12-29 18:00,2017-06-12 18:00,2017-06-12 18:00,,2017-01-01 00:00,2017-01-01 00:00,,,2014-12-11 08:00,2014-12-29 18:00,,,,,PT_Normal,,,,,EuawtgtIS2OHI334QOsSiQ,arXQZYldA0aDZp9XEehGjQ,,,N,0,0,,,2017-01-24 14:42,2017-01-24 15:36,CLEMENTL,CLEMENTL
230,49428057,751235,10651481,1227199,1,100,N,N,N,CP_Drtn,TT_Task,DT_FixedRate,RV_OK,TK_Complete,823A-NT-CP28-1070,Dismantle Temporary frame,,,,0,0,0,0,56,0,0,0,,2014-12-30 08:00,2015-01-09 18:00,2017-06-12 18:00,2017-06-12 18:00,,2017-01-01 00:00,2017-01-01 00:00,,,2014-12-30 08:00,2015-01-07 18:00,,,,,PT_Normal,,,,,FfM9MicpTP6eWMV7//wdYA,03rq0G56EkmyxtjheSufHQ,,,N,0,0,,,2017-01-24 14:42,2017-01-24 15:36,CLEMENTL,CLEMENTL
231,49428058,751235,10651481,1227199,1,100,N,N,N,CP_Drtn,TT_Task,DT_FixedDrtn,RV_OK,TK_Complete,823A-NT-CP28-1090,Install temporary support inside Main Tunnel for CP28 Stage 2 (From Centre of CP to Uptrack),,,,0,0,0,0,88,0,0,0,,2015-02-23 08:00,2015-03-06 18:00,2017-06-12 18:00,2017-06-12 18:00,,2017-01-01 00:00,2017-01-01 00:00,,,2015-05-08 08:00,2015-05-20 18:00,,,,,PT_Normal,,,,,XEivPkYYRR+EYRwSRBychg,bqpigecOlUGOwt4RqIqtJw,,,N,0,0,,,2017-01-24 14:42,2017-01-24 15:36,CLEMENTL,CLEMENTL
232,49428059,751235,10651481,1227199,1,100,N,N,N,CP_Drtn,TT_Task,DT_FixedRate,RV_OK,TK_Complete,823A-NT-CP28-1100,Probe/Grout,,,,0,0,0,0,72,0,0,0,,2015-05-02 08:00,2015-05-02 18:00,2017-06-12 18:00,2017-06-12 18:00,,2017-01-01 00:00,2017-01-01 00:00,,,2015-07-06 08:00,2015-07-15 18:00,,,,,PT_Normal,,,,,hu6ZEanZT1K8LK03KL8F0A,hGURqah7QUePW2jDO3bQVA,,,N,0,0,,,2017-01-24 14:42,2017-01-24 15:36,CLEMENTL,CLEMENTL
233,49428060,751235,10651481,1227199,1,100,N,N,N,CP_Drtn,TT_Task,DT_FixedRate,RV_OK,TK_Complete,823A-NT-CP28-1110,Coring of Segment,,,,0,0,0,0,32,0,0,0,,2015-05-02 08:00,2015-05-05 18:00,2017-06-12 18:00,2017-06-12 18:00,,2017-01-01 00:00,2017-01-01 00:00,,,2015-07-16 08:00,2015-07-20 18:00,,,,,PT_Normal,,,,,b6858suwQm+bDzUut8tQtA,YkRnOAbw+0akYcM9d75d+g,,,N,0,0,,,2017-01-24 14:42,2017-01-24 15:36,CLEMENTL,CLEMENTL
234,49428061,751235,10651481,1227199,1,100,N,N,N,CP_Drtn,TT_Task,DT_FixedRate,RV_OK,TK_Complete,823A-NT-CP28-1120,Removal of segment,,,,0,0,0,0,24,0,0,0,,2015-05-06 08:00,2015-05-07 18:00,2017-06-12 18:00,2017-06-12 18:00,,2017-01-01 00:00,2017-01-01 00:00,,,2015-07-21 08:00,2015-07-23 18:00,,,,,PT_Normal,,,,,5nBEnK/9RA64J9wDp875uw,ukSdFRJTuU6BdIKyCDnGAg,,,N,0,0,,,2017-01-24 14:42,2017-01-24 15:36,CLEMENTL,CLEMENTL
235,49428062,751235,10651481,1227199,1,100,N,N,N,CP_Drtn,TT_Task,DT_FixedRate,RV_OK,TK_Complete,823A-NT-CP28-1130,Excavation 0-4mts with Shotcrete,,,,0,0,0,0,80,0,0,0,,2015-05-08 08:00,2015-06-09 18:00,2017-06-12 18:00,2017-06-12 18:00,,2017-01-01 00:00,2017-01-01 00:00,,,2015-07-24 08:00,2015-08-04 18:00,,,,,PT_Normal,,,,,Z/DYBJ/lQI2Xep3EfTrsyQ,HUvk0TGyXkKFAIiKnqTKRQ,,,N,0,0,,,2017-01-24 14:42,2017-01-24 15:36,CLEMENTL,CLEMENTL
236,49428063,751235,10651481,1227199,1,100,N,N,N,CP_Drtn,TT_Task,DT_FixedRate,RV_OK,TK_Complete,823A-NT-CP28-1140,Invert Concrete,,,,0,0,0,0,72,0,0,0,,2015-06-10 08:00,2015-06-19 18:00,2017-06-12 18:00,2017-06-12 18:00,,2017-01-01 00:00,2017-01-01 00:00,,,2015-08-05 08:00,2015-08-14 18:00,,,,,PT_Normal,,,,,4rhvgdqQT/Gigbjpw6YKbg,J7t4OIFCLkeCIcZ5l18pDw,,,N,0,0,,,2017-01-24 14:42,2017-01-24 15:36,CLEMENTL,CLEMENTL
237,49428064,751235,10651481,1227199,1,100,N,N,N,CP_Drtn,TT_Task,DT_FixedRate,RV_OK,TK_Complete,823A-NT-CP28-1150,Wall and Roof concrete,,,,0,0,0,0,96,0,0,0,,2015-08-01 08:00,2015-08-26 18:00,2017-06-12 18:00,2017-06-12 18:00,,2017-01-01 00:00,2017-01-01 00:00,,,2015-09-15 08:00,2015-09-29 18:00,,,,,PT_Normal,,,,,zF4eTpnERjKkDV5Mu6aEnA,vClDE/GVIEaKVbfC9aZncg,,,N,0,0,,,2017-01-24 14:42,2017-01-24 15:36,CLEMENTL,CLEMENTL
238,49428065,751235,10651481,1227199,1,100,N,N,N,CP_Drtn,TT_Task,DT_FixedRate,RV_OK,TK_Complete,823A-NT-CP28-1160,Dismantle Temporary frame,,,,0,0,0,0,56,0,0,0,,2015-09-21 08:00,2015-10-08 18:00,2017-06-12 18:00,2017-06-12 18:00,,2017-01-01 00:00,2017-01-01 00:00,,,2015-10-17 08:00,2015-10-26 18:00,,,,,PT_Normal,,,,,ehY4Ta02Q/y11k4tXre95g,CYBdxs/pmUGZgrQaXGtQ2w,,,N,0,0,,,2017-01-24 14:42,2017-01-24 15:36,CLEMENTL,CLEMENTL
239,49428066,751235,10651481,1227199,1,100,N,N,N,CP_Drtn,TT_Task,DT_FixedRate,RV_OK,TK_Complete,823A-NT-CP28-1170,Install Door to Cross Passage (By contract 827),,,,0,0,0,0,32,0,0,0,,2015-11-02 08:00,2015-11-05 18:00,2017-06-12 18:00,2017-06-12 18:00,,2017-01-01 00:00,2017-01-01 00:00,,,2015-12-12 08:00,2015-12-16 18:00,,,,,PT_Normal,,,,,Iq33xlIFSfmPZxsSHEr6Eg,bZisaN/lzUSSbN3p9S1YsA,,,N,0,0,,,2017-01-24 14:42,2017-01-24 15:36,CLEMENTL,CLEMENTL
240,49428067,751235,10651481,1227199,1,100,N,N,N,CP_Drtn,TT_Task,DT_FixedRate,RV_OK,TK_Complete,823A-NT-CP28-1080,Install Door to Cross Passage (By contract 827),,,,0,0,0,0,32,0,0,0,,2015-01-10 08:00,2015-01-14 18:00,2017-06-12 18:00,2017-06-12 18:00,,2017-01-01 00:00,2017-01-01 00:00,,,2015-01-10 08:00,2015-01-14 18:00,,,,,PT_Normal,,,,,ZPrqAW10Qzy3MFJG/U93PA,m4hb1GHkTEmlobNmdBNXag,,,N,0,0,,,2017-01-24 14:42,2017-01-24 15:36,CLEMENTL,CLEMENTL
241,49428068,751235,10651482,1239098,1,100,N,N,N,CP_Drtn,TT_Task,DT_FixedDUR2,RV_OK,TK_Complete,823A-NT-TBM-SB-1160,Provision of assess open for DC and modify of strut S1 and S2 at north bound,,,,0,0,0,0,208,0,0,0,,2014-10-01 08:00,2014-10-18 18:00,2014-10-11 18:00,2014-10-11 18:00,,2017-01-01 00:00,2017-01-01 00:00,,,2014-11-04 11:12,2014-12-04 11:12,,,,,PT_Normal,,,,,ERJNLe4mTsGAS2TSMIFQkg,,,,N,0,0,,,2017-01-24 14:42,2017-01-24 14:53,CLEMENTL,CLEMENTL
242,49428069,751235,10651482,1239098,1,100,N,N,N,CP_Drtn,TT_Task,DT_FixedDUR2,RV_OK,TK_Complete,823A-NT-TBM-SB-1040,TBM drive & lining installation CH123+283 to CH123+183,,,,0,0,0,0,32,0,0,0,,2013-01-30 08:00,2013-03-08 18:00,2014-10-11 18:00,2014-10-11 18:00,,2017-01-01 00:00,2017-01-01 00:00,,,2013-06-27 08:00,2013-07-02 18:00,,,,,PT_Normal,,,,,+boRc1hAS3CteEyxzGLuvw,,,,N,0,0,,,2017-01-24 14:42,2017-01-24 14:53,CLEMENTL,CLEMENTL
243,49428070,751235,10651482,1239098,1,100,N,N,N,CP_Drtn,TT_Task,DT_FixedDUR2,RV_OK,TK_Complete,823A-NT-TBM-SB-1050,TBM drive & lining installation CH123+183 to CH123+083,,,,0,0,0,0,32,0,0,0,,2013-03-09 08:00,2013-03-18 18:00,2014-10-11 18:00,2014-10-11 18:00,,2017-01-01 00:00,2017-01-01 00:00,,,2013-07-03 08:00,2013-07-06 18:00,,,,,PT_Normal,,,,,X2BDCyMmRxCbnr6MinNu7A,,,,N,0,0,,,2017-01-24 14:42,2017-01-24 14:53,CLEMENTL,CLEMENTL
244,49428071,751235,10651482,1239098,1,100,N,N,N,CP_Drtn,TT_Task,DT_FixedDUR2,RV_OK,TK_Complete,823A-NT-TBM-SB-1060,TBM drive & lining installation CH123+083 to CH122+983,,,,0,0,0,0,24,0,0,0,,2013-03-19 08:00,2013-03-30 18:00,2014-10-11 18:00,2014-10-11 18:00,,2017-01-01 00:00,2017-01-01 00:00,,,2013-06-01 08:00,2013-06-04 18:00,,,,,PT_Normal,,,,,lhYhygcRT0CtbeOeTf569Q,,,,N,0,0,,,2017-01-24 14:42,2017-01-24 14:53,CLEMENTL,CLEMENTL
245,49428072,751235,10651482,1239098,1,100,N,N,N,CP_Drtn,TT_Task,DT_FixedDUR2,RV_OK,TK_Complete,823A-NT-TBM-SB-1070,TBM drive & lining installation CH122+983 to CH122+883,,,,0,0,0,0,24,0,0,0,,2013-04-01 08:00,2013-06-11 18:00,2014-10-11 18:00,2014-10-11 18:00,,2017-01-01 00:00,2017-01-01 00:00,,,2013-06-05 08:00,2013-06-07 18:00,,,,,PT_Normal,,,,,FF9as+bTT1GPwlgQcZ/emg,,,,N,0,0,,,2017-01-24 14:42,2017-01-24 14:53,CLEMENTL,CLEMENTL
246,49428073,751235,10651482,1239098,1,100,N,N,N,CP_Drtn,TT_Task,DT_FixedDUR2,RV_OK,TK_Complete,823A-NT-TBM-SB-1080,TBM drive & lining installation CH122+883 to CH122+783,,,,0,0,0,0,24,0,0,0,,2013-06-13 08:00,2013-11-14 18:00,2014-10-11 18:00,2014-10-11 18:00,,2017-01-01 00:00,2017-01-01 00:00,,,2013-06-03 08:00,2013-06-05 18:00,,,,,PT_Normal,,,,,aVGE8tG4QDOCmiUKouS17g,,,,N,0,0,,,2017-01-24 14:42,2017-01-24 14:53,CLEMENTL,CLEMENTL
247,49428074,751235,10651482,1239098,1,100,N,N,N,CP_Drtn,TT_Task,DT_FixedDUR2,RV_OK,TK_Complete,823A-NT-TBM-SB-1090,TBM drive & lining installation CH122+783 to CH122+683,,,,0,0,0,0,24,0,0,0,,2013-11-15 08:00,2013-12-11 18:00,2014-10-11 18:00,2014-10-11 18:00,,2017-01-01 00:00,2017-01-01 00:00,,,2013-11-02 08:00,2013-11-05 18:00,,,,,PT_Normal,,,,,foQOAqK0Q2ScKM6tna7Zig,,,,N,0,0,,,2017-01-24 14:42,2017-01-24 14:53,CLEMENTL,CLEMENTL
248,49428075,751235,10651482,1239098,1,100,N,N,N,CP_Drtn,TT_Task,DT_FixedDUR2,RV_OK,TK_Complete,823A-NT-TBM-SB-1100,TBM drive & lining installation CH122+683 to CH122+583,,,,0,0,0,0,32,0,0,0,,2013-12-12 08:00,2014-02-26 18:00,2014-10-11 18:00,2014-10-11 18:00,,2017-01-01 00:00,2017-01-01 00:00,,,2013-12-03 08:00,2013-12-06 18:00,,,,,PT_Normal,,,,,MiHjVWH/S1e0nURVqq5zQw,,,,N,0,0,,,2017-01-24 14:42,2017-01-24 14:53,CLEMENTL,CLEMENTL
249,49428076,751235,10651482,1239098,1,100,N,N,N,CP_Drtn,TT_Task,DT_FixedDUR2,RV_OK,TK_Complete,823A-NT-TBM-SB-1110,TBM drive & lining installation CH122+583 to CH122+491,,,,0,0,0,0,24,0,0,0,,2014-02-27 08:00,2014-08-16 00:00,2014-10-11 18:00,2014-10-11 18:00,,2017-01-01 00:00,2017-01-01 00:00,,,2014-02-05 08:00,2014-02-07 18:00,,,,,PT_Normal,,,,,b4/CYIehT0qgUq8qYDKEEQ,,,,N,0,0,,,2017-01-24 14:42,2017-01-24 15:29,CLEMENTL,CLEMENTL
250,49428077,751235,10651482,1227199,1,100,N,N,N,CP_Drtn,TT_Task,DT_FixedDUR2,RV_OK,TK_Complete,823A-NT-TBM-SB-1030,Change Plant (Back-up cars),,,,0,0,0,8928,168,2728,0,0,,2013-01-03 08:00,2013-01-29 18:00,2014-10-11 18:00,2014-10-11 18:00,,2017-01-01 00:00,2017-01-01 00:00,,,2013-06-01 08:00,2013-06-26 18:00,,,,,PT_Normal,,,,,C8isBVS4S1yD3P6vBtwEXw,br2Lw2bunEGke5kWiYViug,,,N,0,0,,,2017-01-24 14:42,2017-01-24 14:53,CLEMENTL,CLEMENTL
251,49428078,751235,10651482,1227199,1,100,N,N,N,CP_Drtn,TT_Task,DT_FixedDUR2,RV_OK,TK_Complete,823A-NT-TBM-SB-1010,"Assemble, T&C of TBM",268571,,,0,3072,0,3072,1024,2400,2400,0,,2012-06-01 08:00,2012-10-16 00:00,2014-10-11 18:00,2014-10-11 18:00,,2017-01-01 00:00,2017-01-01 00:00,,,2012-06-01 08:00,2012-11-02 18:00,,,,,PT_Normal,,,,,sGmIJCk2Qt+ZljTQei8Xdg,,,,N,3072,2400,,,2017-01-24 14:42,2017-01-24 15:30,CLEMENTL,CLEMENTL
252,49428079,751235,10651482,1227199,1,100,N,N,N,CP_Drtn,TT_Task,DT_FixedDUR2,RV_OK,TK_Complete,823A-NT-TBM-SB-1130,Dis-assemble TBM,,,,0,5336,0,5336,200,1104,1104,0,,2014-08-26 08:00,2014-10-17 18:00,2014-10-11 18:00,2014-10-11 18:00,,2017-01-01 00:00,2017-01-01 00:00,,,2014-08-26 08:00,2014-09-24 18:00,,,,,PT_Normal,,,,,OLVV7oHCRCys4+9OkZ+Y8Q,,,,N,5336,1104,,,2017-01-24 14:42,2017-01-24 14:53,CLEMENTL,CLEMENTL
253,49428080,751235,10651482,1227199,1,100,N,N,N,CP_Drtn,TT_Task,DT_FixedDUR2,RV_OK,TK_Complete,823A-NT-TBM-SB-1140,"Invert slab, side walkway",,,,0,8064,0,8064,408,576,576,0,,2014-09-15 08:00,2015-07-07 18:00,2017-06-12 18:00,2017-06-12 18:00,,2017-01-01 00:00,2017-01-01 00:00,,,2014-10-04 08:00,2014-12-02 18:00,,,,,PT_Normal,,,,,L+n5mgZGQj+/ui/wzYlFEg,,,,N,8064,576,,,2017-01-24 14:42,2017-01-24 15:39,CLEMENTL,CLEMENTL
254,49428081,751235,10651482,1227199,1,100,N,N,N,CP_Drtn,TT_Task,DT_FixedDUR2,RV_OK,TK_Complete,823A-NT-TBM-SB-1120,Position crane for TBM retrieval at Tai Kong Po Shaft,,,,0,0,0,216,168,72,0,0,,2014-08-01 08:00,2014-08-25 18:00,2014-10-11 18:00,2014-10-11 18:00,,2017-01-01 00:00,2017-01-01 00:00,,,2014-08-01 08:00,2014-08-25 18:00,,,,,PT_Normal,,,,,ir5sFQdWQpmhHtWoUf+u1w,,,,N,0,0,,,2017-01-24 14:42,2017-01-24 14:53,CLEMENTL,CLEMENTL
255,49428082,751235,10651482,1227199,1,100,N,N,N,CP_Drtn,TT_Task,DT_FixedDUR2,RV_OK,TK_Complete,823A-NT-TBM-SB-1150,Installation of cable bracket,,,,0,0,0,0,96,0,0,0,,2014-09-12 08:00,2015-07-17 18:00,2017-06-12 18:00,2017-06-12 18:00,,2017-01-01 00:00,2017-01-01 00:00,,,2014-12-30 08:00,2015-01-13 18:00,,,,,PT_Normal,,,,,dFdhZ/jqQ+a2RZZEvdAEng,,,,N,0,0,,,2017-01-24 14:42,2017-01-24 15:36,CLEMENTL,CLEMENTL
256,49428083,751235,10651482,1227199,1,100,N,N,N,CP_Drtn,TT_Task,DT_FixedDUR2,RV_OK,TK_Complete,823A-NT-TBM-SB-1020,TBM drive & lining installation CH123+369 to CH123+283 Initial Drive (86m),268571,,,0,8640,0,8640,392,2640,2640,0,,2012-10-17 00:00,2013-01-02 18:00,2014-10-11 18:00,2014-10-11 18:00,,2017-01-01 00:00,2017-01-01 00:00,,,2012-11-03 08:00,2013-01-02 18:00,,,,,PT_Normal,,,,,jV0UoNCKR9ecfuIsaMINIA,0AlV4oRBNEqkrmFB6zYrjg,,,N,8640,2640,,,2017-01-24 14:42,2017-01-24 15:30,CLEMENTL,CLEMENTL
257,49428084,751235,10651483,1239098,1,100,N,N,N,CP_Drtn,TT_Task,DT_FixedDUR2,RV_OK,TK_Complete,823A-NT-TBM-NB-1005,Removal of Roof of Noise Enclosure,,,,0,0,0,0,96,0,0,0,,2014-10-06 08:00,2014-10-09 18:00,2014-10-11 18:00,2014-10-11 18:00,,2017-01-01 00:00,2017-01-01 00:00,,,2014-10-06 13:00,2014-10-20 12:00,,,,,PT_Normal,,,,,Xo/WABQ+Tt6CYWZInCLInA,,,,N,0,0,,,2017-01-24 14:42,2017-01-24 14:53,CLEMENTL,CLEMENTL
258,49428085,751235,10651483,1227199,1,100,N,N,N,CP_Drtn,TT_Task,DT_FixedDUR2,RV_OK,TK_Complete,823A-NT-TBM-NB-1130,Dis-assemble TBM,,,,0,5568,0,5568,240,1152,1152,0,,2015-12-13 08:00,2016-03-13 18:00,2014-10-11 18:00,2014-10-11 18:00,,2017-01-01 00:00,2017-01-01 00:00,,,2015-12-16 08:00,2016-01-22 18:00,,,,,PT_Normal,,,,,vwZTJxCrQhSSsMdu7Rq25Q,,,,N,5568,1152,,,2017-01-24 14:42,2017-01-24 14:53,CLEMENTL,CLEMENTL
259,49428086,751235,10651483,1227199,1,100,N,N,N,CP_Drtn,TT_Task,DT_FixedDUR2,RV_OK,TK_Complete,823A-NT-TBM-NB-1140,"Invert slab, side walkway",,,,0,7488,0,7488,312,624,624,0,,2016-03-14 08:00,2016-05-24 18:00,2014-10-11 18:00,2014-10-11 18:00,,2017-01-01 00:00,2017-01-01 00:00,,,2016-04-01 08:00,2016-05-19 18:00,,,,,PT_Normal,,,,,NDD0gLazQ7OTATXJKggDNg,,,,N,7488,624,,,2017-01-24 14:42,2017-01-24 14:53,CLEMENTL,CLEMENTL
260,49428087,751235,10651483,1227199,1,100,N,N,N,CP_Drtn,TT_Task,DT_FixedDUR2,RV_OK,TK_Complete,823A-NT-TBM-NB-1010,"Assemble, T&C of TBM",,,,0,10440,0,10440,400,2160,2160,0,,2014-10-04 08:00,2014-11-28 18:00,2014-10-11 18:00,2014-10-11 18:00,,2017-01-01 00:00,2017-01-01 00:00,,,2014-11-03 08:00,2015-01-02 18:00,,,,,PT_Normal,,,,,3osBh7wrSbabwlULTnCQTw,,,,N,10440,2160,,,2017-01-24 14:42,2017-01-24 14:53,CLEMENTL,CLEMENTL
261,49428088,751235,10651483,1227199,1,100,N,N,N,CP_Drtn,TT_Task,DT_FixedDUR2,RV_OK,TK_Complete,823A-NT-TBM-NB-1120,Position crane for TBM retrieval at Tai Kong Po Shaft,,,,0,0,0,192,48,12636,0,0,,2015-12-01 08:00,2015-12-07 18:00,2014-10-11 18:00,2014-10-11 18:00,,2017-01-01 00:00,2017-01-01 00:00,,,2015-12-01 08:00,2015-12-07 18:00,,,,,PT_Normal,,,,,sfuHA23UQhStHhPICFh8wA,aQWGQrKlIk+6Z9y+q6LmkQ,,,N,0,0,,,2017-01-24 14:42,2017-01-24 14:53,CLEMENTL,CLEMENTL
262,49428089,751235,10651483,1227199,1,100,N,N,N,CP_Drtn,TT_Task,DT_FixedDUR2,RV_OK,TK_Complete,823A-NT-TBM-NB-1040,TBM drive & lining installation CH123+384 to CH123+284 (Initial Drive),,,,0,9504,0,9504,304,2904,2904,0,,2014-12-02 00:00,2015-01-20 18:00,2014-10-11 18:00,2014-10-11 18:00,,2017-01-01 00:00,2017-01-01 00:00,,,2014-12-06 08:00,2015-01-22 18:00,,,,,PT_Normal,,,,,C7sy0R7fQoCNoZhAZeh+gg,Tas9uDOwI0SB6TRfQ7A+iw,,,N,9504,2904,,,2017-01-24 14:42,2017-01-24 15:31,CLEMENTL,CLEMENTL
263,49428090,751235,10651483,1227199,1,100,N,N,N,CP_Drtn,TT_Task,DT_FixedDUR2,RV_OK,TK_Complete,823A-NT-TBM-NB-1020,Setup back-up plant for final drive,,,,0,8928,0,8928,240,2728,2728,0,,2014-10-04 08:00,2014-10-23 18:00,2014-10-11 18:00,2014-10-11 18:00,,2017-01-01 00:00,2017-01-01 00:00,,,2014-11-15 08:00,2014-12-19 18:00,,,,,PT_Normal,,,,,nuZautksRVu4si2LyHDnXg,DCsyoXn3qEicOvP0kSSMTg,,,N,8928,2728,,,2017-01-24 14:42,2017-01-24 14:53,CLEMENTL,CLEMENTL
264,49428091,751235,10651483,1227199,1,100,N,N,N,CP_Drtn,TT_Task,DT_FixedDUR2,RV_OK,TK_Complete,823A-NT-TBM-NB-1030,Reinstate of noise enclosure,,,,0,0,0,0,144,0,0,0,,2014-11-29 08:00,2015-01-09 18:00,2014-10-11 18:00,2014-10-11 18:00,,2017-01-01 00:00,2017-01-01 00:00,,,2014-12-06 08:00,2014-12-29 18:00,,,,,PT_Normal,,,,,Zm5CcieiQM2VrB5aiuNdmA,,,,N,0,0,,,2017-01-24 14:42,2017-01-24 14:53,CLEMENTL,CLEMENTL
265,49428092,751235,10651483,1227199,1,100,N,N,N,CP_Drtn,TT_Task,DT_FixedDUR2,RV_OK,TK_Complete,823A-NT-TBM-NB-1150,Installation of cable bracket,,,,0,0,0,0,96,0,0,0,,2015-07-02 08:00,2016-03-15 18:00,2017-06-12 18:00,2017-06-12 18:00,,2017-01-01 00:00,2017-01-01 00:00,,,2015-09-07 08:00,2015-09-19 18:00,,,,,PT_Normal,,,,,/29/T8jXQ5KfmD9hobq36g,,,,N,0,0,,,2017-01-24 14:42,2017-01-24 15:36,CLEMENTL,CLEMENTL
266,49428093,751235,10651483,1227199,1,100,N,N,N,CP_Drtn,TT_Task,DT_FixedDUR2,RV_OK,TK_Complete,823A-NT-TBM-NB-1170,Demobilization of TBM facilities and noise enclosure,,,,0,0,0,0,248,0,0,0,,2016-02-01 08:00,2016-02-22 18:00,2014-10-11 18:00,2014-10-11 18:00,,2017-01-01 00:00,2017-01-01 00:00,,,2016-02-01 08:00,2016-03-10 18:00,,,,,PT_Normal,,,,,nl66A69oT+Sjw58zJ1YiqA,,,,N,0,0,,,2017-01-24 14:42,2017-01-24 14:53,CLEMENTL,CLEMENTL
267,49428094,751235,10651483,1239098,1,100,N,N,N,CP_Drtn,TT_Task,DT_FixedDUR2,RV_OK,TK_Complete,823A-NT-TBM-NB-1050,TBM drive & lining installation CH123+184 to CH123+084,,,,0,0,0,0,56,0,0,0,,2015-01-21 08:00,2015-02-11 18:00,2014-10-11 18:00,2014-10-11 18:00,,2017-01-01 00:00,2017-01-01 00:00,,,2015-01-21 08:00,2015-01-28 18:00,,,,,PT_Normal,,,,,V0s89ajDRhOver/F3Q3q/A,,,,N,0,0,,,2017-01-24 14:42,2017-01-24 14:53,CLEMENTL,CLEMENTL
268,49428095,751235,10651483,1239098,1,100,N,N,N,CP_Drtn,TT_Task,DT_FixedDUR2,RV_OK,TK_Complete,823A-NT-TBM-NB-1060,TBM drive & lining installation CH123+084 to CH122+984,,,,0,0,0,0,56,0,0,0,,2015-02-12 08:00,2015-02-26 18:00,2014-10-11 18:00,2014-10-11 18:00,,2017-01-01 00:00,2017-01-01 00:00,,,2015-02-04 08:00,2015-02-11 18:00,,,,,PT_Normal,,,,,2m2U1GOPSnm7lyiEx4WLsA,,,,N,0,0,,,2017-01-24 14:42,2017-01-24 14:53,CLEMENTL,CLEMENTL
269,49428096,751235,10651483,1239098,1,100,N,N,N,CP_Drtn,TT_Task,DT_FixedDUR2,RV_OK,TK_Complete,823A-NT-TBM-NB-1070,TBM drive & lining installation CH122+984 to CH122+884,,,,0,0,0,0,64,0,0,0,,2015-02-27 08:00,2015-03-20 18:00,2014-10-11 18:00,2014-10-11 18:00,,2017-01-01 00:00,2017-01-01 00:00,,,2015-02-12 08:00,2015-02-24 18:00,,,,,PT_Normal,,,,,XpuRxG4ET5ybHkxIgnDayA,,,,N,0,0,,,2017-01-24 14:42,2017-01-24 14:53,CLEMENTL,CLEMENTL
270,49428097,751235,10651483,1239098,1,100,N,N,N,CP_Drtn,TT_Task,DT_FixedDUR2,RV_OK,TK_Complete,823A-NT-TBM-NB-1080,TBM drive & lining installation CH122+884 to CH122+784,,,,0,0,0,0,64,0,0,0,,2015-03-21 08:00,2015-05-27 18:00,2014-10-11 18:00,2014-10-11 18:00,,2017-01-01 00:00,2017-01-01 00:00,,,2015-03-10 08:00,2015-03-18 18:00,,,,,PT_Normal,,,,,HexfBI14Q6KtquGkF2+jvw,,,,N,0,0,,,2017-01-24 14:42,2017-01-24 14:53,CLEMENTL,CLEMENTL
271,49428098,751235,10651483,1239098,1,100,N,N,N,CP_Drtn,TT_Task,DT_FixedDUR2,RV_OK,TK_Complete,823A-NT-TBM-NB-1090,TBM drive & lining installation CH122+784 to CH122+684,,,,0,0,0,0,64,0,0,0,,2015-05-28 08:00,2015-07-11 18:00,2014-10-11 18:00,2014-10-11 18:00,,2017-01-01 00:00,2017-01-01 00:00,,,2015-05-06 08:00,2015-05-14 18:00,,,,,PT_Normal,,,,,iqFIbVm6QSOQ4yOyheIt9w,,,,N,0,0,,,2017-01-24 14:42,2017-01-24 14:53,CLEMENTL,CLEMENTL
272,49428099,751235,10651483,1239098,1,100,N,N,N,CP_Drtn,TT_Task,DT_FixedDUR2,RV_OK,TK_Complete,823A-NT-TBM-NB-1100,TBM drive & lining installation CH122+684 to CH122+584,,,,0,0,0,0,56,0,0,0,,2015-07-13 08:00,2015-11-14 18:00,2014-10-11 18:00,2014-10-11 18:00,,2017-01-01 00:00,2017-01-01 00:00,,,2015-07-03 08:00,2015-07-10 18:00,,,,,PT_Normal,,,,,OKnoGiRFQOWk16g0X/1SFQ,,,,N,0,0,,,2017-01-24 14:42,2017-01-24 14:53,CLEMENTL,CLEMENTL
273,49428100,751235,10651483,1239098,1,100,N,N,N,CP_Drtn,TT_Task,DT_FixedDUR2,RV_OK,TK_Complete,823A-NT-TBM-NB-1110,TBM drive & lining installation CH122+584 to CH122+506,,,,0,0,0,0,48,0,0,0,,2015-11-16 08:00,2015-12-12 18:00,2014-10-11 18:00,2014-10-11 18:00,,2017-01-01 00:00,2017-01-01 00:00,,,2015-11-03 08:00,2015-11-09 18:00,,,,,PT_Normal,,,,,qpRZWBTLTVWvZRdJlNjQew,,,,N,0,0,,,2017-01-24 14:42,2017-01-24 14:53,CLEMENTL,CLEMENTL
274,49428101,751235,10651484,1227199,1,100,N,N,N,CP_Drtn,TT_Task,DT_FixedDUR2,RV_OK,TK_Complete,823A-NT-TBM-PR-1170,Fabrication 50% of North Tunnel South Bound (Downtrack) Precast Lining,,,,0,0,0,0,1080,0,0,0,,2011-09-01 08:00,2012-02-15 18:00,2014-10-11 18:00,2014-10-11 18:00,,2017-01-01 00:00,2017-01-01 00:00,,,2011-09-01 08:00,2012-02-15 18:00,,,,,PT_Normal,,,,,6f9xpgHRQceqUxgsa9Veag,30AbAKGU90+mA+9jx12U0A,,,N,0,0,,,2017-01-24 14:42,2017-01-24 14:53,CLEMENTL,CLEMENTL
275,49428102,751235,10651484,1227199,1,100,N,N,N,CP_Drtn,TT_Task,DT_FixedDUR2,RV_OK,TK_Complete,823A-NT-TBM-PR-1200,Fabrication 60% of North Tunnel North Bound (Uptrack) Precast Lining,,,,0,0,0,0,816,0,0,0,,2012-10-18 08:00,2012-12-03 18:00,2014-10-11 18:00,2014-10-11 18:00,,2017-01-01 00:00,2017-01-01 00:00,,,2012-10-18 08:00,2013-02-21 18:00,,,,,PT_Normal,,,,,jQoMlrc5RZC0FSc/ucRcVw,RfmgpbvVdEmQ3mKlzEsfMw,,,N,0,0,,,2017-01-24 14:42,2017-01-24 14:53,CLEMENTL,CLEMENTL
276,49428103,751235,10651484,1227199,1,100,N,N,N,CP_Drtn,TT_Task,DT_FixedDUR2,RV_OK,TK_Complete,823A-NT-TBM-PR-1190,Fabrication 30% of North Tunnel North Bound (Uptrack) Precast Lining,,,,0,0,0,0,520,0,0,0,,2012-08-01 08:00,2012-10-17 18:00,2014-10-11 18:00,2014-10-11 18:00,,2017-01-01 00:00,2017-01-01 00:00,,,2012-08-01 08:00,2012-10-17 18:00,,,,,PT_Normal,,,,,LPReR7ouRmaovMZIDoSIJA,r96Nb+1l/06Ow/nRjSGWfw,,,N,0,0,,,2017-01-24 14:42,2017-01-24 14:53,CLEMENTL,CLEMENTL
277,49428104,751235,10651484,1227199,1,100,N,N,N,CP_Drtn,TT_Task,DT_FixedDUR2,RV_OK,TK_Complete,823A-NT-TBM-PR-1180,Fabrication 100% of North Tunnel South Bound (Downtrack) Precast Lining,,,,0,0,0,0,1080,0,0,0,,2012-02-16 08:00,2012-07-31 18:00,2014-10-11 18:00,2014-10-11 18:00,,2017-01-01 00:00,2017-01-01 00:00,,,2012-02-16 08:00,2012-07-31 18:00,,,,,PT_Normal,,,,,gJ6YjnvwQb6AgQpN2YLJNg,3EqBAJghcki0rKCwVW3ovQ,,,N,0,0,,,2017-01-24 14:42,2017-01-24 14:53,CLEMENTL,CLEMENTL
278,49428105,751235,10651484,1227199,1,100,N,N,N,CP_Drtn,TT_Task,DT_FixedDUR2,RV_OK,TK_Complete,823A-NT-TBM-PR-1210,Fabrication 100% of North Tunnel North Bound (Uptrack) Precast Lining,,,,0,0,0,0,712,0,0,0,,2012-12-03 08:00,2013-02-22 18:00,2014-10-11 18:00,2014-10-11 18:00,,2017-01-01 00:00,2017-01-01 00:00,,,2013-08-19 08:00,2013-12-03 18:00,,,,,PT_Normal,,,,,+CkXVB5aRw6rN8dcqXn9sQ,B2WQYyLvvkaJqfcxFSO6WA,,,N,0,0,,,2017-01-24 14:42,2017-01-24 14:53,CLEMENTL,CLEMENTL
279,49428106,751235,10651484,1227199,1,100,N,N,N,CP_Drtn,TT_Task,DT_FixedDUR2,RV_OK,TK_Complete,823A-NT-TBM-PR-1120,Ground treatment for TBM lanching shaft,,,,0,6552,0,6552,736,2912,2912,0,,2011-07-05 08:00,2011-10-22 18:00,2014-10-11 18:00,2014-10-11 18:00,,2017-01-01 00:00,2017-01-01 00:00,,,2011-07-05 08:00,2011-10-22 18:00,,,,,PT_Normal,,,,,dwDHisqUR6u4OvixpepnCg,5O/At8XAQU2mG1Ye9j7MUA,,,N,6552,2912,,,2017-01-24 14:42,2017-01-24 14:53,CLEMENTL,CLEMENTL
280,49428107,751235,10651484,1227199,1,100,N,N,N,CP_Drtn,TT_Task,DT_FixedDUR2,RV_OK,TK_Complete,823A-NT-TBM-PR-1160,Fabrication of tunnel segment mould,,,,0,0,0,0,800,0,0,0,,2011-02-15 08:00,2011-06-18 18:00,2014-10-11 18:00,2014-10-11 18:00,,2017-01-01 00:00,2017-01-01 00:00,,,2011-02-15 08:00,2011-06-18 18:00,,,,,PT_Normal,,,,,QF9NQjURS7iEqcgvDIAHew,maeriTEXG0iRrnBAbZBWXg,,,N,0,0,,,2017-01-24 14:42,2017-01-24 14:53,CLEMENTL,CLEMENTL
281,49428108,751235,10651484,1227199,1,100,N,N,N,CP_Drtn,TT_Task,DT_FixedDUR2,RV_OK,TK_Complete,823A-NT-TBM-PR-1130,Ground treatment for Cross Passage Tunnel,,,,0,6552,0,6552,2032,2912,2912,0,,2011-10-24 08:00,2012-08-30 18:00,2014-10-11 18:00,2014-10-11 18:00,,2017-01-01 00:00,2017-01-01 00:00,,,2011-10-24 08:00,2012-08-30 18:00,,,,,PT_Normal,,,,,/RVD3de/SSC1THbXKAaymQ,,,,N,6552,2912,,,2017-01-24 14:42,2017-01-24 14:53,CLEMENTL,CLEMENTL
282,49428109,751235,10651484,1227199,1,100,N,N,N,CP_Drtn,TT_Task,DT_FixedDUR2,RV_OK,TK_Complete,823A-NT-TBM-PR-1140,"Box7A Setup TBM facilities, install noise enclosure and CNP application",,,,0,20328,0,20328,1584,6776,6776,0,,2012-06-01 08:00,2013-01-29 18:00,2014-10-11 18:00,2014-10-11 18:00,,2017-01-01 00:00,2017-01-01 00:00,,,2012-06-01 08:00,2013-01-26 18:00,,,,,PT_Normal,,,,,zbcYJY3ARMCsAAd1f81xEA,,,,N,20328,6776,,,2017-01-24 14:42,2017-01-24 14:53,CLEMENTL,CLEMENTL
283,49428110,751235,10651484,1239098,1,100,N,N,N,CP_Drtn,TT_Task,DT_FixedDUR2,RV_OK,TK_Complete,823A-NT-TBM-PR-1150,Notice to Contract 824 the anticipated dates of break out TBM Shaft,,,,0,0,0,0,432,0,0,0,,2013-05-02 08:00,2013-12-02 18:00,2014-10-11 18:00,2014-10-11 18:00,,2017-01-01 00:00,2017-01-01 00:00,,,2013-06-01 08:00,2013-08-05 18:00,,,,,PT_Normal,,,,,ps3fBheHQM67tvFJqK1I7g,,,,N,0,0,,,2017-01-24 14:42,2017-01-24 14:53,CLEMENTL,CLEMENTL
284,49428111,751235,10651484,1227199,1,100,N,N,N,CP_Drtn,TT_Task,DT_FixedDUR2,RV_OK,TK_Complete,823A-NT-TBM-PR-1020,Procurement and Confirmation of the order of 1st tunnel boring machine,,,,0,0,0,0,424,0,0,0,,2010-07-19 08:00,2010-09-17 18:00,2014-10-11 18:00,2014-10-11 18:00,,2017-01-01 00:00,2017-01-01 00:00,,,2010-07-19 08:00,2010-09-17 18:00,,,,,PT_Normal,,,,,X+LcdxAmTL2fHoCRcASMtw,nl13EQpySnyX2t4HeIkTsA,,,N,0,0,,,2017-01-24 14:42,2017-01-24 14:53,CLEMENTL,CLEMENTL
285,49428112,751235,10651484,1227199,1,100,N,N,N,CP_Drtn,TT_Task,DT_FixedDUR2,RV_OK,TK_Complete,823A-NT-TBM-PR-1030,Prepare on-demand bond or bank guarantee for the procurement of TBM and submit to Engineer for approval,,,,0,0,0,0,832,0,0,0,,2010-07-19 08:00,2010-11-19 18:00,2017-06-12 18:00,2017-06-12 18:00,,2017-01-01 00:00,2017-01-01 00:00,,,2010-07-19 08:00,2010-11-19 18:00,,,,,PT_Normal,,,,,ccHMjjKNSVSNwLZOjGWXNw,4fkSGmQASSCLQOqEp+rSzw,,,N,0,0,,,2017-01-24 14:42,2017-01-24 15:36,CLEMENTL,CLEMENTL
286,49428113,751235,10651484,1227199,1,100,N,N,N,CP_Drtn,TT_Task,DT_FixedDUR2,RV_OK,TK_Complete,823A-NT-TBM-PR-1040,TBM design and submission for approval,,,,0,0,0,0,192,0,0,0,,2010-09-16 08:00,2010-10-15 18:00,2014-10-11 18:00,2014-10-11 18:00,,2017-01-01 00:00,2017-01-01 00:00,,,2010-09-16 08:00,2010-10-15 18:00,,,,,PT_Normal,,,,,Yn0ZTO/UT/GDe0gKLaeIzw,0dNRUbyyTxq1KgcF3HQ3Iw,,,N,0,0,,,2017-01-24 14:42,2017-01-24 14:53,CLEMENTL,CLEMENTL
287,49428114,751235,10651484,1227199,1,100,N,N,N,CP_Drtn,TT_Task,DT_FixedDUR2,RV_OK,TK_Complete,823A-NT-TBM-PR-1050,TBM materials order and delivery to factory,,,,0,0,0,0,784,0,0,0,,2010-10-18 08:00,2011-02-15 18:00,2014-10-11 18:00,2014-10-11 18:00,,2017-01-01 00:00,2017-01-01 00:00,,,2010-10-18 08:00,2011-02-15 18:00,,,,,PT_Normal,,,,,7AuHp7EaS9eAUx3NDdLfbg,2rrcmGPVSRKvNdXYbcQ1IQ,,,N,0,0,,,2017-01-24 14:42,2017-01-24 14:53,CLEMENTL,CLEMENTL
288,49428115,751235,10651484,1227199,1,100,N,N,N,CP_Drtn,TT_Task,DT_FixedDUR2,RV_OK,TK_Complete,823A-NT-TBM-PR-1060,TBM equipments order and delivery to factory,,,,0,0,0,0,1352,0,0,0,,2010-12-01 08:00,2011-06-30 18:00,2014-10-11 18:00,2014-10-11 18:00,,2017-01-01 00:00,2017-01-01 00:00,,,2010-12-01 08:00,2011-06-30 18:00,,,,,PT_Normal,,,,,ToTX7UoTTOyqiPL1eGH3fg,csqOiuNlSlKzPUt/0crF/Q,,,N,0,0,,,2017-01-24 14:42,2017-01-24 14:53,CLEMENTL,CLEMENTL
289,49428116,751235,10651484,1227199,1,100,N,N,N,CP_Drtn,TT_Task,DT_FixedDUR2,RV_OK,TK_Complete,823A-NT-TBM-PR-1070,TBM Fabrication,,,,0,0,0,0,536,0,0,0,,2011-01-04 08:00,2011-03-25 18:00,2014-10-11 18:00,2014-10-11 18:00,,2017-01-01 00:00,2017-01-01 00:00,,,2011-01-04 08:00,2011-03-25 18:00,,,,,PT_Normal,,,,,JZKPEM3ASWGGCv7CPHyVvg,uamzpMrjS+yUw9thRuGNzQ,,,N,0,0,,,2017-01-24 14:42,2017-01-24 14:53,CLEMENTL,CLEMENTL
290,49428117,751235,10651484,1227199,1,100,N,N,N,CP_Drtn,TT_Task,DT_FixedDUR2,RV_OK,TK_Complete,823A-NT-TBM-PR-1080,Final assembly for tunnel boring machine at the factory,,,,0,0,0,0,736,0,0,0,,2011-03-26 08:00,2011-07-20 18:00,2014-10-11 18:00,2014-10-11 18:00,,2017-01-01 00:00,2017-01-01 00:00,,,2011-03-26 08:00,2011-07-20 18:00,,,,,PT_Normal,,,,,0IT5bSnfQzieB63GKz9lug,QUrSKM0BS7S5699b/n28dw,,,N,0,0,,,2017-01-24 14:42,2017-01-24 14:53,CLEMENTL,CLEMENTL
291,49428118,751235,10651484,1227199,1,100,N,N,N,CP_Drtn,TT_Task,DT_FixedDUR2,RV_OK,TK_Complete,823A-NT-TBM-PR-1090,TBM test Run,,,,0,0,0,0,144,0,0,0,,2011-07-21 08:00,2011-08-10 18:00,2014-10-11 18:00,2014-10-11 18:00,,2017-01-01 00:00,2017-01-01 00:00,,,2011-07-21 08:00,2011-08-10 18:00,,,,,PT_Normal,,,,,55oiSWJjQ7KM9PXmLxpLiQ,xxz7A6c0TLa+NSMUXOUGkg,,,N,0,0,,,2017-01-24 14:42,2017-01-24 14:53,CLEMENTL,CLEMENTL
292,49428119,751235,10651484,1227199,1,100,N,N,N,CP_Drtn,TT_Task,DT_FixedDUR2,RV_OK,TK_Complete,823A-NT-TBM-PR-1100,TBM disassembly and packing for shipping to HK,,,,0,0,0,0,208,0,0,0,,2011-08-11 08:00,2011-09-09 18:00,2014-10-11 18:00,2014-10-11 18:00,,2017-01-01 00:00,2017-01-01 00:00,,,2011-08-11 08:00,2011-09-09 18:00,,,,,PT_Normal,,,,,MY9wedwCT9m9QNxUj0rrqA,BhqxtOWfSmC1lyJmOq5lkQ,,,N,0,0,,,2017-01-24 14:42,2017-01-24 14:53,CLEMENTL,CLEMENTL
293,49428120,751235,10651484,1227199,1,100,N,N,N,CP_Drtn,TT_Task,DT_FixedDUR2,RV_OK,TK_Complete,823A-NT-TBM-PR-1110,TBM Shipping to HK and delivery to site,,,,0,0,0,0,1328,0,0,0,,2011-09-10 08:00,2012-03-31 18:00,2014-10-11 18:00,2014-10-11 18:00,,2017-01-01 00:00,2017-01-01 00:00,,,2011-09-10 08:00,2012-03-31 18:00,,,,,PT_Normal,,,,,IgBG7WTnQLCC6AHRdcBt4g,bph2cD0PQymJStyDUwigFw,,,N,0,0,,,2017-01-24 14:42,2017-01-24 14:53,CLEMENTL,CLEMENTL
294,49428121,751235,10651484,1227199,1,100,N,N,N,CP_Drtn,TT_Task,DT_FixedDUR2,RV_OK,TK_Complete,823A-NT-TBM-PR-1010,"Application of power supply, environmental permits and construction substation",,,,0,0,0,0,3472,0,0,0,,2010-07-19 08:00,2011-12-31 18:00,2014-10-11 18:00,2014-10-11 18:00,,2017-01-01 00:00,2017-01-01 00:00,,,2010-07-19 08:00,2011-12-31 18:00,,,,,PT_Normal,,,,,qDqxTOsmRNmUCbnF+RyU4w,jGOWbplWT7SG3jWbauyrRg,,,N,0,0,,,2017-01-24 14:42,2017-01-24 14:53,CLEMENTL,CLEMENTL
295,49428122,751235,10651487,1239098,1,100,N,N,N,CP_Drtn,TT_Task,DT_FixedDUR2,RV_OK,TK_Complete,823A-NT-7B-ELS-1010,Excavate from ground level to formation level -5.5mPD (4559m3),268581,,,0,100672,0,100672,1144,82368,82368,0,,2011-11-29 08:00,2012-05-26 18:00,2014-07-11 08:00,2014-07-11 08:00,,2017-01-01 00:00,2017-01-01 00:00,,,2011-11-29 08:00,2012-05-26 18:00,,,,,PT_Normal,,,,,CB4OzIBQQ5K8j3LwMn7UpA,VEqeJ4zGQzysQVJkmTeadg,,,N,100672,82368,,,2017-01-24 14:42,2017-01-24 15:40,CLEMENTL,CLEMENTL
296,49428123,751235,10651487,1227199,1,100,N,N,N,CP_Drtn,TT_Task,DT_FixedDUR2,RV_OK,TK_Complete,823A-NT-7B-ELS-1040,Placing of blinding layer (North Bound),,,,0,512,0,512,16,128,128,0,,2012-05-18 08:00,2012-05-19 18:00,2014-07-11 08:00,2014-07-11 08:00,,2017-01-01 00:00,2017-01-01 00:00,,,2012-05-18 08:00,2012-05-19 18:00,,,,,PT_Normal,,,,,eHeoILH0QnSY3ZHlwahTMg,xN4RDfTTSZSI8d9rB0sWKg,,,N,512,128,,,2017-01-24 14:42,2017-01-24 15:40,CLEMENTL,CLEMENTL
297,49428124,751235,10651487,1227199,1,100,N,N,N,CP_Drtn,TT_Task,DT_FixedDUR2,RV_OK,TK_Complete,823A-NT-7B-ELS-1020,Install rock dowel and tie back,268581,,,0,54912,0,54912,1144,36608,36608,0,,2012-01-16 08:00,2012-07-12 18:00,2014-07-11 08:00,2014-07-11 08:00,,2017-01-01 00:00,2017-01-01 00:00,,,2012-01-16 08:00,2012-07-12 18:00,,,,,PT_Normal,,,,,LiY2YglgQf2MXuU+n94MGg,8Q0lpRFp60+PQBrnBHiwDA,,,N,54912,36608,,,2017-01-24 14:42,2017-01-24 15:40,CLEMENTL,CLEMENTL
298,49428125,751235,10651487,1227199,1,100,N,N,N,CP_Drtn,TT_Task,DT_FixedDUR2,RV_OK,TK_Complete,823A-NT-7B-ELS-1030,Placing of blinding layer (South Bound),268571,,,0,384,0,384,16,128,128,0,,2012-06-01 08:00,2012-06-02 18:00,2014-07-11 08:00,2014-07-11 08:00,,2017-01-01 00:00,2017-01-01 00:00,,,2012-06-01 08:00,2012-06-02 18:00,,,,,PT_Normal,,,,,r2Ybqx7LTDmTIyIEF8RCFw,1AIJ9QiNUUGwUib25KWgGw,,,N,384,128,,,2017-01-24 14:42,2017-01-24 15:40,CLEMENTL,CLEMENTL
299,49428126,751235,10651488,1239098,1,100,N,N,N,CP_Drtn,TT_Task,DT_FixedDUR2,RV_OK,TK_Complete,823A-NT-7B-STR-1010,Construction of Bay 2 to Bay 7a (3565m3),268557,,,0,239424,0,239424,1032,16512,16512,0,,2012-06-04 18:00,2012-11-06 18:00,2014-07-11 08:00,2014-07-11 08:00,,2017-01-01 00:00,2017-01-01 00:00,,,2012-06-04 08:00,2012-11-06 18:00,,,,,PT_Normal,,,,,ipi3fcDkSp252Ml/dXKWew,,,,N,239424,16512,,,2017-01-24 14:42,2017-01-24 15:40,CLEMENTL,CLEMENTL
300,49428127,751235,10651488,1239098,1,100,N,N,N,CP_Drtn,TT_Task,DT_FixedDUR2,RV_OK,TK_Complete,823A-NT-7B-STR-1020,Side walkway and cable bracket (Southbound),268565,,,0,0,0,23040,240,3840,0,0,,2015-10-02 08:00,2015-10-31 18:00,2017-06-12 18:00,2017-06-12 18:00,,2017-01-01 00:00,2017-01-01 00:00,,,2015-10-02 08:00,2015-11-06 18:00,,,,,PT_Normal,,,,,xDsyYctMTEuk97Bmki94Ug,,,,N,0,0,,,2017-01-24 14:42,2017-01-24 15:36,CLEMENTL,CLEMENTL
301,49428128,751235,10651488,1239098,1,100,N,N,N,CP_Drtn,TT_Task,DT_FixedDUR2,RV_OK,TK_Complete,823A-NT-7B-STR-1030,Side walkway and cable bracket (Northbound),268565,,,0,0,0,17600,200,3200,0,0,,2016-05-03 08:00,2016-05-05 18:00,2017-06-12 18:00,2017-06-12 18:00,,2017-01-01 00:00,2017-01-01 00:00,,,2016-05-03 08:00,2016-06-01 18:00,,,,,PT_Normal,,,,,thaNqFIaSN62CTDcMxrCiA,,,,N,0,0,,,2017-01-24 14:42,2017-01-24 15:36,CLEMENTL,CLEMENTL
302,49428129,751235,10651489,1239098,1,100,N,N,N,CP_Drtn,TT_Task,DT_FixedDUR2,RV_OK,TK_Complete,823A-NT-7B-DW-1010,Site Possession and Site set up and Mobilization,,,,0,0,0,0,64,0,0,0,,2010-12-06 08:00,2010-12-14 18:00,2014-07-11 08:00,2014-07-11 08:00,,2017-01-01 00:00,2017-01-01 00:00,,,2010-12-06 08:00,2010-12-14 18:00,,,,,PT_Normal,,,,,X53VN8OxTHmj9uPZZraQbg,,,,N,0,0,,,2017-01-24 14:42,2017-01-24 15:40,CLEMENTL,CLEMENTL
303,49428130,751235,10651489,1227199,1,100,N,N,N,CP_Drtn,TT_Task,DT_FixedDUR2,RV_OK,TK_Complete,823A-NT-7B-DW-1020,Pre-drilling and guidewall,,,,0,0,0,0,520,0,0,0,,2010-12-15 08:00,2011-03-07 18:00,2014-07-11 08:00,2014-07-11 08:00,,2017-01-01 00:00,2017-01-01 00:00,,,2010-12-15 08:00,2011-03-07 18:00,,,,,PT_Normal,,,,,UQ+L3X2mSKe5r/NR5xfqog,4hZlCaRRQRKVQNi83WLQEQ,,,N,0,0,,,2017-01-24 14:42,2017-01-24 15:40,CLEMENTL,CLEMENTL
304,49428131,751235,10651489,1227199,1,100,N,N,N,CP_Drtn,TT_Task,DT_FixedDUR2,RV_OK,TK_Complete,823A-NT-7B-DW-1030,D-wall construction (1451m3),,,,0,12160,0,12160,760,6080,6080,0,,2011-03-08 08:00,2011-07-05 18:00,2014-07-11 08:00,2014-07-11 08:00,,2017-01-01 00:00,2017-01-01 00:00,,,2011-03-08 08:00,2011-07-05 18:00,,,,,PT_Normal,,,,,U2LiXcIJRM2xdOwS5G2gzw,jtudAmHxS0a5dU8yC0EOVQ,,,N,12160,6080,,,2017-01-24 14:42,2017-01-24 15:40,CLEMENTL,CLEMENTL
305,49428132,751235,10651489,1227199,1,100,N,N,N,CP_Drtn,TT_Task,DT_FixedDUR2,RV_OK,TK_Complete,823A-NT-7B-DW-1040,"Sonic test, shear pin, toe grout and pumping Test",268581,,,0,51968,0,51968,928,44544,44544,0,,2011-07-06 08:00,2011-11-21 18:00,2014-07-11 08:00,2014-07-11 08:00,,2017-01-01 00:00,2017-01-01 00:00,,,2011-07-06 08:00,2011-11-21 18:00,,,,,PT_Normal,,,,,od7yHXT/QOi/n3KgC2HDwA,Aa0E+tIASniqZH8CiPSCKA,,,N,51968,44544,,,2017-01-24 14:42,2017-01-24 15:40,CLEMENTL,CLEMENTL
306,49428133,751235,10651490,1239098,1,100,N,N,N,CP_Drtn,TT_Task,DT_FixedDUR2,RV_OK,TK_Complete,823A-NT-7B-BF-1010,Backfilling (1344m3),268558,,,0,25088,0,25088,224,17920,17920,0,,2012-11-07 08:00,2012-12-31 18:00,2014-07-11 08:00,2014-07-11 08:00,,2017-01-01 00:00,2017-01-01 00:00,,,2012-11-07 08:00,2012-12-08 18:00,,,,,PT_Normal,,,,,mXe/XeAOQB28frxGvWvCiA,,,,N,25088,17920,,,2017-01-24 14:42,2017-01-24 15:40,CLEMENTL,CLEMENTL
307,49428134,751235,10651491,1239098,1,100,N,N,N,CP_Drtn,TT_Task,DT_FixedDUR2,RV_OK,TK_Complete,823A-NT-EC-1021,Erect 3m high block wall,,,,0,0,0,0,112,0,0,0,,2014-04-09 08:00,2014-04-28 18:00,2014-07-11 08:00,2014-07-11 08:00,,2017-01-01 00:00,2017-01-01 00:00,,,2014-04-09 08:00,2014-04-28 18:00,,,,,PT_Normal,,,,,SN3Rev2JSPGRw8+7edZifw,,,,N,0,0,,,2017-01-24 14:42,2017-01-24 15:40,CLEMENTL,CLEMENTL
308,49428135,751235,10651491,1239098,1,100,N,N,N,CP_Drtn,TT_Task,DT_FixedDUR2,RV_OK,TK_Complete,823A-NT-EC-1022,Connection to East Box Culvert (823B portion),,,,0,0,0,0,16,0,0,0,,2014-04-29 08:00,2014-04-30 18:00,2014-07-11 08:00,2014-07-11 08:00,,2017-01-01 00:00,2017-01-01 00:00,,,2014-04-29 08:00,2014-04-30 18:00,,,,,PT_Normal,,,,,FHT/xUD3TFmIrvevyAcPjA,,,,N,0,0,,,2017-01-24 14:42,2017-01-24 15:40,CLEMENTL,CLEMENTL
309,49428136,751235,10651491,1239098,1,100,N,N,N,CP_Drtn,TT_Task,DT_FixedDUR2,RV_OK,TK_Complete,823A-NT-EC-1023,Blinding,,,,0,0,0,0,8,0,0,0,,2014-05-02 08:00,2014-05-02 18:00,2014-07-11 08:00,2014-07-11 08:00,,2017-01-01 00:00,2017-01-01 00:00,,,2014-05-02 08:00,2014-05-02 18:00,,,,,PT_Normal,,,,,RcytyUAbSzuKTsu+cV+ozQ,,,,N,0,0,,,2017-01-24 14:42,2017-01-24 15:40,CLEMENTL,CLEMENTL
310,49428137,751235,10651491,1239098,1,100,N,N,N,CP_Drtn,TT_Task,DT_FixedDUR2,RV_OK,TK_Complete,823A-NT-EC-1024,Temporary box culvert (Outside Box 6B Area) Sheet piling,,,,0,0,0,0,48,0,0,0,,2014-04-14 08:00,2014-04-23 18:00,2014-07-11 08:00,2014-07-11 08:00,,2017-01-01 00:00,2017-01-01 00:00,,,2014-04-14 08:00,2014-04-23 18:00,,,,,PT_Normal,,,,,xpVPrudLRTGlpPpfMPNuQA,,,,N,0,0,,,2017-01-24 14:42,2017-01-24 15:40,CLEMENTL,CLEMENTL
311,49428138,751235,10651491,1239098,1,100,N,N,N,CP_Drtn,TT_Task,DT_FixedDUR2,RV_OK,TK_Complete,823A-NT-EC-1025,ELS Works,,,,0,0,0,0,128,0,0,0,,2014-04-24 08:00,2014-05-14 18:00,2014-07-11 08:00,2014-07-11 08:00,,2017-01-01 00:00,2017-01-01 00:00,,,2014-04-24 08:00,2014-05-14 18:00,,,,,PT_Normal,,,,,q34WQrt7QFux9as8KfX/Jw,,,,N,0,0,,,2017-01-24 14:42,2017-01-24 15:40,CLEMENTL,CLEMENTL
312,49428139,751235,10651491,1239098,1,100,N,N,N,CP_Drtn,TT_Task,DT_FixedDUR2,RV_OK,TK_Complete,823A-NT-EC-1026,Blinding,,,,0,0,0,0,8,0,0,0,,2014-05-15 08:00,2014-05-15 18:00,2014-07-11 08:00,2014-07-11 08:00,,2017-01-01 00:00,2017-01-01 00:00,,,2014-05-15 08:00,2014-05-15 18:00,,,,,PT_Normal,,,,,EdLXbsFaTTGr0CI9tZcSBw,,,,N,0,0,,,2017-01-24 14:42,2017-01-24 15:40,CLEMENTL,CLEMENTL
313,49428140,751235,10651491,1227199,1,100,N,N,N,CP_Drtn,TT_Task,DT_FixedDUR2,RV_OK,TK_Complete,823A-NT-EC-1030,Removal of Temporary Culvert and Reinstatement,,,,0,0,0,0,224,0,0,0,,2014-05-16 08:00,2014-06-27 18:00,2014-07-11 08:00,2014-07-11 08:00,,2017-01-01 00:00,2017-01-01 00:00,,,2014-05-16 08:00,2014-06-18 18:00,,,,,PT_Normal,,,,,Pv8l1P/FTaGPTOPg4F+VNg,,,,N,0,0,,,2017-01-24 14:42,2017-01-24 15:40,CLEMENTL,CLEMENTL
314,49428141,751235,10651491,1227199,1,100,N,N,N,CP_Drtn,TT_Task,DT_FixedDUR2,RV_OK,TK_Complete,823A-NT-EC-1010,Construction of Temporary Culvert (open channel),,,,0,0,0,0,184,0,0,0,,2013-03-01 08:00,2013-03-28 18:00,2017-06-12 18:00,2017-06-12 18:00,,2017-01-01 00:00,2017-01-01 00:00,,,2013-06-25 08:00,2013-07-22 18:00,,,,,PT_Normal,,,,,5fHPkvoHTgG6K+PsBUZDKA,,,,N,0,0,,,2017-01-24 14:42,2017-01-24 15:36,CLEMENTL,CLEMENTL
315,49428142,751235,10651491,1227199,1,100,N,N,N,CP_Drtn,TT_Task,DT_FixedDUR2,RV_OK,TK_Complete,823A-NT-EC-1020,Temporary box culvert (At Box 6B Area) Saw Cut D-wall,,,,0,0,0,144,48,16,0,0,,2014-04-01 08:00,2014-04-08 18:00,2014-07-11 08:00,2014-07-11 08:00,,2017-01-01 00:00,2017-01-01 00:00,,,2014-04-01 08:00,2014-04-08 18:00,,,,,PT_Normal,,,,,vnIxImxHSEOTPtpESczuCg,1sBjudZqXUGH/35YjKDNXg,,,N,0,0,,,2017-01-24 14:42,2017-01-24 15:40,CLEMENTL,CLEMENTL
316,49428143,751235,10651493,1239098,1,100,N,N,N,CP_Drtn,TT_Task,DT_FixedDUR2,RV_OK,TK_Complete,823A-NT-6A-BF-1030,Reinstate Nullah Base of original route,,,,0,0,0,0,96,0,0,0,,2014-02-25 08:00,2014-03-28 18:00,2014-07-11 08:00,2014-07-11 08:00,,2017-01-01 00:00,2017-01-01 00:00,,,2014-02-25 08:00,2014-03-10 18:00,,,,,PT_Normal,,,,,Cb4lSinxRWyWfOk10LxmUg,,,,N,0,0,,,2017-01-24 14:42,2017-01-24 15:40,CLEMENTL,CLEMENTL
317,49428144,751235,10651493,1239098,1,100,N,N,N,CP_Drtn,TT_Task,DT_FixedDUR2,RV_OK,TK_Complete,823A-NT-6A-BF-1040,Reinstate Nullah to original route,,,,0,0,0,0,264,0,0,0,,2014-03-29 08:00,2014-04-15 18:00,2014-07-11 08:00,2014-07-11 08:00,,2017-01-01 00:00,2017-01-01 00:00,,,2014-03-29 08:00,2014-05-13 18:00,,,,,PT_Normal,,,,,QmBpGYflQd2tNopp8pLGlA,,,,N,0,0,,,2017-01-24 14:42,2017-01-24 15:40,CLEMENTL,CLEMENTL
318,49428145,751235,10651493,1239098,1,100,N,N,N,CP_Drtn,TT_Task,DT_FixedDUR2,RV_OK,TK_Complete,823A-NT-6A-BF-1050,Construction & connect East Box Culvert from Box 6B to KTR,,,,0,0,0,0,168,0,0,0,,2014-02-10 08:00,2014-04-15 18:00,2014-07-11 08:00,2014-07-11 08:00,,2017-01-01 00:00,2017-01-01 00:00,,,2014-04-14 08:00,2014-05-13 18:00,,,,,PT_Normal,,,,,Vv51QmgYQ4m/DtNvO9WuVg,,,,N,0,0,,,2017-01-24 14:42,2017-01-24 15:40,CLEMENTL,CLEMENTL
319,49428146,751235,10651493,1239098,1,100,N,N,N,CP_Drtn,TT_Task,DT_FixedDUR2,RV_OK,TK_Complete,823A-NT-6A-BF-1060,Reinstatement of Wang Toi Shan Shan Tsuen Road,,,,0,0,0,0,1440,0,0,0,,2015-12-01 08:00,2016-07-18 18:00,2017-06-12 18:00,2017-06-12 18:00,,2017-01-01 00:00,2017-01-01 00:00,,,2015-12-01 08:00,2016-07-13 18:00,,,,,PT_Normal,,,,,EgKCZECmQve93aMKXg/VWA,,,,N,0,0,,,2017-01-24 14:42,2017-01-24 15:36,CLEMENTL,CLEMENTL
320,49428147,751235,10651493,1227199,1,100,N,N,N,CP_Drtn,TT_Task,DT_FixedDUR2,RV_OK,TK_Complete,823A-NT-6A-BF-1000,Removal of Temporary Nullah,,,,0,0,0,0,720,0,0,0,,2014-02-04 08:00,2014-06-16 18:00,2014-07-11 08:00,2014-07-11 08:00,,2017-01-01 00:00,2017-01-01 00:00,,,2014-03-01 08:00,2014-06-21 18:00,,,,,PT_Normal,,,,,t5frjI0ITQiKxW95Sr0R/A,,,,N,0,0,,,2017-01-24 14:42,2017-01-24 15:40,CLEMENTL,CLEMENTL
321,49428148,751235,10651493,1227199,1,100,N,N,N,CP_Drtn,TT_Task,DT_FixedDUR2,RV_OK,TK_Complete,823A-NT-6A-BF-1010,Backfilling to 0.5m below the top of C&C Tunnel (+3.46mPD) (5218m3),,,,0,2080,0,2080,208,832,832,0,,2013-12-31 08:00,2014-01-30 18:00,2014-07-11 08:00,2014-07-11 08:00,,2017-01-01 00:00,2017-01-01 00:00,,,2013-12-31 08:00,2014-01-30 18:00,,,,,PT_Normal,,,,,I4qz1f5XQ6aLHnpN5pFS3Q,nLtozL6HaU+m/NqqribZig,,,N,2080,832,,,2017-01-24 14:42,2017-01-24 15:40,CLEMENTL,CLEMENTL
322,49428149,751235,10651493,1227199,1,100,N,N,N,CP_Drtn,TT_Task,DT_FixedDUR2,RV_OK,TK_Complete,823A-NT-6A-BF-1020,Reinstate the permenant Retaining wall of Nullah,,,,0,144,0,144,144,16,16,0,,2014-03-04 08:00,2014-04-12 18:00,2014-07-11 08:00,2014-07-11 08:00,,2017-01-01 00:00,2017-01-01 00:00,,,2014-03-01 08:00,2014-03-21 18:00,,,,,PT_Normal,,,,,bs5/2TdBT12hEjn41C7nmA,GbpSfy6IUESW6AXNhhb2yQ,,,N,144,16,,,2017-01-24 14:42,2017-01-24 15:40,CLEMENTL,CLEMENTL
323,49428150,751235,10651496,1227199,1,100,N,N,N,CP_Drtn,TT_Task,DT_FixedDUR2,RV_OK,TK_Complete,823A-NT-6A-B9S-1170,Side walkway and cable bracket (38m3),,,,0,0,0,7360,40,640,0,0,,2014-05-15 08:00,2014-05-20 18:00,2017-06-12 18:00,2017-06-12 18:00,,2017-01-01 00:00,2017-01-01 00:00,,,2014-05-15 08:00,2014-05-20 18:00,,,,,PT_Normal,,,,,j/TlxYZmRBWcwh2xLdoMSQ,UPwjf1q5sE+6BZhP7PYMBg,,,N,0,0,,,2017-01-24 14:42,2017-01-24 15:36,CLEMENTL,CLEMENTL
324,49428151,751235,10651496,1239098,1,100,N,N,N,CP_Drtn,TT_Task,DT_FixedDUR2,RV_OK,TK_Complete,823A-NT-6A-B9S-1010,Placing of waterproof member T-lock & testing,,,,0,0,0,64,8,0,0,0,,2013-10-19 08:00,2013-10-22 18:00,2014-07-11 08:00,2014-07-11 08:00,,2017-01-01 00:00,2017-01-01 00:00,,,2013-11-27 08:00,2013-11-27 18:00,,,,,PT_Normal,,,,,8Z312PVaTOafqEiXf+0RBw,VNIHWKSOXkSRis2y0jCPow,,,N,0,0,,,2017-01-24 14:42,2017-01-24 15:40,CLEMENTL,CLEMENTL
325,49428152,751235,10651496,1239098,1,100,N,N,N,CP_Drtn,TT_Task,DT_FixedDUR2,RV_OK,TK_Complete,823A-NT-6A-B9S-1020,Erect external formwork,,,,0,0,0,832,8,64,0,0,,2013-10-21 08:00,2013-10-21 18:00,2014-07-11 08:00,2014-07-11 08:00,,2017-01-01 00:00,2017-01-01 00:00,,,2013-11-28 08:00,2013-11-28 18:00,,,,,PT_Normal,,,,,ywaeZ0NvT/WZU4FBR2BdmQ,SDn6JZ/BEUeDjZBOH+7/kg,,,N,0,0,,,2017-01-24 14:42,2017-01-24 15:40,CLEMENTL,CLEMENTL
326,49428153,751235,10651496,1227199,1,100,N,N,N,CP_Drtn,TT_Task,DT_FixedDUR2,RV_OK,TK_Complete,823A-NT-6A-B9S-1030,Rebar fixing,,,,0,0,0,1664,16,128,0,0,,2013-10-22 08:00,2013-10-25 18:00,2014-07-11 08:00,2014-07-11 08:00,,2017-01-01 00:00,2017-01-01 00:00,,,2013-11-29 08:00,2013-11-30 18:00,,,,,PT_Normal,,,,,4idAM7EhQDeOB7RubdZz4Q,WEcd6XvplkehRLNIsdybZw,,,N,0,0,,,2017-01-24 14:42,2017-01-24 15:40,CLEMENTL,CLEMENTL
327,49428154,751235,10651496,1227199,1,100,N,N,N,CP_Drtn,TT_Task,DT_FixedDUR2,RV_OK,TK_Complete,823A-NT-6A-B9S-1040,Erect internal kicker formwork,,,,0,0,0,1664,16,128,0,0,,2013-10-24 08:00,2013-10-25 18:00,2014-07-11 08:00,2014-07-11 08:00,,2017-01-01 00:00,2017-01-01 00:00,,,2013-11-27 08:00,2013-11-28 18:00,,,,,PT_Normal,,,,,zmoWiiHLTv+/ACYOkznSdw,tPV0ihdrQE2CxeoDPxqX8A,,,N,0,0,,,2017-01-24 14:42,2017-01-24 15:40,CLEMENTL,CLEMENTL
328,49428155,751235,10651496,1227199,1,100,N,N,N,CP_Drtn,TT_Task,DT_FixedDUR2,RV_OK,TK_Complete,823A-NT-6A-B9S-1050,Concreting (222m3),,,,0,0,0,1344,8,128,0,0,,2013-10-26 08:00,2013-10-26 18:00,2014-07-11 08:00,2014-07-11 08:00,,2017-01-01 00:00,2017-01-01 00:00,,,2013-12-04 08:00,2013-12-04 18:00,,,,,PT_Normal,,,,,uoIxbQFKQ3i5DzmeqHjzUg,/ZM4jtQmcU2zSb0afJyNyw,,,N,0,0,,,2017-01-24 14:42,2017-01-24 15:40,CLEMENTL,CLEMENTL
329,49428156,751235,10651496,1227199,1,100,N,N,N,CP_Drtn,TT_Task,DT_FixedDUR2,RV_OK,TK_Complete,823A-NT-6A-B9S-1080,Removal of formwork,,,,0,0,0,576,8,64,0,0,,2013-10-28 08:00,2013-10-29 18:00,2014-07-11 08:00,2014-07-11 08:00,,2017-01-01 00:00,2017-01-01 00:00,,,2013-12-05 08:00,2013-12-05 18:00,,,,,PT_Normal,,,,,W2AEHVC9TCmgxRWReyQNOA,nd+hqPgCwUutwxDMNFX/Pg,,,N,0,0,,,2017-01-24 14:42,2017-01-24 15:40,CLEMENTL,CLEMENTL
330,49428157,751235,10651496,1227199,1,100,N,N,N,CP_Drtn,TT_Task,DT_FixedDUR2,RV_OK,TK_Complete,823A-NT-6A-B9S-1090,Erect internal formwork & Falsework,,,,0,4864,0,4864,32,256,256,0,,2013-11-15 08:00,2013-12-02 18:00,2014-07-11 08:00,2014-07-11 08:00,,2017-01-01 00:00,2017-01-01 00:00,,,2013-11-15 08:00,2013-11-19 18:00,,,,,PT_Normal,,,,,OMq+0JcLTgiHEvnLLVcVrQ,T7An1k8kok+w+DVw4bsyWw,,,N,4864,256,,,2017-01-24 14:42,2017-01-24 15:40,CLEMENTL,CLEMENTL
331,49428158,751235,10651496,1227199,1,100,N,N,N,CP_Drtn,TT_Task,DT_FixedDUR2,RV_OK,TK_Complete,823A-NT-6A-B9S-1100,Rebar fixing,,,,0,0,0,1728,24,192,0,0,,2013-12-03 08:00,2013-12-19 18:00,2017-06-12 18:00,2017-06-12 18:00,,2017-01-01 00:00,2017-01-01 00:00,,,2013-12-04 08:00,2013-12-06 18:00,,,,,PT_Normal,,,,,CJxojXF3RDOSgh0ly6WUwg,ZkRA5maMekWPo/hv/DgIyw,,,N,0,0,,,2017-01-24 14:42,2017-01-24 15:36,CLEMENTL,CLEMENTL
332,49428159,751235,10651496,1227199,1,100,N,N,N,CP_Drtn,TT_Task,DT_FixedDUR2,RV_OK,TK_Complete,823A-NT-6A-B9S-1110,Erect external formwork,,,,0,0,0,1152,16,128,0,0,,2013-12-20 08:00,2013-12-21 18:00,2017-06-12 18:00,2017-06-12 18:00,,2017-01-01 00:00,2017-01-01 00:00,,,2013-12-07 08:00,2013-12-09 18:00,,,,,PT_Normal,,,,,LT9oVeo+SyWO7dA2jJvx2Q,uHTHxZjhXESnixq3LX1CoA,,,N,0,0,,,2017-01-24 14:42,2017-01-24 15:36,CLEMENTL,CLEMENTL
333,49428160,751235,10651496,1227199,1,100,N,N,N,CP_Drtn,TT_Task,DT_FixedDUR2,RV_OK,TK_Complete,823A-NT-6A-B9S-1120,Concreting (222m3),,,,0,0,0,1344,8,128,0,0,,2013-12-23 08:00,2013-12-23 18:00,2017-06-12 18:00,2017-06-12 18:00,,2017-01-01 00:00,2017-01-01 00:00,,,2013-12-10 08:00,2013-12-10 18:00,,,,,PT_Normal,,,,,QgulzbRRT22R88SIqssqOA,SEN0IWbwf0yM4MGP55/sTg,,,N,0,0,,,2017-01-24 14:42,2017-01-24 15:36,CLEMENTL,CLEMENTL
334,49428161,751235,10651496,1227199,1,100,N,N,N,CP_Drtn,TT_Task,DT_FixedDUR2,RV_OK,TK_Complete,823A-NT-6A-B9S-1150,Removal external and internal formwork for wall,,,,0,0,0,1152,16,128,0,0,,2013-12-24 08:00,2013-12-27 18:00,2017-06-12 18:00,2017-06-12 18:00,,2017-01-01 00:00,2017-01-01 00:00,,,2013-12-11 08:00,2013-12-12 18:00,,,,,PT_Normal,,,,,CGrYrTZEQUW+ZdY4Wr0xvQ,BHDb4jOi4UCr0Y/GLxpkwg,,,N,0,0,,,2017-01-24 14:42,2017-01-24 15:36,CLEMENTL,CLEMENTL
335,49428162,751235,10651496,1227199,1,100,N,N,N,CP_Drtn,TT_Task,DT_FixedDUR2,RV_OK,TK_Complete,823A-NT-6A-B9S-1130,Curing,,,,0,1280,0,1280,80,0,0,0,,2013-12-24 08:00,2014-01-07 18:00,2017-06-12 18:00,2017-06-12 18:00,,2017-01-01 00:00,2017-01-01 00:00,,,2013-12-11 08:00,2013-12-21 18:00,,,,,PT_Normal,,,,,rjX16ydUTtKtCK4QiJ75Cg,rNnkGXD5O0K7xTj+FcyTvg,,,N,1280,0,,,2017-01-24 14:42,2017-01-24 15:36,CLEMENTL,CLEMENTL
336,49428163,751235,10651496,1227199,1,100,N,N,N,CP_Drtn,TT_Task,DT_FixedDUR2,RV_OK,TK_Complete,823A-NT-6A-B9S-1160,Removal internal falsework and formwork for roof,,,,0,0,0,960,8,64,0,0,,2014-01-08 08:00,2014-01-08 18:00,2017-06-12 18:00,2017-06-12 18:00,,2017-01-01 00:00,2017-01-01 00:00,,,2014-02-10 08:00,2014-02-10 18:00,,,,,PT_Normal,,,,,IsR8vzqvR9mm+TiYGUes1g,0hQVsfRJrUKjTLTPqY+sQQ,,,N,0,0,,,2017-01-24 14:42,2017-01-24 15:36,CLEMENTL,CLEMENTL
337,49428164,751235,10651496,1239098,1,100,N,N,N,CP_Drtn,TT_Task,DT_FixedDUR2,RV_OK,TK_Complete,823A-NT-6A-B9S-1070,Preparation of construction joint for base slab,268571,,,0,0,0,128,8,0,0,0,,2013-10-29 08:00,2013-10-29 18:00,2014-07-11 08:00,2014-07-11 08:00,,2017-01-01 00:00,2017-01-01 00:00,,,2013-12-05 08:00,2013-12-05 18:00,,,,,PT_Normal,,,,,4127dqRJTKudHDiiDrJ6Wg,U/Xvd94U2UuvL1t7DBQv8w,,,N,0,0,,,2017-01-24 14:42,2017-01-24 15:40,CLEMENTL,CLEMENTL
338,49428165,751235,10651496,1239098,1,100,N,N,N,CP_Drtn,TT_Task,DT_FixedDUR2,RV_OK,TK_Complete,823A-NT-6A-B9S-1140,Preparation of construction joint for wall and roof,268571,,,0,0,0,128,8,0,0,0,,2013-12-24 08:00,2013-12-24 18:00,2017-06-12 18:00,2017-06-12 18:00,,2017-01-01 00:00,2017-01-01 00:00,,,2013-12-11 08:00,2013-12-11 18:00,,,,,PT_Normal,,,,,ybmer5n2Rlin1ZKePcOv5Q,1795EJMNfEOH//mNLH7NeA,,,N,0,0,,,2017-01-24 14:42,2017-01-24 15:36,CLEMENTL,CLEMENTL
339,49428166,751235,10651496,1227199,1,100,N,N,N,CP_Drtn,TT_Task,DT_FixedDUR2,RV_OK,TK_Complete,823A-NT-6A-B9S-1060,Curing,,,,0,0,0,896,56,0,0,0,,2013-10-28 08:00,2013-10-28 18:00,2014-07-11 08:00,2014-07-11 08:00,,2017-01-01 00:00,2017-01-01 00:00,,,2013-12-05 08:00,2013-12-12 18:00,,,,,PT_Normal,,,,,5ALWatilTOOLBVZ8qla+SA,DFeRcUHOfEe4EOrUEukK9g,,,N,0,0,,,2017-01-24 14:42,2017-01-24 15:40,CLEMENTL,CLEMENTL
340,49428167,751235,10651497,1227199,1,100,N,N,N,CP_Drtn,TT_Task,DT_FixedDUR2,RV_OK,TK_Complete,823A-NT-6A-B9N-1170,Side walkway and cable bracket (38m3),,,,0,0,0,7360,40,640,0,0,,2015-03-21 08:00,2015-03-26 18:00,2017-06-12 18:00,2017-06-12 18:00,,2017-01-01 00:00,2017-01-01 00:00,,,2015-03-07 08:00,2015-03-12 18:00,,,,,PT_Normal,,,,,gXipbX9WRhqNmz6jWiMkVg,bHlNUjIJ70e1TWTOtpZaxw,,,N,0,0,,,2017-01-24 14:42,2017-01-24 15:36,CLEMENTL,CLEMENTL
341,49428168,751235,10651497,1239098,1,100,N,N,N,CP_Drtn,TT_Task,DT_FixedDUR2,RV_OK,TK_Complete,823A-NT-6A-B9N-1010,Placing of waterproof member T-lock & testing,268571,,,0,0,0,128,8,0,0,0,,2013-10-19 08:00,2013-10-22 18:00,2014-07-11 08:00,2014-07-11 08:00,,2017-01-01 00:00,2017-01-01 00:00,,,2013-11-01 08:00,2013-11-01 18:00,,,,,PT_Normal,,,,,WKRr24DPSey5fYrL0KnU2g,PAiC9DAaNkq795MTQO4Fpg,,,N,0,0,,,2017-01-24 14:42,2017-01-24 15:40,CLEMENTL,CLEMENTL
342,49428169,751235,10651497,1239098,1,100,N,N,N,CP_Drtn,TT_Task,DT_FixedDUR2,RV_OK,TK_Complete,823A-NT-6A-B9N-1020,Erect external formwork,,,,0,0,0,832,8,64,0,0,,2013-10-21 08:00,2013-10-21 18:00,2014-07-11 08:00,2014-07-11 08:00,,2017-01-01 00:00,2017-01-01 00:00,,,2013-11-02 08:00,2013-11-02 18:00,,,,,PT_Normal,,,,,Hb2IRrwsQaeALicpFpZSXw,QVm5aAXhy0OwixNBgbSznA,,,N,0,0,,,2017-01-24 14:42,2017-01-24 15:40,CLEMENTL,CLEMENTL
343,49428170,751235,10651497,1227199,1,100,N,N,N,CP_Drtn,TT_Task,DT_FixedDUR2,RV_OK,TK_Complete,823A-NT-6A-B9N-1030,Rebar fixing,,,,0,0,0,1664,16,128,0,0,,2013-10-22 08:00,2013-10-25 18:00,2014-07-11 08:00,2014-07-11 08:00,,2017-01-01 00:00,2017-01-01 00:00,,,2013-11-04 08:00,2013-11-05 18:00,,,,,PT_Normal,,,,,WDN/1eXbSG+Du5C4oKQPug,lx1O4v0Ec0uSSJmKTniBFg,,,N,0,0,,,2017-01-24 14:42,2017-01-24 15:40,CLEMENTL,CLEMENTL
344,49428171,751235,10651497,1227199,1,100,N,N,N,CP_Drtn,TT_Task,DT_FixedDUR2,RV_OK,TK_Complete,823A-NT-6A-B9N-1040,Erect internal kicker formwork,,,,0,0,0,1664,16,128,0,0,,2013-10-24 08:00,2013-10-25 18:00,2014-07-11 08:00,2014-07-11 08:00,,2017-01-01 00:00,2017-01-01 00:00,,,2013-11-06 08:00,2013-11-07 18:00,,,,,PT_Normal,,,,,8hqQ75XiSACcSCefrfxnFA,cBSaucI4skKZrYYkXK/Iaw,,,N,0,0,,,2017-01-24 14:42,2017-01-24 15:40,CLEMENTL,CLEMENTL
345,49428172,751235,10651497,1227199,1,100,N,N,N,CP_Drtn,TT_Task,DT_FixedDUR2,RV_OK,TK_Complete,823A-NT-6A-B9N-1050,Concreting (222m3),,,,0,0,0,1344,8,128,0,0,,2013-10-26 08:00,2013-10-26 18:00,2014-07-11 08:00,2014-07-11 08:00,,2017-01-01 00:00,2017-01-01 00:00,,,2013-11-08 08:00,2013-11-08 18:00,,,,,PT_Normal,,,,,8YfVlQQXQLaqA3VrMC8DAQ,L6O1wtDxskKRY8L5bmFZaQ,,,N,0,0,,,2017-01-24 14:42,2017-01-24 15:40,CLEMENTL,CLEMENTL
346,49428173,751235,10651497,1227199,1,100,N,N,N,CP_Drtn,TT_Task,DT_FixedDUR2,RV_OK,TK_Complete,823A-NT-6A-B9N-1060,Curing,,,,0,0,0,896,56,0,0,0,,2013-10-28 08:00,2013-10-29 18:00,2014-07-11 08:00,2014-07-11 08:00,,2017-01-01 00:00,2017-01-01 00:00,,,2013-11-09 08:00,2013-11-16 18:00,,,,,PT_Normal,,,,,eRLEk4LFTZ67jMpIKwliGA,h+lf+D6Wk0KrHu0znrV/4Q,,,N,0,0,,,2017-01-24 14:42,2017-01-24 15:40,CLEMENTL,CLEMENTL
347,49428174,751235,10651497,1227199,1,100,N,N,N,CP_Drtn,TT_Task,DT_FixedDUR2,RV_OK,TK_Complete,823A-NT-6A-B9N-1080,Removal of formwork,,,,0,0,0,576,8,64,0,0,,2013-10-28 08:00,2013-10-29 18:00,2014-07-11 08:00,2014-07-11 08:00,,2017-01-01 00:00,2017-01-01 00:00,,,2013-11-09 08:00,2013-11-09 18:00,,,,,PT_Normal,,,,,2SYfVwG6T9iA2T3p8I567A,T8hEF4ssd02Afv3ETcZecw,,,N,0,0,,,2017-01-24 14:42,2017-01-24 15:40,CLEMENTL,CLEMENTL
348,49428175,751235,10651497,1227199,1,100,N,N,N,CP_Drtn,TT_Task,DT_FixedDUR2,RV_OK,TK_Complete,823A-NT-6A-B9N-1090,Erect internal formwork & Falsework,,,,0,4864,0,4864,32,256,256,0,,2013-11-04 08:00,2013-12-02 18:00,2014-07-11 08:00,2014-07-11 08:00,,2017-01-01 00:00,2017-01-01 00:00,,,2013-12-30 08:00,2014-01-03 18:00,,,,,PT_Normal,,,,,YwBMGGuISPieKPpRKtO3Eg,hggXYifsVk+PyPMD64Yjvg,,,N,4864,256,,,2017-01-24 14:42,2017-01-24 15:40,CLEMENTL,CLEMENTL
349,49428176,751235,10651497,1227199,1,100,N,N,N,CP_Drtn,TT_Task,DT_FixedDUR2,RV_OK,TK_Complete,823A-NT-6A-B9N-1100,Rebar fixing,,,,0,0,0,1728,24,192,0,0,,2013-12-03 08:00,2013-12-10 18:00,2017-06-12 18:00,2017-06-12 18:00,,2017-01-01 00:00,2017-01-01 00:00,,,2013-12-19 08:00,2013-12-21 18:00,,,,,PT_Normal,,,,,o7IPRgQUQQGOrGPQXcQOlg,f+BczHfSC0adDJAhKJ/Lpw,,,N,0,0,,,2017-01-24 14:42,2017-01-24 15:36,CLEMENTL,CLEMENTL
350,49428177,751235,10651497,1227199,1,100,N,N,N,CP_Drtn,TT_Task,DT_FixedDUR2,RV_OK,TK_Complete,823A-NT-6A-B9N-1120,Concreting (222m3),,,,0,0,0,1344,8,128,0,0,,2013-12-13 08:00,2013-12-13 18:00,2017-06-12 18:00,2017-06-12 18:00,,2017-01-01 00:00,2017-01-01 00:00,,,2013-12-27 08:00,2013-12-27 18:00,,,,,PT_Normal,,,,,HStBNlbOTeGJh96Cv16TFQ,KWPVGY5OH0OXbdDQeslqNQ,,,N,0,0,,,2017-01-24 14:42,2017-01-24 15:36,CLEMENTL,CLEMENTL
351,49428178,751235,10651497,1227199,1,100,N,N,N,CP_Drtn,TT_Task,DT_FixedDUR2,RV_OK,TK_Complete,823A-NT-6A-B9N-1150,Removal external and internal formwork for wall,,,,0,0,0,1152,16,128,0,0,,2013-12-14 08:00,2013-12-16 18:00,2017-06-12 18:00,2017-06-12 18:00,,2017-01-01 00:00,2017-01-01 00:00,,,2013-12-28 08:00,2013-12-30 18:00,,,,,PT_Normal,,,,,j5bXlWoWRHinkzbsCt3pJg,ctI4/s8VGUG6KO08Cp9ckg,,,N,0,0,,,2017-01-24 14:42,2017-01-24 15:36,CLEMENTL,CLEMENTL
352,49428179,751235,10651497,1227199,1,100,N,N,N,CP_Drtn,TT_Task,DT_FixedDUR2,RV_OK,TK_Complete,823A-NT-6A-B9N-1130,Curing,,,,0,0,0,1280,80,0,0,0,,2013-12-14 08:00,2013-12-27 18:00,2017-06-12 18:00,2017-06-12 18:00,,2017-01-01 00:00,2017-01-01 00:00,,,2013-12-28 08:00,2014-01-09 18:00,,,,,PT_Normal,,,,,02ftuTPORQ2Oqdok3XgsgA,W5t7Nlyb10Wlzav8K1dErA,,,N,0,0,,,2017-01-24 14:42,2017-01-24 15:36,CLEMENTL,CLEMENTL
353,49428180,751235,10651497,1227199,1,100,N,N,N,CP_Drtn,TT_Task,DT_FixedDUR2,RV_OK,TK_Complete,823A-NT-6A-B9N-1160,Removal internal falsework and formwork for roof,,,,0,0,0,960,8,64,0,0,,2013-12-28 08:00,2013-12-28 18:00,2017-06-12 18:00,2017-06-12 18:00,,2017-01-01 00:00,2017-01-01 00:00,,,2014-01-10 08:00,2014-01-10 18:00,,,,,PT_Normal,,,,,ehW5CzHzQ6G+3vF+9EE2ug,/QELfjmdwE6kebLemKPDUg,,,N,0,0,,,2017-01-24 14:42,2017-01-24 15:36,CLEMENTL,CLEMENTL
354,49428181,751235,10651497,1239098,1,100,N,N,N,CP_Drtn,TT_Task,DT_FixedDUR2,RV_OK,TK_Complete,823A-NT-6A-B9N-1070,Preparation of construction joint for base slab,268571,,,0,0,0,128,8,0,0,0,,2013-10-29 08:00,2013-10-29 18:00,2014-07-11 08:00,2014-07-11 08:00,,2017-01-01 00:00,2017-01-01 00:00,,,2013-11-09 08:00,2013-11-09 18:00,,,,,PT_Normal,,,,,Oy/LdeALTxqQu/DGmQQmyg,Xg3QHa/CwEO86Gfv6JYEbw,,,N,0,0,,,2017-01-24 14:42,2017-01-24 15:40,CLEMENTL,CLEMENTL
355,49428182,751235,10651497,1239098,1,100,N,N,N,CP_Drtn,TT_Task,DT_FixedDUR2,RV_OK,TK_Complete,823A-NT-6A-B9N-1140,Preparation of construction joint for wall and roof,268571,,,0,0,0,128,8,0,0,0,,2013-12-14 08:00,2013-12-14 18:00,2017-06-12 18:00,2017-06-12 18:00,,2017-01-01 00:00,2017-01-01 00:00,,,2013-12-28 08:00,2013-12-28 18:00,,,,,PT_Normal,,,,,fbvzR1R5TjuBI2ubRyxzDA,kEBPw4PO+kmy4O+Bx4qq3w,,,N,0,0,,,2017-01-24 14:42,2017-01-24 15:36,CLEMENTL,CLEMENTL
356,49428183,751235,10651497,1227199,1,100,N,N,N,CP_Drtn,TT_Task,DT_FixedDUR2,RV_OK,TK_Complete,823A-NT-6A-B9N-1110,Erect external formwork,,,,0,0,0,1152,16,128,0,0,,2013-12-11 08:00,2013-12-12 18:00,2017-06-12 18:00,2017-06-12 18:00,,2017-01-01 00:00,2017-01-01 00:00,,,2013-12-23 08:00,2013-12-24 18:00,,,,,PT_Normal,,,,,+IkFLzJBRK6qxd8MBV2QNw,RPIesbu8O0ix3LS3tcstWg,,,N,0,0,,,2017-01-24 14:42,2017-01-24 15:36,CLEMENTL,CLEMENTL
357,49428184,751235,10651498,1239098,1,100,N,N,N,CP_Drtn,TT_Task,DT_FixedDUR2,RV_OK,TK_Complete,823A-NT-6A-B9C-1010,Placing of waterproof member T-lock & testing,268571,,,0,0,0,128,8,0,0,0,,2013-10-21 08:00,2013-10-22 18:00,2014-07-11 08:00,2014-07-11 08:00,,2017-01-01 00:00,2017-01-01 00:00,,,2013-11-18 08:00,2013-11-18 18:00,,,,,PT_Normal,,,,,/+Rt9Q+uRoCtNCLpH4lfPg,+pTWWveifki+QkPwxHdxXA,,,N,0,0,,,2017-01-24 14:42,2017-01-24 15:40,CLEMENTL,CLEMENTL
358,49428185,751235,10651498,1227199,1,100,N,N,N,CP_Drtn,TT_Task,DT_FixedDUR2,RV_OK,TK_Complete,823A-NT-6A-B9C-1020,Rebar fixing,,,,0,0,0,2496,24,192,0,0,,2013-10-23 08:00,2013-10-25 18:00,2014-07-11 08:00,2014-07-11 08:00,,2017-01-01 00:00,2017-01-01 00:00,,,2013-11-19 08:00,2013-11-21 18:00,,,,,PT_Normal,,,,,C9rMXlWBRyOJ20EkPhJlzQ,g35vxM1DqEKS4meRjV7rHg,,,N,0,0,,,2017-01-24 14:42,2017-01-24 15:40,CLEMENTL,CLEMENTL
359,49428186,751235,10651498,1227199,1,100,N,N,N,CP_Drtn,TT_Task,DT_FixedDUR2,RV_OK,TK_Complete,823A-NT-6A-B9C-1030,Erect external formwork,,,,0,0,0,1664,16,128,0,0,,2013-10-21 08:00,2013-10-22 18:00,2014-07-11 08:00,2014-07-11 08:00,,2017-01-01 00:00,2017-01-01 00:00,,,2013-11-22 08:00,2013-11-23 18:00,,,,,PT_Normal,,,,,EPhRzhsnQvCz7MQntTorSA,lRnJiwnMYkWKZtoyZf2KBQ,,,N,0,0,,,2017-01-24 14:42,2017-01-24 15:40,CLEMENTL,CLEMENTL
360,49428187,751235,10651498,1227199,1,100,N,N,N,CP_Drtn,TT_Task,DT_FixedDUR2,RV_OK,TK_Complete,823A-NT-6A-B9C-1040,Concreting (222m3),,,,0,0,0,1344,8,128,0,0,,2013-10-26 08:00,2013-10-26 18:00,2014-07-11 08:00,2014-07-11 08:00,,2017-01-01 00:00,2017-01-01 00:00,,,2013-11-25 08:00,2013-11-25 18:00,,,,,PT_Normal,,,,,Ca5sFBWqSLKZOCnRriW4yA,kq1X2cVz+UijBJ/Dbtkmqg,,,N,0,0,,,2017-01-24 14:42,2017-01-24 15:40,CLEMENTL,CLEMENTL
361,49428188,751235,10651498,1227199,1,100,N,N,N,CP_Drtn,TT_Task,DT_FixedDUR2,RV_OK,TK_Complete,823A-NT-6A-B9C-1050,Curing,,,,0,0,0,896,56,0,0,0,,2013-10-28 08:00,2013-10-29 18:00,2014-07-11 08:00,2014-07-11 08:00,,2017-01-01 00:00,2017-01-01 00:00,,,2013-11-26 08:00,2013-12-03 18:00,,,,,PT_Normal,,,,,riSlds5AT/GI3cwoq1KmxA,6ivWRUTkQUSijDTvNkZdkw,,,N,0,0,,,2017-01-24 14:42,2017-01-24 15:40,CLEMENTL,CLEMENTL
362,49428189,751235,10651498,1227199,1,100,N,N,N,CP_Drtn,TT_Task,DT_FixedDUR2,RV_OK,TK_Complete,823A-NT-6A-B9C-1070,Removal of formwork,,,,0,0,0,576,8,64,0,0,,2013-10-28 08:00,2013-10-29 18:00,2014-07-11 08:00,2014-07-11 08:00,,2017-01-01 00:00,2017-01-01 00:00,,,2013-11-26 08:00,2013-11-26 18:00,,,,,PT_Normal,,,,,h4X8n/cdTv2m+2cKG3IEhw,A+GG9+EWzUW9KcE35yD3cg,,,N,0,0,,,2017-01-24 14:42,2017-01-24 15:40,CLEMENTL,CLEMENTL
363,49428190,751235,10651498,1239098,1,100,N,N,N,CP_Drtn,TT_Task,DT_FixedDUR2,RV_OK,TK_Complete,823A-NT-6A-B9C-1060,Preparation of construction joint for base slab,268571,,,0,0,0,128,8,0,0,0,,2013-10-29 08:00,2013-10-29 18:00,2014-07-11 08:00,2014-07-11 08:00,,2017-01-01 00:00,2017-01-01 00:00,,,2013-11-26 08:00,2013-11-26 18:00,,,,,PT_Normal,,,,,bNUazvx2SHWOAbkw3xVaIg,gSdHZ/p8nkqsvxhOZZ4ktw,,,N,0,0,,,2017-01-24 14:42,2017-01-24 15:40,CLEMENTL,CLEMENTL
364,49428191,751235,10651500,1227199,1,100,N,N,N,CP_Drtn,TT_Task,DT_FixedDUR2,RV_OK,TK_Complete,823A-NT-6A-B7BN-1170,Side walkway and cable bracket,268581,,,0,5440,0,5440,40,640,640,0,,2015-03-27 08:00,2015-10-02 18:00,2017-06-12 18:00,2017-06-12 18:00,,2017-01-01 00:00,2017-01-01 00:00,,,2015-03-13 08:00,2015-03-18 18:00,,,,,PT_Normal,,,,,LaiyDilcTciAgPxtKKX6Yg,YL+nPIOyWEm3z4FrjHvfcw,,,N,5440,640,,,2017-01-24 14:42,2017-01-24 15:36,CLEMENTL,CLEMENTL
365,49428192,751235,10651500,1239098,1,100,N,N,N,CP_Drtn,TT_Task,DT_FixedDUR2,RV_OK,TK_Complete,823A-NT-6A-B7BN-1010,Placing of waterproof member T-lock & testing,268571,,,0,0,0,128,8,0,0,0,,2013-09-28 08:00,2013-09-30 18:00,2014-07-11 08:00,2014-07-11 08:00,,2017-01-01 00:00,2017-01-01 00:00,,,2013-11-01 08:00,2013-11-01 18:00,,,,,PT_Normal,,,,,qYybPtGUS7aI1d/sMsRLpQ,NH7FNnXDm0q/6kK7qTO+sw,,,N,0,0,,,2017-01-24 14:42,2017-01-24 15:40,CLEMENTL,CLEMENTL
366,49428193,751235,10651500,1239098,1,100,N,N,N,CP_Drtn,TT_Task,DT_FixedDUR2,RV_OK,TK_Complete,823A-NT-6A-B7BN-1020,Erect external formwork,,,,0,0,0,320,8,64,0,0,,2013-09-30 08:00,2013-10-02 18:00,2014-07-11 08:00,2014-07-11 08:00,,2017-01-01 00:00,2017-01-01 00:00,,,2013-11-02 08:00,2013-11-02 18:00,,,,,PT_Normal,,,,,HokhsOncTFCDx0CqT6NwNA,bTgfW4Sqoke5xixhxDfuDA,,,N,0,0,,,2017-01-24 14:42,2017-01-24 15:40,CLEMENTL,CLEMENTL
367,49428194,751235,10651500,1227199,1,100,N,N,N,CP_Drtn,TT_Task,DT_FixedDUR2,RV_OK,TK_Complete,823A-NT-6A-B7BN-1030,Rebar fixing,,,,0,1152,0,1152,16,128,128,0,,2013-10-02 08:00,2013-10-03 18:00,2014-07-11 08:00,2014-07-11 08:00,,2017-01-01 00:00,2017-01-01 00:00,,,2013-11-04 08:00,2013-11-05 18:00,,,,,PT_Normal,,,,,t6MYZkrxRNyVagUuCn1R+w,N6IboU731ECXM1gzUw8OKw,,,N,1152,128,,,2017-01-24 14:42,2017-01-24 15:40,CLEMENTL,CLEMENTL
368,49428195,751235,10651500,1227199,1,100,N,N,N,CP_Drtn,TT_Task,DT_FixedDUR2,RV_OK,TK_Complete,823A-NT-6A-B7BN-1040,Erect internal kicker formwork,,,,0,0,0,640,16,128,0,0,,2013-10-03 08:00,2013-10-04 18:00,2014-07-11 08:00,2014-07-11 08:00,,2017-01-01 00:00,2017-01-01 00:00,,,2013-11-06 08:00,2013-11-07 18:00,,,,,PT_Normal,,,,,VVvoCQKMQbW+QwvVRDcGIw,UAlgAtH9o0KWg6bHYUPjNA,,,N,0,0,,,2017-01-24 14:42,2017-01-24 15:40,CLEMENTL,CLEMENTL
369,49428196,751235,10651500,1227199,1,100,N,N,N,CP_Drtn,TT_Task,DT_FixedDUR2,RV_OK,TK_Complete,823A-NT-6A-B7BN-1050,Concreting (240m3),268581,,,0,0,0,896,8,128,0,0,,2013-10-05 08:00,2013-10-05 18:00,2014-07-11 08:00,2014-07-11 08:00,,2017-01-01 00:00,2017-01-01 00:00,,,2013-11-08 08:00,2013-11-08 18:00,,,,,PT_Normal,,,,,SBRVwoE/RB2BAuSg10x6sQ,q0RIXWmF6EyEuDy8Q7YD/w,,,N,0,0,,,2017-01-24 14:42,2017-01-24 15:40,CLEMENTL,CLEMENTL
370,49428197,751235,10651500,1227199,1,100,N,N,N,CP_Drtn,TT_Task,DT_FixedDUR2,RV_OK,TK_Complete,823A-NT-6A-B7BN-1060,Curing,,,,0,0,0,448,56,0,0,0,,2013-10-07 08:00,2013-10-14 18:00,2014-07-11 08:00,2014-07-11 08:00,,2017-01-01 00:00,2017-01-01 00:00,,,2013-11-09 08:00,2013-11-16 18:00,,,,,PT_Normal,,,,,HbSWyK0ERcWvKCLwgyM5lg,+9uJdWi+IEeyDKkQwO2mxg,,,N,0,0,,,2017-01-24 14:42,2017-01-24 15:40,CLEMENTL,CLEMENTL
371,49428198,751235,10651500,1227199,1,100,N,N,N,CP_Drtn,TT_Task,DT_FixedDUR2,RV_OK,TK_Complete,823A-NT-6A-B7BN-1080,Removal of formwork,,,,0,0,0,320,8,64,0,0,,2013-10-08 08:00,2013-10-08 18:00,2014-07-11 08:00,2014-07-11 08:00,,2017-01-01 00:00,2017-01-01 00:00,,,2013-11-09 08:00,2013-11-09 18:00,,,,,PT_Normal,,,,,ELHn49o0Tx+KIfju84ODCA,5hXKedzYQkWHn/K28fipfQ,,,N,0,0,,,2017-01-24 14:42,2017-01-24 15:40,CLEMENTL,CLEMENTL
372,49428199,751235,10651500,1227199,1,100,N,N,N,CP_Drtn,TT_Task,DT_FixedDUR2,RV_OK,TK_Complete,823A-NT-6A-B7BN-1090,Erect internal formwork & Falsework,,,,0,3328,0,3328,32,256,256,0,,2013-10-23 08:00,2013-11-09 18:00,2014-07-11 08:00,2014-07-11 08:00,,2017-01-01 00:00,2017-01-01 00:00,,,2014-01-28 08:00,2014-02-04 18:00,,,,,PT_Normal,,,,,tH+CDfJeR0mmEKNMxTVsRg,R8waAoplXk2zYGYPh33ygA,,,N,3328,256,,,2017-01-24 14:42,2017-01-24 15:40,CLEMENTL,CLEMENTL
373,49428200,751235,10651500,1227199,1,100,N,N,N,CP_Drtn,TT_Task,DT_FixedDUR2,RV_OK,TK_Complete,823A-NT-6A-B7BN-1100,Rebar fixing,,,,0,0,0,1728,24,192,0,0,,2013-11-11 08:00,2013-11-19 18:00,2017-06-12 18:00,2017-06-12 18:00,,2017-01-01 00:00,2017-01-01 00:00,,,2014-01-15 08:00,2014-01-17 18:00,,,,,PT_Normal,,,,,mAscGwA5S1umoG6cWIuMMg,VZvz/zcv8Uib8FEweSELDA,,,N,0,0,,,2017-01-24 14:42,2017-01-24 15:36,CLEMENTL,CLEMENTL
374,49428201,751235,10651500,1227199,1,100,N,N,N,CP_Drtn,TT_Task,DT_FixedDUR2,RV_OK,TK_Complete,823A-NT-6A-B7BN-1110,Erect external formwork,,,,0,0,0,896,16,128,0,0,,2013-11-20 08:00,2013-11-21 18:00,2017-06-12 18:00,2017-06-12 18:00,,2017-01-01 00:00,2017-01-01 00:00,,,2014-01-18 08:00,2014-01-20 18:00,,,,,PT_Normal,,,,,Thx24U97ShCesvLFadryXw,MSrZgONFTUawXu570NnMEg,,,N,0,0,,,2017-01-24 14:42,2017-01-24 15:36,CLEMENTL,CLEMENTL
375,49428202,751235,10651500,1227199,1,100,N,N,N,CP_Drtn,TT_Task,DT_FixedDUR2,RV_OK,TK_Complete,823A-NT-6A-B7BN-1120,Concreting (240m3),268581,,,0,0,0,896,8,128,0,0,,2013-11-22 08:00,2013-11-22 18:00,2017-06-12 18:00,2017-06-12 18:00,,2017-01-01 00:00,2017-01-01 00:00,,,2014-01-21 08:00,2014-01-21 18:00,,,,,PT_Normal,,,,,ZHxw2+p1RByjqO68vihGRA,yBaTf6PatESgoXWdSEMynw,,,N,0,0,,,2017-01-24 14:42,2017-01-24 15:36,CLEMENTL,CLEMENTL
376,49428203,751235,10651500,1227199,1,100,N,N,N,CP_Drtn,TT_Task,DT_FixedDUR2,RV_OK,TK_Complete,823A-NT-6A-B7BN-1150,Removal external and internal formwork for wall,,,,0,0,0,640,16,128,0,0,,2013-11-23 08:00,2013-11-25 18:00,2017-06-12 18:00,2017-06-12 18:00,,2017-01-01 00:00,2017-01-01 00:00,,,2014-01-22 08:00,2014-01-23 18:00,,,,,PT_Normal,,,,,GTnirL4FTcO6DsUOWVukFw,Zbw2IPSWxUaDEHcRJaQN4Q,,,N,0,0,,,2017-01-24 14:42,2017-01-24 15:36,CLEMENTL,CLEMENTL
377,49428204,751235,10651500,1227199,1,100,N,N,N,CP_Drtn,TT_Task,DT_FixedDUR2,RV_OK,TK_Complete,823A-NT-6A-B7BN-1130,Curing,,,,0,640,0,640,80,0,0,0,,2013-11-23 08:00,2013-12-05 18:00,2017-06-12 18:00,2017-06-12 18:00,,2017-01-01 00:00,2017-01-01 00:00,,,2014-01-22 08:00,2014-02-05 18:00,,,,,PT_Normal,,,,,RcJtjy7BQ1uU8Oek041+Mg,9LZxXVbqTUenBE7C4PrKPA,,,N,640,0,,,2017-01-24 14:42,2017-01-24 15:36,CLEMENTL,CLEMENTL
378,49428205,751235,10651500,1227199,1,100,N,N,N,CP_Drtn,TT_Task,DT_FixedDUR2,RV_OK,TK_Complete,823A-NT-6A-B7BN-1160,Removal internal falsework and formwork for roof,,,,0,0,0,576,8,64,0,0,,2013-12-06 08:00,2013-12-06 18:00,2017-06-12 18:00,2017-06-12 18:00,,2017-01-01 00:00,2017-01-01 00:00,,,2014-01-04 08:00,2014-01-04 18:00,,,,,PT_Normal,,,,,ahydAYj2QWqFSWN4QE5mZQ,aPhGn1UKCkST7UfyXCv0mQ,,,N,0,0,,,2017-01-24 14:42,2017-01-24 15:36,CLEMENTL,CLEMENTL
379,49428206,751235,10651500,1239098,1,100,N,N,N,CP_Drtn,TT_Task,DT_FixedDUR2,RV_OK,TK_Complete,823A-NT-6A-B7BN-1140,Preparation of construction joint for wall and roof,268571,,,0,0,0,128,8,0,0,0,,2013-11-23 08:00,2013-11-23 18:00,2017-06-12 18:00,2017-06-12 18:00,,2017-01-01 00:00,2017-01-01 00:00,,,2014-01-22 08:00,2014-01-22 18:00,,,,,PT_Normal,,,,,2m6oXB9DRj2cWwrY1L1Ixg,F+kWS72u2kO7Z3hJSVBuwA,,,N,0,0,,,2017-01-24 14:42,2017-01-24 15:36,CLEMENTL,CLEMENTL
380,49428207,751235,10651500,1239098,1,100,N,N,N,CP_Drtn,TT_Task,DT_FixedDUR2,RV_OK,TK_Complete,823A-NT-6A-B7BN-1070,Preparation of construction joint for base slab,268571,,,0,0,0,128,8,0,0,0,,2013-10-07 08:00,2013-10-07 18:00,2014-07-11 08:00,2014-07-11 08:00,,2017-01-01 00:00,2017-01-01 00:00,,,2013-11-09 08:00,2013-11-09 18:00,,,,,PT_Normal,,,,,ui53vzciS1aPoBVxaWEzlA,9DmXLQDH4UOxPvQMYnn0Ww,,,N,0,0,,,2017-01-24 14:42,2017-01-24 15:40,CLEMENTL,CLEMENTL
381,49428208,751235,10651501,1239098,1,100,N,N,N,CP_Drtn,TT_Task,DT_FixedDUR2,RV_OK,TK_Complete,823A-NT-6A-B7BC-1010,Placing of waterproof member T-lock & testing,268571,,,0,0,0,128,8,0,0,0,,2013-10-07 08:00,2013-10-07 18:00,2014-07-11 08:00,2014-07-11 08:00,,2017-01-01 00:00,2017-01-01 00:00,,,2013-11-01 08:00,2013-11-01 18:00,,,,,PT_Normal,,,,,SVElHR8yRhuOXtelICQEew,/szFuXZVTU2e+updYsdCug,,,N,0,0,,,2017-01-24 14:42,2017-01-24 15:40,CLEMENTL,CLEMENTL
382,49428209,751235,10651501,1239098,1,100,N,N,N,CP_Drtn,TT_Task,DT_FixedDUR2,RV_OK,TK_Complete,823A-NT-6A-B7BC-1030,Erect external formwork,,,,0,0,0,320,8,64,0,0,,2013-10-12 08:00,2013-10-17 18:00,2014-07-11 08:00,2014-07-11 08:00,,2017-01-01 00:00,2017-01-01 00:00,,,2013-11-02 08:00,2013-11-02 18:00,,,,,PT_Normal,,,,,H6n6EtDZR2mtncUEZMZvOA,4qBHWHvSPU2YH43uOa6x7A,,,N,0,0,,,2017-01-24 14:42,2017-01-24 15:40,CLEMENTL,CLEMENTL
383,49428210,751235,10651501,1227199,1,100,N,N,N,CP_Drtn,TT_Task,DT_FixedDUR2,RV_OK,TK_Complete,823A-NT-6A-B7BC-1020,Rebar fixing,,,,0,0,0,1152,16,128,0,0,,2013-10-08 08:00,2013-10-09 18:00,2014-07-11 08:00,2014-07-11 08:00,,2017-01-01 00:00,2017-01-01 00:00,,,2013-11-04 08:00,2013-11-05 18:00,,,,,PT_Normal,,,,,d77ssNszS8qIQrGSpEdHcQ,HxoVJIPLhka7OT3eQ9RvlQ,,,N,0,0,,,2017-01-24 14:42,2017-01-24 15:40,CLEMENTL,CLEMENTL
384,49428211,751235,10651501,1227199,1,100,N,N,N,CP_Drtn,TT_Task,DT_FixedDUR2,RV_OK,TK_Complete,823A-NT-6A-B7BC-1040,Concreting (222m3),268581,,,0,0,0,896,8,128,0,0,,2013-10-18 08:00,2013-10-18 18:00,2014-07-11 08:00,2014-07-11 08:00,,2017-01-01 00:00,2017-01-01 00:00,,,2013-11-06 08:00,2013-11-06 18:00,,,,,PT_Normal,,,,,yRSs2w8/Qmaf1P8NIRoouw,B3v071fujUqtrQRg+IZAYg,,,N,0,0,,,2017-01-24 14:42,2017-01-24 15:40,CLEMENTL,CLEMENTL
385,49428212,751235,10651501,1227199,1,100,N,N,N,CP_Drtn,TT_Task,DT_FixedDUR2,RV_OK,TK_Complete,823A-NT-6A-B7BC-1050,Curing,,,,0,0,0,448,56,0,0,0,,2013-10-19 08:00,2013-10-21 18:00,2014-07-11 08:00,2014-07-11 08:00,,2017-01-01 00:00,2017-01-01 00:00,,,2013-11-07 08:00,2013-11-14 18:00,,,,,PT_Normal,,,,,F8pxbmZAQ12mggs7nPKLYw,6y2zfSK5dEOWFSkwdeFdAQ,,,N,0,0,,,2017-01-24 14:42,2017-01-24 15:40,CLEMENTL,CLEMENTL
386,49428213,751235,10651501,1227199,1,100,N,N,N,CP_Drtn,TT_Task,DT_FixedDUR2,RV_OK,TK_Complete,823A-NT-6A-B7BC-1070,Removal of formwork,,,,0,0,0,320,8,64,0,0,,2013-10-19 08:00,2013-10-19 18:00,2014-07-11 08:00,2014-07-11 08:00,,2017-01-01 00:00,2017-01-01 00:00,,,2013-11-07 08:00,2013-11-07 18:00,,,,,PT_Normal,,,,,QEjUrDVrS1OoyxbvcyadXg,fTM3yFgy90e30O/rm6T12w,,,N,0,0,,,2017-01-24 14:42,2017-01-24 15:40,CLEMENTL,CLEMENTL
387,49428214,751235,10651501,1239098,1,100,N,N,N,CP_Drtn,TT_Task,DT_FixedDUR2,RV_OK,TK_Complete,823A-NT-6A-B7BC-1060,Preparation of construction joint for base slab,268571,,,0,0,0,128,8,0,0,0,,2013-10-19 08:00,2013-10-19 18:00,2014-07-11 08:00,2014-07-11 08:00,,2017-01-01 00:00,2017-01-01 00:00,,,2013-11-07 08:00,2013-11-07 18:00,,,,,PT_Normal,,,,,lUQTQIQ0RACEpwusyhEvTw,KEYN/t7Fc0mTHgY656xL1g,,,N,0,0,,,2017-01-24 14:42,2017-01-24 15:40,CLEMENTL,CLEMENTL
388,49428215,751235,10651502,1227199,1,100,N,N,N,CP_Drtn,TT_Task,DT_FixedDUR2,RV_OK,TK_Complete,823A-NT-6A-B7BS-1170,Side walkway and cable bracket (38m3),268581,,,0,0,0,3520,40,640,0,0,,2014-05-27 08:00,2014-05-31 18:00,2017-06-12 18:00,2017-06-12 18:00,,2017-01-01 00:00,2017-01-01 00:00,,,2014-05-27 08:00,2014-05-31 18:00,,,,,PT_Normal,,,,,9N/2N2jtTO6qjhBPxy5Jrw,iS3vGooAA0af0FCA/muhZQ,,,N,0,0,,,2017-01-24 14:42,2017-01-24 15:36,CLEMENTL,CLEMENTL
389,49428216,751235,10651502,1239098,1,100,N,N,N,CP_Drtn,TT_Task,DT_FixedDUR2,RV_OK,TK_Complete,823A-NT-6A-B7BS-1010,Placing of waterproof member T-lock & testing,268571,,,0,0,0,128,8,0,0,0,,2013-09-28 08:00,2013-09-30 18:00,2014-07-11 08:00,2014-07-11 08:00,,2017-01-01 00:00,2017-01-01 00:00,,,2013-12-06 08:00,2013-12-06 18:00,,,,,PT_Normal,,,,,eP/l+/WaSiKBt/Ng+dta0w,tO5eqn2gwUGfErwkobzlwQ,,,N,0,0,,,2017-01-24 14:42,2017-01-24 15:40,CLEMENTL,CLEMENTL
390,49428217,751235,10651502,1239098,1,100,N,N,N,CP_Drtn,TT_Task,DT_FixedDUR2,RV_OK,TK_Complete,823A-NT-6A-B7BS-1020,Erect external formwork,,,,0,0,0,320,8,64,0,0,,2013-09-30 08:00,2013-10-02 18:00,2014-07-11 08:00,2014-07-11 08:00,,2017-01-01 00:00,2017-01-01 00:00,,,2013-12-07 08:00,2013-12-07 18:00,,,,,PT_Normal,,,,,ChaDm5FtSpqIjI7fJNpFJw,n7pvmBPWmEqSb5AWIJWNcA,,,N,0,0,,,2017-01-24 14:42,2017-01-24 15:40,CLEMENTL,CLEMENTL
391,49428218,751235,10651502,1227199,1,100,N,N,N,CP_Drtn,TT_Task,DT_FixedDUR2,RV_OK,TK_Complete,823A-NT-6A-B7BS-1030,Rebar fixing,,,,0,0,0,1152,16,128,0,0,,2013-10-05 08:00,2013-10-08 18:00,2014-07-11 08:00,2014-07-11 08:00,,2017-01-01 00:00,2017-01-01 00:00,,,2013-12-09 08:00,2013-12-10 18:00,,,,,PT_Normal,,,,,vPZFvTonRoyxfkW1Gn0T8w,3Wu7Tb3Vk0afAH159w0Xlw,,,N,0,0,,,2017-01-24 14:42,2017-01-24 15:40,CLEMENTL,CLEMENTL
392,49428219,751235,10651502,1227199,1,100,N,N,N,CP_Drtn,TT_Task,DT_FixedDUR2,RV_OK,TK_Complete,823A-NT-6A-B7BS-1040,Erect internal kicker formwork,,,,0,0,0,640,16,128,0,0,,2013-10-09 08:00,2013-10-17 18:00,2014-07-11 08:00,2014-07-11 08:00,,2017-01-01 00:00,2017-01-01 00:00,,,2013-11-28 08:00,2013-11-29 18:00,,,,,PT_Normal,,,,,6tQJSjLnQyyC2SgJO2JryA,J7JsERlMPEWkDh+BZWwSXQ,,,N,0,0,,,2017-01-24 14:42,2017-01-24 15:40,CLEMENTL,CLEMENTL
393,49428220,751235,10651502,1227199,1,100,N,N,N,CP_Drtn,TT_Task,DT_FixedDUR2,RV_OK,TK_Complete,823A-NT-6A-B7BS-1050,Concreting (121m3),268581,,,0,0,0,896,8,128,0,0,,2013-10-18 08:00,2013-10-18 18:00,2014-07-11 08:00,2014-07-11 08:00,,2017-01-01 00:00,2017-01-01 00:00,,,2013-11-30 08:00,2013-11-30 18:00,,,,,PT_Normal,,,,,opZ2Nx6JRMWH3EdCwBqUJA,OibokwX15kWY7Uz+d3dkTQ,,,N,0,0,,,2017-01-24 14:42,2017-01-24 15:40,CLEMENTL,CLEMENTL
394,49428221,751235,10651502,1227199,1,100,N,N,N,CP_Drtn,TT_Task,DT_FixedDUR2,RV_OK,TK_Complete,823A-NT-6A-B7BS-1060,Curing,,,,0,0,0,448,56,0,0,0,,2013-10-19 08:00,2013-10-19 18:00,2014-07-11 08:00,2014-07-11 08:00,,2017-01-01 00:00,2017-01-01 00:00,,,2013-12-02 08:00,2013-12-09 18:00,,,,,PT_Normal,,,,,JLCnuc5rTyqCziUqB/d4oA,itda7IBqCUWwKXXQe5djEw,,,N,0,0,,,2017-01-24 14:42,2017-01-24 15:40,CLEMENTL,CLEMENTL
395,49428222,751235,10651502,1227199,1,100,N,N,N,CP_Drtn,TT_Task,DT_FixedDUR2,RV_OK,TK_Complete,823A-NT-6A-B7BS-1080,Removal of formwork,,,,0,0,0,320,8,64,0,0,,2013-10-19 08:00,2013-10-19 18:00,2014-07-11 08:00,2014-07-11 08:00,,2017-01-01 00:00,2017-01-01 00:00,,,2013-12-02 08:00,2013-12-02 18:00,,,,,PT_Normal,,,,,+qCNyTXQSB2ogoOMYgL4XQ,80wmeZLPXESao5hMvATQWA,,,N,0,0,,,2017-01-24 14:42,2017-01-24 15:40,CLEMENTL,CLEMENTL
396,49428223,751235,10651502,1227199,1,100,N,N,N,CP_Drtn,TT_Task,DT_FixedDUR2,RV_OK,TK_Complete,823A-NT-6A-B7BS-1090,Erect internal formwork & Falsework,,,,0,0,0,3328,32,256,0,0,,2013-11-01 08:00,2013-11-04 18:00,2014-07-11 08:00,2014-07-11 08:00,,2017-01-01 00:00,2017-01-01 00:00,,,2013-11-01 08:00,2013-11-05 18:00,,,,,PT_Normal,,,,,JBnuf0Y0RB6sqrvGOAXRUg,aV7j97hRL0CRa08qNs68oA,,,N,0,0,,,2017-01-24 14:42,2017-01-24 15:40,CLEMENTL,CLEMENTL
397,49428224,751235,10651502,1227199,1,100,N,N,N,CP_Drtn,TT_Task,DT_FixedDUR2,RV_OK,TK_Complete,823A-NT-6A-B7BS-1100,Rebar fixing,,,,0,0,0,1728,24,192,0,0,,2013-11-05 08:00,2013-11-07 18:00,2017-06-12 18:00,2017-06-12 18:00,,2017-01-01 00:00,2017-01-01 00:00,,,2013-11-06 08:00,2013-11-08 18:00,,,,,PT_Normal,,,,,a7Oejx6MTHqs4zVQkISjiA,Y2ZkpeOMpkSHRk/hH705Pw,,,N,0,0,,,2017-01-24 14:42,2017-01-24 15:36,CLEMENTL,CLEMENTL
398,49428225,751235,10651502,1227199,1,100,N,N,N,CP_Drtn,TT_Task,DT_FixedDUR2,RV_OK,TK_Complete,823A-NT-6A-B7BS-1110,Erect external formwork,,,,0,0,0,896,16,128,0,0,,2013-11-08 08:00,2013-11-09 18:00,2017-06-12 18:00,2017-06-12 18:00,,2017-01-01 00:00,2017-01-01 00:00,,,2013-11-09 08:00,2013-11-11 18:00,,,,,PT_Normal,,,,,Mu9K6R5sT0GVXFktvbjNeg,bSNxhqQ1WUCuW7UOsD8Dnw,,,N,0,0,,,2017-01-24 14:42,2017-01-24 15:36,CLEMENTL,CLEMENTL
399,49428226,751235,10651502,1227199,1,100,N,N,N,CP_Drtn,TT_Task,DT_FixedDUR2,RV_OK,TK_Complete,823A-NT-6A-B7BS-1120,Concreting (121m3),268581,,,0,0,0,896,8,128,0,0,,2013-11-11 08:00,2013-11-11 18:00,2017-06-12 18:00,2017-06-12 18:00,,2017-01-01 00:00,2017-01-01 00:00,,,2013-11-12 08:00,2013-11-12 18:00,,,,,PT_Normal,,,,,giXj1CG6QyS2loMiRwJZ+A,07wYeQVraECjdoXH0SPvNw,,,N,0,0,,,2017-01-24 14:42,2017-01-24 15:36,CLEMENTL,CLEMENTL
400,49428227,751235,10651502,1227199,1,100,N,N,N,CP_Drtn,TT_Task,DT_FixedDUR2,RV_OK,TK_Complete,823A-NT-6A-B7BS-1130,Curing,,,,0,0,0,640,80,0,0,0,,2013-11-12 08:00,2013-11-22 18:00,2017-06-12 18:00,2017-06-12 18:00,,2017-01-01 00:00,2017-01-01 00:00,,,2013-11-13 08:00,2013-11-23 18:00,,,,,PT_Normal,,,,,fP0oruZmQlyU8WQlZJkjKA,khQtRuPDoEqwZu6dVgI2RA,,,N,0,0,,,2017-01-24 14:42,2017-01-24 15:36,CLEMENTL,CLEMENTL
401,49428228,751235,10651502,1227199,1,100,N,N,N,CP_Drtn,TT_Task,DT_FixedDUR2,RV_OK,TK_Complete,823A-NT-6A-B7BS-1160,Removal internal falsework and formwork for roof,,,,0,0,0,576,8,64,0,0,,2013-11-23 08:00,2013-11-23 18:00,2017-06-12 18:00,2017-06-12 18:00,,2017-01-01 00:00,2017-01-01 00:00,,,2013-11-25 08:00,2013-11-25 18:00,,,,,PT_Normal,,,,,8tIu8WfoQ1+GGv2FbGq8SQ,iO/y+KSFz0OTlkNY1Yzbxg,,,N,0,0,,,2017-01-24 14:42,2017-01-24 15:36,CLEMENTL,CLEMENTL
402,49428229,751235,10651502,1239098,1,100,N,N,N,CP_Drtn,TT_Task,DT_FixedDUR2,RV_OK,TK_Complete,823A-NT-6A-B7BS-1070,Preparation of construction joint for base slab,268571,,,0,0,0,128,8,0,0,0,,2013-10-21 08:00,2013-10-21 18:00,2014-07-11 08:00,2014-07-11 08:00,,2017-01-01 00:00,2017-01-01 00:00,,,2013-12-02 08:00,2013-12-02 18:00,,,,,PT_Normal,,,,,IEKdgDtRR4i9gr6BX7PBFw,lFAYy9Hw1kG+E/2s6mU6Vg,,,N,0,0,,,2017-01-24 14:42,2017-01-24 15:40,CLEMENTL,CLEMENTL
403,49428230,751235,10651502,1239098,1,100,N,N,N,CP_Drtn,TT_Task,DT_FixedDUR2,RV_OK,TK_Complete,823A-NT-6A-B7BS-1140,Preparation of construction joint for wall and roof,268571,,,0,0,0,128,8,0,0,0,,2013-11-12 08:00,2013-11-12 18:00,2017-06-12 18:00,2017-06-12 18:00,,2017-01-01 00:00,2017-01-01 00:00,,,2013-11-13 08:00,2013-11-13 18:00,,,,,PT_Normal,,,,,tZRpFogPQxCq/ZYsXnDC6w,LKoRR6hs6kqV+SgUftsR9Q,,,N,0,0,,,2017-01-24 14:42,2017-01-24 15:36,CLEMENTL,CLEMENTL
404,49428231,751235,10651502,1227199,1,100,N,N,N,CP_Drtn,TT_Task,DT_FixedDUR2,RV_OK,TK_Complete,823A-NT-6A-B7BS-1150,Removal external and internal formwork for wall,,,,0,0,0,640,16,128,0,0,,2013-11-12 08:00,2013-11-13 18:00,2017-06-12 18:00,2017-06-12 18:00,,2017-01-01 00:00,2017-01-01 00:00,,,2013-11-13 08:00,2013-11-14 18:00,,,,,PT_Normal,,,,,uEYYL5b/TneRTKVc3/qpyA,KoGjWMRM7ESBvxUZzyoPTw,,,N,0,0,,,2017-01-24 14:42,2017-01-24 15:36,CLEMENTL,CLEMENTL
405,49428232,751235,10651504,1227199,1,100,N,N,N,CP_Drtn,TT_Task,DT_FixedDUR2,RV_OK,TK_Complete,823A-NT-6A-B11C-1030,Erect external formwork,,,,0,0,0,208,8,16,0,0,,2013-09-28 08:00,2013-09-30 18:00,2014-07-11 08:00,2014-07-11 08:00,,2017-01-01 00:00,2017-01-01 00:00,,,2013-11-23 08:00,2013-11-23 18:00,,,,,PT_Normal,,,,,5RXN0yecQ6Sf2i8sop3EuQ,xgm2/hRkqEyb0Mq/h0Slsw,,,N,0,0,,,2017-01-24 14:42,2017-01-24 15:40,CLEMENTL,CLEMENTL
406,49428233,751235,10651504,1227199,1,100,N,N,N,CP_Drtn,TT_Task,DT_FixedDUR2,RV_OK,TK_Complete,823A-NT-6A-B11C-1040,Concreting (222m3),,,,0,0,0,208,8,16,0,0,,2013-10-02 08:00,2013-10-02 18:00,2014-07-11 08:00,2014-07-11 08:00,,2017-01-01 00:00,2017-01-01 00:00,,,2013-12-18 08:00,2013-12-18 18:00,,,,,PT_Normal,,,,,jngE5jEjTW2RPQtYq8G8tw,GKskuXZxDUGQoiHHvw1xoA,,,N,0,0,,,2017-01-24 14:42,2017-01-24 15:40,CLEMENTL,CLEMENTL
407,49428234,751235,10651504,1227199,1,100,N,N,N,CP_Drtn,TT_Task,DT_FixedDUR2,RV_OK,TK_Complete,823A-NT-6A-B11C-1050,Curing,,,,0,0,0,224,56,0,0,0,,2013-10-03 08:00,2013-10-10 18:00,2014-07-11 08:00,2014-07-11 08:00,,2017-01-01 00:00,2017-01-01 00:00,,,2013-12-19 08:00,2013-12-28 18:00,,,,,PT_Normal,,,,,fI1QqzvIRZWQfDzKZjF2Xg,d9TeyCtiW0KhoUFEIjja4A,,,N,0,0,,,2017-01-24 14:42,2017-01-24 15:40,CLEMENTL,CLEMENTL
408,49428235,751235,10651504,1227199,1,100,N,N,N,CP_Drtn,TT_Task,DT_FixedDUR2,RV_OK,TK_Complete,823A-NT-6A-B11C-1070,Removal of formwork,,,,0,0,0,72,8,8,0,0,,2013-10-11 08:00,2013-10-11 18:00,2014-07-11 08:00,2014-07-11 08:00,,2017-01-01 00:00,2017-01-01 00:00,,,2013-10-11 08:00,2013-10-11 18:00,,,,,PT_Normal,,,,,sTRobHuKSDqmUake8pjDEw,UPpoBMgQ5UyRgavwBMHFng,,,N,0,0,,,2017-01-24 14:42,2017-01-24 15:40,CLEMENTL,CLEMENTL
409,49428236,751235,10651504,1239098,1,100,N,N,N,CP_Drtn,TT_Task,DT_FixedDUR2,RV_OK,TK_Complete,823A-NT-6A-B11C-1060,Preparation of construction joint for base slab,,,,0,0,0,0,8,0,0,0,,2013-10-03 08:00,2013-10-03 18:00,2014-07-11 08:00,2014-07-11 08:00,,2017-01-01 00:00,2017-01-01 00:00,,,2013-12-19 08:00,2013-12-19 18:00,,,,,PT_Normal,,,,,aBJgjmfjQqKGi8aqpqQ3rw,WTA6RBESY0yutIsGgmedWw,,,N,0,0,,,2017-01-24 14:42,2017-01-24 15:40,CLEMENTL,CLEMENTL
410,49428237,751235,10651504,1239098,1,100,N,N,N,CP_Drtn,TT_Task,DT_FixedDUR2,RV_OK,TK_Complete,823A-NT-6A-B11C-1010,Placing of waterproof member T-lock & testing,,,,0,0,0,64,8,0,0,0,,2013-09-23 08:00,2013-09-24 18:00,2014-07-11 08:00,2014-07-11 08:00,,2017-01-01 00:00,2017-01-01 00:00,,,2013-11-26 08:00,2013-11-26 18:00,,,,,PT_Normal,,,,,/qFt8G+8Rd+DJmi2HK/uoA,6IMTXEdn1kuPGQ6naxQTEA,,,N,0,0,,,2017-01-24 14:42,2017-01-24 15:40,CLEMENTL,CLEMENTL
411,49428238,751235,10651504,1227199,1,100,N,N,N,CP_Drtn,TT_Task,DT_FixedDUR2,RV_OK,TK_Complete,823A-NT-6A-B11C-1020,Rebar fixing,,,,0,272,0,272,16,16,16,0,,2013-09-25 08:00,2013-09-27 18:00,2014-07-11 08:00,2014-07-11 08:00,,2017-01-01 00:00,2017-01-01 00:00,,,2013-11-25 08:00,2013-11-26 18:00,,,,,PT_Normal,,,,,e/I0aaSJTjyyQACTIwaTiw,djknQCh2RUmOL169xU5WhQ,,,N,272,16,,,2017-01-24 14:42,2017-01-24 15:40,CLEMENTL,CLEMENTL
412,49428239,751235,10651505,1227199,1,100,N,N,N,CP_Drtn,TT_Task,DT_FixedDUR2,RV_OK,TK_Complete,823A-NT-6A-B11N-1170,Side walkway and cable bracket (38m3),,,,0,0,0,1040,40,80,0,0,,2015-03-16 08:00,2015-03-20 18:00,2017-06-12 18:00,2017-06-12 18:00,,2017-01-01 00:00,2017-01-01 00:00,,,2015-03-02 08:00,2015-03-06 18:00,,,,,PT_Normal,,,,,DHg/ae6/QRux3rNMgDfFaw,vxInJJNeLEK0OT0x6NfAlA,,,N,0,0,,,2017-01-24 14:42,2017-01-24 15:36,CLEMENTL,CLEMENTL
413,49428240,751235,10651505,1239098,1,100,N,N,N,CP_Drtn,TT_Task,DT_FixedDUR2,RV_OK,TK_Complete,823A-NT-6A-B11N-1010,Placing of waterproof member T-lock & testing,,,,0,0,0,64,8,0,0,0,,2013-09-23 08:00,2013-09-24 18:00,2014-07-11 08:00,2014-07-11 08:00,,2017-01-01 00:00,2017-01-01 00:00,,,2013-10-31 08:00,2013-10-31 18:00,,,,,PT_Normal,,,,,2Ux69Y5vRiKY2VLy+vHFpg,w+gml6BOmk6GJVKhzLvTMA,,,N,0,0,,,2017-01-24 14:42,2017-01-24 15:40,CLEMENTL,CLEMENTL
414,49428241,751235,10651505,1239098,1,100,N,N,N,CP_Drtn,TT_Task,DT_FixedDUR2,RV_OK,TK_Complete,823A-NT-6A-B11N-1020,Erect external formwork,,,,0,0,0,104,8,8,0,0,,2013-09-23 08:00,2013-09-24 18:00,2014-07-11 08:00,2014-07-11 08:00,,2017-01-01 00:00,2017-01-01 00:00,,,2013-10-31 08:00,2013-10-31 18:00,,,,,PT_Normal,,,,,EtlIvM6jRgGTkBI7oaU5qg,YgPgb4Aq7E69KgSulHeWrg,,,N,0,0,,,2017-01-24 14:42,2017-01-24 15:40,CLEMENTL,CLEMENTL
415,49428242,751235,10651505,1227199,1,100,N,N,N,CP_Drtn,TT_Task,DT_FixedDUR2,RV_OK,TK_Complete,823A-NT-6A-B11N-1030,Rebar fixing,,,,0,272,0,272,16,16,16,0,,2013-09-25 08:00,2013-09-27 18:00,2014-07-11 08:00,2014-07-11 08:00,,2017-01-01 00:00,2017-01-01 00:00,,,2013-11-01 08:00,2013-11-02 18:00,,,,,PT_Normal,,,,,us2uoc+GSr2ud94d6X1lgw,ogBc/fhmJkWDx3LD+foGpw,,,N,272,16,,,2017-01-24 14:42,2017-01-24 15:40,CLEMENTL,CLEMENTL
416,49428243,751235,10651505,1227199,1,100,N,N,N,CP_Drtn,TT_Task,DT_FixedDUR2,RV_OK,TK_Complete,823A-NT-6A-B11N-1040,Erect internal kicker formwork,,,,0,0,0,208,16,16,0,0,,2013-09-28 08:00,2013-09-30 18:00,2014-07-11 08:00,2014-07-11 08:00,,2017-01-01 00:00,2017-01-01 00:00,,,2013-11-01 08:00,2013-11-02 18:00,,,,,PT_Normal,,,,,9civTeIKRZCY71bCY9LHgQ,WEhJPdN37EStLtM8P06M6w,,,N,0,0,,,2017-01-24 14:42,2017-01-24 15:40,CLEMENTL,CLEMENTL
417,49428244,751235,10651505,1227199,1,100,N,N,N,CP_Drtn,TT_Task,DT_FixedDUR2,RV_OK,TK_Complete,823A-NT-6A-B11N-1050,Concreting (220m3),,,,0,0,0,208,8,16,0,0,,2013-10-02 08:00,2013-10-02 18:00,2014-07-11 08:00,2014-07-11 08:00,,2017-01-01 00:00,2017-01-01 00:00,,,2013-11-29 08:00,2013-11-29 18:00,,,,,PT_Normal,,,,,cv9khMlUTuGCoBWWtlXTaA,Hv0S5XPvFUWtJsqDJta/4w,,,N,0,0,,,2017-01-24 14:42,2017-01-24 15:40,CLEMENTL,CLEMENTL
418,49428245,751235,10651505,1227199,1,100,N,N,N,CP_Drtn,TT_Task,DT_FixedDUR2,RV_OK,TK_Complete,823A-NT-6A-B11N-1060,Curing,,,,0,0,0,224,56,0,0,0,,2013-10-03 08:00,2013-10-10 18:00,2014-07-11 08:00,2014-07-11 08:00,,2017-01-01 00:00,2017-01-01 00:00,,,2013-12-07 08:00,2013-12-14 18:00,,,,,PT_Normal,,,,,MV7OrzheQnOO0XxHvqCv5A,wmWQzZMUoUuVeUpsCgNV3g,,,N,0,0,,,2017-01-24 14:42,2017-01-24 15:40,CLEMENTL,CLEMENTL
419,49428246,751235,10651505,1227199,1,100,N,N,N,CP_Drtn,TT_Task,DT_FixedDUR2,RV_OK,TK_Complete,823A-NT-6A-B11N-1080,Removal of formwork,,,,0,0,0,72,8,8,0,0,,2013-10-11 08:00,2013-10-12 18:00,2014-07-11 08:00,2014-07-11 08:00,,2017-01-01 00:00,2017-01-01 00:00,,,2013-11-30 08:00,2013-11-30 18:00,,,,,PT_Normal,,,,,iosyyhWvSD2cnssHrE7Fcg,Kb4OpN5kV06d53eoADFNqg,,,N,0,0,,,2017-01-24 14:42,2017-01-24 15:40,CLEMENTL,CLEMENTL
420,49428247,751235,10651505,1227199,1,100,N,N,N,CP_Drtn,TT_Task,DT_FixedDUR2,RV_OK,TK_Complete,823A-NT-6A-B11N-1090,Erect internal formwork & Falsework,,,,0,0,0,728,32,56,0,0,,2013-11-18 08:00,2013-11-22 18:00,2014-07-11 08:00,2014-07-11 08:00,,2017-01-01 00:00,2017-01-01 00:00,,,2013-12-13 08:00,2013-12-17 18:00,,,,,PT_Normal,,,,,mbHKSGcFR9C1zd7CL6nIIw,L6jD2BZ0lUG/uXs2T0AkxQ,,,N,0,0,,,2017-01-24 14:42,2017-01-24 15:40,CLEMENTL,CLEMENTL
421,49428248,751235,10651505,1227199,1,100,N,N,N,CP_Drtn,TT_Task,DT_FixedDUR2,RV_OK,TK_Complete,823A-NT-6A-B11N-1100,Rebar fixing,,,,0,0,0,544,24,32,0,0,,2013-11-23 08:00,2013-11-26 18:00,2014-07-11 08:00,2014-07-11 08:00,,2017-01-01 00:00,2017-01-01 00:00,,,2013-12-18 08:00,2013-12-20 18:00,,,,,PT_Normal,,,,,A+ehnI7nQxaC542odUao5g,iuwbpe6FLEq3rzxQfPi1DQ,,,N,0,0,,,2017-01-24 14:42,2017-01-24 15:40,CLEMENTL,CLEMENTL
422,49428249,751235,10651505,1227199,1,100,N,N,N,CP_Drtn,TT_Task,DT_FixedDUR2,RV_OK,TK_Complete,823A-NT-6A-B11N-1110,Erect external formwork,,,,0,0,0,208,16,16,0,0,,2013-11-27 08:00,2013-11-28 18:00,2014-07-11 08:00,2014-07-11 08:00,,2017-01-01 00:00,2017-01-01 00:00,,,2013-12-21 08:00,2013-12-23 18:00,,,,,PT_Normal,,,,,Nx8O2sUjTvu9EloK1z50Ug,/LJ9z4gjPkGgwc5F2BjphA,,,N,0,0,,,2017-01-24 14:42,2017-01-24 15:40,CLEMENTL,CLEMENTL
423,49428250,751235,10651505,1227199,1,100,N,N,N,CP_Drtn,TT_Task,DT_FixedDUR2,RV_OK,TK_Complete,823A-NT-6A-B11N-1120,Concreting (220m3),,,,0,0,0,208,8,16,0,0,,2013-11-29 08:00,2013-11-29 18:00,2014-07-11 08:00,2014-07-11 08:00,,2017-01-01 00:00,2017-01-01 00:00,,,2013-12-24 08:00,2013-12-24 18:00,,,,,PT_Normal,,,,,S6/32hYqSf2bfbWJQGBnZA,EYbXA5tx9U25Qs3TYu0M5g,,,N,0,0,,,2017-01-24 14:42,2017-01-24 15:40,CLEMENTL,CLEMENTL
424,49428251,751235,10651505,1227199,1,100,N,N,N,CP_Drtn,TT_Task,DT_FixedDUR2,RV_OK,TK_Complete,823A-NT-6A-B11N-1130,Curing,,,,0,224,0,224,80,0,0,0,,2013-11-30 08:00,2013-12-12 18:00,2017-06-12 18:00,2017-06-12 18:00,,2017-01-01 00:00,2017-01-01 00:00,,,2013-12-27 08:00,2014-01-08 18:00,,,,,PT_Normal,,,,,oYifJLLvRb+0X2DTYClvGg,ECVRjlIubECG3CiENXzVCg,,,N,224,0,,,2017-01-24 14:42,2017-01-24 15:36,CLEMENTL,CLEMENTL
425,49428252,751235,10651505,1227199,1,100,N,N,N,CP_Drtn,TT_Task,DT_FixedDUR2,RV_OK,TK_Complete,823A-NT-6A-B11N-1160,Removal internal falsework and formwork for roof,,,,0,0,0,416,8,32,0,0,,2013-12-13 08:00,2013-12-13 18:00,2017-06-12 18:00,2017-06-12 18:00,,2017-01-01 00:00,2017-01-01 00:00,,,2013-12-28 08:00,2013-12-28 18:00,,,,,PT_Normal,,,,,0kyb7dxtQWa/lsIPKMlGKQ,quf5i807Tk6sh3VC7UsZDA,,,N,0,0,,,2017-01-24 14:42,2017-01-24 15:36,CLEMENTL,CLEMENTL
426,49428253,751235,10651505,1239098,1,100,N,N,N,CP_Drtn,TT_Task,DT_FixedDUR2,RV_OK,TK_Complete,823A-NT-6A-B11N-1070,Preparation of construction joint for base slab,,,,0,0,0,0,8,0,0,0,,2013-10-03 08:00,2013-10-03 18:00,2014-07-11 08:00,2014-07-11 08:00,,2017-01-01 00:00,2017-01-01 00:00,,,2013-11-30 08:00,2013-11-30 18:00,,,,,PT_Normal,,,,,cwUcF9NcSCaSWDMK89jmxQ,YPiCsFahHEuOImf6FAch7g,,,N,0,0,,,2017-01-24 14:42,2017-01-24 15:40,CLEMENTL,CLEMENTL
427,49428254,751235,10651505,1239098,1,100,N,N,N,CP_Drtn,TT_Task,DT_FixedDUR2,RV_OK,TK_Complete,823A-NT-6A-B11N-1140,Preparation of construction joint for wall and roof,,,,0,0,0,0,8,0,0,0,,2013-11-30 08:00,2013-11-30 18:00,2014-07-11 08:00,2014-07-11 08:00,,2017-01-01 00:00,2017-01-01 00:00,,,2013-12-27 08:00,2013-12-27 18:00,,,,,PT_Normal,,,,,berns57qQA6pnDhexsHp2A,tmK5/+lN9keFj3q9FPI+xQ,,,N,0,0,,,2017-01-24 14:42,2017-01-24 15:40,CLEMENTL,CLEMENTL
428,49428255,751235,10651505,1227199,1,100,N,N,N,CP_Drtn,TT_Task,DT_FixedDUR2,RV_OK,TK_Complete,823A-NT-6A-B11N-1150,Removal external and internal formwork for wall,,,,0,144,0,144,16,16,16,0,,2013-11-30 08:00,2013-12-02 18:00,2014-07-11 08:00,2014-07-11 08:00,,2017-01-01 00:00,2017-01-01 00:00,,,2013-12-27 08:00,2013-12-28 18:00,,,,,PT_Normal,,,,,OX2dTQy3RtSAiA4RI4bq/g,ZE9BCuQEE0aDgjX/Msf7WA,,,N,144,16,,,2017-01-24 14:42,2017-01-24 15:40,CLEMENTL,CLEMENTL
429,49428256,751235,10651506,1227199,1,100,N,N,N,CP_Drtn,TT_Task,DT_FixedDUR2,RV_OK,TK_Complete,823A-NT-6A-B11S-1170,Side walkway and cable bracket (38m3),,,,0,0,0,1040,40,80,0,0,,2014-05-02 08:00,2014-05-08 18:00,2017-06-12 18:00,2017-06-12 18:00,,2017-01-01 00:00,2017-01-01 00:00,,,2014-05-02 08:00,2014-05-08 18:00,,,,,PT_Normal,,,,,F/UydcX0TEyJGtH0YjTaYw,sbwW6eDPQUGcswJnt0gxig,,,N,0,0,,,2017-01-24 14:42,2017-01-24 15:36,CLEMENTL,CLEMENTL
430,49428257,751235,10651506,1239098,1,100,N,N,N,CP_Drtn,TT_Task,DT_FixedDUR2,RV_OK,TK_Complete,823A-NT-6A-B11S-1010,Placing of waterproof member T-lock & testing,268571,,,0,128,0,128,8,0,0,0,,2013-09-23 08:00,2013-09-24 18:00,2014-07-11 08:00,2014-07-11 08:00,,2017-01-01 00:00,2017-01-01 00:00,,,2013-12-21 08:00,2013-12-21 18:00,,,,,PT_Normal,,,,,gLQQ4SZ2Q5K2/Z+wfl2kMA,uDotAB94hUOmGVYh5KVbxA,,,N,128,0,,,2017-01-24 14:42,2017-01-24 15:40,CLEMENTL,CLEMENTL
431,49428258,751235,10651506,1239098,1,100,N,N,N,CP_Drtn,TT_Task,DT_FixedDUR2,RV_OK,TK_Complete,823A-NT-6A-B11S-1020,Erect external formwork,,,,0,0,0,832,8,64,0,0,,2013-09-23 08:00,2013-09-24 18:00,2014-07-11 08:00,2014-07-11 08:00,,2017-01-01 00:00,2017-01-01 00:00,,,2013-12-19 08:00,2013-12-19 18:00,,,,,PT_Normal,,,,,1onVzi/gTXakxuqHYPgf6g,wp+3Sf+T8U2LUcW1KTiDqQ,,,N,0,0,,,2017-01-24 14:42,2017-01-24 15:40,CLEMENTL,CLEMENTL
432,49428259,751235,10651506,1227199,1,100,N,N,N,CP_Drtn,TT_Task,DT_FixedDUR2,RV_OK,TK_Complete,823A-NT-6A-B11S-1030,Rebar fixing,,,,0,1664,0,1664,16,128,128,0,,2013-09-25 08:00,2013-09-27 18:00,2014-07-11 08:00,2014-07-11 08:00,,2017-01-01 00:00,2017-01-01 00:00,,,2013-12-20 08:00,2013-12-21 18:00,,,,,PT_Normal,,,,,z6BWMpNiS6aXkPEP6vH95g,dKCQOc0cyUWYlvbf+o5DRg,,,N,1664,128,,,2017-01-24 14:42,2017-01-24 15:40,CLEMENTL,CLEMENTL
433,49428260,751235,10651506,1227199,1,100,N,N,N,CP_Drtn,TT_Task,DT_FixedDUR2,RV_OK,TK_Complete,823A-NT-6A-B11S-1040,Erect internal kicker formwork,,,,0,0,0,1664,16,128,0,0,,2013-09-28 08:00,2013-09-30 18:00,2014-07-11 08:00,2014-07-11 08:00,,2017-01-01 00:00,2017-01-01 00:00,,,2013-12-17 08:00,2013-12-18 18:00,,,,,PT_Normal,,,,,K7JY3W/oR8OXFQ01dUanRQ,fThz+jZaT0mN5pk4ZcxRgA,,,N,0,0,,,2017-01-24 14:42,2017-01-24 15:40,CLEMENTL,CLEMENTL
434,49428261,751235,10651506,1227199,1,100,N,N,N,CP_Drtn,TT_Task,DT_FixedDUR2,RV_OK,TK_Complete,823A-NT-6A-B11S-1050,Concreting (200m3),,,,0,0,0,1344,8,128,0,0,,2013-10-02 08:00,2013-10-02 18:00,2014-07-11 08:00,2014-07-11 08:00,,2017-01-01 00:00,2017-01-01 00:00,,,2014-01-11 08:00,2014-01-11 18:00,,,,,PT_Normal,,,,,+AUPDMr1SnenAgF93yNr9w,N3V9jP0/fk6hOuTTq5oujA,,,N,0,0,,,2017-01-24 14:42,2017-01-24 15:40,CLEMENTL,CLEMENTL
435,49428262,751235,10651506,1227199,1,100,N,N,N,CP_Drtn,TT_Task,DT_FixedDUR2,RV_OK,TK_Complete,823A-NT-6A-B11S-1060,Curing,,,,0,0,0,896,56,0,0,0,,2013-10-03 08:00,2013-10-10 18:00,2014-07-11 08:00,2014-07-11 08:00,,2017-01-01 00:00,2017-01-01 00:00,,,2014-01-13 08:00,2014-01-20 18:00,,,,,PT_Normal,,,,,xCNT1o0OTwSlN7iXocXIJQ,dfVMBWYHqEeYAPBwW/GauQ,,,N,0,0,,,2017-01-24 14:42,2017-01-24 15:40,CLEMENTL,CLEMENTL
436,49428263,751235,10651506,1227199,1,100,N,N,N,CP_Drtn,TT_Task,DT_FixedDUR2,RV_OK,TK_Complete,823A-NT-6A-B11S-1080,Removal of formwork,,,,0,0,0,576,8,64,0,0,,2013-10-11 08:00,2013-10-12 18:00,2014-07-11 08:00,2014-07-11 08:00,,2017-01-01 00:00,2017-01-01 00:00,,,2014-01-13 08:00,2014-01-13 18:00,,,,,PT_Normal,,,,,o1UzhvRLQF6BxWb1wWMWPQ,z9yyuQxq5UClNnCvXRAYeg,,,N,0,0,,,2017-01-24 14:42,2017-01-24 15:40,CLEMENTL,CLEMENTL
437,49428264,751235,10651506,1227199,1,100,N,N,N,CP_Drtn,TT_Task,DT_FixedDUR2,RV_OK,TK_Complete,823A-NT-6A-B11S-1090,Erect internal formwork & Falsework,,,,0,0,0,4864,32,256,0,0,,2013-11-25 08:00,2013-11-28 18:00,2014-07-11 08:00,2014-07-11 08:00,,2017-01-01 00:00,2017-01-01 00:00,,,2013-11-29 08:00,2013-12-03 18:00,,,,,PT_Normal,,,,,CBfwuRjATVO+Zi8jJcNyFQ,AjXxMctDI0CIjiZYNOihRw,,,N,0,0,,,2017-01-24 14:42,2017-01-24 15:40,CLEMENTL,CLEMENTL
438,49428265,751235,10651506,1227199,1,100,N,N,N,CP_Drtn,TT_Task,DT_FixedDUR2,RV_OK,TK_Complete,823A-NT-6A-B11S-1110,Erect external formwork,,,,0,0,0,1664,16,128,0,0,,2013-12-03 08:00,2013-12-04 18:00,2014-07-11 08:00,2014-07-11 08:00,,2017-01-01 00:00,2017-01-01 00:00,,,2013-12-10 08:00,2013-12-11 18:00,,,,,PT_Normal,,,,,PtDxT8kzTfW0ZshrKi2E4w,v4kmFe4bm0uHQfIsEA+XtQ,,,N,0,0,,,2017-01-24 14:42,2017-01-24 15:40,CLEMENTL,CLEMENTL
439,49428266,751235,10651506,1227199,1,100,N,N,N,CP_Drtn,TT_Task,DT_FixedDUR2,RV_OK,TK_Complete,823A-NT-6A-B11S-1120,Concreting (200m3),,,,0,0,0,1344,8,128,0,0,,2013-12-05 08:00,2013-12-05 18:00,2014-07-11 08:00,2014-07-11 08:00,,2017-01-01 00:00,2017-01-01 00:00,,,2013-12-12 08:00,2013-12-12 18:00,,,,,PT_Normal,,,,,04ZiNDsDRWS8JKDPfvRT9w,1jooOqN2OkKvNALFhTB7mg,,,N,0,0,,,2017-01-24 14:42,2017-01-24 15:40,CLEMENTL,CLEMENTL
440,49428267,751235,10651506,1227199,1,100,N,N,N,CP_Drtn,TT_Task,DT_FixedDUR2,RV_OK,TK_Complete,823A-NT-6A-B11S-1150,Removal external and internal formwork for wall,,,,0,0,0,1152,16,128,0,0,,2013-12-06 08:00,2013-12-07 18:00,2014-07-11 08:00,2014-07-11 08:00,,2017-01-01 00:00,2017-01-01 00:00,,,2013-12-13 08:00,2013-12-14 18:00,,,,,PT_Normal,,,,,GZ7yPn7EQkebFeQr9AnWfQ,pqBe8k5AMUepbSFkMNUJuQ,,,N,0,0,,,2017-01-24 14:42,2017-01-24 15:40,CLEMENTL,CLEMENTL
441,49428268,751235,10651506,1227199,1,100,N,N,N,CP_Drtn,TT_Task,DT_FixedDUR2,RV_OK,TK_Complete,823A-NT-6A-B11S-1130,Curing,,,,0,0,0,1280,80,0,0,0,,2013-12-06 08:00,2013-12-17 18:00,2017-06-12 18:00,2017-06-12 18:00,,2017-01-01 00:00,2017-01-01 00:00,,,2013-12-13 08:00,2013-12-24 18:00,,,,,PT_Normal,,,,,e0W7AbvvRGmsnVC0YztuDQ,E1VrUkyiLkKiwsLEy2GZIQ,,,N,0,0,,,2017-01-24 14:42,2017-01-24 15:36,CLEMENTL,CLEMENTL
442,49428269,751235,10651506,1227199,1,100,N,N,N,CP_Drtn,TT_Task,DT_FixedDUR2,RV_OK,TK_Complete,823A-NT-6A-B11S-1160,Removal internal falsework and formwork for roof,,,,0,0,0,416,8,32,0,0,,2013-12-18 08:00,2013-12-18 18:00,2017-06-12 18:00,2017-06-12 18:00,,2017-01-01 00:00,2017-01-01 00:00,,,2013-12-27 08:00,2013-12-27 18:00,,,,,PT_Normal,,,,,MJ5kVkFvQHeOsgDt+fB1vA,1Het8UIEjES4L0AK3Wd+CA,,,N,0,0,,,2017-01-24 14:42,2017-01-24 15:36,CLEMENTL,CLEMENTL
443,49428270,751235,10651506,1239098,1,100,N,N,N,CP_Drtn,TT_Task,DT_FixedDUR2,RV_OK,TK_Complete,823A-NT-6A-B11S-1070,Preparation of construction joint for base slab,268571,,,0,0,0,128,8,0,0,0,,2013-10-03 08:00,2013-10-03 18:00,2014-07-11 08:00,2014-07-11 08:00,,2017-01-01 00:00,2017-01-01 00:00,,,2014-01-13 08:00,2014-01-13 18:00,,,,,PT_Normal,,,,,b9anLv8pQZuEus56Heh/nw,7SADwilitUufqFYIiGShRg,,,N,0,0,,,2017-01-24 14:42,2017-01-24 15:40,CLEMENTL,CLEMENTL
444,49428271,751235,10651506,1239098,1,100,N,N,N,CP_Drtn,TT_Task,DT_FixedDUR2,RV_OK,TK_Complete,823A-NT-6A-B11S-1140,Preparation of construction joint for wall and roof,268571,,,0,0,0,128,8,0,0,0,,2013-12-06 08:00,2013-12-06 18:00,2014-07-11 08:00,2014-07-11 08:00,,2017-01-01 00:00,2017-01-01 00:00,,,2013-12-13 08:00,2013-12-13 18:00,,,,,PT_Normal,,,,,u2WYZruHQMuorop9S6O2Ug,DMXCnKQR1UyDNKW+sz4j3A,,,N,0,0,,,2017-01-24 14:42,2017-01-24 15:40,CLEMENTL,CLEMENTL
445,49428272,751235,10651506,1227199,1,100,N,N,N,CP_Drtn,TT_Task,DT_FixedDUR2,RV_OK,TK_Complete,823A-NT-6A-B11S-1100,Rebar fixing,,,,0,2496,0,2496,24,192,192,0,,2013-11-29 08:00,2013-12-02 18:00,2014-07-11 08:00,2014-07-11 08:00,,2017-01-01 00:00,2017-01-01 00:00,,,2013-12-04 08:00,2013-12-06 18:00,,,,,PT_Normal,,,,,UqcnSXHTSMu0t3C9WHMNGQ,q0pg96MdL0CaOVS5tpFvnQ,,,N,2496,192,,,2017-01-24 14:42,2017-01-24 15:40,CLEMENTL,CLEMENTL
446,49428273,751235,10651510,1239098,1,100,N,N,N,CP_Drtn,TT_Task,DT_FixedDUR2,RV_OK,TK_Complete,823A-NT-6A-B6N-1010,Placing of waterproof member T-lock & testing,268571,,,0,0,0,128,8,0,0,0,,2013-09-28 08:00,2013-09-30 18:00,2014-07-11 08:00,2014-07-11 08:00,,2017-01-01 00:00,2017-01-01 00:00,,,2013-11-01 08:00,2013-11-01 18:00,,,,,PT_Normal,,,,,Ki0yVylIRXG5E5puiI8dng,tO5eqn2gwUGfErwkobzlwQ,,,N,0,0,,,2017-01-24 14:42,2017-01-24 15:40,CLEMENTL,CLEMENTL
447,49428274,751235,10651510,1239098,1,100,N,N,N,CP_Drtn,TT_Task,DT_FixedDUR2,RV_OK,TK_Complete,823A-NT-6A-B6N-1020,Erect external formwork,,,,0,0,0,320,8,64,0,0,,2013-09-30 08:00,2013-10-02 18:00,2014-07-11 08:00,2014-07-11 08:00,,2017-01-01 00:00,2017-01-01 00:00,,,2013-11-02 08:00,2013-11-02 18:00,,,,,PT_Normal,,,,,/8vU8VnTR0WoJANCz+sgRw,n7pvmBPWmEqSb5AWIJWNcA,,,N,0,0,,,2017-01-24 14:42,2017-01-24 15:40,CLEMENTL,CLEMENTL
448,49428275,751235,10651510,1227199,1,100,N,N,N,CP_Drtn,TT_Task,DT_FixedDUR2,RV_OK,TK_Complete,823A-NT-6A-B6N-1030,Rebar fixing,,,,0,0,0,1152,16,128,0,0,,2013-10-02 08:00,2013-10-03 18:00,2014-07-11 08:00,2014-07-11 08:00,,2017-01-01 00:00,2017-01-01 00:00,,,2013-11-04 08:00,2013-11-05 18:00,,,,,PT_Normal,,,,,OXnCpCPHS3qsxG8PFPU6YA,3Wu7Tb3Vk0afAH159w0Xlw,,,N,0,0,,,2017-01-24 14:42,2017-01-24 15:40,CLEMENTL,CLEMENTL
449,49428276,751235,10651510,1227199,1,100,N,N,N,CP_Drtn,TT_Task,DT_FixedDUR2,RV_OK,TK_Complete,823A-NT-6A-B6N-1040,Erect internal kicker formwork,,,,0,0,0,640,16,128,0,0,,2013-10-03 08:00,2013-10-04 18:00,2014-07-11 08:00,2014-07-11 08:00,,2017-01-01 00:00,2017-01-01 00:00,,,2013-11-06 08:00,2013-11-07 18:00,,,,,PT_Normal,,,,,r8wToaljRdGD4WSyw1a8EA,J7JsERlMPEWkDh+BZWwSXQ,,,N,0,0,,,2017-01-24 14:42,2017-01-24 15:40,CLEMENTL,CLEMENTL
450,49428277,751235,10651510,1227199,1,100,N,N,N,CP_Drtn,TT_Task,DT_FixedDUR2,RV_OK,TK_Complete,823A-NT-6A-B6N-1050,Concreting (164m3),268581,,,0,0,0,896,8,128,0,0,,2013-10-05 08:00,2013-10-05 18:00,2014-07-11 08:00,2014-07-11 08:00,,2017-01-01 00:00,2017-01-01 00:00,,,2013-11-08 08:00,2013-11-08 18:00,,,,,PT_Normal,,,,,cqKSu7EoTGG0YfA0BLm6gg,OibokwX15kWY7Uz+d3dkTQ,,,N,0,0,,,2017-01-24 14:42,2017-01-24 15:40,CLEMENTL,CLEMENTL
451,49428278,751235,10651510,1227199,1,100,N,N,N,CP_Drtn,TT_Task,DT_FixedDUR2,RV_OK,TK_Complete,823A-NT-6A-B6N-1060,Curing,,,,0,448,0,448,56,0,0,0,,2013-10-07 08:00,2013-10-14 18:00,2014-07-11 08:00,2014-07-11 08:00,,2017-01-01 00:00,2017-01-01 00:00,,,2013-11-09 08:00,2013-11-16 18:00,,,,,PT_Normal,,,,,VOdyKp/0SnmAz5ZvToIPlQ,itda7IBqCUWwKXXQe5djEw,,,N,448,0,,,2017-01-24 14:42,2017-01-24 15:40,CLEMENTL,CLEMENTL
452,49428279,751235,10651510,1227199,1,100,N,N,N,CP_Drtn,TT_Task,DT_FixedDUR2,RV_OK,TK_Complete,823A-NT-6A-B6N-1080,Removal of formwork,,,,0,0,0,320,8,64,0,0,,2013-10-08 08:00,2013-10-08 18:00,2014-07-11 08:00,2014-07-11 08:00,,2017-01-01 00:00,2017-01-01 00:00,,,2013-11-09 08:00,2013-11-09 18:00,,,,,PT_Normal,,,,,rV9ULib/TLSoVYYRptRTdg,80wmeZLPXESao5hMvATQWA,,,N,0,0,,,2017-01-24 14:42,2017-01-24 15:40,CLEMENTL,CLEMENTL
453,49428280,751235,10651510,1227199,1,100,N,N,N,CP_Drtn,TT_Task,DT_FixedDUR2,RV_OK,TK_Complete,823A-NT-6A-B6N-1090,Erect internal formwork & Falsework,,,,0,3328,0,3328,32,256,256,0,,2013-10-23 08:00,2013-11-04 18:00,2014-07-11 08:00,2014-07-11 08:00,,2017-01-01 00:00,2017-01-01 00:00,,,2014-01-28 08:00,2014-02-04 18:00,,,,,PT_Normal,,,,,ZBI8O+3XTRO2KY3uWUozHw,aV7j97hRL0CRa08qNs68oA,,,N,3328,256,,,2017-01-24 14:42,2017-01-24 15:40,CLEMENTL,CLEMENTL
454,49428281,751235,10651510,1227199,1,100,N,N,N,CP_Drtn,TT_Task,DT_FixedDUR2,RV_OK,TK_Complete,823A-NT-6A-B6N-1100,Rebar fixing,,,,0,1728,0,1728,24,192,192,0,,2013-11-05 08:00,2013-11-07 18:00,2014-07-11 08:00,2014-07-11 08:00,,2017-01-01 00:00,2017-01-01 00:00,,,2014-01-15 08:00,2014-01-17 18:00,,,,,PT_Normal,,,,,2plahXMMQUig9HodpF2W3A,Y2ZkpeOMpkSHRk/hH705Pw,,,N,1728,192,,,2017-01-24 14:42,2017-01-24 15:40,CLEMENTL,CLEMENTL
455,49428282,751235,10651510,1227199,1,100,N,N,N,CP_Drtn,TT_Task,DT_FixedDUR2,RV_OK,TK_Complete,823A-NT-6A-B6N-1110,Erect external formwork,,,,0,0,0,896,16,128,0,0,,2013-11-08 08:00,2013-11-09 18:00,2014-07-11 08:00,2014-07-11 08:00,,2017-01-01 00:00,2017-01-01 00:00,,,2014-01-18 08:00,2014-01-20 18:00,,,,,PT_Normal,,,,,irhbfY4pSlSOyKEgDKNT/Q,bSNxhqQ1WUCuW7UOsD8Dnw,,,N,0,0,,,2017-01-24 14:42,2017-01-24 15:40,CLEMENTL,CLEMENTL
456,49428283,751235,10651510,1227199,1,100,N,N,N,CP_Drtn,TT_Task,DT_FixedDUR2,RV_OK,TK_Complete,823A-NT-6A-B6N-1120,Concreting (242m3),268581,,,0,0,0,896,8,128,0,0,,2013-11-11 08:00,2013-11-11 18:00,2014-07-11 08:00,2014-07-11 08:00,,2017-01-01 00:00,2017-01-01 00:00,,,2014-01-21 08:00,2014-01-21 18:00,,,,,PT_Normal,,,,,5tDtPToVQk6VLCNwprII9Q,07wYeQVraECjdoXH0SPvNw,,,N,0,0,,,2017-01-24 14:42,2017-01-24 15:40,CLEMENTL,CLEMENTL
457,49428284,751235,10651510,1227199,1,100,N,N,N,CP_Drtn,TT_Task,DT_FixedDUR2,RV_OK,TK_Complete,823A-NT-6A-B6N-1150,Removal external and internal formwork for wall,,,,0,0,0,640,16,128,0,0,,2013-11-12 08:00,2013-11-13 18:00,2014-07-11 08:00,2014-07-11 08:00,,2017-01-01 00:00,2017-01-01 00:00,,,2014-01-22 08:00,2014-01-23 18:00,,,,,PT_Normal,,,,,siIcXNzxRVy/Z/elMzcp6Q,KoGjWMRM7ESBvxUZzyoPTw,,,N,0,0,,,2017-01-24 14:42,2017-01-24 15:40,CLEMENTL,CLEMENTL
458,49428285,751235,10651510,1227199,1,100,N,N,N,CP_Drtn,TT_Task,DT_FixedDUR2,RV_OK,TK_Complete,823A-NT-6A-B6N-1130,Curing,,,,0,0,0,640,80,0,0,0,,2013-11-12 08:00,2013-11-22 18:00,2017-06-12 18:00,2017-06-12 18:00,,2017-01-01 00:00,2017-01-01 00:00,,,2014-01-22 08:00,2014-02-05 18:00,,,,,PT_Normal,,,,,vD4Yu6z3RrmGk3fBib0ahA,khQtRuPDoEqwZu6dVgI2RA,,,N,0,0,,,2017-01-24 14:42,2017-01-24 15:36,CLEMENTL,CLEMENTL
459,49428286,751235,10651510,1239098,1,100,N,N,N,CP_Drtn,TT_Task,DT_FixedDUR2,RV_OK,TK_Complete,823A-NT-6A-B6N-1070,Preparation of construction joint for base slab,268571,,,0,0,0,128,8,0,0,0,,2013-10-07 08:00,2013-10-07 18:00,2014-07-11 08:00,2014-07-11 08:00,,2017-01-01 00:00,2017-01-01 00:00,,,2013-11-09 08:00,2013-11-09 18:00,,,,,PT_Normal,,,,,VVZzbtfdQuymdhxTcrOsrw,lFAYy9Hw1kG+E/2s6mU6Vg,,,N,0,0,,,2017-01-24 14:42,2017-01-24 15:40,CLEMENTL,CLEMENTL
460,49428287,751235,10651510,1239098,1,100,N,N,N,CP_Drtn,TT_Task,DT_FixedDUR2,RV_OK,TK_Complete,823A-NT-6A-B6N-1140,Preparation of construction joint for wall and roof,268571,,,0,0,0,128,8,0,0,0,,2013-11-12 08:00,2013-11-12 18:00,2014-07-11 08:00,2014-07-11 08:00,,2017-01-01 00:00,2017-01-01 00:00,,,2014-01-22 08:00,2014-01-22 18:00,,,,,PT_Normal,,,,,DQUwnQHPS3uF5XsoVZ4Nug,LKoRR6hs6kqV+SgUftsR9Q,,,N,0,0,,,2017-01-24 14:42,2017-01-24 15:40,CLEMENTL,CLEMENTL
461,49428288,751235,10651510,1227199,1,100,N,N,N,CP_Drtn,TT_Task,DT_FixedDUR2,RV_OK,TK_Complete,823A-NT-6A-B6N-1170,Side walkway and cable bracket (19m3),,,,0,3200,0,3200,40,640,640,0,,2015-03-27 08:00,2015-10-02 18:00,2017-06-12 18:00,2017-06-12 18:00,,2017-01-01 00:00,2017-01-01 00:00,,,2015-03-13 08:00,2015-03-18 18:00,,,,,PT_Normal,,,,,uQ2tQiwCTSKBQbcgf7be0g,iS3vGooAA0af0FCA/muhZQ,,,N,3200,640,,,2017-01-24 14:42,2017-01-24 15:36,CLEMENTL,CLEMENTL
462,49428289,751235,10651510,1227199,1,100,N,N,N,CP_Drtn,TT_Task,DT_FixedDUR2,RV_OK,TK_Complete,823A-NT-6A-B6N-1160,Removal internal falsework and formwork for roof,,,,0,0,0,576,8,64,0,0,,2013-11-23 08:00,2013-11-23 18:00,2017-06-12 18:00,2017-06-12 18:00,,2017-01-01 00:00,2017-01-01 00:00,,,2014-02-06 08:00,2014-02-06 18:00,,,,,PT_Normal,,,,,K/5ZD8kLT62IJJiEVstDxQ,iO/y+KSFz0OTlkNY1Yzbxg,,,N,0,0,,,2017-01-24 14:42,2017-01-24 15:36,CLEMENTL,CLEMENTL
463,49428290,751235,10651512,1239098,1,100,N,N,N,CP_Drtn,TT_Task,DT_FixedDUR2,RV_OK,TK_Complete,823A-NT-6A-B8C-1010,Placing of waterproof member T-lock & testing,268571,,,0,0,0,128,8,0,0,0,,2013-10-11 08:00,2013-10-11 18:00,2014-07-11 08:00,2014-07-11 08:00,,2017-01-01 00:00,2017-01-01 00:00,,,2013-11-20 08:00,2013-11-20 18:00,,,,,PT_Normal,,,,,hP2G5UsfSsKyNV9+eXo7ng,evfM50mER02PV8qDLt/dBQ,,,N,0,0,,,2017-01-24 14:42,2017-01-24 15:40,CLEMENTL,CLEMENTL
464,49428291,751235,10651512,1227199,1,100,N,N,N,CP_Drtn,TT_Task,DT_FixedDUR2,RV_OK,TK_Complete,823A-NT-6A-B8C-1020,Rebar fixing,,,,0,0,0,1664,16,128,0,0,,2013-10-12 08:00,2013-10-12 18:00,2014-07-11 08:00,2014-07-11 08:00,,2017-01-01 00:00,2017-01-01 00:00,,,2013-11-21 08:00,2013-11-22 18:00,,,,,PT_Normal,,,,,mMRV/ea3TTuNPBZ0QvbtCg,FLSdSEHm4kiMmUKOYUIcHQ,,,N,0,0,,,2017-01-24 14:42,2017-01-24 15:40,CLEMENTL,CLEMENTL
465,49428292,751235,10651512,1227199,1,100,N,N,N,CP_Drtn,TT_Task,DT_FixedDUR2,RV_OK,TK_Complete,823A-NT-6A-B8C-1030,Erect external formwork,,,,0,832,0,832,8,64,64,0,,2013-10-15 08:00,2013-10-15 08:00,2014-07-11 08:00,2014-07-11 08:00,,2017-01-01 00:00,2017-01-01 00:00,,,2013-11-23 08:00,2013-11-23 18:00,,,,,PT_Normal,,,,,6w0RwGkYSlSicci6beT6og,FsRkLwTNQkSg789vrFsaQA,,,N,832,64,,,2017-01-24 14:42,2017-01-24 15:40,CLEMENTL,CLEMENTL
466,49428293,751235,10651512,1227199,1,100,N,N,N,CP_Drtn,TT_Task,DT_FixedDUR2,RV_OK,TK_Complete,823A-NT-6A-B8C-1040,Concreting (225m3),,,,0,0,0,1344,8,128,0,0,,2013-10-18 08:00,2013-10-18 18:00,2014-07-11 08:00,2014-07-11 08:00,,2017-01-01 00:00,2017-01-01 00:00,,,2013-11-25 08:00,2013-11-25 18:00,,,,,PT_Normal,,,,,w54t5dasTVS6k2RP0C0Yow,OMlS1XRGJEGoAbFXMkD4xQ,,,N,0,0,,,2017-01-24 14:42,2017-01-24 15:40,CLEMENTL,CLEMENTL
467,49428294,751235,10651512,1227199,1,100,N,N,N,CP_Drtn,TT_Task,DT_FixedDUR2,RV_OK,TK_Complete,823A-NT-6A-B8C-1050,Curing,268571,,,0,0,0,896,56,0,0,0,,2013-10-19 08:00,2013-10-21 18:00,2014-07-11 08:00,2014-07-11 08:00,,2017-01-01 00:00,2017-01-01 00:00,,,2013-11-12 08:00,2013-11-19 18:00,,,,,PT_Normal,,,,,jWeBHDdsROy9qlgFYogxhQ,NJJ4zn+7zEuUXsMQuePZyA,,,N,0,0,,,2017-01-24 14:42,2017-01-24 15:40,CLEMENTL,CLEMENTL
468,49428295,751235,10651512,1227199,1,100,N,N,N,CP_Drtn,TT_Task,DT_FixedDUR2,RV_OK,TK_Complete,823A-NT-6A-B8C-1070,Removal of formwork,,,,0,0,0,576,8,64,0,0,,2013-10-19 08:00,2013-10-21 18:00,2014-07-11 08:00,2014-07-11 08:00,,2017-01-01 00:00,2017-01-01 00:00,,,2013-11-12 08:00,2013-11-12 18:00,,,,,PT_Normal,,,,,TpzxIOwVQpm6ZIKTPyULug,iBUlZyi2z0CCcfT8D+Cvww,,,N,0,0,,,2017-01-24 14:42,2017-01-24 15:40,CLEMENTL,CLEMENTL
469,49428296,751235,10651512,1239098,1,100,N,N,N,CP_Drtn,TT_Task,DT_FixedDUR2,RV_OK,TK_Complete,823A-NT-6A-B8C-1060,Preparation of construction joint for base slab,268571,,,0,0,0,128,8,0,0,0,,2013-10-19 08:00,2013-10-21 18:00,2014-07-11 08:00,2014-07-11 08:00,,2017-01-01 00:00,2017-01-01 00:00,,,2013-11-12 08:00,2013-11-12 18:00,,,,,PT_Normal,,,,,33dHuCusQZ2jDGoEmE02xw,XXVNIXgk/0SaMBwxXi+kNg,,,N,0,0,,,2017-01-24 14:42,2017-01-24 15:40,CLEMENTL,CLEMENTL
470,49428297,751235,10651513,1227199,1,100,N,N,N,CP_Drtn,TT_Task,DT_FixedDUR2,RV_OK,TK_Complete,823A-NT-6A-B8N-1130,Curing,,,,0,1280,0,1280,80,0,0,0,,2013-12-14 08:00,2013-12-27 18:00,2017-06-12 18:00,2017-06-12 18:00,,2017-01-01 00:00,2017-01-01 00:00,,,2013-12-28 08:00,2014-01-09 18:00,,,,,PT_Normal,,,,,7C9SeKW5RjuUBWlRtJ+jCQ,60FtpSLjJUOTDGWZbhefzQ,,,N,1280,0,,,2017-01-24 14:42,2017-01-24 15:36,CLEMENTL,CLEMENTL
471,49428298,751235,10651513,1227199,1,100,N,N,N,CP_Drtn,TT_Task,DT_FixedDUR2,RV_OK,TK_Complete,823A-NT-6A-B8N-1160,Removal internal falsework and formwork for roof,,,,0,0,0,960,8,64,0,0,,2013-12-28 08:00,2013-12-28 18:00,2017-06-12 18:00,2017-06-12 18:00,,2017-01-01 00:00,2017-01-01 00:00,,,2014-01-10 08:00,2014-01-10 18:00,,,,,PT_Normal,,,,,zaYZVJ/xTy+wkmNRR2JnHA,jD9w6hUMzUyNjI8LL2uvhA,,,N,0,0,,,2017-01-24 14:42,2017-01-24 15:36,CLEMENTL,CLEMENTL
472,49428299,751235,10651513,1239098,1,100,N,N,N,CP_Drtn,TT_Task,DT_FixedDUR2,RV_OK,TK_Complete,823A-NT-6A-B8N-1070,Preparation of construction joint for base slab,268571,,,0,0,0,128,8,0,0,0,,2013-10-19 08:00,2013-10-19 18:00,2014-07-11 08:00,2014-07-11 08:00,,2017-01-01 00:00,2017-01-01 00:00,,,2013-11-01 08:00,2013-11-01 18:00,,,,,PT_Normal,,,,,3KXe5r65R+u/iqckuBkuyw,r/7SREeVAE6oz09P9TGxIQ,,,N,0,0,,,2017-01-24 14:42,2017-01-24 15:40,CLEMENTL,CLEMENTL
473,49428300,751235,10651513,1239098,1,100,N,N,N,CP_Drtn,TT_Task,DT_FixedDUR2,RV_OK,TK_Complete,823A-NT-6A-B8N-1140,Preparation of construction joint for wall and roof,268571,,,0,0,0,128,8,0,0,0,,2013-12-14 08:00,2013-12-14 18:00,2014-07-11 08:00,2014-07-11 08:00,,2017-01-01 00:00,2017-01-01 00:00,,,2013-12-28 08:00,2013-12-28 18:00,,,,,PT_Normal,,,,,A8pQF+wEQo6TXf/xu9vyXg,nmvCaWDmeEyAMz6FDOWnlQ,,,N,0,0,,,2017-01-24 14:42,2017-01-24 15:40,CLEMENTL,CLEMENTL
474,49428301,751235,10651513,1227199,1,100,N,N,N,CP_Drtn,TT_Task,DT_FixedDUR2,RV_OK,TK_Complete,823A-NT-6A-B8N-1110,Erect external formwork,,,,0,0,0,1152,16,128,0,0,,2013-12-11 08:00,2013-12-12 18:00,2014-07-11 08:00,2014-07-11 08:00,,2017-01-01 00:00,2017-01-01 00:00,,,2013-12-23 08:00,2013-12-24 18:00,,,,,PT_Normal,,,,,nLaMwAgNSFKpnwWxdtCstw,5pQ4JMe10EypsKC1ROEq3g,,,N,0,0,,,2017-01-24 14:42,2017-01-24 15:40,CLEMENTL,CLEMENTL
475,49428302,751235,10651513,1227199,1,100,N,N,N,CP_Drtn,TT_Task,DT_FixedDUR2,RV_OK,TK_Complete,823A-NT-6A-B8N-1170,Side walkway and cable bracket (38m3),,,,0,0,0,7360,40,640,0,0,,2015-03-21 08:00,2015-03-26 18:00,2017-06-12 18:00,2017-06-12 18:00,,2017-01-01 00:00,2017-01-01 00:00,,,2015-03-07 08:00,2015-03-12 18:00,,,,,PT_Normal,,,,,2dDGsYYYQdWRl2SqBpbh3g,CqYv/LbeE0iUzuLgP3uhiQ,,,N,0,0,,,2017-01-24 14:42,2017-01-24 15:36,CLEMENTL,CLEMENTL
476,49428303,751235,10651513,1239098,1,100,N,N,N,CP_Drtn,TT_Task,DT_FixedDUR2,RV_OK,TK_Complete,823A-NT-6A-B8N-1010,Placing of waterproof member T-lock & testing,268571,,,0,0,0,128,8,0,0,0,,2013-10-07 08:00,2013-10-07 18:00,2014-07-11 08:00,2014-07-11 08:00,,2017-01-01 00:00,2017-01-01 00:00,,,2013-11-01 08:00,2013-11-01 18:00,,,,,PT_Normal,,,,,lLG8vWAXTzG1d6Ky4eqYow,HxrfFUGOPk2BUI77cBJqeg,,,N,0,0,,,2017-01-24 14:42,2017-01-24 15:40,CLEMENTL,CLEMENTL
477,49428304,751235,10651513,1239098,1,100,N,N,N,CP_Drtn,TT_Task,DT_FixedDUR2,RV_OK,TK_Complete,823A-NT-6A-B8N-1020,Erect external formwork,,,,0,0,0,832,8,64,0,0,,2013-10-08 08:00,2013-10-09 18:00,2014-07-11 08:00,2014-07-11 08:00,,2017-01-01 00:00,2017-01-01 00:00,,,2013-11-02 08:00,2013-11-02 18:00,,,,,PT_Normal,,,,,Uw312vHuRUW09nYnhzCEkQ,bmfiuXLKpEaD3Zgpfwe3HA,,,N,0,0,,,2017-01-24 14:42,2017-01-24 15:40,CLEMENTL,CLEMENTL
478,49428305,751235,10651513,1227199,1,100,N,N,N,CP_Drtn,TT_Task,DT_FixedDUR2,RV_OK,TK_Complete,823A-NT-6A-B8N-1030,Rebar fixing,,,,0,0,0,1664,16,128,0,0,,2013-10-10 08:00,2013-10-11 18:00,2014-07-11 08:00,2014-07-11 08:00,,2017-01-01 00:00,2017-01-01 00:00,,,2013-11-04 08:00,2013-11-05 18:00,,,,,PT_Normal,,,,,4vxQIV+0Sw21Wfj+M7i9+Q,HC/YlmCLbEm6QnRSG38QzA,,,N,0,0,,,2017-01-24 14:42,2017-01-24 15:40,CLEMENTL,CLEMENTL
479,49428306,751235,10651513,1227199,1,100,N,N,N,CP_Drtn,TT_Task,DT_FixedDUR2,RV_OK,TK_Complete,823A-NT-6A-B8N-1040,Erect internal kicker formwork,,,,0,0,0,1664,16,128,0,0,,2013-10-12 08:00,2013-10-17 18:00,2014-07-11 08:00,2014-07-11 08:00,,2017-01-01 00:00,2017-01-01 00:00,,,2013-11-06 08:00,2013-11-07 18:00,,,,,PT_Normal,,,,,3Kh+KAYhQu6O4EdaC0DkrA,mxle16SPB0qyxp/MLQQHTA,,,N,0,0,,,2017-01-24 14:42,2017-01-24 15:40,CLEMENTL,CLEMENTL
480,49428307,751235,10651513,1227199,1,100,N,N,N,CP_Drtn,TT_Task,DT_FixedDUR2,RV_OK,TK_Complete,823A-NT-6A-B8N-1050,Concreting (222m3),,,,0,0,0,1344,8,128,0,0,,2013-10-18 08:00,2013-10-18 18:00,2014-07-11 08:00,2014-07-11 08:00,,2017-01-01 00:00,2017-01-01 00:00,,,2013-11-08 08:00,2013-11-08 18:00,,,,,PT_Normal,,,,,vVgKybM6Qfiboct0qWcTIw,gJocpoe720Kqr6sajYRZeA,,,N,0,0,,,2017-01-24 14:42,2017-01-24 15:40,CLEMENTL,CLEMENTL
481,49428308,751235,10651513,1227199,1,100,N,N,N,CP_Drtn,TT_Task,DT_FixedDUR2,RV_OK,TK_Complete,823A-NT-6A-B8N-1060,Curing,,,,0,0,0,896,56,0,0,0,,2013-10-19 08:00,2013-10-21 18:00,2014-07-11 08:00,2014-07-11 08:00,,2017-01-01 00:00,2017-01-01 00:00,,,2013-11-01 08:00,2013-11-08 18:00,,,,,PT_Normal,,,,,A2B2W9RBT4OlhNGvnKsXsw,gbSi+NEei0SZLNEGiPDyTg,,,N,0,0,,,2017-01-24 14:42,2017-01-24 15:40,CLEMENTL,CLEMENTL
482,49428309,751235,10651513,1227199,1,100,N,N,N,CP_Drtn,TT_Task,DT_FixedDUR2,RV_OK,TK_Complete,823A-NT-6A-B8N-1080,Removal of formwork,,,,0,0,0,576,8,64,0,0,,2013-10-19 08:00,2013-10-19 18:00,2014-07-11 08:00,2014-07-11 08:00,,2017-01-01 00:00,2017-01-01 00:00,,,2013-11-01 08:00,2013-11-01 18:00,,,,,PT_Normal,,,,,h08QdgOdTjSme+ERP0cShQ,Z1yhFrpRAE6OZIxRzbG0Ow,,,N,0,0,,,2017-01-24 14:42,2017-01-24 15:40,CLEMENTL,CLEMENTL
483,49428310,751235,10651513,1227199,1,100,N,N,N,CP_Drtn,TT_Task,DT_FixedDUR2,RV_OK,TK_Complete,823A-NT-6A-B8N-1090,Erect internal formwork & Falsework,,,,0,4864,0,4864,32,256,256,0,,2013-11-04 08:00,2013-12-02 18:00,2014-07-11 08:00,2014-07-11 08:00,,2017-01-01 00:00,2017-01-01 00:00,,,2013-12-30 08:00,2014-01-03 18:00,,,,,PT_Normal,,,,,VI9/8IQqQrer4eW6uBL5NQ,vddC10PDD0KnmKgnlxOc8Q,,,N,4864,256,,,2017-01-24 14:42,2017-01-24 15:40,CLEMENTL,CLEMENTL
484,49428311,751235,10651513,1227199,1,100,N,N,N,CP_Drtn,TT_Task,DT_FixedDUR2,RV_OK,TK_Complete,823A-NT-6A-B8N-1100,Rebar fixing,,,,0,0,0,1728,24,192,0,0,,2013-12-03 08:00,2013-12-10 18:00,2014-07-11 08:00,2014-07-11 08:00,,2017-01-01 00:00,2017-01-01 00:00,,,2013-12-19 08:00,2013-12-21 18:00,,,,,PT_Normal,,,,,y68sj+aQSGeduvCH142SWw,LSYh48tH+EeYDztlQPnEYA,,,N,0,0,,,2017-01-24 14:42,2017-01-24 15:40,CLEMENTL,CLEMENTL
485,49428312,751235,10651513,1227199,1,100,N,N,N,CP_Drtn,TT_Task,DT_FixedDUR2,RV_OK,TK_Complete,823A-NT-6A-B8N-1120,Concreting (327m3),,,,0,0,0,1344,8,128,0,0,,2013-12-13 08:00,2013-12-13 18:00,2014-07-11 08:00,2014-07-11 08:00,,2017-01-01 00:00,2017-01-01 00:00,,,2013-12-27 08:00,2013-12-27 18:00,,,,,PT_Normal,,,,,g7HHuLeZSvGjbMWH6iH54Q,CTtGIVdZZEWjNvYOHpBl8Q,,,N,0,0,,,2017-01-24 14:42,2017-01-24 15:40,CLEMENTL,CLEMENTL
486,49428313,751235,10651513,1227199,1,100,N,N,N,CP_Drtn,TT_Task,DT_FixedDUR2,RV_OK,TK_Complete,823A-NT-6A-B8N-1150,Removal external and internal formwork for wall,,,,0,0,0,1152,16,128,0,0,,2013-12-14 08:00,2013-12-16 18:00,2014-07-11 08:00,2014-07-11 08:00,,2017-01-01 00:00,2017-01-01 00:00,,,2013-12-28 08:00,2013-12-30 18:00,,,,,PT_Normal,,,,,qgEDJHbkSsWuCBfUxK/mHg,iCLA21WZ6ku1QySDK73Lig,,,N,0,0,,,2017-01-24 14:42,2017-01-24 15:40,CLEMENTL,CLEMENTL
487,49428314,751235,10651514,1239098,1,100,N,N,N,CP_Drtn,TT_Task,DT_FixedDUR2,RV_OK,TK_Complete,823A-NT-6A-B8S-1020,Erect external formwork,,,,0,0,0,832,8,64,0,0,,2013-10-08 08:00,2013-10-09 18:00,2014-07-11 08:00,2014-07-11 08:00,,2017-01-01 00:00,2017-01-01 00:00,,,2013-12-07 08:00,2013-12-07 18:00,,,,,PT_Normal,,,,,LfKA1EZiSLCRXqwf/9CcJw,AyWtw1BZLkqo5+FKo6a3gA,,,N,0,0,,,2017-01-24 14:42,2017-01-24 15:40,CLEMENTL,CLEMENTL
488,49428315,751235,10651514,1227199,1,100,N,N,N,CP_Drtn,TT_Task,DT_FixedDUR2,RV_OK,TK_Complete,823A-NT-6A-B8S-1030,Rebar fixing,,,,0,0,0,1664,16,128,0,0,,2013-10-10 08:00,2013-10-11 18:00,2014-07-11 08:00,2014-07-11 08:00,,2017-01-01 00:00,2017-01-01 00:00,,,2013-12-09 08:00,2013-12-10 18:00,,,,,PT_Normal,,,,,YZWbeoGpSw2HrQQyJNVtag,fsDihHPoVkGzGR0xTqsN7g,,,N,0,0,,,2017-01-24 14:42,2017-01-24 15:40,CLEMENTL,CLEMENTL
489,49428316,751235,10651514,1227199,1,100,N,N,N,CP_Drtn,TT_Task,DT_FixedDUR2,RV_OK,TK_Complete,823A-NT-6A-B8S-1040,Erect internal kicker formwork,,,,0,0,0,1664,16,128,0,0,,2013-10-12 08:00,2013-10-17 18:00,2014-07-11 08:00,2014-07-11 08:00,,2017-01-01 00:00,2017-01-01 00:00,,,2013-12-11 08:00,2013-12-12 18:00,,,,,PT_Normal,,,,,9Ic5du/UQ8KvMmpgWHJmyw,AWRazxTimkWJ787GV0LTjg,,,N,0,0,,,2017-01-24 14:42,2017-01-24 15:40,CLEMENTL,CLEMENTL
490,49428317,751235,10651514,1227199,1,100,N,N,N,CP_Drtn,TT_Task,DT_FixedDUR2,RV_OK,TK_Complete,823A-NT-6A-B8S-1050,Concreting (111m3),,,,0,0,0,1344,8,128,0,0,,2013-10-18 08:00,2013-10-18 18:00,2014-07-11 08:00,2014-07-11 08:00,,2017-01-01 00:00,2017-01-01 00:00,,,2013-12-13 08:00,2013-12-13 18:00,,,,,PT_Normal,,,,,driN6pTBQ6qTuQEehv36HA,FOcZBT2pT0iahUKK5dnQXw,,,N,0,0,,,2017-01-24 14:42,2017-01-24 15:40,CLEMENTL,CLEMENTL
491,49428318,751235,10651514,1227199,1,100,N,N,N,CP_Drtn,TT_Task,DT_FixedDUR2,RV_OK,TK_Complete,823A-NT-6A-B8S-1060,Curing,,,,0,0,0,896,56,0,0,0,,2013-10-19 08:00,2013-10-21 18:00,2014-07-11 08:00,2014-07-11 08:00,,2017-01-01 00:00,2017-01-01 00:00,,,2013-12-02 08:00,2013-12-09 18:00,,,,,PT_Normal,,,,,9SqOGGUPSXS6tGOFh19F/A,0YTrItwNqUeLXx/15A1NCw,,,N,0,0,,,2017-01-24 14:42,2017-01-24 15:40,CLEMENTL,CLEMENTL
492,49428319,751235,10651514,1239098,1,100,N,N,N,CP_Drtn,TT_Task,DT_FixedDUR2,RV_OK,TK_Complete,823A-NT-6A-B8S-1010,Placing of waterproof member T-lock & testing,268571,,,0,0,0,128,8,0,0,0,,2013-10-07 08:00,2013-10-07 18:00,2014-07-11 08:00,2014-07-11 08:00,,2017-01-01 00:00,2017-01-01 00:00,,,2013-12-06 08:00,2013-12-06 18:00,,,,,PT_Normal,,,,,93yX+/j0R3SFFPW/VKZepA,9J70WeESLEqo4awGpHgFRQ,,,N,0,0,,,2017-01-24 14:42,2017-01-24 15:40,CLEMENTL,CLEMENTL
493,49428320,751235,10651514,1227199,1,100,N,N,N,CP_Drtn,TT_Task,DT_FixedDUR2,RV_OK,TK_Complete,823A-NT-6A-B8S-1090,Erect internal formwork & Falsework,,,,0,4864,0,4864,32,256,256,0,,2013-11-01 08:00,2013-11-09 18:00,2014-07-11 08:00,2014-07-11 08:00,,2017-01-01 00:00,2017-01-01 00:00,,,2013-11-01 08:00,2013-11-05 18:00,,,,,PT_Normal,,,,,GtNg6ZEOS2O81VD8RBs76g,NKBxsef0YE+WIKDERXZ8wg,,,N,4864,256,,,2017-01-24 14:42,2017-01-24 15:40,CLEMENTL,CLEMENTL
494,49428321,751235,10651514,1227199,1,100,N,N,N,CP_Drtn,TT_Task,DT_FixedDUR2,RV_OK,TK_Complete,823A-NT-6A-B8S-1100,Rebar fixing,,,,0,0,0,1728,24,192,0,0,,2013-11-11 08:00,2013-11-19 18:00,2014-07-11 08:00,2014-07-11 08:00,,2017-01-01 00:00,2017-01-01 00:00,,,2013-11-06 08:00,2013-11-08 18:00,,,,,PT_Normal,,,,,YHVQlraZR8KAuXitjpAgcg,w59YPhTbC0WSgZIg8kwwcg,,,N,0,0,,,2017-01-24 14:42,2017-01-24 15:40,CLEMENTL,CLEMENTL
495,49428322,751235,10651514,1227199,1,100,N,N,N,CP_Drtn,TT_Task,DT_FixedDUR2,RV_OK,TK_Complete,823A-NT-6A-B8S-1110,Erect external formwork,,,,0,0,0,1152,16,128,0,0,,2013-11-20 08:00,2013-11-21 18:00,2014-07-11 08:00,2014-07-11 08:00,,2017-01-01 00:00,2017-01-01 00:00,,,2013-11-09 08:00,2013-11-11 18:00,,,,,PT_Normal,,,,,8c9F6Ql3SY+8LW4bqfLWjg,GuLUD9gUGkCXapHhw6stag,,,N,0,0,,,2017-01-24 14:42,2017-01-24 15:40,CLEMENTL,CLEMENTL
496,49428323,751235,10651514,1227199,1,100,N,N,N,CP_Drtn,TT_Task,DT_FixedDUR2,RV_OK,TK_Complete,823A-NT-6A-B8S-1120,Concreting (220m3),,,,0,0,0,1344,8,128,0,0,,2013-11-22 08:00,2013-11-22 18:00,2014-07-11 08:00,2014-07-11 08:00,,2017-01-01 00:00,2017-01-01 00:00,,,2013-11-12 08:00,2013-11-12 18:00,,,,,PT_Normal,,,,,WAcF/59mT7yf1TgJ0EoulQ,X9EB8l0EoEKN+vZNFRl6mg,,,N,0,0,,,2017-01-24 14:42,2017-01-24 15:40,CLEMENTL,CLEMENTL
497,49428324,751235,10651514,1227199,1,100,N,N,N,CP_Drtn,TT_Task,DT_FixedDUR2,RV_OK,TK_Complete,823A-NT-6A-B8S-1150,Removal external and internal formwork for wall,,,,0,1152,0,1152,16,128,128,0,,2013-11-23 08:00,2013-11-25 18:00,2014-07-11 08:00,2014-07-11 08:00,,2017-01-01 00:00,2017-01-01 00:00,,,2013-11-13 08:00,2013-11-14 18:00,,,,,PT_Normal,,,,,K/aYHC9pQMWDakbnZ9PMeg,ox6/kebaVU2u12HzypElrw,,,N,1152,128,,,2017-01-24 14:42,2017-01-24 15:40,CLEMENTL,CLEMENTL
498,49428325,751235,10651514,1227199,1,100,N,N,N,CP_Drtn,TT_Task,DT_FixedDUR2,RV_OK,TK_Complete,823A-NT-6A-B8S-1130,Curing,,,,0,1280,0,1280,80,0,0,0,,2013-11-23 08:00,2013-12-05 18:00,2017-06-12 18:00,2017-06-12 18:00,,2017-01-01 00:00,2017-01-01 00:00,,,2013-11-13 08:00,2013-11-23 18:00,,,,,PT_Normal,,,,,OSjMeF21RWiey+O80dfzNQ,lCUsBdqEqUCKfcYyQbeWMQ,,,N,1280,0,,,2017-01-24 14:42,2017-01-24 15:36,CLEMENTL,CLEMENTL
499,49428326,751235,10651514,1227199,1,100,N,N,N,CP_Drtn,TT_Task,DT_FixedDUR2,RV_OK,TK_Complete,823A-NT-6A-B8S-1160,Removal internal falsework and formwork for roof,,,,0,960,0,960,8,64,64,0,,2013-12-06 08:00,2013-12-06 18:00,2017-06-12 18:00,2017-06-12 18:00,,2017-01-01 00:00,2017-01-01 00:00,,,2013-12-05 08:00,2013-12-05 18:00,,,,,PT_Normal,,,,,TPyq6+6BQfK+POYiRpcOZg,joT3zgMAg0mIp4ap1j+sHg,,,N,960,64,,,2017-01-24 14:42,2017-01-24 15:36,CLEMENTL,CLEMENTL
500,49428327,751235,10651514,1239098,1,100,N,N,N,CP_Drtn,TT_Task,DT_FixedDUR2,RV_OK,TK_Complete,823A-NT-6A-B8S-1070,Preparation of construction joint for base slab,268571,,,0,0,0,128,8,0,0,0,,2013-10-19 08:00,2013-10-19 18:00,2014-07-11 08:00,2014-07-11 08:00,,2017-01-01 00:00,2017-01-01 00:00,,,2013-11-28 08:00,2013-11-28 18:00,,,,,PT_Normal,,,,,5EpSCdtPQVGl6osuFyO1eA,K64Gkni/ZEirX6zuJSFWGQ,,,N,0,0,,,2017-01-24 14:42,2017-01-24 15:40,CLEMENTL,CLEMENTL
501,49428328,751235,10651514,1239098,1,100,N,N,N,CP_Drtn,TT_Task,DT_FixedDUR2,RV_OK,TK_Complete,823A-NT-6A-B8S-1140,Preparation of construction joint for wall and roof,268571,,,0,0,0,128,8,0,0,0,,2013-11-23 08:00,2013-11-23 18:00,2014-07-11 08:00,2014-07-11 08:00,,2017-01-01 00:00,2017-01-01 00:00,,,2013-11-13 08:00,2013-11-13 18:00,,,,,PT_Normal,,,,,Z3nHy3t1QcWQDq/eN4uLtQ,rW+r26G/WEOU3Qis6ceKtA,,,N,0,0,,,2017-01-24 14:42,2017-01-24 15:40,CLEMENTL,CLEMENTL
502,49428329,751235,10651514,1227199,1,100,N,N,N,CP_Drtn,TT_Task,DT_FixedDUR2,RV_OK,TK_Complete,823A-NT-6A-B8S-1080,Removal of formwork,,,,0,0,0,576,8,64,0,0,,2013-10-19 08:00,2013-10-19 18:00,2014-07-11 08:00,2014-07-11 08:00,,2017-01-01 00:00,2017-01-01 00:00,,,2013-11-28 08:00,2013-11-28 18:00,,,,,PT_Normal,,,,,MJY+Y3BaRQOZyY6kL9UU9g,qgWWVpHSFECjSgJRzs1v2w,,,N,0,0,,,2017-01-24 14:42,2017-01-24 15:40,CLEMENTL,CLEMENTL
503,49428330,751235,10651514,1227199,1,100,N,N,N,CP_Drtn,TT_Task,DT_FixedDUR2,RV_OK,TK_Complete,823A-NT-6A-B8S-1170,Side walkway and cable bracket (38m3),,,,0,0,0,5760,40,640,0,0,,2014-05-21 08:00,2014-05-26 18:00,2017-06-12 18:00,2017-06-12 18:00,,2017-01-01 00:00,2017-01-01 00:00,,,2014-05-21 08:00,2014-05-26 18:00,,,,,PT_Normal,,,,,vIMaCYSIRZuW74K9FTXyVg,Ah2LhVddT0GXbFrf22LAsQ,,,N,0,0,,,2017-01-24 14:42,2017-01-24 15:36,CLEMENTL,CLEMENTL
504,49428331,751235,10651516,1239098,1,100,N,N,N,CP_Drtn,TT_Task,DT_FixedDUR2,RV_OK,TK_Complete,823A-NT-6A-B10C-1010,Placing of waterproof member T-lock & testing,268571,,,0,0,0,128,8,0,0,0,,2013-10-03 08:00,2013-10-03 18:00,2014-07-11 08:00,2014-07-11 08:00,,2017-01-01 00:00,2017-01-01 00:00,,,2013-12-06 08:00,2013-12-06 18:00,,,,,PT_Normal,,,,,SOpRSXAWR6aFwtj8xpm9fA,5/eWlA9L70Csttn5ZVS0xQ,,,N,0,0,,,2017-01-24 14:42,2017-01-24 15:40,CLEMENTL,CLEMENTL
505,49428332,751235,10651516,1227199,1,100,N,N,N,CP_Drtn,TT_Task,DT_FixedDUR2,RV_OK,TK_Complete,823A-NT-6A-B10C-1020,Rebar fixing,,,,0,0,0,1664,16,128,0,0,,2013-10-04 08:00,2013-10-05 18:00,2014-07-11 08:00,2014-07-11 08:00,,2017-01-01 00:00,2017-01-01 00:00,,,2013-12-07 08:00,2013-12-09 18:00,,,,,PT_Normal,,,,,AhXinUreTx2XEFCSORDZ6A,/9tLdJx8eEySqjligKyAAA,,,N,0,0,,,2017-01-24 14:42,2017-01-24 15:40,CLEMENTL,CLEMENTL
506,49428333,751235,10651516,1227199,1,100,N,N,N,CP_Drtn,TT_Task,DT_FixedDUR2,RV_OK,TK_Complete,823A-NT-6A-B10C-1030,Erect external formwork,,,,0,0,0,832,8,64,0,0,,2013-10-07 08:00,2013-10-09 18:00,2014-07-11 08:00,2014-07-11 08:00,,2017-01-01 00:00,2017-01-01 00:00,,,2013-12-10 08:00,2013-12-10 18:00,,,,,PT_Normal,,,,,82t+b1VzRAiU//3SR4Vp9g,9XnK0Z8zNEKJf6NRmR6Ozg,,,N,0,0,,,2017-01-24 14:42,2017-01-24 15:40,CLEMENTL,CLEMENTL
507,49428334,751235,10651516,1227199,1,100,N,N,N,CP_Drtn,TT_Task,DT_FixedDUR2,RV_OK,TK_Complete,823A-NT-6A-B10C-1040,Concreting (240m3),,,,0,0,0,1344,8,128,0,0,,2013-10-10 08:00,2013-10-10 18:00,2014-07-11 08:00,2014-07-11 08:00,,2017-01-01 00:00,2017-01-01 00:00,,,2013-12-11 08:00,2013-12-11 18:00,,,,,PT_Normal,,,,,btktQcRLQj6nJCmJeJ65LA,LJtrlmfh1U+9mQQtmYsjlw,,,N,0,0,,,2017-01-24 14:42,2017-01-24 15:40,CLEMENTL,CLEMENTL
508,49428335,751235,10651516,1227199,1,100,N,N,N,CP_Drtn,TT_Task,DT_FixedDUR2,RV_OK,TK_Complete,823A-NT-6A-B10C-1050,Curing,,,,0,0,0,896,56,0,0,0,,2013-10-11 08:00,2013-10-17 18:00,2014-07-11 08:00,2014-07-11 08:00,,2017-01-01 00:00,2017-01-01 00:00,,,2013-12-12 08:00,2013-12-19 18:00,,,,,PT_Normal,,,,,O/q9HfNKSDa+7x7jnTwsqQ,ThE0gdvU7UCWU62GWokjMw,,,N,0,0,,,2017-01-24 14:42,2017-01-24 15:40,CLEMENTL,CLEMENTL
509,49428336,751235,10651516,1227199,1,100,N,N,N,CP_Drtn,TT_Task,DT_FixedDUR2,RV_OK,TK_Complete,823A-NT-6A-B10C-1070,Removal of formwork,,,,0,0,0,576,8,64,0,0,,2013-10-11 08:00,2013-10-12 18:00,2014-07-11 08:00,2014-07-11 08:00,,2017-01-01 00:00,2017-01-01 00:00,,,2013-12-12 08:00,2013-12-12 18:00,,,,,PT_Normal,,,,,pq0wUtBjRKu9ZJZhm4d+gg,3XYhDCvC6UOMZjc3CCKsiw,,,N,0,0,,,2017-01-24 14:42,2017-01-24 15:40,CLEMENTL,CLEMENTL
510,49428337,751235,10651516,1239098,1,100,N,N,N,CP_Drtn,TT_Task,DT_FixedDUR2,RV_OK,TK_Complete,823A-NT-6A-B10C-1060,Preparation of construction joint for base slab,268571,,,0,0,0,128,8,0,0,0,,2013-10-11 08:00,2013-10-12 18:00,2014-07-11 08:00,2014-07-11 08:00,,2017-01-01 00:00,2017-01-01 00:00,,,2013-12-12 08:00,2013-12-12 18:00,,,,,PT_Normal,,,,,dDfWsENwSVa3J3fjnzbbSQ,Pf1zXoY+nUa8SdaPJ04JQg,,,N,0,0,,,2017-01-24 14:42,2017-01-24 15:40,CLEMENTL,CLEMENTL
511,49428338,751235,10651517,1227199,1,100,N,N,N,CP_Drtn,TT_Task,DT_FixedDUR2,RV_OK,TK_Complete,823A-NT-6A-B10S-1170,Side walkway and cable bracket (38m3),,,,0,0,0,7360,40,640,0,0,,2014-05-09 08:00,2014-05-14 18:00,2017-06-12 18:00,2017-06-12 18:00,,2017-01-01 00:00,2017-01-01 00:00,,,2014-05-09 08:00,2014-05-14 18:00,,,,,PT_Normal,,,,,jDUnCMawS6KAomvS44jLzQ,viNSRRFSv0GFW0ZKp/hC5g,,,N,0,0,,,2017-01-24 14:42,2017-01-24 15:36,CLEMENTL,CLEMENTL
512,49428339,751235,10651517,1239098,1,100,N,N,N,CP_Drtn,TT_Task,DT_FixedDUR2,RV_OK,TK_Complete,823A-NT-6A-B10S-1010,Placing of waterproof member T-lock & testing,268571,,,0,0,0,128,8,0,0,0,,2013-10-03 08:00,2013-10-03 18:00,2014-07-11 08:00,2014-07-11 08:00,,2017-01-01 00:00,2017-01-01 00:00,,,2013-12-27 08:00,2013-12-27 18:00,,,,,PT_Normal,,,,,Y8uq5JTTRyufCKbNt5yY3g,0XMMqQtqfk6HbKCQs9tu7g,,,N,0,0,,,2017-01-24 14:42,2017-01-24 15:40,CLEMENTL,CLEMENTL
513,49428340,751235,10651517,1239098,1,100,N,N,N,CP_Drtn,TT_Task,DT_FixedDUR2,RV_OK,TK_Complete,823A-NT-6A-B10S-1020,Erect external formwork,,,,0,0,0,832,8,64,0,0,,2013-10-04 08:00,2013-10-04 18:00,2014-07-11 08:00,2014-07-11 08:00,,2017-01-01 00:00,2017-01-01 00:00,,,2013-12-28 08:00,2013-12-28 18:00,,,,,PT_Normal,,,,,5TC5MNz1TqmR+7MMPTEh2g,Df/Q1XaGukqIohOLyXavLw,,,N,0,0,,,2017-01-24 14:42,2017-01-24 15:40,CLEMENTL,CLEMENTL
514,49428341,751235,10651517,1227199,1,100,N,N,N,CP_Drtn,TT_Task,DT_FixedDUR2,RV_OK,TK_Complete,823A-NT-6A-B10S-1030,Rebar fixing,,,,0,0,0,1664,16,128,0,0,,2013-10-05 08:00,2013-10-07 18:00,2014-07-11 08:00,2014-07-11 08:00,,2017-01-01 00:00,2017-01-01 00:00,,,2013-12-30 08:00,2013-12-31 18:00,,,,,PT_Normal,,,,,fvqyit3yTkKZs52VYLGacw,MIy1rFZ9306hNyR2oHMZkA,,,N,0,0,,,2017-01-24 14:42,2017-01-24 15:40,CLEMENTL,CLEMENTL
515,49428342,751235,10651517,1227199,1,100,N,N,N,CP_Drtn,TT_Task,DT_FixedDUR2,RV_OK,TK_Complete,823A-NT-6A-B10S-1040,Erect internal kicker formwork,,,,0,0,0,1664,16,128,0,0,,2013-10-08 08:00,2013-10-09 18:00,2014-07-11 08:00,2014-07-11 08:00,,2017-01-01 00:00,2017-01-01 00:00,,,2014-01-02 08:00,2014-01-03 18:00,,,,,PT_Normal,,,,,LJS+DicXQNmmNIPGVe2yzw,Kg196Hqj/k2cK5GkIsjU+Q,,,N,0,0,,,2017-01-24 14:42,2017-01-24 15:40,CLEMENTL,CLEMENTL
516,49428343,751235,10651517,1227199,1,100,N,N,N,CP_Drtn,TT_Task,DT_FixedDUR2,RV_OK,TK_Complete,823A-NT-6A-B10S-1050,Concreting (330m3),,,,0,0,0,1344,8,128,0,0,,2013-10-10 08:00,2013-10-10 18:00,2014-07-11 08:00,2014-07-11 08:00,,2017-01-01 00:00,2017-01-01 00:00,,,2014-01-04 08:00,2014-01-04 18:00,,,,,PT_Normal,,,,,tFRlOar7RCq6ksN7WlILJg,/Dat2lkpUkejegdFufJnAw,,,N,0,0,,,2017-01-24 14:42,2017-01-24 15:40,CLEMENTL,CLEMENTL
517,49428344,751235,10651517,1227199,1,100,N,N,N,CP_Drtn,TT_Task,DT_FixedDUR2,RV_OK,TK_Complete,823A-NT-6A-B10S-1060,Curing,,,,0,0,0,896,56,0,0,0,,2013-10-11 08:00,2013-10-17 18:00,2014-07-11 08:00,2014-07-11 08:00,,2017-01-01 00:00,2017-01-01 00:00,,,2014-01-06 08:00,2014-01-13 18:00,,,,,PT_Normal,,,,,7HGQVP9qTtqAL4Rm0L1C5A,RbaDI6C/0k2uz63sn+sowA,,,N,0,0,,,2017-01-24 14:42,2017-01-24 15:40,CLEMENTL,CLEMENTL
518,49428345,751235,10651517,1227199,1,100,N,N,N,CP_Drtn,TT_Task,DT_FixedDUR2,RV_OK,TK_Complete,823A-NT-6A-B10S-1090,Erect internal formwork & Falsework,,,,0,0,0,4864,32,256,0,0,,2013-11-15 08:00,2013-11-19 18:00,2014-07-11 08:00,2014-07-11 08:00,,2017-01-01 00:00,2017-01-01 00:00,,,2013-11-15 08:00,2013-11-19 18:00,,,,,PT_Normal,,,,,mIUSOKBNTFOwaB/+hXG0Jw,VI4qC/0kQkOafgxG7MJsVg,,,N,0,0,,,2017-01-24 14:42,2017-01-24 15:40,CLEMENTL,CLEMENTL
519,49428346,751235,10651517,1227199,1,100,N,N,N,CP_Drtn,TT_Task,DT_FixedDUR2,RV_OK,TK_Complete,823A-NT-6A-B10S-1100,Rebar fixing,,,,0,1728,0,1728,24,192,192,0,,2013-11-20 08:00,2013-12-02 18:00,2014-07-11 08:00,2014-07-11 08:00,,2017-01-01 00:00,2017-01-01 00:00,,,2013-11-20 08:00,2013-11-22 18:00,,,,,PT_Normal,,,,,j6uexDOuRqmQEONYqei3EA,qJ4ue6oxLEynwzJRgMoAbw,,,N,1728,192,,,2017-01-24 14:42,2017-01-24 15:40,CLEMENTL,CLEMENTL
520,49428347,751235,10651517,1227199,1,100,N,N,N,CP_Drtn,TT_Task,DT_FixedDUR2,RV_OK,TK_Complete,823A-NT-6A-B10S-1110,Erect external formwork,,,,0,0,0,1664,16,128,0,0,,2013-12-03 08:00,2013-12-04 18:00,2014-07-11 08:00,2014-07-11 08:00,,2017-01-01 00:00,2017-01-01 00:00,,,2013-12-03 08:00,2013-12-04 18:00,,,,,PT_Normal,,,,,8gmMLT5QQxS1L5SAu3CFBQ,WUkLI6U14kaunFA3UNCd4Q,,,N,0,0,,,2017-01-24 14:42,2017-01-24 15:40,CLEMENTL,CLEMENTL
521,49428348,751235,10651517,1227199,1,100,N,N,N,CP_Drtn,TT_Task,DT_FixedDUR2,RV_OK,TK_Complete,823A-NT-6A-B10S-1120,Concreting (330m3),,,,0,0,0,1344,8,128,0,0,,2013-12-05 08:00,2013-12-05 18:00,2014-07-11 08:00,2014-07-11 08:00,,2017-01-01 00:00,2017-01-01 00:00,,,2013-12-05 08:00,2013-12-05 18:00,,,,,PT_Normal,,,,,KTvUJN3PQ0yVBa1DR5zTqQ,5hbTCg0J/UiLz5SJtN26sQ,,,N,0,0,,,2017-01-24 14:42,2017-01-24 15:40,CLEMENTL,CLEMENTL
522,49428349,751235,10651517,1227199,1,100,N,N,N,CP_Drtn,TT_Task,DT_FixedDUR2,RV_OK,TK_Complete,823A-NT-6A-B10S-1150,Removal external and internal formwork for wall,,,,0,0,0,1152,16,128,0,0,,2013-12-06 08:00,2013-12-07 18:00,2014-07-11 08:00,2014-07-11 08:00,,2017-01-01 00:00,2017-01-01 00:00,,,2013-12-06 08:00,2013-12-07 18:00,,,,,PT_Normal,,,,,Lj44m25ATAC3J0KQ9aZUjQ,06kk4W/Y40aeFVP4J3trfA,,,N,0,0,,,2017-01-24 14:42,2017-01-24 15:40,CLEMENTL,CLEMENTL
523,49428350,751235,10651517,1227199,1,100,N,N,N,CP_Drtn,TT_Task,DT_FixedDUR2,RV_OK,TK_Complete,823A-NT-6A-B10S-1130,Curing,,,,0,0,0,1280,80,0,0,0,,2013-12-06 08:00,2013-12-17 18:00,2017-06-12 18:00,2017-06-12 18:00,,2017-01-01 00:00,2017-01-01 00:00,,,2013-12-06 08:00,2013-12-17 18:00,,,,,PT_Normal,,,,,HhMfCropSY+LgorXSBN+ug,nHsGIX7onU6/bLARCwzthQ,,,N,0,0,,,2017-01-24 14:42,2017-01-24 15:36,CLEMENTL,CLEMENTL
524,49428351,751235,10651517,1227199,1,100,N,N,N,CP_Drtn,TT_Task,DT_FixedDUR2,RV_OK,TK_Complete,823A-NT-6A-B10S-1160,Removal internal falsework and formwork for roof,,,,0,0,0,1216,8,64,0,0,,2013-12-18 08:00,2013-12-18 18:00,2017-06-12 18:00,2017-06-12 18:00,,2017-01-01 00:00,2017-01-01 00:00,,,2013-12-18 08:00,2013-12-18 18:00,,,,,PT_Normal,,,,,6CBi3Ny7R0aZqL6qiQmTMg,/FVCo292R0qmrXCnTnqDPA,,,N,0,0,,,2017-01-24 14:42,2017-01-24 15:36,CLEMENTL,CLEMENTL
525,49428352,751235,10651517,1239098,1,100,N,N,N,CP_Drtn,TT_Task,DT_FixedDUR2,RV_OK,TK_Complete,823A-NT-6A-B10S-1070,Preparation of construction joint for base slab,268571,,,0,0,0,128,8,0,0,0,,2013-10-11 08:00,2013-10-11 18:00,2014-07-11 08:00,2014-07-11 08:00,,2017-01-01 00:00,2017-01-01 00:00,,,2014-01-06 08:00,2014-01-06 18:00,,,,,PT_Normal,,,,,S7QUGA/WSHOlZ21Tc0sytw,iycQrXmKv0Oof7jWk3Rh4A,,,N,0,0,,,2017-01-24 14:42,2017-01-24 15:40,CLEMENTL,CLEMENTL
526,49428353,751235,10651517,1239098,1,100,N,N,N,CP_Drtn,TT_Task,DT_FixedDUR2,RV_OK,TK_Complete,823A-NT-6A-B10S-1140,Preparation of construction joint for wall and roof,268571,,,0,0,0,128,8,0,0,0,,2013-12-06 08:00,2013-12-06 18:00,2014-07-11 08:00,2014-07-11 08:00,,2017-01-01 00:00,2017-01-01 00:00,,,2013-12-06 08:00,2013-12-06 18:00,,,,,PT_Normal,,,,,47lJivvvRkK+fTRt1h/QKg,mALXerfKg0Oxt2m+xey/HQ,,,N,0,0,,,2017-01-24 14:42,2017-01-24 15:40,CLEMENTL,CLEMENTL
527,49428354,751235,10651517,1227199,1,100,N,N,N,CP_Drtn,TT_Task,DT_FixedDUR2,RV_OK,TK_Complete,823A-NT-6A-B10S-1080,Removal of formwork,,,,0,0,0,576,8,64,0,0,,2013-10-12 08:00,2013-10-12 18:00,2014-07-11 08:00,2014-07-11 08:00,,2017-01-01 00:00,2017-01-01 00:00,,,2014-01-06 08:00,2014-01-06 18:00,,,,,PT_Normal,,,,,OpQpFjstR2eSLEOR/lrylw,0hMqlArqbEqi/VI1XV/CGQ,,,N,0,0,,,2017-01-24 14:42,2017-01-24 15:40,CLEMENTL,CLEMENTL
528,49428355,751235,10651518,1227199,1,100,N,N,N,CP_Drtn,TT_Task,DT_FixedDUR2,RV_OK,TK_Complete,823A-NT-6A-B10N-1090,Erect internal formwork & Falsework,,,,0,0,0,4864,32,256,0,0,,2013-11-18 08:00,2013-11-22 18:00,2017-06-12 18:00,2017-06-12 18:00,,2017-01-01 00:00,2017-01-01 00:00,,,2013-12-13 08:00,2013-12-17 18:00,,,,,PT_Normal,,,,,2GrI2Vl4SvKZ4JfkCg5e8Q,zQz0ZEYBWUCXATpgdyekfw,,,N,0,0,,,2017-01-24 14:42,2017-01-24 15:36,CLEMENTL,CLEMENTL
529,49428356,751235,10651518,1227199,1,100,N,N,N,CP_Drtn,TT_Task,DT_FixedDUR2,RV_OK,TK_Complete,823A-NT-6A-B10N-1100,Rebar fixing,,,,0,0,0,2496,24,192,0,0,,2013-11-23 08:00,2013-11-26 18:00,2017-06-12 18:00,2017-06-12 18:00,,2017-01-01 00:00,2017-01-01 00:00,,,2013-12-18 08:00,2013-12-20 18:00,,,,,PT_Normal,,,,,niBXi2p6Qy6kSG/1M9tB1g,lXTPGVNSMEStsDkBgV1MKg,,,N,0,0,,,2017-01-24 14:42,2017-01-24 15:36,CLEMENTL,CLEMENTL
530,49428357,751235,10651518,1227199,1,100,N,N,N,CP_Drtn,TT_Task,DT_FixedDUR2,RV_OK,TK_Complete,823A-NT-6A-B10N-1110,Erect external formwork,,,,0,0,0,1664,16,128,0,0,,2013-11-27 08:00,2013-11-28 18:00,2017-06-12 18:00,2017-06-12 18:00,,2017-01-01 00:00,2017-01-01 00:00,,,2013-12-21 08:00,2013-12-23 18:00,,,,,PT_Normal,,,,,Q41QFRZ0Qkab8do0IbelFA,vPuxhn06ZU2iaM3wa2md1Q,,,N,0,0,,,2017-01-24 14:42,2017-01-24 15:36,CLEMENTL,CLEMENTL
531,49428358,751235,10651518,1227199,1,100,N,N,N,CP_Drtn,TT_Task,DT_FixedDUR2,RV_OK,TK_Complete,823A-NT-6A-B10N-1150,Removal external and internal formwork for wall,,,,0,1152,0,1152,16,128,128,0,,2013-11-30 08:00,2013-12-02 18:00,2017-06-12 18:00,2017-06-12 18:00,,2017-01-01 00:00,2017-01-01 00:00,,,2013-12-27 08:00,2013-12-28 18:00,,,,,PT_Normal,,,,,WU3ALcNWRKuV2cKwTAbaOg,4SE+JtCRaUyLwNbIrpyPwQ,,,N,1152,128,,,2017-01-24 14:42,2017-01-24 15:36,CLEMENTL,CLEMENTL
532,49428359,751235,10651518,1227199,1,100,N,N,N,CP_Drtn,TT_Task,DT_FixedDUR2,RV_OK,TK_Complete,823A-NT-6A-B10N-1130,Curing,,,,0,1280,0,1280,80,0,0,0,,2013-11-30 08:00,2013-12-12 18:00,2017-06-12 18:00,2017-06-12 18:00,,2017-01-01 00:00,2017-01-01 00:00,,,2013-12-27 08:00,2014-01-08 18:00,,,,,PT_Normal,,,,,UoRi9ODVRpClF26SksLNsw,r5zEKhcZBkKSDyKURspUuA,,,N,1280,0,,,2017-01-24 14:42,2017-01-24 15:36,CLEMENTL,CLEMENTL
533,49428360,751235,10651518,1227199,1,100,N,N,N,CP_Drtn,TT_Task,DT_FixedDUR2,RV_OK,TK_Complete,823A-NT-6A-B10N-1160,Removal internal falsework and formwork for roof,,,,0,0,0,1216,8,64,0,0,,2013-12-13 08:00,2013-12-13 18:00,2017-06-12 18:00,2017-06-12 18:00,,2017-01-01 00:00,2017-01-01 00:00,,,2013-12-28 08:00,2013-12-28 18:00,,,,,PT_Normal,,,,,Ta+wUH1mScmkZ+AgBT0BbQ,DnDk++iJlkyyXjI+MhVcsA,,,N,0,0,,,2017-01-24 14:42,2017-01-24 15:36,CLEMENTL,CLEMENTL
534,49428361,751235,10651518,1239098,1,100,N,N,N,CP_Drtn,TT_Task,DT_FixedDUR2,RV_OK,TK_Complete,823A-NT-6A-B10N-1070,Preparation of construction joint for base slab,268571,,,0,0,0,128,8,0,0,0,,2013-10-11 08:00,2013-10-11 18:00,2014-07-11 08:00,2014-07-11 08:00,,2017-01-01 00:00,2017-01-01 00:00,,,2013-12-07 08:00,2013-12-07 18:00,,,,,PT_Normal,,,,,jeqYWXiYSzyEVJaZYW2f0g,aBKZT4tIAUmypK23bgwEJw,,,N,0,0,,,2017-01-24 14:42,2017-01-24 15:40,CLEMENTL,CLEMENTL
535,49428362,751235,10651518,1239098,1,100,N,N,N,CP_Drtn,TT_Task,DT_FixedDUR2,RV_OK,TK_Complete,823A-NT-6A-B10N-1140,Preparation of construction joint for wall and roof,268571,,,0,0,0,128,8,0,0,0,,2013-11-30 08:00,2013-11-30 18:00,2017-06-12 18:00,2017-06-12 18:00,,2017-01-01 00:00,2017-01-01 00:00,,,2013-12-27 08:00,2013-12-27 18:00,,,,,PT_Normal,,,,,FPbx5NIJSxG7dZb7OAx6Gw,ZvGcbhgeQkKrp5Rd8b0o6A,,,N,0,0,,,2017-01-24 14:42,2017-01-24 15:36,CLEMENTL,CLEMENTL
536,49428363,751235,10651518,1227199,1,100,N,N,N,CP_Drtn,TT_Task,DT_FixedDUR2,RV_OK,TK_Complete,823A-NT-6A-B10N-1120,Concreting (240m3),,,,0,0,0,1344,8,128,0,0,,2013-11-29 08:00,2013-11-29 18:00,2017-06-12 18:00,2017-06-12 18:00,,2017-01-01 00:00,2017-01-01 00:00,,,2013-12-24 08:00,2013-12-24 18:00,,,,,PT_Normal,,,,,RdW/d+MESdykYHLKWU0klw,/WVtwmBlHEyKVkmwOBcfSw,,,N,0,0,,,2017-01-24 14:42,2017-01-24 15:36,CLEMENTL,CLEMENTL
537,49428364,751235,10651518,1227199,1,100,N,N,N,CP_Drtn,TT_Task,DT_FixedDUR2,RV_OK,TK_Complete,823A-NT-6A-B10N-1170,Side walkway and cable bracket (38m3),,,,0,0,0,7360,40,640,0,0,,2015-03-16 08:00,2015-03-20 18:00,2017-06-12 18:00,2017-06-12 18:00,,2017-01-01 00:00,2017-01-01 00:00,,,2015-03-02 08:00,2015-03-06 18:00,,,,,PT_Normal,,,,,YP9P3SjjQwWDET7mTrYjYQ,NPMcE+Opyk++8fLBZC0aJg,,,N,0,0,,,2017-01-24 14:42,2017-01-24 15:36,CLEMENTL,CLEMENTL
538,49428365,751235,10651518,1239098,1,100,N,N,N,CP_Drtn,TT_Task,DT_FixedDUR2,RV_OK,TK_Complete,823A-NT-6A-B10N-1010,Placing of waterproof member T-lock & testing,268571,,,0,0,0,128,8,0,0,0,,2013-10-03 08:00,2013-10-03 18:00,2014-07-11 08:00,2014-07-11 08:00,,2017-01-01 00:00,2017-01-01 00:00,,,2013-11-29 08:00,2013-11-29 18:00,,,,,PT_Normal,,,,,Ix5ufiVLQP6sT6i6d/Ic4g,UadqSyspz0umUd0nvHSxFg,,,N,0,0,,,2017-01-24 14:42,2017-01-24 15:40,CLEMENTL,CLEMENTL
539,49428366,751235,10651518,1239098,1,100,N,N,N,CP_Drtn,TT_Task,DT_FixedDUR2,RV_OK,TK_Complete,823A-NT-6A-B10N-1020,Erect external formwork,,,,0,0,0,832,8,64,0,0,,2013-10-04 08:00,2013-10-05 18:00,2014-07-11 08:00,2014-07-11 08:00,,2017-01-01 00:00,2017-01-01 00:00,,,2013-11-30 08:00,2013-11-30 18:00,,,,,PT_Normal,,,,,MQPMiawATJ68eoGFNM4zTA,80A31KkK4Ei05l4LpyDaQQ,,,N,0,0,,,2017-01-24 14:42,2017-01-24 15:40,CLEMENTL,CLEMENTL
540,49428367,751235,10651518,1227199,1,100,N,N,N,CP_Drtn,TT_Task,DT_FixedDUR2,RV_OK,TK_Complete,823A-NT-6A-B10N-1030,Rebar fixing,,,,0,0,0,1664,16,128,0,0,,2013-10-05 08:00,2013-10-07 18:00,2014-07-11 08:00,2014-07-11 08:00,,2017-01-01 00:00,2017-01-01 00:00,,,2013-12-02 08:00,2013-12-03 18:00,,,,,PT_Normal,,,,,DjRdbJMWTdeynalFUf4sRA,ILJ75y8toUujW1EyIwAKXw,,,N,0,0,,,2017-01-24 14:42,2017-01-24 15:40,CLEMENTL,CLEMENTL
541,49428368,751235,10651518,1227199,1,100,N,N,N,CP_Drtn,TT_Task,DT_FixedDUR2,RV_OK,TK_Complete,823A-NT-6A-B10N-1040,Erect internal kicker formwork,,,,0,0,0,1664,16,128,0,0,,2013-10-08 08:00,2013-10-09 18:00,2014-07-11 08:00,2014-07-11 08:00,,2017-01-01 00:00,2017-01-01 00:00,,,2013-12-04 08:00,2013-12-05 18:00,,,,,PT_Normal,,,,,o66uOqQhQj2mJ8BVHD5gCg,RzbGrNKwcEuuwNHTqT4ntA,,,N,0,0,,,2017-01-24 14:42,2017-01-24 15:40,CLEMENTL,CLEMENTL
542,49428369,751235,10651518,1227199,1,100,N,N,N,CP_Drtn,TT_Task,DT_FixedDUR2,RV_OK,TK_Complete,823A-NT-6A-B10N-1050,Concreting (240m3),,,,0,0,0,1344,8,128,0,0,,2013-10-10 08:00,2013-10-10 18:00,2014-07-11 08:00,2014-07-11 08:00,,2017-01-01 00:00,2017-01-01 00:00,,,2013-12-06 08:00,2013-12-06 18:00,,,,,PT_Normal,,,,,7Fq8IWtlS6SATdK27qw20A,anilrbUpSkysdi/p3A+gAw,,,N,0,0,,,2017-01-24 14:42,2017-01-24 15:40,CLEMENTL,CLEMENTL
543,49428370,751235,10651518,1227199,1,100,N,N,N,CP_Drtn,TT_Task,DT_FixedDUR2,RV_OK,TK_Complete,823A-NT-6A-B10N-1060,Curing,,,,0,0,0,896,56,0,0,0,,2013-10-11 08:00,2013-10-17 18:00,2014-07-11 08:00,2014-07-11 08:00,,2017-01-01 00:00,2017-01-01 00:00,,,2013-12-07 08:00,2013-12-14 18:00,,,,,PT_Normal,,,,,7W0uRRN+RzSipsncxR2tBg,a1NzysaQFkufAM7UQNmXOg,,,N,0,0,,,2017-01-24 14:42,2017-01-24 15:40,CLEMENTL,CLEMENTL
544,49428371,751235,10651518,1227199,1,100,N,N,N,CP_Drtn,TT_Task,DT_FixedDUR2,RV_OK,TK_Complete,823A-NT-6A-B10N-1080,Removal of formwork,,,,0,0,0,576,8,64,0,0,,2013-10-12 08:00,2013-10-12 18:00,2014-07-11 08:00,2014-07-11 08:00,,2017-01-01 00:00,2017-01-01 00:00,,,2013-11-29 08:00,2013-11-29 18:00,,,,,PT_Normal,,,,,/J651L2dRSarnNGoziPLfw,7NSKhfJ8c0uE2Sq4yjKN3g,,,N,0,0,,,2017-01-24 14:42,2017-01-24 15:40,CLEMENTL,CLEMENTL
545,49428372,751235,10651519,1227199,1,100,N,N,N,CP_Drtn,TT_Task,DT_FixedDUR2,RV_OK,TK_Complete,823A-NT-6A-ELS-1010,"Scheme Design, Mobilization, Site set up & Material delivery and Instrumentations",,,,0,2376,0,2376,464,1080,1080,0,,2012-09-01 08:00,2012-11-10 18:00,2014-07-11 08:00,2014-07-11 08:00,,2017-01-01 00:00,2017-01-01 00:00,,,2012-09-01 08:00,2012-11-10 18:00,,,,,PT_Normal,,,,,Pkn9ooPVQMyOJV/WLfit8g,,,,N,2376,1080,,,2017-01-24 14:42,2017-01-24 15:40,CLEMENTL,CLEMENTL
546,49428373,751235,10651519,1227199,1,100,N,N,N,CP_Drtn,TT_Task,DT_FixedDUR2,RV_OK,TK_Complete,823A-NT-6A-ELS-1020,Downstream pipe pile wall construction (45 nos.) and grout curtain (45 nos.),268572,,,0,36224,0,36224,496,23808,23808,0,,2012-11-12 08:00,2013-01-05 18:00,2014-07-11 08:00,2014-07-11 08:00,,2017-01-01 00:00,2017-01-01 00:00,,,2012-11-12 08:00,2013-01-25 18:00,,,,,PT_Normal,,,,,PPRKLDJ5RVWq5x0lgP9Jsw,,,,N,36224,23808,,,2017-01-24 14:42,2017-01-24 15:40,CLEMENTL,CLEMENTL
547,49428374,751235,10651519,1227199,1,100,N,N,N,CP_Drtn,TT_Task,DT_FixedDUR2,RV_OK,TK_Complete,823A-NT-6A-ELS-1070,"Upstream pipe pile wall construction adjacent to WTSSTR, (17nos.)",268572,,,0,0,0,13824,216,8640,0,0,,2013-01-02 08:00,2013-02-02 18:00,2014-07-11 08:00,2014-07-11 08:00,,2017-01-01 00:00,2017-01-01 00:00,,,2012-12-27 08:00,2013-01-28 18:00,,,,,PT_Normal,,,,,pS7T749xRX2ijptfAtWGsQ,,,,N,0,0,,,2017-01-24 14:42,2017-01-24 15:40,CLEMENTL,CLEMENTL
548,49428375,751235,10651519,1227199,1,100,N,N,N,CP_Drtn,TT_Task,DT_FixedDUR2,RV_OK,TK_Complete,823A-NT-6A-ELS-1080,"Upstream pipe pile wall construction at Kam Tin River, 15m depth, 42nos. 1drill rig)",268572,,,0,0,0,16896,264,10560,0,0,,2013-01-08 08:00,2013-02-02 18:00,2014-07-11 08:00,2014-07-11 08:00,,2017-01-01 00:00,2017-01-01 00:00,,,2013-01-29 08:00,2013-03-11 18:00,,,,,PT_Normal,,,,,NZZwldzrTbG/jueS6JzRFQ,,,,N,0,0,,,2017-01-24 14:42,2017-01-24 15:40,CLEMENTL,CLEMENTL
549,49428376,751235,10651519,1227199,1,100,N,N,N,CP_Drtn,TT_Task,DT_FixedDUR2,RV_OK,TK_Complete,823A-NT-6A-ELS-1030,Curtain Grout for cut slope (120 nos.),268571,,,0,0,0,22400,400,22400,0,0,,2012-12-28 08:00,2013-01-31 18:00,2014-07-11 08:00,2014-07-11 08:00,,2017-01-01 00:00,2017-01-01 00:00,,,2013-07-26 08:00,2013-09-23 18:00,,,,,PT_Normal,,,,,HraLNJS+QMm55w7PGckbKg,,,,N,0,0,,,2017-01-24 14:42,2017-01-24 15:40,CLEMENTL,CLEMENTL
550,49428377,751235,10651519,1227199,1,100,N,N,N,CP_Drtn,TT_Task,DT_FixedDUR2,RV_OK,TK_Complete,823A-NT-6A-ELS-1100,Excavation for rock and blinding layer,,,,0,24960,0,24960,240,23040,23040,0,,2013-06-19 08:00,2013-09-21 18:00,2014-07-11 08:00,2014-07-11 08:00,,2017-01-01 00:00,2017-01-01 00:00,,,2013-08-24 08:00,2013-09-28 18:00,,,,,PT_Normal,,,,,SLkc4sFMQmG2FgueULssYg,,,,N,24960,23040,,,2017-01-24 14:42,2017-01-24 15:40,CLEMENTL,CLEMENTL
551,49428378,751235,10651519,1227199,1,100,N,N,N,CP_Drtn,TT_Task,DT_FixedDUR2,RV_OK,TK_Complete,823A-NT-6A-ELS-1040,Drilling for ground improvement only (if require),,,,0,0,0,0,504,0,0,0,,2013-03-02 08:00,2013-09-18 18:00,2014-07-11 08:00,2014-07-11 08:00,,2017-01-01 00:00,2017-01-01 00:00,,,2012-12-10 08:00,2013-02-27 18:00,,,,,PT_Normal,,,,,5MTe+FiaRr2TnLbz3thw6Q,,,,N,0,0,,,2017-01-24 14:42,2017-01-24 15:40,CLEMENTL,CLEMENTL
552,49428379,751235,10651519,1227199,1,100,N,N,N,CP_Drtn,TT_Task,DT_FixedDUR2,RV_OK,TK_Complete,823A-NT-6A-ELS-1050,If settlement reach the AAA alarm & action level TAM grouting will apply during excavation,,,,0,0,0,0,240,0,0,0,,2013-03-02 08:00,2013-09-18 18:00,2014-07-11 08:00,2014-07-11 08:00,,2017-01-01 00:00,2017-01-01 00:00,,,2013-04-11 08:00,2013-05-16 18:00,,,,,PT_Normal,,,,,ayFAPffxS023IFeMgTQaSw,,,,N,0,0,,,2017-01-24 14:42,2017-01-24 15:40,CLEMENTL,CLEMENTL
553,49428380,751235,10651519,1227199,1,100,N,N,N,CP_Drtn,TT_Task,DT_FixedDUR2,RV_OK,TK_Complete,823A-NT-6A-ELS-1060,Erection of temporary working platform for Up stream and Installation of Instrumentation System,268558,,,0,0,0,1664,104,832,0,0,,2012-12-10 08:00,2012-12-24 18:00,2014-07-11 08:00,2014-07-11 08:00,,2017-01-01 00:00,2017-01-01 00:00,,,2012-12-10 08:00,2012-12-24 18:00,,,,,PT_Normal,,,,,Jcb99f9mQD6z7CgNSEf2PQ,,,,N,0,0,,,2017-01-24 14:42,2017-01-24 15:40,CLEMENTL,CLEMENTL
554,49428381,751235,10651519,1227199,1,100,N,N,N,CP_Drtn,TT_Task,DT_FixedDUR2,RV_OK,TK_Complete,823A-NT-6A-ELS-1090,Excavation and soil nail installation,268580,,,0,96000,0,96000,600,43200,43200,0,,2013-01-15 08:00,2013-09-18 18:00,2014-07-11 08:00,2014-07-11 08:00,,2017-01-01 00:00,2017-01-01 00:00,,,2013-04-02 08:00,2013-07-03 18:00,,,,,PT_Normal,,,,,5KU5EQ6yRX2PPbLuSOuMYQ,,,,N,96000,43200,,,2017-01-24 14:42,2017-01-24 15:40,CLEMENTL,CLEMENTL
555,49428382,751235,10651520,1239098,1,100,N,N,N,CP_Drtn,TT_Task,DT_FixedDUR2,RV_OK,TK_Complete,823A-NT-NCC-RE-1020,Hydroseeding works,,,,0,0,0,0,1008,0,0,0,,2016-11-01 08:00,2016-11-30 18:00,2014-08-09 08:00,2014-08-09 08:00,,2017-01-02 08:00,2017-01-02 08:00,,,2016-11-01 08:00,2017-03-29 18:00,,,,,PT_Normal,,,,,vf8T6gZaRGaNmujNz4jylw,,,,N,0,0,,,2017-01-24 14:42,2017-01-24 14:53,CLEMENTL,CLEMENTL
556,49428383,751235,10651520,1239098,1,25,N,N,N,CP_Drtn,TT_Task,DT_FixedDUR2,RV_OK,TK_Active,823A-NT-NCC-RE-1030,Tree Planting works,,-5696,0,472,0,0,0,624,0,0,0,,2016-09-01 08:00,,2014-08-09 08:00,2014-10-20 18:00,,2017-01-02 08:00,2017-03-10 18:00,2017-01-02 08:00,2017-03-10 18:00,2016-09-01 08:00,2016-12-03 18:00,,2014-08-09 08:00,2014-10-20 18:00,,PT_Normal,,,,,KJGQjvy8QyqfIWBfsfclmA,,,,N,0,0,,,2017-01-24 14:42,2017-01-24 14:53,CLEMENTL,CLEMENTL
557,49428384,751235,10651520,1239098,1,20,N,N,N,CP_Drtn,TT_Task,DT_FixedDUR2,RV_OK,TK_Active,823A-NT-NCC-RE-1040,Woodland Shrub Mix,,-5696,200,416,0,0,0,520,0,0,0,,2016-09-01 08:00,,2014-08-09 08:00,2014-10-11 18:00,,2017-01-02 08:00,2017-03-02 18:00,2017-01-02 08:00,2017-03-02 18:00,2016-09-01 08:00,2016-11-18 18:00,,2014-08-09 08:00,2014-10-11 18:00,,PT_Normal,,,,,NoeTWaDjRjShQAHmZrDcJA,,,,N,0,0,,,2017-01-24 14:42,2017-01-24 15:40,CLEMENTL,CLEMENTL
558,49428385,751235,10651520,1227199,1,10,N,N,N,CP_Drtn,TT_Task,DT_FixedDUR2,RV_OK,TK_Active,823A-NT-NCC-RE-1010,Reinstatement of TOA's,,-5896,0,616,7068.444444,11107.555556,18176,1008,4544,1767.111111,2776.888889,,2016-11-01 08:00,,2014-07-11 08:00,2014-10-11 18:00,,2017-01-02 08:00,2017-03-31 18:00,2017-01-02 08:00,2017-03-31 18:00,2016-11-01 08:00,2017-03-29 18:00,,2014-07-11 08:00,2014-10-11 18:00,,PT_Normal,,,,,MT95PWHcQd25JxuVLo4DYA,,,,N,1875.301587,468.825397,,,2017-01-24 14:42,2017-01-24 15:40,CLEMENTL,CLEMENTL
559,49428386,751235,10651522,1239098,1,100,N,N,N,CP_Drtn,TT_Task,DT_FixedDUR2,RV_OK,TK_Complete,NT-CC6B-BF-B12-1010,Backfilling to 0.5m below the top of C&C Tunnel (+3.46mPD) (2343m3),,,,0,0,0,2160,96,864,0,0,,2013-02-04 08:00,2013-02-21 18:00,2017-06-12 18:00,2017-06-12 18:00,,2017-01-01 00:00,2017-01-01 00:00,,,2013-06-01 08:00,2013-06-15 18:00,,,,,PT_Normal,,,,,WMSg53mWRuuFGzhjYCLyLg,vHoXk3GpW0+nEvE3YLlNjw,,,N,0,0,,,2017-01-24 14:42,2017-01-24 15:36,CLEMENTL,CLEMENTL
560,49428387,751235,10651522,1239098,1,100,N,N,N,CP_Drtn,TT_Task,DT_FixedDUR2,RV_OK,TK_Complete,NT-CC6B-BF-B12-1020,Placing 0.5m thk concrete lateral support (+3.96mPD),,,,0,0,0,56,8,8,0,0,,2013-02-22 08:00,2013-02-23 18:00,2017-06-12 18:00,2017-06-12 18:00,,2017-01-01 00:00,2017-01-01 00:00,,,2013-06-17 08:00,2013-06-17 18:00,,,,,PT_Normal,,,,,CBMrQt8pSmiZCtl/O8Scqg,7+AKnHJAd0qIoYYUgmcUTw,,,N,0,0,,,2017-01-24 14:42,2017-01-24 15:36,CLEMENTL,CLEMENTL
561,49428388,751235,10651522,1239098,1,100,N,N,N,CP_Drtn,TT_Task,DT_FixedDUR2,RV_OK,TK_Complete,NT-CC6B-BF-B12-1030,Removal strut S2,,,,0,0,0,144,32,16,0,0,,2013-02-23 08:00,2013-02-28 18:00,2017-06-12 18:00,2017-06-12 18:00,,2017-01-01 00:00,2017-01-01 00:00,,,2013-06-20 08:00,2013-06-24 18:00,,,,,PT_Normal,,,,,r+1vQhtmRjGHeOdWaHpY/w,7iDbl2Jw60CuBm1MrGemhA,,,N,0,0,,,2017-01-24 14:42,2017-01-24 15:36,CLEMENTL,CLEMENTL
562,49428389,751235,10651523,1239098,1,100,N,N,N,CP_Drtn,TT_Task,DT_FixedDUR2,RV_OK,TK_Complete,823A-NT-6B-ELS-1010,Excavate up to +8.0mPD (775m3),,,,0,352,0,352,24,288,288,0,,2012-09-01 08:00,2012-09-04 18:00,2017-06-12 18:00,2017-06-12 18:00,,2017-01-01 00:00,2017-01-01 00:00,,,2012-09-01 08:00,2012-09-04 18:00,,,,,PT_Normal,,,,,BWHXq66CTlKNVWyb+0EaHw,LpUxfyu1tkOHf+KOqJnJfg,,,N,352,288,,,2017-01-24 14:42,2017-01-24 15:36,CLEMENTL,CLEMENTL
563,49428390,751235,10651523,1239098,1,100,N,N,N,CP_Drtn,TT_Task,DT_FixedDUR2,RV_OK,TK_Complete,823A-NT-6B-ELS-1020,Install Strut S1 +8.5mPD,,,,0,288,0,288,32,160,160,0,,2012-09-05 08:00,2012-09-08 18:00,2017-06-12 18:00,2017-06-12 18:00,,2017-01-01 00:00,2017-01-01 00:00,,,2012-09-05 08:00,2012-09-08 18:00,,,,,PT_Normal,,,,,+YfTcjyjQlqv6xJzzhCVtA,gyQmXBsIgkWoE5/jBl2Q9A,,,N,288,160,,,2017-01-24 14:42,2017-01-24 15:36,CLEMENTL,CLEMENTL
564,49428391,751235,10651523,1239098,1,100,N,N,N,CP_Drtn,TT_Task,DT_FixedDUR2,RV_OK,TK_Complete,823A-NT-6B-ELS-1030,Excavate up to +4.5mPD (2713m3),,,,0,1408,0,1408,112,1152,1152,0,,2012-09-10 08:00,2012-09-25 18:00,2017-06-12 18:00,2017-06-12 18:00,,2017-01-01 00:00,2017-01-01 00:00,,,2012-09-10 08:00,2012-09-25 18:00,,,,,PT_Normal,,,,,E0mkyd+HRfabaYh2XTTwrQ,CbmxAHwcI0aI4kcoBpeQQg,,,N,1408,1152,,,2017-01-24 14:42,2017-01-24 15:36,CLEMENTL,CLEMENTL
565,49428392,751235,10651523,1239098,1,100,N,N,N,CP_Drtn,TT_Task,DT_FixedDUR2,RV_OK,TK_Complete,823A-NT-6B-ELS-1040,Install Strut S2 +5.0mPD,,,,0,288,0,288,32,160,160,0,,2012-09-26 08:00,2012-09-29 18:00,2017-06-12 18:00,2017-06-12 18:00,,2017-01-01 00:00,2017-01-01 00:00,,,2012-09-26 08:00,2012-09-29 18:00,,,,,PT_Normal,,,,,OPweN3wkSo6A/Vvku7O2ow,jFhPUvog7kOJeGmfBkLi4A,,,N,288,160,,,2017-01-24 14:42,2017-01-24 15:36,CLEMENTL,CLEMENTL
566,49428393,751235,10651523,1239098,1,100,N,N,N,CP_Drtn,TT_Task,DT_FixedDUR2,RV_OK,TK_Complete,823A-NT-6B-ELS-1050,Excavate up to +0.5mPD (3100m3),,,,0,1584,0,1584,120,1296,1296,0,,2012-10-03 08:00,2012-10-19 18:00,2017-06-12 18:00,2017-06-12 18:00,,2017-01-01 00:00,2017-01-01 00:00,,,2012-10-03 08:00,2012-10-19 18:00,,,,,PT_Normal,,,,,1pk/aDXMR76wR4TDLk5mxQ,fXTqqpCUFEu/ID4bAtnu6Q,,,N,1584,1296,,,2017-01-24 14:42,2017-01-24 15:36,CLEMENTL,CLEMENTL
567,49428394,751235,10651523,1239098,1,100,N,N,N,CP_Drtn,TT_Task,DT_FixedDUR2,RV_OK,TK_Complete,823A-NT-6B-ELS-1060,Install Strut S3 +1.0mPD,,,,0,288,0,288,32,160,160,0,,2012-10-20 08:00,2012-10-25 18:00,2017-06-12 18:00,2017-06-12 18:00,,2017-01-01 00:00,2017-01-01 00:00,,,2012-10-20 08:00,2012-10-25 18:00,,,,,PT_Normal,,,,,cSokeXjPR+WtMdB0RipWWQ,31f6WJs7wE64NMiNiwjkUg,,,N,288,160,,,2017-01-24 14:42,2017-01-24 15:36,CLEMENTL,CLEMENTL
568,49428395,751235,10651523,1239098,1,100,N,N,N,CP_Drtn,TT_Task,DT_FixedDUR2,RV_OK,TK_Complete,823A-NT-6B-ELS-1070,Excavate up to -3.0mPD (2713m3),,,,0,1408,0,1408,112,1152,1152,0,,2012-10-26 08:00,2012-11-10 18:00,2017-06-12 18:00,2017-06-12 18:00,,2017-01-01 00:00,2017-01-01 00:00,,,2012-10-26 08:00,2012-11-10 18:00,,,,,PT_Normal,,,,,u+R3LKtkSNCswjLLRMeP/Q,WBe+ebk5TkiaAi1F62PwIg,,,N,1408,1152,,,2017-01-24 14:42,2017-01-24 15:36,CLEMENTL,CLEMENTL
569,49428396,751235,10651523,1239098,1,100,N,N,N,CP_Drtn,TT_Task,DT_FixedDUR2,RV_OK,TK_Complete,823A-NT-6B-ELS-1080,Install Strut S4 -2.5mPD,,,,0,288,0,288,32,160,160,0,,2012-11-12 08:00,2012-11-15 18:00,2017-06-12 18:00,2017-06-12 18:00,,2017-01-01 00:00,2017-01-01 00:00,,,2012-11-12 08:00,2012-11-15 18:00,,,,,PT_Normal,,,,,BflcHQ7MRH62oIOlpHFcvw,w8teoy+FtkKP01Gi+x18Yw,,,N,288,160,,,2017-01-24 14:42,2017-01-24 15:36,CLEMENTL,CLEMENTL
570,49428397,751235,10651523,1239098,1,100,N,N,N,CP_Drtn,TT_Task,DT_FixedDUR2,RV_OK,TK_Complete,823A-NT-6B-ELS-1090,Excavate up to -5.5mPD (4952m3),,,,0,2944,0,2944,192,2208,2208,0,,2012-11-16 08:00,2012-12-07 18:00,2017-06-12 18:00,2017-06-12 18:00,,2017-01-01 00:00,2017-01-01 00:00,,,2012-11-16 08:00,2012-12-13 18:00,,,,,PT_Normal,,,,,73bjAi+5T0ylTrfCcGU1wQ,T7GTgjvKykiLTTwhwRwLsQ,,,N,2944,2208,,,2017-01-24 14:42,2017-01-24 15:36,CLEMENTL,CLEMENTL
571,49428398,751235,10651523,1239098,1,100,N,N,N,CP_Drtn,TT_Task,DT_FixedDUR2,RV_OK,TK_Complete,823A-NT-6B-ELS-1100,Placing of blinding layer,,,,0,0,0,40,8,8,0,0,,2012-12-08 08:00,2012-12-08 18:00,2017-06-12 18:00,2017-06-12 18:00,,2017-01-01 00:00,2017-01-01 00:00,,,2013-06-15 08:00,2013-06-15 18:00,,,,,PT_Normal,,,,,LKfUBl77R/+vEg31wy0mxQ,ap17979+yk20hfuKDyJOUA,,,N,0,0,,,2017-01-24 14:42,2017-01-24 15:36,CLEMENTL,CLEMENTL
572,49428399,751235,10651526,1227199,1,100,N,N,N,CP_Drtn,TT_Task,DT_FixedDUR2,RV_OK,TK_Complete,823A-NT-6B-B13B-1020,Erect external formwork for base slab,,,,0,0,0,104,8,8,0,0,,2012-12-11 08:00,2012-12-11 18:00,2017-06-12 18:00,2017-06-12 18:00,,2017-01-01 00:00,2017-01-01 00:00,,,2013-06-03 08:00,2013-06-03 18:00,,,,,PT_Normal,,,,,FCEDLKLCSyCc+NEI65sXxw,zVus4t0C2kuHt7HjZbnq3w,,,N,0,0,,,2017-01-24 14:42,2017-01-24 15:36,CLEMENTL,CLEMENTL
573,49428400,751235,10651526,1227199,1,100,N,N,N,CP_Drtn,TT_Task,DT_FixedDUR2,RV_OK,TK_Complete,823A-NT-6B-B13B-1030,Rebar fixing for base slab,,,,0,0,0,272,16,16,0,0,,2012-12-12 08:00,2012-12-13 18:00,2017-06-12 18:00,2017-06-12 18:00,,2017-01-01 00:00,2017-01-01 00:00,,,2013-06-04 08:00,2013-06-05 18:00,,,,,PT_Normal,,,,,fRRDgUDLTPKFP1qakr3hlQ,1vKYeYgHJ0OcJ1s/zUefTA,,,N,0,0,,,2017-01-24 14:42,2017-01-24 15:36,CLEMENTL,CLEMENTL
574,49428401,751235,10651526,1227199,1,100,N,N,N,CP_Drtn,TT_Task,DT_FixedDUR2,RV_OK,TK_Complete,823A-NT-6B-B13B-1040,Erect internal kicker formwork for base slab,,,,0,0,0,288,8,16,0,0,,2012-12-14 08:00,2012-12-14 18:00,2017-06-12 18:00,2017-06-12 18:00,,2017-01-01 00:00,2017-01-01 00:00,,,2013-06-06 08:00,2013-06-06 18:00,,,,,PT_Normal,,,,,CJy0SHGRTv6O5Y7jRP2Bog,j04jU26eb0e3ekSqYZatZA,,,N,0,0,,,2017-01-24 14:42,2017-01-24 15:36,CLEMENTL,CLEMENTL
575,49428402,751235,10651526,1227199,1,100,N,N,N,CP_Drtn,TT_Task,DT_FixedDUR2,RV_OK,TK_Complete,823A-NT-6B-B13B-1050,Concreting for base slab (350m3),,,,0,0,0,208,8,16,0,0,,2012-12-20 08:00,2012-12-20 18:00,2017-06-12 18:00,2017-06-12 18:00,,2017-01-01 00:00,2017-01-01 00:00,,,2013-06-07 08:00,2013-06-07 18:00,,,,,PT_Normal,,,,,c2ZzKNQFTSe3gbWTEvUzFg,uyKzMH/8H0aObx0XpOgjMg,,,N,0,0,,,2017-01-24 14:42,2017-01-24 15:36,CLEMENTL,CLEMENTL
576,49428403,751235,10651526,1239099,1,100,N,N,N,CP_Drtn,TT_Task,DT_FixedDUR2,RV_OK,TK_Complete,823A-NT-6B-B13B-1060,Curing for base slab,,,,0,0,0,224,56,0,0,0,,2012-12-21 08:00,2012-12-28 18:00,2017-06-12 18:00,2017-06-12 18:00,,2017-01-01 00:00,2017-01-01 00:00,,,2013-06-08 08:00,2013-06-14 18:00,,,,,PT_Normal,,,,,yX71AUm7TEK1+myzjMkx9Q,Lj/QVX3I6EiczdGayGogxg,,,N,0,0,,,2017-01-24 14:42,2017-01-24 15:36,CLEMENTL,CLEMENTL
577,49428404,751235,10651526,1227199,1,100,N,N,N,CP_Drtn,TT_Task,DT_FixedDUR2,RV_OK,TK_Complete,823A-NT-6B-B13B-1080,Removal of formwork for base slab,,,,0,0,0,72,8,8,0,0,,2012-12-31 08:00,2012-12-31 18:00,2017-06-12 18:00,2017-06-12 18:00,,2017-01-01 00:00,2017-01-01 00:00,,,2013-06-08 08:00,2013-06-08 18:00,,,,,PT_Normal,,,,,QRDoWM4MQEWosFUu4+5mgQ,7lNe/9SHM0qrI/k8OGSJ3w,,,N,0,0,,,2017-01-24 14:42,2017-01-24 15:36,CLEMENTL,CLEMENTL
578,49428405,751235,10651526,1227199,1,100,N,N,N,CP_Drtn,TT_Task,DT_FixedDUR2,RV_OK,TK_Complete,823A-NT-6B-B13B-1100,Removal strut S4 and S3,,,,0,0,0,144,32,16,0,0,,2013-01-07 08:00,2013-01-10 18:00,2017-06-12 18:00,2017-06-12 18:00,,2017-01-01 00:00,2017-01-01 00:00,,,2013-06-20 08:00,2013-06-24 18:00,,,,,PT_Normal,,,,,TBh1M32mT2yYzhzO/lRbuA,FMQP9UptCU6lHg7+wIqnTQ,,,N,0,0,,,2017-01-24 14:42,2017-01-24 15:36,CLEMENTL,CLEMENTL
579,49428406,751235,10651526,1239098,1,100,N,N,N,CP_Drtn,TT_Task,DT_FixedDUR2,RV_OK,TK_Complete,823A-NT-6B-B13B-1070,Preparation of construction joint for base slab,,,,0,0,0,0,8,0,0,0,,2012-12-29 08:00,2012-12-29 18:00,2017-06-12 18:00,2017-06-12 18:00,,2017-01-01 00:00,2017-01-01 00:00,,,2013-06-08 08:00,2013-06-08 18:00,,,,,PT_Normal,,,,,OqRQKIrLSvqgy60b6AofeQ,M2HcBI1UiEaYgA86/pLTMA,,,N,0,0,,,2017-01-24 14:42,2017-01-24 15:36,CLEMENTL,CLEMENTL
580,49428407,751235,10651526,1227199,1,100,N,N,N,CP_Drtn,TT_Task,DT_FixedDUR2,RV_OK,TK_Complete,823A-NT-6B-B13B-1090,Infill concrete in between D-wall and base slab (204m3),,,,0,0,0,128,32,16,0,0,,2013-01-02 08:00,2013-01-05 18:00,2017-06-12 18:00,2017-06-12 18:00,,2017-01-01 00:00,2017-01-01 00:00,,,2013-06-15 08:00,2013-06-19 18:00,,,,,PT_Normal,,,,,5doCqdsLSkS3WNJfe+Of1w,orG2MSA6jEyAr0mE2XqdqA,,,N,0,0,,,2017-01-24 14:42,2017-01-24 15:36,CLEMENTL,CLEMENTL
581,49428408,751235,10651526,1227199,1,100,N,N,N,CP_Drtn,TT_Task,DT_FixedDUR2,RV_OK,TK_Complete,823A-NT-6B-B13B-1010,Placing of waterproof member T-lock & testing for base slab,,,,0,0,0,64,8,0,0,0,,2012-12-10 08:00,2012-12-10 18:00,2017-06-12 18:00,2017-06-12 18:00,,2017-01-01 00:00,2017-01-01 00:00,,,2013-06-01 08:00,2013-06-01 18:00,,,,,PT_Normal,,,,,1/l8BMLzQ8Cm3X3xwFOMtg,kPKokXcrzEaYrKC/hrkokw,,,N,0,0,,,2017-01-24 14:42,2017-01-24 15:36,CLEMENTL,CLEMENTL
582,49428409,751235,10651527,1227199,1,100,N,N,N,CP_Drtn,TT_Task,DT_FixedDUR2,RV_OK,TK_Complete,823A-NT-6B-B13S-1090,Side walkway and cable bracket (204m3),,,,0,1040,0,1040,40,80,80,0,,2013-10-22 08:00,2013-12-02 18:00,2017-06-12 18:00,2017-06-12 18:00,,2017-01-01 00:00,2017-01-01 00:00,,,2014-02-13 08:00,2014-02-18 18:00,,,,,PT_Normal,,,,,GGal6B6ORcW/+6ZaLJjAvw,pNUGyyQTIEqGg2F/1l/xGw,,,N,1040,80,,,2017-01-24 14:42,2017-01-24 15:36,CLEMENTL,CLEMENTL
583,49428410,751235,10651527,1227199,1,100,N,N,N,CP_Drtn,TT_Task,DT_FixedDUR2,RV_OK,TK_Complete,823A-NT-6B-B13S-1010,Erect internal formwork & Falsework for wall and roof,,,,0,0,0,624,24,48,0,0,,2013-01-15 08:00,2013-01-17 18:00,2017-06-12 18:00,2017-06-12 18:00,,2017-01-01 00:00,2017-01-01 00:00,,,2013-06-01 08:00,2013-06-04 18:00,,,,,PT_Normal,,,,,LoPe9+R1RzaiJk9IY0cLCQ,QkbmQLiErE+9Sgp/3EU7Yg,,,N,0,0,,,2017-01-24 14:42,2017-01-24 15:36,CLEMENTL,CLEMENTL
584,49428411,751235,10651527,1227199,1,100,N,N,N,CP_Drtn,TT_Task,DT_FixedDUR2,RV_OK,TK_Complete,823A-NT-6B-B13S-1020,Rebar fixing for wall and roof,,,,0,0,0,544,24,32,0,0,,2013-01-18 08:00,2013-01-21 18:00,2017-06-12 18:00,2017-06-12 18:00,,2017-01-01 00:00,2017-01-01 00:00,,,2013-06-05 08:00,2013-06-07 18:00,,,,,PT_Normal,,,,,U27pF5F7QNm8ajg4QrPtfA,5HoC4KGsmEqVFRq+6gZHmw,,,N,0,0,,,2017-01-24 14:42,2017-01-24 15:36,CLEMENTL,CLEMENTL
585,49428412,751235,10651527,1227199,1,100,N,N,N,CP_Drtn,TT_Task,DT_FixedDUR2,RV_OK,TK_Complete,823A-NT-6B-B13S-1030,Erect external formwork for wall and roof,,,,0,0,0,208,16,16,0,0,,2013-01-22 08:00,2013-01-23 18:00,2017-06-12 18:00,2017-06-12 18:00,,2017-01-01 00:00,2017-01-01 00:00,,,2013-06-08 08:00,2013-06-10 18:00,,,,,PT_Normal,,,,,WmnopHcxTiSP4Ba4rAvoLQ,S1XMmhAY/Eyr0vVW1FTRBg,,,N,0,0,,,2017-01-24 14:42,2017-01-24 15:36,CLEMENTL,CLEMENTL
586,49428413,751235,10651527,1227199,1,100,N,N,N,CP_Drtn,TT_Task,DT_FixedDUR2,RV_OK,TK_Complete,823A-NT-6B-B13S-1040,Concreting for wall and roof (489m3),,,,0,0,0,208,8,16,0,0,,2013-01-25 08:00,2013-01-25 18:00,2017-06-12 18:00,2017-06-12 18:00,,2017-01-01 00:00,2017-01-01 00:00,,,2013-06-11 08:00,2013-06-11 18:00,,,,,PT_Normal,,,,,NejHiPnIR7OELOTp24Dbmg,bSOj2G1nuUmTngYsEgAD7A,,,N,0,0,,,2017-01-24 14:42,2017-01-24 15:36,CLEMENTL,CLEMENTL
587,49428414,751235,10651527,1227199,1,100,N,N,N,CP_Drtn,TT_Task,DT_FixedDUR2,RV_OK,TK_Complete,823A-NT-6B-B13S-1070,Removal external and internal formwork for wall,,,,0,0,0,144,16,16,0,0,,2013-01-30 08:00,2013-01-31 18:00,2017-06-12 18:00,2017-06-12 18:00,,2017-01-01 00:00,2017-01-01 00:00,,,2013-06-14 08:00,2013-06-15 18:00,,,,,PT_Normal,,,,,V2EEWwwTTKqQuJpxmV2SZA,OuJth4GYf0Od/kDhIBFpaQ,,,N,0,0,,,2017-01-24 14:42,2017-01-24 15:36,CLEMENTL,CLEMENTL
588,49428415,751235,10651527,1239099,1,100,N,N,N,CP_Drtn,TT_Task,DT_FixedDUR2,RV_OK,TK_Complete,823A-NT-6B-B13S-1050,Curing for wall and roof,,,,0,0,0,224,80,0,0,0,,2013-01-26 08:00,2013-01-28 18:00,2017-06-12 18:00,2017-06-12 18:00,,2017-01-01 00:00,2017-01-01 00:00,,,2013-06-12 08:00,2013-06-21 18:00,,,,,PT_Normal,,,,,T4BZPeQCQmiy67evoK27rw,RNCUs+yq702tWvdnOiReXA,,,N,0,0,,,2017-01-24 14:42,2017-01-24 15:36,CLEMENTL,CLEMENTL
589,49428416,751235,10651527,1227199,1,100,N,N,N,CP_Drtn,TT_Task,DT_FixedDUR2,RV_OK,TK_Complete,823A-NT-6B-B13S-1080,Removal internal falsework and formwork for roof,,,,0,0,0,416,8,32,0,0,,2013-02-01 08:00,2013-02-02 18:00,2017-06-12 18:00,2017-06-12 18:00,,2017-01-01 00:00,2017-01-01 00:00,,,2013-06-22 08:00,2013-06-22 18:00,,,,,PT_Normal,,,,,Rv148HJwSJ6B8jhiyFFiSQ,hY+xNrl7g0SoKtBR6FTv/w,,,N,0,0,,,2017-01-24 14:42,2017-01-24 15:36,CLEMENTL,CLEMENTL
590,49428417,751235,10651527,1239098,1,100,N,N,N,CP_Drtn,TT_Task,DT_FixedDUR2,RV_OK,TK_Complete,823A-NT-6B-B13S-1060,Preparation of construction joint for wall and roof,,,,0,0,0,0,8,0,0,0,,2013-01-29 08:00,2013-01-29 18:00,2017-06-12 18:00,2017-06-12 18:00,,2017-01-01 00:00,2017-01-01 00:00,,,2013-06-13 08:00,2013-06-13 18:00,,,,,PT_Normal,,,,,tkmAzVujR8uwoL3xEqHarg,g+qT9AVJik6SCl6FcM00HQ,,,N,0,0,,,2017-01-24 14:42,2017-01-24 15:36,CLEMENTL,CLEMENTL
591,49428418,751235,10651528,1227199,1,100,N,N,N,CP_Drtn,TT_Task,DT_FixedDUR2,RV_OK,TK_Complete,823A-NT-6B-B13N-1090,Side walkway and cable bracket (204m3),,,,0,0,0,1040,40,80,0,0,,2013-12-23 08:00,2013-12-30 18:00,2017-06-12 18:00,2017-06-12 18:00,,2017-01-01 00:00,2017-01-01 00:00,,,2014-05-16 08:00,2014-05-21 18:00,,,,,PT_Normal,,,,,tbkXXnM9Q2aTuLhdD6+vvg,r6/dEo0JV0q8IbL6lUcOGQ,,,N,0,0,,,2017-01-24 14:42,2017-01-24 15:36,CLEMENTL,CLEMENTL
592,49428419,751235,10651528,1227199,1,100,N,N,N,CP_Drtn,TT_Task,DT_FixedDUR2,RV_OK,TK_Complete,823A-NT-6B-B13N-1010,Erect internal formwork & Falsework for wall and roof,,,,0,0,0,624,32,48,0,0,,2013-01-18 08:00,2013-01-22 18:00,2017-06-12 18:00,2017-06-12 18:00,,2017-01-01 00:00,2017-01-01 00:00,,,2013-06-01 08:00,2013-06-05 18:00,,,,,PT_Normal,,,,,3SVx1X3oQ8ulV6XX7+yHFg,QBYZ8HyXRkyKmLQPYCrOiQ,,,N,0,0,,,2017-01-24 14:42,2017-01-24 15:36,CLEMENTL,CLEMENTL
593,49428420,751235,10651528,1227199,1,100,N,N,N,CP_Drtn,TT_Task,DT_FixedDUR2,RV_OK,TK_Complete,823A-NT-6B-B13N-1020,Rebar fixing for wall and roof,,,,0,0,0,544,32,32,0,0,,2013-01-23 08:00,2013-01-26 18:00,2017-06-12 18:00,2017-06-12 18:00,,2017-01-01 00:00,2017-01-01 00:00,,,2013-06-06 08:00,2013-06-10 18:00,,,,,PT_Normal,,,,,+eqtPN3SQISJH2rekNvFBg,UxE7fajmRkCI+X7UHUGGGw,,,N,0,0,,,2017-01-24 14:42,2017-01-24 15:36,CLEMENTL,CLEMENTL
594,49428421,751235,10651528,1227199,1,100,N,N,N,CP_Drtn,TT_Task,DT_FixedDUR2,RV_OK,TK_Complete,823A-NT-6B-B13N-1030,Erect external formwork for wall and roof,,,,0,0,0,208,16,16,0,0,,2013-01-28 08:00,2013-01-29 18:00,2017-06-12 18:00,2017-06-12 18:00,,2017-01-01 00:00,2017-01-01 00:00,,,2013-06-11 08:00,2013-06-13 18:00,,,,,PT_Normal,,,,,KWo3ICbnQTyOPFaeOZzn3Q,LgjLzp8Q2Uessrdr+kvRbQ,,,N,0,0,,,2017-01-24 14:42,2017-01-24 15:36,CLEMENTL,CLEMENTL
595,49428422,751235,10651528,1227199,1,100,N,N,N,CP_Drtn,TT_Task,DT_FixedDUR2,RV_OK,TK_Complete,823A-NT-6B-B13N-1040,Concreting for wall and roof (489m3),,,,0,0,0,208,8,16,0,0,,2013-01-30 08:00,2013-01-31 18:00,2017-06-12 18:00,2017-06-12 18:00,,2017-01-01 00:00,2017-01-01 00:00,,,2013-06-14 08:00,2013-06-14 18:00,,,,,PT_Normal,,,,,4nwPC3roSkC5AVjJF5qepw,dZsZpqtp0EqT/o0YCuHnHQ,,,N,0,0,,,2017-01-24 14:42,2017-01-24 15:36,CLEMENTL,CLEMENTL
596,49428423,751235,10651528,1227199,1,100,N,N,N,CP_Drtn,TT_Task,DT_FixedDUR2,RV_OK,TK_Complete,823A-NT-6B-B13N-1070,Removal external and internal formwork for wall,,,,0,0,0,144,16,16,0,0,,2013-02-06 08:00,2013-02-07 18:00,2017-06-12 18:00,2017-06-12 18:00,,2017-01-01 00:00,2017-01-01 00:00,,,2013-06-17 08:00,2013-06-18 18:00,,,,,PT_Normal,,,,,/Y0FY5KkQu2k4alk1NtSsQ,ZurnilKn20Shm0qYlN93oA,,,N,0,0,,,2017-01-24 14:42,2017-01-24 15:36,CLEMENTL,CLEMENTL
597,49428424,751235,10651528,1227199,1,100,N,N,N,CP_Drtn,TT_Task,DT_FixedDUR2,RV_OK,TK_Complete,823A-NT-6B-B13N-1080,Removal internal falsework and formwork for roof,,,,0,0,0,416,8,32,0,0,,2013-02-08 08:00,2013-02-08 18:00,2017-06-12 18:00,2017-06-12 18:00,,2017-01-01 00:00,2017-01-01 00:00,,,2013-06-25 08:00,2013-06-25 18:00,,,,,PT_Normal,,,,,zDT5mtAdSVqKm2UeU2pdig,Rpmkpyx5TUKpa6zlQpfilQ,,,N,0,0,,,2017-01-24 14:42,2017-01-24 15:36,CLEMENTL,CLEMENTL
598,49428425,751235,10651528,1239098,1,100,N,N,N,CP_Drtn,TT_Task,DT_FixedDUR2,RV_OK,TK_Complete,823A-NT-6B-B13N-1060,Preparation of construction joint for wall and roof,,,,0,0,0,0,8,0,0,0,,2013-02-05 08:00,2013-02-05 18:00,2017-06-12 18:00,2017-06-12 18:00,,2017-01-01 00:00,2017-01-01 00:00,,,2013-06-15 08:00,2013-06-15 18:00,,,,,PT_Normal,,,,,1m6dyDLgT2GeiLsxVkA++g,sC8rCumTokeelLZdc2dhJA,,,N,0,0,,,2017-01-24 14:42,2017-01-24 15:36,CLEMENTL,CLEMENTL
599,49428426,751235,10651528,1239099,1,100,N,N,N,CP_Drtn,TT_Task,DT_FixedDUR2,RV_OK,TK_Complete,823A-NT-6B-B13N-1050,Curing for wall and roof,,,,0,0,0,224,80,0,0,0,,2013-02-01 08:00,2013-02-04 18:00,2017-06-12 18:00,2017-06-12 18:00,,2017-01-01 00:00,2017-01-01 00:00,,,2013-06-15 08:00,2013-06-24 18:00,,,,,PT_Normal,,,,,G1xNemmZR1SnA0qe5ZEO3w,WELgPqGoNUmb3CaS6M/bHQ,,,N,0,0,,,2017-01-24 14:42,2017-01-24 15:36,CLEMENTL,CLEMENTL
600,49428427,751235,10651530,1227199,1,100,N,N,N,CP_Drtn,TT_Task,DT_FixedDUR2,RV_OK,TK_Complete,823A-NT-6B-B12B-1010,Placing of waterproof member T-lock & testing for base slab,,,,0,0,0,64,8,0,0,0,,2012-12-17 08:00,2012-12-17 18:00,2017-06-12 18:00,2017-06-12 18:00,,2017-01-01 00:00,2017-01-01 00:00,,,2013-06-22 08:00,2013-06-22 18:00,,,,,PT_Normal,,,,,hxjaq1sQQM+P8rDu9MBkRw,UQuf5Db+JEK0lc0h+es/jg,,,N,0,0,,,2017-01-24 14:42,2017-01-24 15:36,CLEMENTL,CLEMENTL
601,49428428,751235,10651530,1227199,1,100,N,N,N,CP_Drtn,TT_Task,DT_FixedDUR2,RV_OK,TK_Complete,823A-NT-6B-B12B-1020,Erect external formwork for base slab,,,,0,0,0,104,8,8,0,0,,2012-12-18 08:00,2012-12-18 18:00,2017-06-12 18:00,2017-06-12 18:00,,2017-01-01 00:00,2017-01-01 00:00,,,2013-06-24 08:00,2013-06-24 18:00,,,,,PT_Normal,,,,,Lc2j/zgHTp21gOUbIrQwIg,o4gVSjUZsEuJPD4XTuokng,,,N,0,0,,,2017-01-24 14:42,2017-01-24 15:36,CLEMENTL,CLEMENTL
602,49428429,751235,10651530,1227199,1,100,N,N,N,CP_Drtn,TT_Task,DT_FixedDUR2,RV_OK,TK_Complete,823A-NT-6B-B12B-1030,Rebar fixing for base slab,,,,0,0,0,272,8,16,0,0,,2012-12-19 08:00,2012-12-19 18:00,2017-06-12 18:00,2017-06-12 18:00,,2017-01-01 00:00,2017-01-01 00:00,,,2013-06-25 08:00,2013-06-25 18:00,,,,,PT_Normal,,,,,aMdMy4OOQtG99NtWFmb25w,FsUbeznWXUKf/VLbcCjBkg,,,N,0,0,,,2017-01-24 14:42,2017-01-24 15:36,CLEMENTL,CLEMENTL
603,49428430,751235,10651530,1227199,1,100,N,N,N,CP_Drtn,TT_Task,DT_FixedDUR2,RV_OK,TK_Complete,823A-NT-6B-B12B-1040,Erect internal kicker formwork for base slab,,,,0,0,0,288,8,16,0,0,,2012-12-20 08:00,2012-12-20 18:00,2017-06-12 18:00,2017-06-12 18:00,,2017-01-01 00:00,2017-01-01 00:00,,,2013-06-26 08:00,2013-06-26 18:00,,,,,PT_Normal,,,,,y4Vtdn7OT6OTz+Vml4bgWw,z0vM6IGL1ka6yVvT8+RUrg,,,N,0,0,,,2017-01-24 14:42,2017-01-24 15:36,CLEMENTL,CLEMENTL
604,49428431,751235,10651530,1227199,1,100,N,N,N,CP_Drtn,TT_Task,DT_FixedDUR2,RV_OK,TK_Complete,823A-NT-6B-B12B-1050,Concreting for base slab (350m3),,,,0,0,0,208,8,16,0,0,,2012-12-28 08:00,2012-12-28 18:00,2017-06-12 18:00,2017-06-12 18:00,,2017-01-01 00:00,2017-01-01 00:00,,,2013-06-27 08:00,2013-06-27 18:00,,,,,PT_Normal,,,,,jqSQYKo1QFStx3fntpXHyQ,fjzaRNf/NESJkMiZF/90dw,,,N,0,0,,,2017-01-24 14:42,2017-01-24 15:36,CLEMENTL,CLEMENTL
605,49428432,751235,10651530,1239099,1,100,N,N,N,CP_Drtn,TT_Task,DT_FixedDUR2,RV_OK,TK_Complete,823A-NT-6B-B12B-1060,Curing for base slab,,,,0,0,0,224,56,0,0,0,,2012-12-29 08:00,2013-01-04 18:00,2017-06-12 18:00,2017-06-12 18:00,,2017-01-01 00:00,2017-01-01 00:00,,,2013-06-28 08:00,2013-07-04 18:00,,,,,PT_Normal,,,,,pQDFhQ+VQtScHspS0h4j+Q,Cl9psP8sKkWzF7/AWS6miA,,,N,0,0,,,2017-01-24 14:42,2017-01-24 15:36,CLEMENTL,CLEMENTL
606,49428433,751235,10651530,1227199,1,100,N,N,N,CP_Drtn,TT_Task,DT_FixedDUR2,RV_OK,TK_Complete,823A-NT-6B-B12B-1080,Removal of formwork for base slab,,,,0,0,0,72,8,8,0,0,,2012-12-29 08:00,2012-12-31 18:00,2017-06-12 18:00,2017-06-12 18:00,,2017-01-01 00:00,2017-01-01 00:00,,,2013-07-05 08:00,2013-07-05 18:00,,,,,PT_Normal,,,,,IIpTh1dfTw23rWjqvqGPMA,ddRL8k/uUUih0Q1WYq+axg,,,N,0,0,,,2017-01-24 14:42,2017-01-24 15:36,CLEMENTL,CLEMENTL
607,49428434,751235,10651530,1227199,1,100,N,N,N,CP_Drtn,TT_Task,DT_FixedDUR2,RV_OK,TK_Complete,823A-NT-6B-B12B-1100,Removal strut S4 and S3,,,,0,0,0,144,32,16,0,0,,2013-01-09 08:00,2013-01-12 18:00,2017-06-12 18:00,2017-06-12 18:00,,2017-01-01 00:00,2017-01-01 00:00,,,2013-07-11 08:00,2013-07-15 18:00,,,,,PT_Normal,,,,,/VDfgWSCTwOUDY0tmRBeeg,Nvoqufzl4U6SuOF4rybnFw,,,N,0,0,,,2017-01-24 14:42,2017-01-24 15:36,CLEMENTL,CLEMENTL
608,49428435,751235,10651530,1239098,1,100,N,N,N,CP_Drtn,TT_Task,DT_FixedDUR2,RV_OK,TK_Complete,823A-NT-6B-B12B-1070,Preparation of construction joint for base slab,,,,0,0,0,0,8,0,0,0,,2013-01-05 08:00,2013-01-05 18:00,2017-06-12 18:00,2017-06-12 18:00,,2017-01-01 00:00,2017-01-01 00:00,,,2013-06-28 08:00,2013-06-28 18:00,,,,,PT_Normal,,,,,/Vgj7kMnQfaQU8XuSKqoIQ,Yuhepg+qpUiRKbrxmrlbpg,,,N,0,0,,,2017-01-24 14:42,2017-01-24 15:36,CLEMENTL,CLEMENTL
609,49428436,751235,10651530,1227199,1,100,N,N,N,CP_Drtn,TT_Task,DT_FixedDUR2,RV_OK,TK_Complete,823A-NT-6B-B12B-1090,Infill concrete in between D-wall and base slab (204m3),,,,0,0,0,128,32,16,0,0,,2013-01-04 08:00,2013-01-08 18:00,2017-06-12 18:00,2017-06-12 18:00,,2017-01-01 00:00,2017-01-01 00:00,,,2013-07-06 08:00,2013-07-10 18:00,,,,,PT_Normal,,,,,cdgbmgZYSTyOf4gb0S0fdQ,GoTYFWk6P0K8WI2IQS+Vwg,,,N,0,0,,,2017-01-24 14:42,2017-01-24 15:36,CLEMENTL,CLEMENTL
610,49428437,751235,10651531,1227199,1,100,N,N,N,CP_Drtn,TT_Task,DT_FixedDUR2,RV_OK,TK_Complete,823A-NT-6B-B12N-1090,Side walkway and cable bracket (204m3),,,,0,1040,0,1040,40,80,80,0,,2013-12-17 08:00,2013-12-21 18:00,2017-06-12 18:00,2017-06-12 18:00,,2017-01-01 00:00,2017-01-01 00:00,,,2014-05-10 08:00,2014-05-15 18:00,,,,,PT_Normal,,,,,fv59Hm6URX6+7xlQzCfNow,pNUGyyQTIEqGg2F/1l/xGw,,,N,1040,80,,,2017-01-24 14:42,2017-01-24 15:36,CLEMENTL,CLEMENTL
611,49428438,751235,10651531,1227199,1,100,N,N,N,CP_Drtn,TT_Task,DT_FixedDUR2,RV_OK,TK_Complete,823A-NT-6B-B12N-1020,Rebar fixing for wall and roof,,,,0,0,0,544,32,32,0,0,,2013-01-23 08:00,2013-01-28 18:00,2017-06-12 18:00,2017-06-12 18:00,,2017-01-01 00:00,2017-01-01 00:00,,,2013-06-14 08:00,2013-06-18 18:00,,,,,PT_Normal,,,,,cNTX72v2RyGtvm7+CRp8OQ,5HoC4KGsmEqVFRq+6gZHmw,,,N,0,0,,,2017-01-24 14:42,2017-01-24 15:36,CLEMENTL,CLEMENTL
612,49428439,751235,10651531,1227199,1,100,N,N,N,CP_Drtn,TT_Task,DT_FixedDUR2,RV_OK,TK_Complete,823A-NT-6B-B12N-1030,Erect external formwork for wall and roof,,,,0,0,0,208,16,16,0,0,,2013-01-29 08:00,2013-01-30 18:00,2017-06-12 18:00,2017-06-12 18:00,,2017-01-01 00:00,2017-01-01 00:00,,,2013-06-19 08:00,2013-06-20 18:00,,,,,PT_Normal,,,,,rx7pF+K8R2SoQ/7eGV3whg,S1XMmhAY/Eyr0vVW1FTRBg,,,N,0,0,,,2017-01-24 14:42,2017-01-24 15:36,CLEMENTL,CLEMENTL
613,49428440,751235,10651531,1227199,1,100,N,N,N,CP_Drtn,TT_Task,DT_FixedDUR2,RV_OK,TK_Complete,823A-NT-6B-B12N-1040,Concreting for wall and roof (489m3),,,,0,0,0,208,8,16,0,0,,2013-01-31 08:00,2013-01-31 18:00,2017-06-12 18:00,2017-06-12 18:00,,2017-01-01 00:00,2017-01-01 00:00,,,2013-06-21 08:00,2013-06-21 18:00,,,,,PT_Normal,,,,,esGmkkqCSeO+Zf1/bAfOCg,bSOj2G1nuUmTngYsEgAD7A,,,N,0,0,,,2017-01-24 14:42,2017-01-24 15:36,CLEMENTL,CLEMENTL
614,49428441,751235,10651531,1227199,1,100,N,N,N,CP_Drtn,TT_Task,DT_FixedDUR2,RV_OK,TK_Complete,823A-NT-6B-B12N-1070,Removal external and internal formwork for wall,,,,0,0,0,144,16,16,0,0,,2013-02-05 08:00,2013-02-05 18:00,2017-06-12 18:00,2017-06-12 18:00,,2017-01-01 00:00,2017-01-01 00:00,,,2013-06-10 08:00,2013-06-11 18:00,,,,,PT_Normal,,,,,qXpi9YUGT5uV7hzCPgFrOA,OuJth4GYf0Od/kDhIBFpaQ,,,N,0,0,,,2017-01-24 14:42,2017-01-24 15:36,CLEMENTL,CLEMENTL
615,49428442,751235,10651531,1239099,1,100,N,N,N,CP_Drtn,TT_Task,DT_FixedDUR2,RV_OK,TK_Complete,823A-NT-6B-B12N-1050,Curing for wall and roof,,,,0,0,0,224,80,0,0,0,,2013-02-01 08:00,2013-02-02 18:00,2017-06-12 18:00,2017-06-12 18:00,,2017-01-01 00:00,2017-01-01 00:00,,,2013-06-22 08:00,2013-07-01 18:00,,,,,PT_Normal,,,,,yo5VzxXoQkmEaUPtcwxYfA,RNCUs+yq702tWvdnOiReXA,,,N,0,0,,,2017-01-24 14:42,2017-01-24 15:36,CLEMENTL,CLEMENTL
616,49428443,751235,10651531,1227199,1,100,N,N,N,CP_Drtn,TT_Task,DT_FixedDUR2,RV_OK,TK_Complete,823A-NT-6B-B12N-1080,Removal internal falsework and formwork for roof,,,,0,0,0,416,8,32,0,0,,2013-02-06 08:00,2013-02-06 18:00,2017-06-12 18:00,2017-06-12 18:00,,2017-01-01 00:00,2017-01-01 00:00,,,2013-06-13 08:00,2013-06-13 18:00,,,,,PT_Normal,,,,,Ul3/d7HfTzqQ/zfYwMbGaA,hY+xNrl7g0SoKtBR6FTv/w,,,N,0,0,,,2017-01-24 14:42,2017-01-24 15:36,CLEMENTL,CLEMENTL
617,49428444,751235,10651531,1239098,1,100,N,N,N,CP_Drtn,TT_Task,DT_FixedDUR2,RV_OK,TK_Complete,823A-NT-6B-B12N-1060,Preparation of construction joint for wall and roof,,,,0,0,0,0,8,0,0,0,,2013-02-04 08:00,2013-02-04 18:00,2017-06-12 18:00,2017-06-12 18:00,,2017-01-01 00:00,2017-01-01 00:00,,,2013-06-08 08:00,2013-06-08 18:00,,,,,PT_Normal,,,,,/oFLQWOZQcmjkVjWgYftJg,g+qT9AVJik6SCl6FcM00HQ,,,N,0,0,,,2017-01-24 14:42,2017-01-24 15:36,CLEMENTL,CLEMENTL
618,49428445,751235,10651531,1227199,1,100,N,N,N,CP_Drtn,TT_Task,DT_FixedDUR2,RV_OK,TK_Complete,823A-NT-6B-B12N-1010,Erect internal formwork & Falsework for wall and roof,,,,0,0,0,624,32,48,0,0,,2013-01-18 08:00,2013-01-22 18:00,2017-06-12 18:00,2017-06-12 18:00,,2017-01-01 00:00,2017-01-01 00:00,,,2013-06-08 08:00,2013-06-13 18:00,,,,,PT_Normal,,,,,DB7Jc2HZRu61cWqF1Nt+DQ,QkbmQLiErE+9Sgp/3EU7Yg,,,N,0,0,,,2017-01-24 14:42,2017-01-24 15:36,CLEMENTL,CLEMENTL
619,49428446,751235,10651532,1227199,1,100,N,N,N,CP_Drtn,TT_Task,DT_FixedDUR2,RV_OK,TK_Complete,823A-NT-6B-B12S-1020,Rebar fixing for wall and roof,,,,0,0,0,544,24,32,0,0,,2013-01-19 08:00,2013-01-22 18:00,2017-06-12 18:00,2017-06-12 18:00,,2017-01-01 00:00,2017-01-01 00:00,,,2013-06-13 08:00,2013-06-15 18:00,,,,,PT_Normal,,,,,dnCHZf0ISgSGR/GYjjwEig,AhZXhPZ6j0moNBmcCdn15A,,,N,0,0,,,2017-01-24 14:42,2017-01-24 15:36,CLEMENTL,CLEMENTL
620,49428447,751235,10651532,1227199,1,100,N,N,N,CP_Drtn,TT_Task,DT_FixedDUR2,RV_OK,TK_Complete,823A-NT-6B-B12S-1030,Erect external formwork for wall and roof,,,,0,0,0,208,16,16,0,0,,2013-01-23 08:00,2013-01-24 18:00,2017-06-12 18:00,2017-06-12 18:00,,2017-01-01 00:00,2017-01-01 00:00,,,2013-06-17 08:00,2013-06-18 18:00,,,,,PT_Normal,,,,,OB60tjpfR26CUBMOmqvNGQ,JFugQURIskGZ01atMELPpg,,,N,0,0,,,2017-01-24 14:42,2017-01-24 15:36,CLEMENTL,CLEMENTL
621,49428448,751235,10651532,1227199,1,100,N,N,N,CP_Drtn,TT_Task,DT_FixedDUR2,RV_OK,TK_Complete,823A-NT-6B-B12S-1040,Concreting for wall and roof (489m3),,,,0,0,0,208,8,16,0,0,,2013-01-25 08:00,2013-01-25 18:00,2017-06-12 18:00,2017-06-12 18:00,,2017-01-01 00:00,2017-01-01 00:00,,,2013-06-19 08:00,2013-06-19 18:00,,,,,PT_Normal,,,,,5+5ytPjnRVerUWUZYHOJpA,qyd2or5AM0a7E62jxhaxTg,,,N,0,0,,,2017-01-24 14:42,2017-01-24 15:36,CLEMENTL,CLEMENTL
622,49428449,751235,10651532,1227199,1,100,N,N,N,CP_Drtn,TT_Task,DT_FixedDUR2,RV_OK,TK_Complete,823A-NT-6B-B12S-1070,Removal external and internal formwork for wall,,,,0,0,0,144,16,16,0,0,,2013-01-26 08:00,2013-01-28 18:00,2017-06-12 18:00,2017-06-12 18:00,,2017-01-01 00:00,2017-01-01 00:00,,,2013-06-21 08:00,2013-06-22 18:00,,,,,PT_Normal,,,,,CjDn8DW1RJaAPJG7kAlbEg,u69eD9hN4kOWLxGOLjKHRA,,,N,0,0,,,2017-01-24 14:42,2017-01-24 15:36,CLEMENTL,CLEMENTL
623,49428450,751235,10651532,1239099,1,100,N,N,N,CP_Drtn,TT_Task,DT_FixedDUR2,RV_OK,TK_Complete,823A-NT-6B-B12S-1050,Curing for wall and roof,,,,0,0,0,224,80,0,0,0,,2013-01-26 08:00,2013-01-28 18:00,2017-06-12 18:00,2017-06-12 18:00,,2017-01-01 00:00,2017-01-01 00:00,,,2013-06-20 08:00,2013-06-29 18:00,,,,,PT_Normal,,,,,5VZGRn8MQTCe6hkqHyg86Q,vzKdKCc1BkSH3fhLBht8xQ,,,N,0,0,,,2017-01-24 14:42,2017-01-24 15:36,CLEMENTL,CLEMENTL
624,49428451,751235,10651532,1227199,1,100,N,N,N,CP_Drtn,TT_Task,DT_FixedDUR2,RV_OK,TK_Complete,823A-NT-6B-B12S-1080,Removal internal falsework and formwork for roof,,,,0,0,0,416,8,32,0,0,,2013-01-29 08:00,2013-01-30 18:00,2017-06-12 18:00,2017-06-12 18:00,,2017-01-01 00:00,2017-01-01 00:00,,,2013-07-02 08:00,2013-07-02 18:00,,,,,PT_Normal,,,,,4SxmLtyPQfWLB+8i70FMNg,vwpy9rNrXUK60VDBF0kGLA,,,N,0,0,,,2017-01-24 14:42,2017-01-24 15:36,CLEMENTL,CLEMENTL
625,49428452,751235,10651532,1239098,1,100,N,N,N,CP_Drtn,TT_Task,DT_FixedDUR2,RV_OK,TK_Complete,823A-NT-6B-B12S-1060,Preparation of construction joint for wall and roof,,,,0,0,0,0,8,0,0,0,,2013-01-29 08:00,2013-01-30 18:00,2017-06-12 18:00,2017-06-12 18:00,,2017-01-01 00:00,2017-01-01 00:00,,,2013-06-20 08:00,2013-06-20 18:00,,,,,PT_Normal,,,,,wZ27GsGPSaO+zFWNBJ6WuA,ijHrZm3940yqOWB7oL4d3g,,,N,0,0,,,2017-01-24 14:42,2017-01-24 15:36,CLEMENTL,CLEMENTL
626,49428453,751235,10651532,1227199,1,100,N,N,N,CP_Drtn,TT_Task,DT_FixedDUR2,RV_OK,TK_Complete,823A-NT-6B-B12S-1090,Side walkway and cable bracket (204m3),,,,0,1040,0,1040,40,80,80,0,,2013-10-22 08:00,2013-12-02 18:00,2017-06-12 18:00,2017-06-12 18:00,,2017-01-01 00:00,2017-01-01 00:00,,,2014-02-10 08:00,2014-02-14 18:00,,,,,PT_Normal,,,,,d1P+puPPS6KKaCifeDIVlg,ERetf0QPYkCP/Qm/iJPXMA,,,N,1040,80,,,2017-01-24 14:42,2017-01-24 15:36,CLEMENTL,CLEMENTL
627,49428454,751235,10651532,1227199,1,100,N,N,N,CP_Drtn,TT_Task,DT_FixedDUR2,RV_OK,TK_Complete,823A-NT-6B-B12S-1010,Erect internal formwork & Falsework for wall and roof,,,,0,0,0,624,24,48,0,0,,2013-01-15 08:00,2013-01-18 18:00,2017-06-12 18:00,2017-06-12 18:00,,2017-01-01 00:00,2017-01-01 00:00,,,2013-06-08 08:00,2013-06-11 18:00,,,,,PT_Normal,,,,,KbnzqEQfSKONeueMMb3TFw,XRH4G2ZjckiWc4eF1fx8LQ,,,N,0,0,,,2017-01-24 14:42,2017-01-24 15:36,CLEMENTL,CLEMENTL
628,49428455,751235,10651533,1239098,1,100,N,N,N,CP_Drtn,TT_Task,DT_FixedDUR2,RV_OK,TK_Complete,823A-NT-6B-DW-1010,Pre-drilling at Works Area 4.4,,,,0,9056,0,9056,1800,4528,4528,0,,2011-03-01 08:00,2011-11-30 18:00,2017-06-12 18:00,2017-06-12 18:00,,2017-01-01 00:00,2017-01-01 00:00,,,2011-03-01 08:00,2011-11-30 18:00,,,,,PT_Normal,,,,,oxkz+JJoRgq6d8hI8cUTpw,UoABg/q8xEmfE0XaAGyfwg,,,N,9056,4528,,,2017-01-24 14:42,2017-01-24 15:36,CLEMENTL,CLEMENTL
629,49428456,751235,10651533,1239098,1,100,N,N,N,CP_Drtn,TT_Task,DT_FixedDUR2,RV_OK,TK_Complete,823A-NT-6B-DW-1030,D-wall construction (3104m3),,,,0,22672,0,22672,1216,3488,3488,0,,2012-01-03 08:00,2012-07-10 18:00,2017-06-12 18:00,2017-06-12 18:00,,2017-01-01 00:00,2017-01-01 00:00,,,2012-01-03 08:00,2012-07-10 18:00,,,,,PT_Normal,,,,,C5kl+7dwSN2p+meMIduW6Q,im2uXYQCPkCYt+gTqyLGZQ,,,N,22672,3488,,,2017-01-24 14:42,2017-01-24 15:36,CLEMENTL,CLEMENTL
630,49428457,751235,10651533,1239098,1,100,N,N,N,CP_Drtn,TT_Task,DT_FixedDUR2,RV_OK,TK_Complete,823A-NT-6B-DW-1020,Site Setup and guide wall,,,,0,1800,0,1800,200,200,200,0,,2011-12-01 08:00,2011-12-31 18:00,2017-06-12 18:00,2017-06-12 18:00,,2017-01-01 00:00,2017-01-01 00:00,,,2011-12-01 08:00,2011-12-31 18:00,,,,,PT_Normal,,,,,N23s6JmxRz60KMxncXfpVA,bqfN23kpOkyTi4EPHefRew,,,N,1800,200,,,2017-01-24 14:42,2017-01-24 15:36,CLEMENTL,CLEMENTL
631,49428458,751235,10651533,1239098,1,100,N,N,N,CP_Drtn,TT_Task,DT_FixedDUR2,RV_OK,TK_Complete,823A-NT-6B-DW-1040,"Sonic test, shear pin, toe grout and pumping Test",,,,0,2520,0,2520,360,1080,1080,0,,2012-07-11 08:00,2012-08-31 18:00,2017-06-12 18:00,2017-06-12 18:00,,2017-01-01 00:00,2017-01-01 00:00,,,2012-07-11 08:00,2012-08-31 18:00,,,,,PT_Normal,,,,,mkdyticvRpiXZu3+1YQECg,96Rt3cTpbUOMlPv7ABZrMg,,,N,2520,1080,,,2017-01-24 14:42,2017-01-24 15:36,CLEMENTL,CLEMENTL
632,49428459,751235,10651535,1239098,1,100,N,N,N,CP_Drtn,TT_Task,DT_FixedDUR2,RV_OK,TK_Complete,823A-KTRD-S4-1020,Concrete fill up to +8.0mPD near side A mass concrete wall,,,,0,0,0,0,56,0,0,0,,2012-11-01 08:00,2012-11-08 18:00,2014-07-11 08:00,2014-07-11 08:00,,2017-01-01 00:00,2017-01-01 00:00,,,2012-11-01 08:00,2012-11-08 18:00,,,,,PT_Normal,,,,,QJMTkiPgQeCosbD0mouaIw,DtYudhWazk6GPJ3Bhj3/MA,,,N,0,0,,,2017-01-24 14:42,2017-01-24 15:40,CLEMENTL,CLEMENTL
633,49428460,751235,10651535,1239098,1,100,N,N,N,CP_Drtn,TT_Task,DT_FixedDUR2,RV_OK,TK_Complete,823A-KTRD-S4-1040,"Construction of base slab lining and low flow channel (4 bay A9~A10, B8~B9; LFC CH 80~110)",,,,0,0,0,0,56,0,0,0,,2012-11-10 08:00,2012-11-17 18:00,2014-07-11 08:00,2014-07-11 08:00,,2017-01-01 00:00,2017-01-01 00:00,,,2012-11-10 08:00,2012-11-17 18:00,,,,,PT_Normal,,,,,tPxxdEvZQbys5nRg/SHQ/g,NSDiE+nyxEa3TuuLHY042g,,,N,0,0,,,2017-01-24 14:42,2017-01-24 15:40,CLEMENTL,CLEMENTL
634,49428461,751235,10651535,1239098,1,100,N,N,N,CP_Drtn,TT_Task,DT_FixedDUR2,RV_OK,TK_Complete,823A-KTRD-S4-1050,Construction of mass concrete wall to +8.0mPD of side B (3 bay CH B60~B90),,,,0,0,0,0,64,0,0,0,,2012-11-10 08:00,2012-11-19 18:00,2014-07-11 08:00,2014-07-11 08:00,,2017-01-01 00:00,2017-01-01 00:00,,,2012-11-10 08:00,2012-11-19 18:00,,,,,PT_Normal,,,,,WKMBx48wRtW42kDc+LKPeA,wSMPh5gjR0iQroHYORD7Cw,,,N,0,0,,,2017-01-24 14:42,2017-01-24 15:40,CLEMENTL,CLEMENTL
635,49428462,751235,10651535,1239098,1,100,N,N,N,CP_Drtn,TT_Task,DT_FixedDUR2,RV_OK,TK_Complete,823A-KTRD-S4-1070,Soil backfill at side A from +5.0mPD to +8.0mPD,,,,0,0,0,0,48,0,0,0,,2012-11-20 08:00,2012-11-26 18:00,2014-07-11 08:00,2014-07-11 08:00,,2017-01-01 00:00,2017-01-01 00:00,,,2012-11-20 08:00,2012-11-26 18:00,,,,,PT_Normal,,,,,AjGnkyCYTG+6lrxPAwE5Aw,/UFPACIFw0OMMXKIq0mbig,,,N,0,0,,,2017-01-24 14:42,2017-01-24 15:40,CLEMENTL,CLEMENTL
636,49428463,751235,10651535,1239098,1,100,N,N,N,CP_Drtn,TT_Task,DT_FixedDUR2,RV_OK,TK_Complete,823A-KTRD-S4-1090,Removal strut at +8.5mPD near side A,,,,0,0,0,0,16,0,0,0,,2012-11-27 08:00,2012-11-28 18:00,2014-07-11 08:00,2014-07-11 08:00,,2017-01-01 00:00,2017-01-01 00:00,,,2012-11-27 08:00,2012-11-28 18:00,,,,,PT_Normal,,,,,Hbr3ZGiUTOGJHIQ3T13OZg,yp9Nq/Jj/U2J9G8XZWjnUw,,,N,0,0,,,2017-01-24 14:42,2017-01-24 15:40,CLEMENTL,CLEMENTL
637,49428464,751235,10651535,1239098,1,100,N,N,N,CP_Drtn,TT_Task,DT_FixedDUR2,RV_OK,TK_Complete,823A-KTRD-S4-1080,Concrete backfill at side B from +5.0mPD to +8.0mPD,,,,0,0,0,0,8,0,0,0,,2012-11-20 08:00,2012-11-20 18:00,2014-07-11 08:00,2014-07-11 08:00,,2017-01-01 00:00,2017-01-01 00:00,,,2012-11-20 08:00,2012-11-20 18:00,,,,,PT_Normal,,,,,5Gzrq1NzQ/WZmNB2OaRmxg,lrYmhBA3q0OnMqsHgG5UAg,,,N,0,0,,,2017-01-24 14:42,2017-01-24 15:40,CLEMENTL,CLEMENTL
638,49428465,751235,10651535,1239098,1,100,N,N,N,CP_Drtn,TT_Task,DT_FixedDUR2,RV_OK,TK_Complete,823A-KTRD-S4-1110,Placing concrete block at side A from +8.0mPD to +11.0mpd  at side A (4 bay CH A80~A120),,,,0,0,0,0,56,0,0,0,,2012-11-29 08:00,2012-12-06 18:00,2014-07-11 08:00,2014-07-11 08:00,,2017-01-01 00:00,2017-01-01 00:00,,,2012-11-29 08:00,2012-12-06 18:00,,,,,PT_Normal,,,,,jj0/ppHYTQeVpZKBaZSsVA,3WELBzBKaU2nXSKNHMOhaA,,,N,0,0,,,2017-01-24 14:42,2017-01-24 15:40,CLEMENTL,CLEMENTL
639,49428466,751235,10651535,1239098,1,100,N,N,N,CP_Drtn,TT_Task,DT_FixedDUR2,RV_OK,TK_Complete,823A-KTRD-S4-1060,Construction of T-shaped retaining wall  (1 Bay CH B50~B60),,,,0,0,0,0,64,0,0,0,,2012-11-10 08:00,2012-11-19 18:00,2014-07-11 08:00,2014-07-11 08:00,,2017-01-01 00:00,2017-01-01 00:00,,,2012-11-10 08:00,2012-11-19 18:00,,,,,PT_Normal,,,,,WK51b9UGSj+DS3eCKzgNUg,+h51XhOp9UCfUXi00nvzqA,,,N,0,0,,,2017-01-24 14:42,2017-01-24 15:40,CLEMENTL,CLEMENTL
640,49428467,751235,10651535,1239098,1,100,N,N,N,CP_Drtn,TT_Task,DT_FixedDUR2,RV_OK,TK_Complete,823A-KTRD-S4-1100,Concrete fill up to +11.0mPD near side A mass concrete wall,,,,0,0,0,0,56,0,0,0,,2012-11-29 08:00,2012-12-06 18:00,2014-07-11 08:00,2014-07-11 08:00,,2017-01-01 00:00,2017-01-01 00:00,,,2012-11-29 08:00,2012-12-06 18:00,,,,,PT_Normal,,,,,AZRmrzjMTNWlx9i/0inRRA,wrX2mgCatUGOhCN6C53L4A,,,N,0,0,,,2017-01-24 14:42,2017-01-24 15:40,CLEMENTL,CLEMENTL
641,49428468,751235,10651535,1239098,1,100,N,N,N,CP_Drtn,TT_Task,DT_FixedDUR2,RV_OK,TK_Complete,823A-KTRD-S4-1140,Placing concrete block at side B from +8.0mPD to +11.0mPD (4 bay CH B60~B90),,,,0,0,0,0,56,0,0,0,,2012-12-19 08:00,2013-01-07 18:00,2014-07-11 08:00,2014-07-11 08:00,,2017-01-01 00:00,2017-01-01 00:00,,,2013-06-20 08:00,2013-06-27 18:00,,,,,PT_Normal,,,,,KEIy/dIXQmy2kqg4QR6URg,6NORW13ruUejUUHoSNf+gA,,,N,0,0,,,2017-01-24 14:42,2017-01-24 15:40,CLEMENTL,CLEMENTL
642,49428469,751235,10651535,1239098,1,100,N,N,N,CP_Drtn,TT_Task,DT_FixedDUR2,RV_OK,TK_Complete,823A-KTRD-S4-1120,Soil backfill at side A from +8.0mPD to +11.0mPD,,,,0,0,0,0,48,0,0,0,,2012-12-07 08:00,2012-12-13 18:00,2014-07-11 08:00,2014-07-11 08:00,,2017-01-01 00:00,2017-01-01 00:00,,,2013-06-07 08:00,2013-06-14 18:00,,,,,PT_Normal,,,,,2xTaU8r7Tlm0+ZXP30HOgw,iip1cCQbRk20VGT+hhR6dw,,,N,0,0,,,2017-01-24 14:42,2017-01-24 15:40,CLEMENTL,CLEMENTL
643,49428470,751235,10651535,1239098,1,100,N,N,N,CP_Drtn,TT_Task,DT_FixedDUR2,RV_OK,TK_Complete,823A-KTRD-S4-1130,Removal strut at +8.5mPD near side B,,,,0,0,0,0,32,0,0,0,,2012-12-14 08:00,2012-12-18 18:00,2014-07-11 08:00,2014-07-11 08:00,,2017-01-01 00:00,2017-01-01 00:00,,,2013-06-15 08:00,2013-06-19 18:00,,,,,PT_Normal,,,,,EGTYWoobSQqjBh6ZuCYurg,2fEaAVG4lUWh98/g0TwEXQ,,,N,0,0,,,2017-01-24 14:42,2017-01-24 15:40,CLEMENTL,CLEMENTL
644,49428471,751235,10651535,1239098,1,100,N,N,N,CP_Drtn,TT_Task,DT_FixedDUR2,RV_OK,TK_Complete,823A-KTRD-S4-1150,Concrete backfill at side B from +8.0mPD to +11.0mPD,,,,0,0,0,0,8,0,0,0,,2013-01-08 08:00,2013-01-08 18:00,2014-07-11 08:00,2014-07-11 08:00,,2017-01-01 00:00,2017-01-01 00:00,,,2013-06-28 08:00,2013-06-28 18:00,,,,,PT_Normal,,,,,43W/IEAPT7ygqAA4AjQRVQ,X5OKIZdrgUqJ7dnSgwkzgg,,,N,0,0,,,2017-01-24 14:42,2017-01-24 15:40,CLEMENTL,CLEMENTL
645,49428472,751235,10651535,1239098,1,100,N,N,N,CP_Drtn,TT_Task,DT_FixedDUR2,RV_OK,TK_Complete,823A-KTRD-S4-1030,Construction of mass concrete wall to +8.0mPD at side A (4 bay CH A80~A120),,,,0,0,0,0,64,0,0,0,,2012-11-01 08:00,2012-11-09 18:00,2014-07-11 08:00,2014-07-11 08:00,,2017-01-01 00:00,2017-01-01 00:00,,,2012-11-01 08:00,2012-11-09 18:00,,,,,PT_Normal,,,,,19YskwkBTTmFXUtBR5+FCw,WvskHJPCy0Wax1jD9SrIxQ,,,N,0,0,,,2017-01-24 14:42,2017-01-24 15:40,CLEMENTL,CLEMENTL
646,49428473,751235,10651536,1239098,1,100,N,N,N,CP_Drtn,TT_Task,DT_FixedDUR2,RV_OK,TK_Complete,823A-KTRD-S5-1010,Placing temporary concrete block to Up stream at CH30,,,,0,0,0,0,32,0,0,0,,2012-11-01 08:00,2012-11-05 18:00,2014-07-11 08:00,2014-07-11 08:00,,2017-01-01 00:00,2017-01-01 00:00,,,2012-11-01 08:00,2012-11-05 18:00,,,,,PT_Normal,,,,,Q1xY+qQeRR+7TZ5+8I8P/g,KvTS0NzfN0WAm8OLxNk5xg,,,N,0,0,,,2017-01-24 14:42,2017-01-24 15:40,CLEMENTL,CLEMENTL
647,49428474,751235,10651536,1239098,1,100,N,N,N,CP_Drtn,TT_Task,DT_FixedDUR2,RV_OK,TK_Complete,823A-KTRD-S5-1030,Excavation from GL to FL +5.0mPD Up stream (Low flow channel CH 30~60),,,,0,0,0,0,128,0,0,0,,2012-11-06 08:00,2012-11-23 18:00,2014-07-11 08:00,2014-07-11 08:00,,2017-01-01 00:00,2017-01-01 00:00,,,2012-11-06 08:00,2012-11-23 18:00,,,,,PT_Normal,,,,,cnSkrsJZSb67FgsaWZDZng,jlW1xouhAEWNM+KMoV5i0w,,,N,0,0,,,2017-01-24 14:42,2017-01-24 15:40,CLEMENTL,CLEMENTL
648,49428475,751235,10651536,1239098,1,100,N,N,N,CP_Drtn,TT_Task,DT_FixedDUR2,RV_OK,TK_Complete,823A-KTRD-S5-1020,Placing temporary concrete block to Up stream at CH160,,,,0,0,0,0,32,0,0,0,,2012-11-06 08:00,2012-11-09 18:00,2014-07-11 08:00,2014-07-11 08:00,,2017-01-01 00:00,2017-01-01 00:00,,,2012-11-06 08:00,2012-11-09 18:00,,,,,PT_Normal,,,,,OJfzBTUjSYeimleif+/elQ,ZFsDGBWD10ObqMwxI5iG8w,,,N,0,0,,,2017-01-24 14:42,2017-01-24 15:40,CLEMENTL,CLEMENTL
649,49428476,751235,10651536,1239098,1,100,N,N,N,CP_Drtn,TT_Task,DT_FixedDUR2,RV_OK,TK_Complete,823A-KTRD-S5-1040,Excavation from GL to FL +5.0mPD Down stream (Low flow channel CH 130~160),,,,0,0,0,0,128,0,0,0,,2012-11-10 08:00,2012-11-28 18:00,2014-07-11 08:00,2014-07-11 08:00,,2017-01-01 00:00,2017-01-01 00:00,,,2012-11-10 08:00,2012-11-28 18:00,,,,,PT_Normal,,,,,2xt93dcCQQ2yBdSbR1hA4w,thybTD80tku0uY0spwZIpg,,,N,0,0,,,2017-01-24 14:42,2017-01-24 15:40,CLEMENTL,CLEMENTL
650,49428477,751235,10651536,1239098,1,100,N,N,N,CP_Drtn,TT_Task,DT_FixedDUR2,RV_OK,TK_Complete,823A-KTRD-S5-1060,Construction of mass concrete wall to +11.0mPD at Down stream of side B (3 bay CH B90~B120),,,,0,0,0,0,96,0,0,0,,2012-11-29 08:00,2012-12-10 18:00,2014-07-11 08:00,2014-07-11 08:00,,2017-01-01 00:00,2017-01-01 00:00,,,2012-11-29 08:00,2012-12-12 18:00,,,,,PT_Normal,,,,,IIIH/JqJSbWl7Narlj35lA,trHfFA+zcEqjuWez4l0FNA,,,N,0,0,,,2017-01-24 14:42,2017-01-24 15:40,CLEMENTL,CLEMENTL
651,49428478,751235,10651536,1239098,1,100,N,N,N,CP_Drtn,TT_Task,DT_FixedDUR2,RV_OK,TK_Complete,823A-KTRD-S5-1070,"Construction of Up stream base slab lining and low flow channel (6 Bay A1~A4, B3~B4; Low flow channel CH 30~50)",,,,0,0,0,0,128,0,0,0,,2012-11-24 08:00,2012-12-12 18:00,2014-07-11 08:00,2014-07-11 08:00,,2017-01-01 00:00,2017-01-01 00:00,,,2012-11-24 08:00,2012-12-12 18:00,,,,,PT_Normal,,,,,0FFjMRG9T+++IA5t7lJ8KQ,wsDWj6yVA0SQ6APftmlTQQ,,,N,0,0,,,2017-01-24 14:42,2017-01-24 15:40,CLEMENTL,CLEMENTL
652,49428479,751235,10651536,1239098,1,100,N,N,N,CP_Drtn,TT_Task,DT_FixedDUR2,RV_OK,TK_Complete,823A-KTRD-S5-1080,"Construction of Down stream base slab lining and low flow channel (5 Bay A14~A16, B14~B15; LFC CH 140~170)",,,,0,0,0,0,128,0,0,0,,2012-11-29 08:00,2012-12-12 18:00,2014-07-11 08:00,2014-07-11 08:00,,2017-01-01 00:00,2017-01-01 00:00,,,2012-11-29 08:00,2012-12-17 18:00,,,,,PT_Normal,,,,,YLZ4HEUTSQGcy9usv3kkvA,9IDb9Sm88UyUMj6iTUoKzA,,,N,0,0,,,2017-01-24 14:42,2017-01-24 15:40,CLEMENTL,CLEMENTL
653,49428480,751235,10651536,1239098,1,100,N,N,N,CP_Drtn,TT_Task,DT_FixedDUR2,RV_OK,TK_Complete,823A-KTRD-S5-1100,Remaining excavation from GL to FL +5.0mPD Down stream and saw cut D-wall,,,,0,0,0,0,88,0,0,0,,2012-12-20 08:00,2013-01-03 18:00,2014-07-11 08:00,2014-07-11 08:00,,2017-01-01 00:00,2017-01-01 00:00,,,2013-06-19 08:00,2013-07-02 18:00,,,,,PT_Normal,,,,,muKYRUHdTDaEMrEy31piPw,afA1mTFkZkWirWkQVFUI5A,,,N,0,0,,,2017-01-24 14:42,2017-01-24 15:40,CLEMENTL,CLEMENTL
654,49428481,751235,10651536,1239098,1,100,N,N,N,CP_Drtn,TT_Task,DT_FixedDUR2,RV_OK,TK_Complete,823A-KTRD-S5-1110,"Construction of remaining Up stream base slab lining and low flow channel (7 bay A5~A8, B5~B7; LFC CH 50~80)",,,,0,0,0,0,120,0,0,0,,2013-01-04 08:00,2013-01-10 18:00,2014-07-11 08:00,2014-07-11 08:00,,2017-01-01 00:00,2017-01-01 00:00,,,2013-06-27 08:00,2013-07-15 18:00,,,,,PT_Normal,,,,,aPQmCZp7TsKFTLKNGiskgw,DXN6t4UQUU+8StHOd4A9lQ,,,N,0,0,,,2017-01-24 14:42,2017-01-24 15:40,CLEMENTL,CLEMENTL
655,49428482,751235,10651536,1239098,1,100,N,N,N,CP_Drtn,TT_Task,DT_FixedDUR2,RV_OK,TK_Complete,823A-KTRD-S5-1120,"Construction of remaining Down stream base slab lining and low flow channel (7 bay A11~A13, B10~B13; LFC CH 110~140)",,,,0,0,0,0,120,0,0,0,,2013-01-11 08:00,2013-01-19 18:00,2014-07-11 08:00,2014-07-11 08:00,,2017-01-01 00:00,2017-01-01 00:00,,,2013-07-03 08:00,2013-07-19 18:00,,,,,PT_Normal,,,,,L7jBmZDUTre5P7qQg6SQNA,meZds4gT/kyrqHEdHWTvKg,,,N,0,0,,,2017-01-24 14:42,2017-01-24 15:40,CLEMENTL,CLEMENTL
656,49428483,751235,10651536,1239098,1,100,N,N,N,CP_Drtn,TT_Task,DT_FixedDUR2,RV_OK,TK_Complete,823A-KTRD-S5-1050,Construction of T-shaped retaining wall  at Up stream of side B (2 Bay CH B30~B50),,,,0,0,0,0,112,0,0,0,,2012-11-24 08:00,2012-12-05 18:00,2014-07-11 08:00,2014-07-11 08:00,,2017-01-01 00:00,2017-01-01 00:00,,,2012-11-24 08:00,2012-12-10 18:00,,,,,PT_Normal,,,,,9ZU+G6DmRbCv0ofWd2VIwg,1hDsiKpJOUizDmhuDl6Kug,,,N,0,0,,,2017-01-24 14:42,2017-01-24 15:40,CLEMENTL,CLEMENTL
657,49428484,751235,10651536,1239098,1,100,N,N,N,CP_Drtn,TT_Task,DT_FixedDUR2,RV_OK,TK_Complete,823A-KTRD-S5-1090,Remaining excavation from GL to FL +5.0mPD Up stream and saw cut D-wall,,,,0,0,0,0,88,0,0,0,,2012-12-14 08:00,2012-12-27 18:00,2014-07-11 08:00,2014-07-11 08:00,,2017-01-01 00:00,2017-01-01 00:00,,,2013-06-14 08:00,2013-06-26 18:00,,,,,PT_Normal,,,,,z0yZ+JWGTRGlq2HJ5bGmcw,c9n8fBtYrUqnLevlFC/hAg,,,N,0,0,,,2017-01-24 14:42,2017-01-24 15:40,CLEMENTL,CLEMENTL
658,49428485,751235,10651537,1227199,1,100,N,N,N,CP_Drtn,TT_Task,DT_FixedDUR2,RV_OK,TK_Complete,823A-NT-KTR-S13-1010,Kam Tin River Diversion (Stage 1-3),,,,0,0,0,0,1896,0,0,0,,2011-03-16 08:00,2011-12-31 18:00,2014-07-11 08:00,2014-07-11 08:00,,2017-01-01 00:00,2017-01-01 00:00,,,2011-03-16 08:00,2011-12-31 18:00,,,,,PT_Normal,,,,,kmgpEqG+SN+fzhZMmSeNrA,,,,N,0,0,,,2017-01-24 14:42,2017-01-24 15:40,CLEMENTL,CLEMENTL
659,49428486,751235,10651538,1239098,1,100,N,N,N,CP_Drtn,TT_Task,DT_FixedDUR2,RV_OK,TK_Complete,823A-KTRD-S6-1010,Relocation of temporary concrete block at Up stream for construction of mass concrete wall at side B,,,,0,0,0,0,16,0,0,0,,2012-12-27 08:00,2012-12-29 18:00,2014-07-11 08:00,2014-07-11 08:00,,2017-01-01 00:00,2017-01-01 00:00,,,2013-07-20 08:00,2013-07-22 18:00,,,,,PT_Normal,,,,,lb0a4STbRxmdtFvxt3ahrw,GcxIIcgfg0Gr3v/FOYhzqQ,,,N,0,0,,,2017-01-24 14:42,2017-01-24 15:40,CLEMENTL,CLEMENTL
660,49428487,751235,10651538,1239098,1,100,N,N,N,CP_Drtn,TT_Task,DT_FixedDUR2,RV_OK,TK_Complete,823A-KTRD-S6-1020,Relocation of temporary concrete block at Down stream for construction of mass concrete wall at side B,,,,0,0,0,0,16,0,0,0,,2012-12-31 08:00,2013-01-03 18:00,2014-07-11 08:00,2014-07-11 08:00,,2017-01-01 00:00,2017-01-01 00:00,,,2013-07-23 08:00,2013-07-24 18:00,,,,,PT_Normal,,,,,BormfNAtSUmDPrKZSKCIQA,usRAdS0Y30uNNcv2CqISlw,,,N,0,0,,,2017-01-24 14:42,2017-01-24 15:40,CLEMENTL,CLEMENTL
661,49428488,751235,10651538,1239098,1,100,N,N,N,CP_Drtn,TT_Task,DT_FixedDUR2,RV_OK,TK_Complete,823A-KTRD-S6-1030,Construction of mass concrete wall to +11.0mPD at Up stream of side B (3 bay CH B0~B30),,,,0,0,0,0,144,0,0,0,,2012-12-27 08:00,2013-01-10 18:00,2014-07-11 08:00,2014-07-11 08:00,,2017-01-01 00:00,2017-01-01 00:00,,,2013-07-23 08:00,2013-08-12 18:00,,,,,PT_Normal,,,,,10qEEhjDTsyxM3Suiy3SRw,kseFzabf70u1DP8ol/QblQ,,,N,0,0,,,2017-01-24 14:42,2017-01-24 15:40,CLEMENTL,CLEMENTL
662,49428489,751235,10651538,1239098,1,100,N,N,N,CP_Drtn,TT_Task,DT_FixedDUR2,RV_OK,TK_Complete,823A-KTRD-S6-1040,Construction of mass concrete wall to +11.0mPD at Down stream of side B (4 bay CH B0~B30),,,,0,0,0,0,160,0,0,0,,2013-01-11 08:00,2013-01-19 18:00,2014-07-11 08:00,2014-07-11 08:00,,2017-01-01 00:00,2017-01-01 00:00,,,2013-07-25 08:00,2013-08-16 18:00,,,,,PT_Normal,,,,,az2h2ax+T+u1cwEtk4siiw,lyK0eo8d4k6JgFZGD9pLDw,,,N,0,0,,,2017-01-24 14:42,2017-01-24 15:40,CLEMENTL,CLEMENTL
663,49428490,751235,10651541,1227199,1,100,N,N,N,CP_Drtn,TT_Task,DT_FixedDUR2,RV_OK,TK_Complete,823A-ST-SCC-ELS-1130,Excavation to formation and place blinding Bay 4a,,,,0,0,0,0,424,0,0,0,,2012-10-18 08:00,2012-12-18 18:00,2014-01-05 18:00,2014-01-05 18:00,,2017-01-01 00:00,2017-01-01 00:00,,,2012-10-18 08:00,2012-12-19 18:00,,,,,PT_Normal,,,,,QnJW8iRURHed6T88UgvtCg,9pA8YjraGEuDmrf4Lt84uA,,,Y,0,0,,,2017-01-24 14:42,2017-01-24 14:53,CLEMENTL,CLEMENTL
664,49428491,751235,10651541,1227199,1,100,N,N,N,CP_Drtn,TT_Task,DT_FixedDUR2,RV_OK,TK_Complete,823A-ST-SCC-ELS-1120,Construct temp. 500mm thick plain concrete base slab at Bay 5 & 6,,,,0,0,0,0,24,0,0,0,,2012-10-15 08:00,2012-10-17 18:00,2014-01-05 18:00,2014-01-05 18:00,,2017-01-01 00:00,2017-01-01 00:00,,,2012-10-15 08:00,2012-10-17 18:00,,,,,PT_Normal,,,,,AribTvxITsGAkYsCbriNUg,9QQ22Dy1KUmsCzAj8VwoKQ,,,Y,0,0,,,2017-01-24 14:42,2017-01-24 14:53,CLEMENTL,CLEMENTL
665,49428492,751235,10651541,1239098,1,100,N,N,N,CP_Drtn,TT_Task,DT_FixedDUR2,RV_OK,TK_Complete,823A-ST-SCC-ELS-1150,Excavation to formation and place blinding Bay3,,,,0,0,0,0,72,0,0,0,,2013-01-09 08:00,2013-01-24 18:00,2014-01-05 18:00,2014-01-05 18:00,,2017-01-01 00:00,2017-01-01 00:00,,,2013-07-13 08:00,2013-07-23 18:00,,,,,PT_Normal,,,,,x6/1TRw5RvSmxYGJvgBigQ,,,,N,0,0,,,2017-01-24 14:42,2017-01-24 14:53,CLEMENTL,CLEMENTL
666,49428493,751235,10651541,1239098,1,100,N,N,N,CP_Drtn,TT_Task,DT_FixedDUR2,RV_OK,TK_Complete,823A-ST-SCC-ELS-1160,Excavation to formation and place blinding Bay2 to Bay1,,,,0,0,0,0,120,0,0,0,,2013-02-07 08:00,2013-02-16 18:00,2014-01-05 18:00,2014-01-05 18:00,,2017-01-01 00:00,2017-01-01 00:00,,,2013-07-24 08:00,2013-08-09 18:00,,,,,PT_Normal,,,,,/HvD3fDMTpWfWAQ5mg2sHw,,,,N,0,0,,,2017-01-24 14:42,2017-01-24 14:53,CLEMENTL,CLEMENTL
667,49428494,751235,10651541,1227199,1,100,N,N,N,CP_Drtn,TT_Task,DT_FixedDUR2,RV_OK,TK_Complete,823A-ST-SCC-ELS-1010,Excavate up to +22.0mPD (3720m3),,,,0,920,0,920,96,760,760,0,,2012-05-18 08:00,2012-05-31 18:00,2014-01-05 18:00,2014-01-05 18:00,,2017-01-01 00:00,2017-01-01 00:00,,,2012-05-18 08:00,2012-05-31 18:00,,,,,PT_Normal,,,,,avVlLQJ5T6qrNn5iHj5PhA,VA/PBmP6wUmXKCXhCzLhPg,,,Y,920,760,,,2017-01-24 14:42,2017-01-24 14:53,CLEMENTL,CLEMENTL
668,49428495,751235,10651541,1227199,1,100,N,N,N,CP_Drtn,TT_Task,DT_FixedDUR2,RV_OK,TK_Complete,823A-ST-SCC-ELS-1020,Install Strut S1 +22.5mPD,,,,0,432,0,432,48,240,240,0,,2012-06-01 08:00,2012-06-07 18:00,2014-01-05 18:00,2014-01-05 18:00,,2017-01-01 00:00,2017-01-01 00:00,,,2012-06-01 08:00,2012-06-07 18:00,,,,,PT_Normal,,,,,oN9HTNFLQTWPKjAOpCgXog,7nNW763XjEacDpV3p2ctSg,,,Y,432,240,,,2017-01-24 14:42,2017-01-24 14:53,CLEMENTL,CLEMENTL
669,49428496,751235,10651541,1227199,1,100,N,N,N,CP_Drtn,TT_Task,DT_FixedDUR2,RV_OK,TK_Complete,823A-ST-SCC-ELS-1030,Excavate up to +16.5mPD (4880m3),,,,0,2080,0,2080,128,1760,1760,0,,2012-06-08 08:00,2012-06-27 18:00,2014-01-05 18:00,2014-01-05 18:00,,2017-01-01 00:00,2017-01-01 00:00,,,2012-06-08 08:00,2012-06-27 18:00,,,,,PT_Normal,,,,,KPivwvppR1m1dhE929+Z1g,lzx40HUvj0WejZBbl9Z5pQ,,,Y,2080,1760,,,2017-01-24 14:42,2017-01-24 14:53,CLEMENTL,CLEMENTL
670,49428497,751235,10651541,1227199,1,100,N,N,N,CP_Drtn,TT_Task,DT_FixedDUR2,RV_OK,TK_Complete,823A-ST-SCC-ELS-1040,Install Strut S2 +17.0mPD,,,,0,432,0,432,48,240,240,0,,2012-06-28 08:00,2012-07-05 18:00,2014-01-05 18:00,2014-01-05 18:00,,2017-01-01 00:00,2017-01-01 00:00,,,2012-06-28 08:00,2012-07-05 18:00,,,,,PT_Normal,,,,,Fzgju4gISZ+wcu6inv79GQ,v4mMF4lsxkGIGZuMou3PtA,,,Y,432,240,,,2017-01-24 14:42,2017-01-24 14:53,CLEMENTL,CLEMENTL
671,49428498,751235,10651541,1227199,1,100,N,N,N,CP_Drtn,TT_Task,DT_FixedDUR2,RV_OK,TK_Complete,823A-ST-SCC-ELS-1050,Excavate up to +11.0mPD (6820m3),,,,0,2560,0,2560,184,2240,2240,0,,2012-07-06 08:00,2012-08-01 18:00,2014-01-05 18:00,2014-01-05 18:00,,2017-01-01 00:00,2017-01-01 00:00,,,2012-07-06 08:00,2012-08-01 18:00,,,,,PT_Normal,,,,,hhFWAOgFRb2aRKI/cuJArw,rBnsMKg66kK/HXxl+1fN2Q,,,Y,2560,2240,,,2017-01-24 14:42,2017-01-24 14:53,CLEMENTL,CLEMENTL
672,49428499,751235,10651541,1227199,1,100,N,N,N,CP_Drtn,TT_Task,DT_FixedDUR2,RV_OK,TK_Complete,823A-ST-SCC-ELS-1060,Install Strut S3 +11.5mPD,,,,0,432,0,432,48,240,240,0,,2012-08-02 08:00,2012-08-08 18:00,2014-01-05 18:00,2014-01-05 18:00,,2017-01-01 00:00,2017-01-01 00:00,,,2012-08-02 08:00,2012-08-08 18:00,,,,,PT_Normal,,,,,zNgsorfGTriiYaqT+THYiw,KsAaALFqNUSscfRN1PwbfA,,,Y,432,240,,,2017-01-24 14:42,2017-01-24 14:53,CLEMENTL,CLEMENTL
673,49428500,751235,10651541,1227199,1,100,N,N,N,CP_Drtn,TT_Task,DT_FixedDUR2,RV_OK,TK_Complete,823A-ST-SCC-ELS-1070,Excavate up to +7.0mPD (4960m3),,,,0,2048,0,2048,136,1792,1792,0,,2012-08-09 08:00,2012-08-28 18:00,2014-01-05 18:00,2014-01-05 18:00,,2017-01-01 00:00,2017-01-01 00:00,,,2012-08-09 08:00,2012-08-28 18:00,,,,,PT_Normal,,,,,AFFkxYQJRMWBcYFe+dBARw,rF30b5u6UUaP6MsfNKCdMA,,,Y,2048,1792,,,2017-01-24 14:42,2017-01-24 14:53,CLEMENTL,CLEMENTL
674,49428501,751235,10651541,1227199,1,100,N,N,N,CP_Drtn,TT_Task,DT_FixedDUR2,RV_OK,TK_Complete,823A-ST-SCC-ELS-1080,Install Strut S4 +7.5mPD,,,,0,432,0,432,48,240,240,0,,2012-08-29 08:00,2012-09-04 18:00,2014-01-05 18:00,2014-01-05 18:00,,2017-01-01 00:00,2017-01-01 00:00,,,2012-08-29 08:00,2012-09-04 18:00,,,,,PT_Normal,,,,,HAT+RX8JSZSbR+tSBcnKFA,CGdvSoipDkOqtJVuXkEgXQ,,,Y,432,240,,,2017-01-24 14:42,2017-01-24 14:53,CLEMENTL,CLEMENTL
675,49428502,751235,10651541,1227199,1,100,N,N,N,CP_Drtn,TT_Task,DT_FixedDUR2,RV_OK,TK_Complete,823A-ST-SCC-ELS-1090,Excavate up to +3.5mPD (4340m3),,,,0,1792,0,1792,112,1568,1568,0,,2012-09-05 08:00,2012-09-20 18:00,2014-01-05 18:00,2014-01-05 18:00,,2017-01-01 00:00,2017-01-01 00:00,,,2012-09-05 08:00,2012-09-20 18:00,,,,,PT_Normal,,,,,3xuR2SGTSF+NVX62DAivHg,mBfwYo4QS0+oeZQjz7xmFw,,,Y,1792,1568,,,2017-01-24 14:42,2017-01-24 14:53,CLEMENTL,CLEMENTL
676,49428503,751235,10651541,1227199,1,100,N,N,N,CP_Drtn,TT_Task,DT_FixedDUR2,RV_OK,TK_Complete,823A-ST-SCC-ELS-1100,Install Strut S5 +4.0mPD,,,,0,432,0,432,48,240,240,0,,2012-09-21 08:00,2012-09-27 18:00,2014-01-05 18:00,2014-01-05 18:00,,2017-01-01 00:00,2017-01-01 00:00,,,2012-09-21 08:00,2012-09-27 18:00,,,,,PT_Normal,,,,,uQSxPj4wSZ2r5kVJhO1A/A,U9r4xVmA7UqeCs50+o5lGA,,,Y,432,240,,,2017-01-24 14:42,2017-01-24 14:53,CLEMENTL,CLEMENTL
677,49428504,751235,10651541,1227199,1,100,N,N,N,CP_Drtn,TT_Task,DT_FixedDUR2,RV_OK,TK_Complete,823A-ST-SCC-ELS-1110,Excavate up to formation (4960m3),,,,0,1736,0,1736,96,1680,1680,0,,2012-09-28 08:00,2012-10-13 18:00,2014-01-05 18:00,2014-01-05 18:00,,2017-01-01 00:00,2017-01-01 00:00,,,2012-09-28 08:00,2012-10-13 18:00,,,,,PT_Normal,,,,,n7R+s3aISXi6bfA37niszg,CmLGnvbtYUGluQ6tmM0Izw,,,Y,1736,1680,,,2017-01-24 14:42,2017-01-24 14:53,CLEMENTL,CLEMENTL
678,49428505,751235,10651541,1239098,1,100,N,N,N,CP_Drtn,TT_Task,DT_FixedDUR2,RV_OK,TK_Complete,823A-ST-SCC-ELS-1140,Excavation to formation and place blinding Bay 4b,,,,0,0,0,0,144,0,0,0,,2012-12-27 08:00,2013-01-12 18:00,2014-01-05 18:00,2014-01-05 18:00,,2017-01-01 00:00,2017-01-01 00:00,,,2013-06-21 08:00,2013-07-12 18:00,,,,,PT_Normal,,,,,5CqAgrhjR52jf6EXvGmTYg,,,,Y,0,0,,,2017-01-24 14:42,2017-01-24 14:53,CLEMENTL,CLEMENTL
679,49428506,751235,10651542,1227199,1,100,N,N,N,CP_Drtn,TT_Task,DT_FixedDUR2,RV_OK,TK_Complete,823A-ST-SCCT-BF-1040,Water proofing and concrete backfilling to top of Tunnel Bay 4,,,,0,0,0,0,80,0,0,0,,2013-05-02 08:00,2013-05-18 18:00,2014-07-24 08:00,2014-07-24 08:00,,2017-01-01 00:00,2017-01-01 00:00,,,2013-06-08 08:00,2013-06-20 18:00,,,,,PT_Normal,,,,,SwMlSdcmQ76dfk40Kk1Csw,,,,Y,0,0,,,2017-01-24 14:42,2017-01-24 14:53,CLEMENTL,CLEMENTL
680,49428507,751235,10651542,1227199,1,100,N,N,N,CP_Drtn,TT_Task,DT_FixedDUR2,RV_OK,TK_Complete,823A-ST-SCCT-BF-1060,Water proofing and concrete backfilling to top of Tunnel Bay  6,,,,0,0,0,0,80,0,0,0,,2013-01-26 08:00,2013-02-15 18:00,2014-07-24 08:00,2014-07-24 08:00,,2017-01-01 00:00,2017-01-01 00:00,,,2013-06-01 08:00,2013-06-13 18:00,,,,,PT_Normal,,,,,QWGSrc92RHWsi52Jvnqbdw,,,,Y,0,0,,,2017-01-24 14:42,2017-01-24 14:53,CLEMENTL,CLEMENTL
681,49428508,751235,10651542,1239098,1,100,N,N,N,CP_Drtn,TT_Task,DT_FixedDUR2,RV_OK,TK_Complete,823A-ST-SCCT-BF-1050,Water proofing and concrete backfilling to top of Tunnel Bay 5 and remove S3 & S2,,,,0,0,0,0,80,0,0,0,,2013-01-28 08:00,2013-02-15 18:00,2014-01-05 18:00,2014-01-05 18:00,,2017-01-01 00:00,2017-01-01 00:00,,,2013-06-01 08:00,2013-06-13 18:00,,,,,PT_Normal,,,,,dcLolhg+SZWmH9DzTntJBQ,,,,Y,0,0,,,2017-01-24 14:42,2017-01-24 14:53,CLEMENTL,CLEMENTL
682,49428509,751235,10651542,1239098,1,100,N,N,N,CP_Drtn,TT_Task,DT_FixedDUR2,RV_OK,TK_Complete,823A-ST-SCCT-BF-1010,Water proofing and soil backfilling to 0.5m below top of Tunnel Bay 3 to Bay 1,,,,0,0,0,0,112,0,0,0,,2013-09-24 08:00,2013-10-17 18:00,2014-01-05 18:00,2014-01-05 18:00,,2017-01-01 00:00,2017-01-01 00:00,,,2013-10-02 08:00,2013-10-18 18:00,,,,,PT_Normal,,,,,3yWW8/XXTtKnzbY+ypaKNg,,,,N,0,0,,,2017-01-24 14:42,2017-01-24 14:53,CLEMENTL,CLEMENTL
683,49428510,751235,10651542,1239098,1,100,N,N,N,CP_Drtn,TT_Task,DT_FixedDUR2,RV_OK,TK_Complete,823A-ST-SCCT-BF-1020,Mass infill between D-wall and tunnel wall,,,,0,0,0,0,32,0,0,0,,2013-09-20 08:00,2013-10-17 18:00,2014-01-05 18:00,2014-01-05 18:00,,2017-01-01 00:00,2017-01-01 00:00,,,2013-10-11 08:00,2013-10-16 18:00,,,,,PT_Normal,,,,,XkzEn2RQQ4KMc3rD6JxB7A,,,,N,0,0,,,2017-01-24 14:42,2017-01-24 14:53,CLEMENTL,CLEMENTL
684,49428511,751235,10651542,1239098,1,100,N,N,N,CP_Drtn,TT_Task,DT_FixedDUR2,RV_OK,TK_Complete,823A-ST-SCCT-BF-1030,Removal S3 and S2,,,,0,0,0,0,80,0,0,0,,2013-10-11 08:00,2013-10-21 18:00,2014-01-05 18:00,2014-01-05 18:00,,2017-01-01 00:00,2017-01-01 00:00,,,2013-11-13 08:00,2013-11-23 18:00,,,,,PT_Normal,,,,,3WS8stY3ShmMrirmRxYDwA,,,,N,0,0,,,2017-01-24 14:42,2017-01-24 14:53,CLEMENTL,CLEMENTL
685,49428512,751235,10651543,1227199,1,100,N,N,N,CP_Drtn,TT_Task,DT_FixedDUR2,RV_OK,TK_Complete,823A-ST-SCC-DW-1010,Pre-drilling and guidewall,,,,0,6160,0,6160,440,1320,1320,0,,2011-07-12 08:00,2011-09-14 18:00,2014-01-05 18:00,2014-01-05 18:00,,2017-01-01 00:00,2017-01-01 00:00,,,2011-07-12 08:00,2011-09-14 18:00,,,,,PT_Normal,,,,,ly9y6pCxQQCB50XGT9muuQ,LmB0MMQDokuPi/SwQmJVEA,,,Y,6160,1320,,,2017-01-24 14:42,2017-01-24 14:53,CLEMENTL,CLEMENTL
686,49428513,751235,10651543,1227199,1,100,N,N,N,CP_Drtn,TT_Task,DT_FixedDUR2,RV_OK,TK_Complete,823A-ST-SCC-DW-1020,D-wall construction (2844m3),,,,0,23088,0,23088,888,3552,3552,0,,2011-09-15 08:00,2012-01-31 18:00,2014-01-05 18:00,2014-01-05 18:00,,2017-01-01 00:00,2017-01-01 00:00,,,2011-09-15 08:00,2012-01-31 18:00,,,,,PT_Normal,,,,,svhppuc9S+W14NJ3hBz9vA,1boFW7DBd0+lfpNLcn88Og,,,Y,23088,3552,,,2017-01-24 14:42,2017-01-24 14:53,CLEMENTL,CLEMENTL
687,49428514,751235,10651543,1227199,1,100,N,N,N,CP_Drtn,TT_Task,DT_FixedDUR2,RV_OK,TK_Complete,823A-ST-SCC-DW-1030,"Sonic test, shear pin, toe grout and pumping Test",,,,0,3840,0,3840,688,2880,2880,0,,2012-02-01 08:00,2012-05-17 18:00,2014-01-05 18:00,2014-01-05 18:00,,2017-01-01 00:00,2017-01-01 00:00,,,2012-02-01 08:00,2012-05-17 18:00,,,,,PT_Normal,,,,,A1Px4muHSOqrlJ9cIWBRtQ,PGFcZbrVkEeer67A3hGeew,,,Y,3840,2880,,,2017-01-24 14:42,2017-01-24 14:53,CLEMENTL,CLEMENTL
688,49428515,751235,10651546,1227199,1,100,N,N,N,CP_Drtn,TT_Task,DT_FixedDUR2,RV_OK,TK_Complete,823A-ST-SCCT-1a-1010,Placing of waterproof member T-lock & testing for base slab,,,,0,0,0,64,16,0,0,0,,2013-03-11 08:00,2013-03-11 18:00,2014-01-05 18:00,2014-01-05 18:00,,2017-01-01 00:00,2017-01-01 00:00,,,2013-06-01 08:00,2013-06-03 18:00,,,,,PT_Normal,,,,,eWenI6vITGOTt0F0jWxU9A,rSrVn1H9DkSAUOFBgU2Lxw,,,N,0,0,,,2017-01-24 14:42,2017-01-24 14:53,CLEMENTL,CLEMENTL
689,49428516,751235,10651546,1227199,1,100,N,N,N,CP_Drtn,TT_Task,DT_FixedDUR2,RV_OK,TK_Complete,823A-ST-SCCT-1a-1020,Erect external formwork for base slab,,,,0,0,0,104,16,8,0,0,,2013-03-12 08:00,2013-03-12 18:00,2014-01-05 18:00,2014-01-05 18:00,,2017-01-01 00:00,2017-01-01 00:00,,,2013-06-04 08:00,2013-06-05 18:00,,,,,PT_Normal,,,,,uzKwOPbXS1qKTG7HITGDGQ,4x0ngVAXJE6WqnpWDBT4kw,,,N,0,0,,,2017-01-24 14:42,2017-01-24 14:53,CLEMENTL,CLEMENTL
690,49428517,751235,10651546,1227199,1,100,N,N,N,CP_Drtn,TT_Task,DT_FixedDUR2,RV_OK,TK_Complete,823A-ST-SCCT-1a-1030,Rebar fixing for base slab,,,,0,0,0,272,24,16,0,0,,2013-04-08 08:00,2013-04-15 18:00,2014-01-05 18:00,2014-01-05 18:00,,2017-01-01 00:00,2017-01-01 00:00,,,2013-06-06 08:00,2013-06-08 18:00,,,,,PT_Normal,,,,,SAoZTLqMRBqnB/avFrNO5g,v0KOdW95bk2Qc+rKlMYkGg,,,N,0,0,,,2017-01-24 14:42,2017-01-24 14:53,CLEMENTL,CLEMENTL
691,49428518,751235,10651546,1227199,1,100,N,N,N,CP_Drtn,TT_Task,DT_FixedDUR2,RV_OK,TK_Complete,823A-ST-SCCT-1a-1040,Erect internal kicker formwork for base slab,,,,0,0,0,288,16,16,0,0,,2013-04-12 08:00,2013-04-15 18:00,2014-01-05 18:00,2014-01-05 18:00,,2017-01-01 00:00,2017-01-01 00:00,,,2013-06-10 08:00,2013-06-11 18:00,,,,,PT_Normal,,,,,FdW2iMJFQySQ7TSsG8Ow0w,nwS9Pi7saUGs69X56KFFuw,,,N,0,0,,,2017-01-24 14:42,2017-01-24 14:53,CLEMENTL,CLEMENTL
692,49428519,751235,10651546,1227199,1,100,N,N,N,CP_Drtn,TT_Task,DT_FixedDUR2,RV_OK,TK_Complete,823A-ST-SCCT-1a-1050,Concreting for base slab (363m3),,,,0,0,0,208,8,16,0,0,,2013-04-16 08:00,2013-04-16 18:00,2014-01-05 18:00,2014-01-05 18:00,,2017-01-01 00:00,2017-01-01 00:00,,,2013-06-13 08:00,2013-06-13 18:00,,,,,PT_Normal,,,,,77hlz+4CTx68XctrQppaoA,6sC+P8sQnU2o4hFhdPd3Aw,,,N,0,0,,,2017-01-24 14:42,2017-01-24 14:53,CLEMENTL,CLEMENTL
693,49428520,751235,10651546,1239099,1,100,N,N,N,CP_Drtn,TT_Task,DT_FixedDUR2,RV_OK,TK_Complete,823A-ST-SCCT-1a-1060,Curing for base slab,,,,0,0,0,224,56,0,0,0,,2013-04-17 08:00,2013-04-17 18:00,2014-01-05 18:00,2014-01-05 18:00,,2017-01-01 00:00,2017-01-01 00:00,,,2013-06-14 08:00,2013-06-20 18:00,,,,,PT_Normal,,,,,XsF4Cs8RRh+lETS1sVz/uQ,n38sJttaYEG8QlsWwlKFxQ,,,N,0,0,,,2017-01-24 14:42,2017-01-24 14:53,CLEMENTL,CLEMENTL
694,49428521,751235,10651546,1227199,1,100,N,N,N,CP_Drtn,TT_Task,DT_FixedDUR2,RV_OK,TK_Complete,823A-ST-SCCT-1a-1080,Removal of formwork for base slab,,,,0,0,0,72,8,8,0,0,,2013-04-18 08:00,2013-04-18 18:00,2014-01-05 18:00,2014-01-05 18:00,,2017-01-01 00:00,2017-01-01 00:00,,,2013-06-15 08:00,2013-06-15 18:00,,,,,PT_Normal,,,,,vzpjf36RQwmR38n/arY7QA,ZxvDxvLE5USAzSFYEOVUzg,,,N,0,0,,,2017-01-24 14:42,2017-01-24 14:53,CLEMENTL,CLEMENTL
695,49428522,751235,10651546,1227199,1,100,N,N,N,CP_Drtn,TT_Task,DT_FixedDUR2,RV_OK,TK_Complete,823A-ST-SCCT-1a-1090,Infill concrete in between D-wall and base slab,,,,0,0,0,128,8,16,0,0,,2013-05-02 08:00,2013-05-02 18:00,2014-01-05 18:00,2014-01-05 18:00,,2017-01-01 00:00,2017-01-01 00:00,,,2013-06-17 08:00,2013-06-17 18:00,,,,,PT_Normal,,,,,0fX71+rkQd6ZY7lOV6kY8w,my5Pm0w/PUmDNHx8VTPjOQ,,,N,0,0,,,2017-01-24 14:42,2017-01-24 14:53,CLEMENTL,CLEMENTL
696,49428523,751235,10651546,1227199,1,100,N,N,N,CP_Drtn,TT_Task,DT_FixedDUR2,RV_OK,TK_Complete,823A-ST-SCCT-1a-1110,Removal strut S5 and S4,,,,0,0,0,144,32,16,0,0,,2013-06-22 08:00,2013-06-24 18:00,2014-01-05 18:00,2014-01-05 18:00,,2017-01-01 00:00,2017-01-01 00:00,,,2013-07-02 08:00,2013-07-05 18:00,,,,,PT_Normal,,,,,XqVAzJLjQm++AVwkrobJZw,CvBDsrNhL02t9TXMX0jtUg,,,N,0,0,,,2017-01-24 14:42,2017-01-24 14:53,CLEMENTL,CLEMENTL
697,49428524,751235,10651546,1239098,1,100,N,N,N,CP_Drtn,TT_Task,DT_FixedDUR2,RV_OK,TK_Complete,823A-ST-SCCT-1a-1070,Preparation of construction joint for base slab,,,,0,0,0,0,8,0,0,0,,2013-04-18 08:00,2013-04-18 18:00,2014-01-05 18:00,2014-01-05 18:00,,2017-01-01 00:00,2017-01-01 00:00,,,2013-06-14 08:00,2013-06-14 18:00,,,,,PT_Normal,,,,,ZgWy2v/FQq+mT9kP388VtQ,lB9EMnf1L0CX3ezyuSSrUg,,,N,0,0,,,2017-01-24 14:42,2017-01-24 14:53,CLEMENTL,CLEMENTL
698,49428525,751235,10651546,1239099,1,100,N,N,N,CP_Drtn,TT_Task,DT_FixedDUR2,RV_OK,TK_Complete,823A-ST-SCCT-1a-1100,Curing,,,,0,0,0,224,8,0,0,0,,2013-05-02 08:00,2013-05-02 18:00,2014-01-05 18:00,2014-01-05 18:00,,2017-01-01 00:00,2017-01-01 00:00,,,2013-06-21 08:00,2013-06-21 18:00,,,,,PT_Normal,,,,,7RCvHaqBQuyfA889MoW9pg,Gl6gVHyO1Um00s28+Qg62Q,,,N,0,0,,,2017-01-24 14:42,2017-01-24 14:53,CLEMENTL,CLEMENTL
699,49428526,751235,10651547,1227199,1,100,N,N,N,CP_Drtn,TT_Task,DT_FixedDUR2,RV_OK,TK_Complete,823A-ST-SCCT-1a-4080,Side walkway and cable bracket (204m3),,,,0,0,0,1040,40,80,0,0,,2013-08-13 08:00,2013-08-29 18:00,2017-06-12 18:00,2017-06-12 18:00,,2017-01-01 00:00,2017-01-01 00:00,,,2014-01-13 08:00,2014-01-17 18:00,,,,,PT_Normal,,,,,LWkinV7RRvCP+tKoMXS1Sw,FNLSoPKc60+NK4SYjIsMaQ,,,N,0,0,,,2017-01-24 14:42,2017-01-24 15:36,CLEMENTL,CLEMENTL
700,49428527,751235,10651547,1227199,1,100,N,N,N,CP_Drtn,TT_Task,DT_FixedDUR2,RV_OK,TK_Complete,823A-ST-SCCT-1a-4010,Erect internal formwork & Falsework for roof,,,,0,0,0,624,32,48,0,0,,2013-08-30 08:00,2013-09-03 18:00,2014-01-05 18:00,2014-01-05 18:00,,2017-01-01 00:00,2017-01-01 00:00,,,2013-10-02 08:00,2013-10-05 18:00,,,,,PT_Normal,,,,,b3boK1kuQn2yXw9rh/nSXg,kgMpwr6sR02s+9KdGhq1vg,,,N,0,0,,,2017-01-24 14:42,2017-01-24 14:53,CLEMENTL,CLEMENTL
701,49428528,751235,10651547,1227199,1,100,N,N,N,CP_Drtn,TT_Task,DT_FixedDUR2,RV_OK,TK_Complete,823A-ST-SCCT-1a-4020,Rebar fixing for roof,,,,0,0,0,544,16,32,0,0,,2013-09-10 08:00,2013-09-14 18:00,2014-01-05 18:00,2014-01-05 18:00,,2017-01-01 00:00,2017-01-01 00:00,,,2013-10-07 08:00,2013-10-08 18:00,,,,,PT_Normal,,,,,HT58tcTgQ3SnrCWaONsrhA,BhZdcsQatE6bGqJ+binnGg,,,N,0,0,,,2017-01-24 14:42,2017-01-24 14:53,CLEMENTL,CLEMENTL
702,49428529,751235,10651547,1227199,1,100,N,N,N,CP_Drtn,TT_Task,DT_FixedDUR2,RV_OK,TK_Complete,823A-ST-SCCT-1a-4030,Erect external formwork for roof,,,,0,0,0,208,8,16,0,0,,2013-09-16 08:00,2013-09-17 18:00,2014-01-05 18:00,2014-01-05 18:00,,2017-01-01 00:00,2017-01-01 00:00,,,2013-10-09 08:00,2013-10-09 18:00,,,,,PT_Normal,,,,,38OBCzBSQcC/A8kpGvYO1w,BYlh7V9hF0qeWmjXa6sfRA,,,N,0,0,,,2017-01-24 14:42,2017-01-24 14:53,CLEMENTL,CLEMENTL
703,49428530,751235,10651547,1227199,1,100,N,N,N,CP_Drtn,TT_Task,DT_FixedDUR2,RV_OK,TK_Complete,823A-ST-SCCT-1a-4040,Concreting for roof (450m3),,,,0,0,0,208,8,16,0,0,,2013-09-18 08:00,2013-09-18 18:00,2014-01-05 18:00,2014-01-05 18:00,,2017-01-01 00:00,2017-01-01 00:00,,,2013-10-10 08:00,2013-10-10 18:00,,,,,PT_Normal,,,,,g8XX7wx7RqS2SK0C7Z7Q+w,I9RS4npi+U6fDXjGscNfrQ,,,N,0,0,,,2017-01-24 14:42,2017-01-24 14:53,CLEMENTL,CLEMENTL
704,49428531,751235,10651547,1239099,1,100,N,N,N,CP_Drtn,TT_Task,DT_FixedDUR2,RV_OK,TK_Complete,823A-ST-SCCT-1a-4050,Curing for roof,,,,0,0,0,224,56,0,0,0,,2013-09-19 08:00,2013-09-23 18:00,2014-01-05 18:00,2014-01-05 18:00,,2017-01-01 00:00,2017-01-01 00:00,,,2013-10-11 08:00,2013-10-17 18:00,,,,,PT_Normal,,,,,cWyDp+yEQZuwhow5YzBifg,S60a7y+3706KhHoXIOzWxA,,,N,0,0,,,2017-01-24 14:42,2017-01-24 14:53,CLEMENTL,CLEMENTL
705,49428532,751235,10651547,1227199,1,100,N,N,N,CP_Drtn,TT_Task,DT_FixedDUR2,RV_OK,TK_Complete,823A-ST-SCCT-1a-4070,Removal internal falsework and formwork for roof,,,,0,0,0,416,16,32,0,0,,2013-09-25 08:00,2013-09-26 18:00,2014-01-05 18:00,2014-01-05 18:00,,2017-01-01 00:00,2017-01-01 00:00,,,2013-10-18 08:00,2013-10-19 18:00,,,,,PT_Normal,,,,,9MSsysvdRj6g8nnreIaCQA,y5R4zlocJEqUW2R0OWLlpw,,,N,0,0,,,2017-01-24 14:42,2017-01-24 14:53,CLEMENTL,CLEMENTL
706,49428533,751235,10651547,1239098,1,100,N,N,N,CP_Drtn,TT_Task,DT_FixedDUR2,RV_OK,TK_Complete,823A-ST-SCCT-1a-4060,Preparation of construction joint  for roof,,,,0,0,0,0,8,0,0,0,,2013-09-24 08:00,2013-09-24 18:00,2014-01-05 18:00,2014-01-05 18:00,,2017-01-01 00:00,2017-01-01 00:00,,,2013-10-11 08:00,2013-10-11 18:00,,,,,PT_Normal,,,,,g28HInMLRV2IMwqCcRJoFA,SUHa9yB4AkSeSC8nB5UXxg,,,N,0,0,,,2017-01-24 14:42,2017-01-24 14:53,CLEMENTL,CLEMENTL
707,49428534,751235,10651548,1239099,1,100,N,N,N,CP_Drtn,TT_Task,DT_FixedDUR2,RV_OK,TK_Complete,823A-ST-SCCT-1a-2050,Curing for wall and roof,,,,0,0,0,224,80,0,0,0,,2013-07-29 08:00,2013-07-31 18:00,2014-01-05 18:00,2014-01-05 18:00,,2017-01-01 00:00,2017-01-01 00:00,,,2013-08-16 08:00,2013-08-25 18:00,,,,,PT_Normal,,,,,BfU4dsSwS3eTKHk2mtiFBA,g1/r/OAAjUGfFwLLY0OZng,,,N,0,0,,,2017-01-24 14:42,2017-01-24 14:53,CLEMENTL,CLEMENTL
708,49428535,751235,10651548,1227199,1,100,N,N,N,CP_Drtn,TT_Task,DT_FixedDUR2,RV_OK,TK_Complete,823A-ST-SCCT-1a-2080,Removal internal falsework and formwork for roof,,,,0,0,0,416,8,32,0,0,,2013-08-05 08:00,2013-08-05 18:00,2014-01-05 18:00,2014-01-05 18:00,,2017-01-01 00:00,2017-01-01 00:00,,,2013-09-05 08:00,2013-09-05 18:00,,,,,PT_Normal,,,,,H50S736zT16JhwD8pjSwjg,oBVZJ7x6pUew4LS0A97ugA,,,N,0,0,,,2017-01-24 14:42,2017-01-24 14:53,CLEMENTL,CLEMENTL
709,49428536,751235,10651548,1239098,1,100,N,N,N,CP_Drtn,TT_Task,DT_FixedDUR2,RV_OK,TK_Complete,823A-ST-SCCT-1a-2060,Preparation of construction joint for wall and roof,,,,0,0,0,0,8,0,0,0,,2013-08-01 08:00,2013-08-01 18:00,2014-01-05 18:00,2014-01-05 18:00,,2017-01-01 00:00,2017-01-01 00:00,,,2013-09-02 08:00,2013-09-02 18:00,,,,,PT_Normal,,,,,pkBG8+XsQvaoACoGu1qH3A,yjZvSh7F8U+LbJrfLhtXVw,,,N,0,0,,,2017-01-24 14:42,2017-01-24 14:53,CLEMENTL,CLEMENTL
710,49428537,751235,10651548,1227199,1,100,N,N,N,CP_Drtn,TT_Task,DT_FixedDUR2,RV_OK,TK_Complete,823A-ST-SCCT-1a-2070,Removal external and internal formwork for wall,,,,0,0,0,144,16,16,0,0,,2013-08-02 08:00,2013-08-03 18:00,2014-01-05 18:00,2014-01-05 18:00,,2017-01-01 00:00,2017-01-01 00:00,,,2013-09-03 08:00,2013-09-04 18:00,,,,,PT_Normal,,,,,rbfOBTF6QPScAXRGTAWfgw,0+xgPllYk0qUPoOoMbZVZQ,,,N,0,0,,,2017-01-24 14:42,2017-01-24 14:53,CLEMENTL,CLEMENTL
711,49428538,751235,10651548,1227199,1,100,N,N,N,CP_Drtn,TT_Task,DT_FixedDUR2,RV_OK,TK_Complete,823A-ST-SCCT-1a-2090,Side walkway and cable bracket (204m3),,,,0,0,0,1040,40,80,0,0,,2013-08-23 08:00,2013-10-18 18:00,2017-06-12 18:00,2017-06-12 18:00,,2017-01-01 00:00,2017-01-01 00:00,,,2014-02-04 08:00,2014-02-08 18:00,,,,,PT_Normal,,,,,qR7JbDsgQE2NJ51seBnTLw,otQdtqnDNEKATT5KfeThbQ,,,N,0,0,,,2017-01-24 14:42,2017-01-24 15:36,CLEMENTL,CLEMENTL
712,49428539,751235,10651548,1227199,1,100,N,N,N,CP_Drtn,TT_Task,DT_FixedDUR2,RV_OK,TK_Complete,823A-ST-SCCT-1a-2010,Erect internal formwork & Falsework for wall and roof,,,,0,0,0,624,32,48,0,0,,2013-06-26 08:00,2013-07-02 18:00,2014-01-05 18:00,2014-01-05 18:00,,2017-01-01 00:00,2017-01-01 00:00,,,2013-08-05 08:00,2013-08-08 18:00,,,,,PT_Normal,,,,,8keRJbK2S6aGw/X0eMyvPQ,8DImKg5tgkKG6DRDdsWd4w,,,N,0,0,,,2017-01-24 14:42,2017-01-24 14:53,CLEMENTL,CLEMENTL
713,49428540,751235,10651548,1227199,1,100,N,N,N,CP_Drtn,TT_Task,DT_FixedDUR2,RV_OK,TK_Complete,823A-ST-SCCT-1a-2020,Rebar fixing for wall and roof,,,,0,0,0,544,24,32,0,0,,2013-07-03 08:00,2013-07-15 18:00,2014-01-05 18:00,2014-01-05 18:00,,2017-01-01 00:00,2017-01-01 00:00,,,2013-08-09 08:00,2013-08-12 18:00,,,,,PT_Normal,,,,,EUDe7PeYTOiQhzVlw/wfRg,LwG1SM/S9EezrBil07fczg,,,N,0,0,,,2017-01-24 14:42,2017-01-24 14:53,CLEMENTL,CLEMENTL
714,49428541,751235,10651548,1227199,1,100,N,N,N,CP_Drtn,TT_Task,DT_FixedDUR2,RV_OK,TK_Complete,823A-ST-SCCT-1a-2030,Erect external formwork for wall and roof,,,,0,0,0,208,16,16,0,0,,2013-07-16 08:00,2013-07-26 18:00,2014-01-05 18:00,2014-01-05 18:00,,2017-01-01 00:00,2017-01-01 00:00,,,2013-08-13 08:00,2013-08-14 18:00,,,,,PT_Normal,,,,,4w7345vmQxOinuBXl5hJrw,OclMlQdDxUWx8hNEnNOmgg,,,N,0,0,,,2017-01-24 14:42,2017-01-24 14:53,CLEMENTL,CLEMENTL
715,49428542,751235,10651548,1227199,1,100,N,N,N,CP_Drtn,TT_Task,DT_FixedDUR2,RV_OK,TK_Complete,823A-ST-SCCT-1a-2040,Concreting for wall and roof (450m3),,,,0,0,0,208,8,16,0,0,,2013-07-27 08:00,2013-07-27 18:00,2014-01-05 18:00,2014-01-05 18:00,,2017-01-01 00:00,2017-01-01 00:00,,,2013-08-15 08:00,2013-08-15 18:00,,,,,PT_Normal,,,,,XcDNyd1+TcasLPNcEf70ZQ,JLde0Yz4LkSS8xGceCuXDw,,,N,0,0,,,2017-01-24 14:42,2017-01-24 14:53,CLEMENTL,CLEMENTL
716,49428543,751235,10651549,1227199,1,100,N,N,N,CP_Drtn,TT_Task,DT_FixedDUR2,RV_OK,TK_Complete,823A-ST-SCCT-1a-3070,Removal external and internal formwork for wall,,,,0,0,0,144,16,16,0,0,,2013-08-21 08:00,2013-08-22 18:00,2014-01-05 18:00,2014-01-05 18:00,,2017-01-01 00:00,2017-01-01 00:00,,,2013-09-06 08:00,2013-09-07 18:00,,,,,PT_Normal,,,,,G806JQBiTCGP3x0WEk+Fsg,PQIgTSc1mkKvFEFgM1P/TA,,,N,0,0,,,2017-01-24 14:42,2017-01-24 14:53,CLEMENTL,CLEMENTL
717,49428544,751235,10651549,1239099,1,100,N,N,N,CP_Drtn,TT_Task,DT_FixedDUR2,RV_OK,TK_Complete,823A-ST-SCCT-1a-3050,Curing for wall and roof,,,,0,0,0,224,80,0,0,0,,2013-08-08 08:00,2013-08-19 18:00,2014-01-05 18:00,2014-01-05 18:00,,2017-01-01 00:00,2017-01-01 00:00,,,2013-09-05 08:00,2013-09-14 18:00,,,,,PT_Normal,,,,,EkPK3gdOTYGTTqwUlRwrOA,X6WP11/7dUepLRmeabIVgA,,,N,0,0,,,2017-01-24 14:42,2017-01-24 14:53,CLEMENTL,CLEMENTL
718,49428545,751235,10651549,1227199,1,100,N,N,N,CP_Drtn,TT_Task,DT_FixedDUR2,RV_OK,TK_Complete,823A-ST-SCCT-1a-3080,Removal internal falsework and formwork for roof,,,,0,0,0,416,8,32,0,0,,2013-08-23 08:00,2013-08-23 18:00,2014-01-05 18:00,2014-01-05 18:00,,2017-01-01 00:00,2017-01-01 00:00,,,2013-09-16 08:00,2013-09-16 18:00,,,,,PT_Normal,,,,,kZPSPWA+S9WU54WuqkCCbQ,IUuTvkEX4ECwJAV4NsFsrg,,,N,0,0,,,2017-01-24 14:42,2017-01-24 14:53,CLEMENTL,CLEMENTL
719,49428546,751235,10651549,1239098,1,100,N,N,N,CP_Drtn,TT_Task,DT_FixedDUR2,RV_OK,TK_Complete,823A-ST-SCCT-1a-3060,Preparation of construction joint for wall and roof,,,,0,0,0,0,8,0,0,0,,2013-08-20 08:00,2013-08-20 18:00,2014-01-05 18:00,2014-01-05 18:00,,2017-01-01 00:00,2017-01-01 00:00,,,2013-09-05 08:00,2013-09-05 18:00,,,,,PT_Normal,,,,,WqetvQJqQS6ftN4dXvuAxw,8qrKXLtqKUa7MFV0fueRkQ,,,N,0,0,,,2017-01-24 14:42,2017-01-24 14:53,CLEMENTL,CLEMENTL
720,49428547,751235,10651549,1227199,1,100,N,N,N,CP_Drtn,TT_Task,DT_FixedDUR2,RV_OK,TK_Complete,823A-ST-SCCT-1a-3090,Side walkway and cable bracket (204m3),,,,0,0,0,1040,40,80,0,0,,2014-05-02 08:00,2014-05-09 18:00,2017-06-12 18:00,2017-06-12 18:00,,2017-01-01 00:00,2017-01-01 00:00,,,2014-11-19 08:00,2014-11-24 18:00,,,,,PT_Normal,,,,,jfnZQAXaSliVhKIklbQimw,71YbRAWPSEG5M2ZC2UCXCQ,,,N,0,0,,,2017-01-24 14:42,2017-01-24 15:36,CLEMENTL,CLEMENTL
721,49428548,751235,10651549,1227199,1,100,N,N,N,CP_Drtn,TT_Task,DT_FixedDUR2,RV_OK,TK_Complete,823A-ST-SCCT-1a-3010,Erect internal formwork & Falsework for wall and roof,,,,0,0,0,624,32,48,0,0,,2013-07-08 08:00,2013-07-15 18:00,2014-01-05 18:00,2014-01-05 18:00,,2017-01-01 00:00,2017-01-01 00:00,,,2013-08-07 08:00,2013-08-10 18:00,,,,,PT_Normal,,,,,CSW08hU0QOmKy+CcI51eYg,QtUQmAvk4Uq0/kMMQyupVw,,,N,0,0,,,2017-01-24 14:42,2017-01-24 14:53,CLEMENTL,CLEMENTL
722,49428549,751235,10651549,1227199,1,100,N,N,N,CP_Drtn,TT_Task,DT_FixedDUR2,RV_OK,TK_Complete,823A-ST-SCCT-1a-3020,Rebar fixing for wall and roof,,,,0,0,0,544,24,32,0,0,,2013-07-16 08:00,2013-07-29 18:00,2014-01-05 18:00,2014-01-05 18:00,,2017-01-01 00:00,2017-01-01 00:00,,,2013-08-12 08:00,2013-08-14 18:00,,,,,PT_Normal,,,,,jzInfMwiQgyCF3JpE5ckIQ,y1+O9rGFzUaA6kMLHzS7ag,,,N,0,0,,,2017-01-24 14:42,2017-01-24 14:53,CLEMENTL,CLEMENTL
723,49428550,751235,10651549,1227199,1,100,N,N,N,CP_Drtn,TT_Task,DT_FixedDUR2,RV_OK,TK_Complete,823A-ST-SCCT-1a-3030,Erect external formwork for wall and roof,,,,0,208,0,208,16,16,16,0,,2013-07-30 08:00,2013-08-01 18:00,2014-01-05 18:00,2014-01-05 18:00,,2017-01-01 00:00,2017-01-01 00:00,,,2013-08-15 08:00,2013-08-16 18:00,,,,,PT_Normal,,,,,ah7yNAVIQ+erxpTZD4k51g,LHZ4baOHkU6XSnoQtgfnHA,,,N,208,16,,,2017-01-24 14:42,2017-01-24 14:53,CLEMENTL,CLEMENTL
724,49428551,751235,10651549,1227199,1,100,N,N,N,CP_Drtn,TT_Task,DT_FixedDUR2,RV_OK,TK_Complete,823A-ST-SCCT-1a-3040,Concreting for wall and roof (450m3),,,,0,0,0,208,8,16,0,0,,2013-08-07 08:00,2013-08-07 18:00,2014-01-05 18:00,2014-01-05 18:00,,2017-01-01 00:00,2017-01-01 00:00,,,2013-09-04 08:00,2013-09-04 18:00,,,,,PT_Normal,,,,,dty3CsF+SxOTqzygjh3cMA,X3n9WJVWqES7WEgcjTYwFw,,,N,0,0,,,2017-01-24 14:42,2017-01-24 14:53,CLEMENTL,CLEMENTL
725,49428552,751235,10651551,1227199,1,100,N,N,N,CP_Drtn,TT_Task,DT_FixedDUR2,RV_OK,TK_Complete,823A-ST-SCCT-1b-1040,Erect internal kicker formwork for base slab,,,,0,0,0,288,16,16,0,0,,2013-02-27 08:00,2013-02-27 18:00,2014-01-05 18:00,2014-01-05 18:00,,2017-01-01 00:00,2017-01-01 00:00,,,2013-06-10 08:00,2013-06-11 18:00,,,,,PT_Normal,,,,,U8R9cJuwQPWq/AZ3leOt1w,q1QkqOpk00ikf0yJrGnzrw,,,N,0,0,,,2017-01-24 14:42,2017-01-24 14:53,CLEMENTL,CLEMENTL
726,49428553,751235,10651551,1227199,1,100,N,N,N,CP_Drtn,TT_Task,DT_FixedDUR2,RV_OK,TK_Complete,823A-ST-SCCT-1b-1010,Placing of waterproof member T-lock & testing for base slab,,,,0,0,0,64,16,0,0,0,,2013-02-21 08:00,2013-02-21 18:00,2014-01-05 18:00,2014-01-05 18:00,,2017-01-01 00:00,2017-01-01 00:00,,,2013-06-01 08:00,2013-06-03 18:00,,,,,PT_Normal,,,,,fMQ9Hy5wTNyxzk2WGiEPRw,gD1L3AlMn0ubw7fzB51Zdg,,,N,0,0,,,2017-01-24 14:42,2017-01-24 14:53,CLEMENTL,CLEMENTL
727,49428554,751235,10651551,1227199,1,100,N,N,N,CP_Drtn,TT_Task,DT_FixedDUR2,RV_OK,TK_Complete,823A-ST-SCCT-1b-1020,Erect external formwork for base slab,,,,0,0,0,104,16,8,0,0,,2013-02-22 08:00,2013-02-23 18:00,2014-01-05 18:00,2014-01-05 18:00,,2017-01-01 00:00,2017-01-01 00:00,,,2013-06-04 08:00,2013-06-05 18:00,,,,,PT_Normal,,,,,5tI8VsHwTGSQgvq8+TJYbw,UcapDav6q0C7i/P4zeDxNQ,,,N,0,0,,,2017-01-24 14:42,2017-01-24 14:53,CLEMENTL,CLEMENTL
728,49428555,751235,10651551,1227199,1,100,N,N,N,CP_Drtn,TT_Task,DT_FixedDUR2,RV_OK,TK_Complete,823A-ST-SCCT-1b-1030,Rebar fixing for base slab,,,,0,0,0,272,24,16,0,0,,2013-02-25 08:00,2013-02-27 18:00,2014-01-05 18:00,2014-01-05 18:00,,2017-01-01 00:00,2017-01-01 00:00,,,2013-06-06 08:00,2013-06-08 18:00,,,,,PT_Normal,,,,,Y4i2uQF0R4uJph6ovr4hHA,QgggWVJeHkKepJu7gULAkA,,,N,0,0,,,2017-01-24 14:42,2017-01-24 14:53,CLEMENTL,CLEMENTL
729,49428556,751235,10651551,1227199,1,100,N,N,N,CP_Drtn,TT_Task,DT_FixedDUR2,RV_OK,TK_Complete,823A-ST-SCCT-1b-1050,Concreting for base slab (363m3),,,,0,0,0,208,8,16,0,0,,2013-02-28 08:00,2013-02-28 18:00,2014-01-05 18:00,2014-01-05 18:00,,2017-01-01 00:00,2017-01-01 00:00,,,2013-06-13 08:00,2013-06-13 18:00,,,,,PT_Normal,,,,,SVfGvgHuSI6IGelHcE32jw,9e0knBx5lkusiSoBRAMwzg,,,N,0,0,,,2017-01-24 14:42,2017-01-24 14:53,CLEMENTL,CLEMENTL
730,49428557,751235,10651551,1239099,1,100,N,N,N,CP_Drtn,TT_Task,DT_FixedDUR2,RV_OK,TK_Complete,823A-ST-SCCT-1b-1060,Curing for base slab,,,,0,0,0,224,56,0,0,0,,2013-03-01 08:00,2013-03-04 18:00,2014-01-05 18:00,2014-01-05 18:00,,2017-01-01 00:00,2017-01-01 00:00,,,2013-06-14 08:00,2013-06-20 18:00,,,,,PT_Normal,,,,,K/wxaZ0wQle0ttpsLjLJkw,d9oCbD7L3k6vzZc/w/vrdA,,,N,0,0,,,2017-01-24 14:42,2017-01-24 14:53,CLEMENTL,CLEMENTL
731,49428558,751235,10651551,1227199,1,100,N,N,N,CP_Drtn,TT_Task,DT_FixedDUR2,RV_OK,TK_Complete,823A-ST-SCCT-1b-1080,Removal of formwork for base slab,,,,0,0,0,72,8,8,0,0,,2013-03-06 08:00,2013-03-07 18:00,2014-01-05 18:00,2014-01-05 18:00,,2017-01-01 00:00,2017-01-01 00:00,,,2013-06-15 08:00,2013-06-15 18:00,,,,,PT_Normal,,,,,OXKDEGzvQ9qjei7AovfCxQ,GIs408hjuU2Qu0X0+ZNfVQ,,,N,0,0,,,2017-01-24 14:42,2017-01-24 14:53,CLEMENTL,CLEMENTL
732,49428559,751235,10651551,1227199,1,100,N,N,N,CP_Drtn,TT_Task,DT_FixedDUR2,RV_OK,TK_Complete,823A-ST-SCCT-1b-1090,Infill concrete in between D-wall and base slab,,,,0,0,0,128,8,16,0,0,,2013-03-08 08:00,2013-03-08 18:00,2014-01-05 18:00,2014-01-05 18:00,,2017-01-01 00:00,2017-01-01 00:00,,,2013-06-17 08:00,2013-06-17 18:00,,,,,PT_Normal,,,,,fBa+CmEhQlq+SVSkBPfJ2A,W8ipGwSpM0e1TamycSllWA,,,N,0,0,,,2017-01-24 14:42,2017-01-24 14:53,CLEMENTL,CLEMENTL
733,49428560,751235,10651551,1227199,1,100,N,N,N,CP_Drtn,TT_Task,DT_FixedDUR2,RV_OK,TK_Complete,823A-ST-SCCT-1b-1110,Removal strut S5 and S4,,,,0,0,0,144,32,16,0,0,,2013-03-11 08:00,2013-03-11 18:00,2014-01-05 18:00,2014-01-05 18:00,,2017-01-01 00:00,2017-01-01 00:00,,,2013-06-22 08:00,2013-06-26 18:00,,,,,PT_Normal,,,,,MPZTDXtyQk+4tzaqxEsfXA,/AtCnXTrSEOcvZimoPSFUQ,,,N,0,0,,,2017-01-24 14:42,2017-01-24 14:53,CLEMENTL,CLEMENTL
734,49428561,751235,10651551,1239098,1,100,N,N,N,CP_Drtn,TT_Task,DT_FixedDUR2,RV_OK,TK_Complete,823A-ST-SCCT-1b-1070,Preparation of construction joint for base slab,,,,0,0,0,0,8,0,0,0,,2013-03-05 08:00,2013-03-06 18:00,2014-01-05 18:00,2014-01-05 18:00,,2017-01-01 00:00,2017-01-01 00:00,,,2013-06-14 08:00,2013-06-14 18:00,,,,,PT_Normal,,,,,xz5++l6NQzOU7RdJBLK2cQ,7aGx4+WNFEO73bMEUwwmlg,,,N,0,0,,,2017-01-24 14:42,2017-01-24 14:53,CLEMENTL,CLEMENTL
735,49428562,751235,10651551,1239099,1,100,N,N,N,CP_Drtn,TT_Task,DT_FixedDUR2,RV_OK,TK_Complete,823A-ST-SCCT-1b-1100,Curing,,,,0,0,0,224,8,0,0,0,,2013-03-09 08:00,2013-03-09 18:00,2014-01-05 18:00,2014-01-05 18:00,,2017-01-01 00:00,2017-01-01 00:00,,,2013-06-21 08:00,2013-06-21 18:00,,,,,PT_Normal,,,,,XzymWZjoT2mKW7c3gNn+Mg,4LbW3OwMa0Omp35s/Em3ng,,,N,0,0,,,2017-01-24 14:42,2017-01-24 14:53,CLEMENTL,CLEMENTL
736,49428563,751235,10651552,1227199,1,100,N,N,N,CP_Drtn,TT_Task,DT_FixedDUR2,RV_OK,TK_Complete,823A-ST-SCCT-1b-3010,Erect internal formwork & Falsework for wall and roof,,,,0,0,0,624,32,48,0,0,,2013-03-08 08:00,2013-03-12 18:00,2014-01-05 18:00,2014-01-05 18:00,,2017-01-01 00:00,2017-01-01 00:00,,,2013-07-11 08:00,2013-07-15 18:00,,,,,PT_Normal,,,,,Ebx8hpbiQPSyobUgDsWYLA,CZRRI8fdBkmpHPv9PbHX9g,,,N,0,0,,,2017-01-24 14:42,2017-01-24 14:53,CLEMENTL,CLEMENTL
737,49428564,751235,10651552,1227199,1,100,N,N,N,CP_Drtn,TT_Task,DT_FixedDUR2,RV_OK,TK_Complete,823A-ST-SCCT-1b-3020,Rebar fixing for wall and roof,,,,0,0,0,544,24,32,0,0,,2013-03-14 08:00,2013-03-18 18:00,2014-01-05 18:00,2014-01-05 18:00,,2017-01-01 00:00,2017-01-01 00:00,,,2013-07-16 08:00,2013-07-18 18:00,,,,,PT_Normal,,,,,HPT/euw8Tq6755kgzrgySA,/qkXhmlSg0mLICxbtUbSaw,,,N,0,0,,,2017-01-24 14:42,2017-01-24 14:53,CLEMENTL,CLEMENTL
738,49428565,751235,10651552,1227199,1,100,N,N,N,CP_Drtn,TT_Task,DT_FixedDUR2,RV_OK,TK_Complete,823A-ST-SCCT-1b-3030,Erect external formwork for wall and roof,,,,0,0,0,208,16,16,0,0,,2013-03-19 08:00,2013-03-21 18:00,2014-01-05 18:00,2014-01-05 18:00,,2017-01-01 00:00,2017-01-01 00:00,,,2013-07-19 08:00,2013-07-20 18:00,,,,,PT_Normal,,,,,UHieP+87RMif9MbXmn3qhw,JAIU/KgOvESaBkvC4apJig,,,N,0,0,,,2017-01-24 14:42,2017-01-24 14:53,CLEMENTL,CLEMENTL
739,49428566,751235,10651552,1227199,1,100,N,N,N,CP_Drtn,TT_Task,DT_FixedDUR2,RV_OK,TK_Complete,823A-ST-SCCT-1b-3040,Concreting for wall and roof (450m3),,,,0,0,0,208,8,16,0,0,,2013-03-27 08:00,2013-03-27 18:00,2014-01-05 18:00,2014-01-05 18:00,,2017-01-01 00:00,2017-01-01 00:00,,,2013-07-22 08:00,2013-07-22 18:00,,,,,PT_Normal,,,,,qlJXyB+OS52U3uHVUxr/WA,mD/7qlS7kk2iSupy80esIA,,,N,0,0,,,2017-01-24 14:42,2017-01-24 14:53,CLEMENTL,CLEMENTL
740,49428567,751235,10651552,1227199,1,100,N,N,N,CP_Drtn,TT_Task,DT_FixedDUR2,RV_OK,TK_Complete,823A-ST-SCCT-1b-3070,Removal external and internal formwork for wall,,,,0,0,0,144,16,16,0,0,,2013-03-30 08:00,2013-03-30 18:00,2014-01-05 18:00,2014-01-05 18:00,,2017-01-01 00:00,2017-01-01 00:00,,,2013-07-24 08:00,2013-07-25 18:00,,,,,PT_Normal,,,,,C+YFYNBTSICsFSsILbQwcw,BP9zLiBnb0Ozjrw/zbPwoQ,,,N,0,0,,,2017-01-24 14:42,2017-01-24 14:53,CLEMENTL,CLEMENTL
741,49428568,751235,10651552,1239099,1,100,N,N,N,CP_Drtn,TT_Task,DT_FixedDUR2,RV_OK,TK_Complete,823A-ST-SCCT-1b-3050,Curing for wall and roof,,,,0,0,0,224,80,0,0,0,,2013-03-28 08:00,2013-03-28 18:00,2014-01-05 18:00,2014-01-05 18:00,,2017-01-01 00:00,2017-01-01 00:00,,,2013-07-23 08:00,2013-08-01 18:00,,,,,PT_Normal,,,,,SE25/W+eTF+HjjbDNPfe0w,yG7oKVw03E+R4d4PkA6rtQ,,,N,0,0,,,2017-01-24 14:42,2017-01-24 14:53,CLEMENTL,CLEMENTL
742,49428569,751235,10651552,1227199,1,100,N,N,N,CP_Drtn,TT_Task,DT_FixedDUR2,RV_OK,TK_Complete,823A-ST-SCCT-1b-3080,Removal internal falsework and formwork for roof,,,,0,0,0,416,8,32,0,0,,2013-04-01 08:00,2013-04-01 18:00,2014-01-05 18:00,2014-01-05 18:00,,2017-01-01 00:00,2017-01-01 00:00,,,2013-08-02 08:00,2013-08-02 18:00,,,,,PT_Normal,,,,,zJonETGcQ+WUm3KMsr13Cw,LdzompVOoUWtEdQX4fNiEA,,,N,0,0,,,2017-01-24 14:42,2017-01-24 14:53,CLEMENTL,CLEMENTL
743,49428570,751235,10651552,1239098,1,100,N,N,N,CP_Drtn,TT_Task,DT_FixedDUR2,RV_OK,TK_Complete,823A-ST-SCCT-1b-3060,Preparation of construction joint for wall and roof,,,,0,0,0,0,8,0,0,0,,2013-03-29 08:00,2013-03-29 18:00,2014-01-05 18:00,2014-01-05 18:00,,2017-01-01 00:00,2017-01-01 00:00,,,2013-07-23 08:00,2013-07-23 18:00,,,,,PT_Normal,,,,,3AzMGhszQTuiNUEiKUzy9w,z0wPdlHyrUmvhghFU/AmoA,,,N,0,0,,,2017-01-24 14:42,2017-01-24 14:53,CLEMENTL,CLEMENTL
744,49428571,751235,10651552,1227199,1,100,N,N,N,CP_Drtn,TT_Task,DT_FixedDUR2,RV_OK,TK_Complete,823A-ST-SCCT-1b-3090,Side walkway and cable bracket,,,,0,0,0,1040,40,80,0,0,,2014-05-02 08:00,2014-05-09 18:00,2017-06-12 18:00,2017-06-12 18:00,,2017-01-01 00:00,2017-01-01 00:00,,,2014-11-13 08:00,2014-11-18 18:00,,,,,PT_Normal,,,,,bvrYuOyvQFmvp/HJ23WP0A,XEa08BfIpU2QJqMPATNqEA,,,N,0,0,,,2017-01-24 14:42,2017-01-24 15:36,CLEMENTL,CLEMENTL
745,49428572,751235,10651553,1227199,1,100,N,N,N,CP_Drtn,TT_Task,DT_FixedDUR2,RV_OK,TK_Complete,823A-ST-SCCT-1b-4020,Rebar fixing for roof,,,,0,544,0,544,16,32,32,0,,2013-07-18 08:00,2013-07-19 18:00,2014-01-05 18:00,2014-01-05 18:00,,2017-01-01 00:00,2017-01-01 00:00,,,2013-09-06 08:00,2013-09-07 18:00,,,,,PT_Normal,,,,,+tSCb/mkToyGFxpqpVVZbg,ZkuJV7WKY0SxVfverIppRQ,,,N,544,32,,,2017-01-24 14:42,2017-01-24 14:53,CLEMENTL,CLEMENTL
746,49428573,751235,10651553,1227199,1,100,N,N,N,CP_Drtn,TT_Task,DT_FixedDUR2,RV_OK,TK_Complete,823A-ST-SCCT-1b-4030,Erect shutter formwork for roof,,,,0,0,0,208,8,16,0,0,,2013-07-20 08:00,2013-07-20 18:00,2014-01-05 18:00,2014-01-05 18:00,,2017-01-01 00:00,2017-01-01 00:00,,,2013-09-09 08:00,2013-09-09 18:00,,,,,PT_Normal,,,,,Hrv3D1W+TByStXiOu64Abw,33Ob0uR5zEm7NnHSDtop4w,,,N,0,0,,,2017-01-24 14:42,2017-01-24 14:53,CLEMENTL,CLEMENTL
747,49428574,751235,10651553,1227199,1,100,N,N,N,CP_Drtn,TT_Task,DT_FixedDUR2,RV_OK,TK_Complete,823A-ST-SCCT-1b-4040,Concreting for roof (450m3),,,,0,0,0,208,8,16,0,0,,2013-07-22 08:00,2013-07-22 18:00,2014-01-05 18:00,2014-01-05 18:00,,2017-01-01 00:00,2017-01-01 00:00,,,2013-09-10 08:00,2013-09-10 18:00,,,,,PT_Normal,,,,,/itwWgSZTdaRGXkiOaD14g,n0z449rlS0iEKbYp7ipO1w,,,N,0,0,,,2017-01-24 14:42,2017-01-24 14:53,CLEMENTL,CLEMENTL
748,49428575,751235,10651553,1239099,1,100,N,N,N,CP_Drtn,TT_Task,DT_FixedDUR2,RV_OK,TK_Complete,823A-ST-SCCT-1b-4050,Curing for roof,,,,0,0,0,224,80,0,0,0,,2013-07-23 08:00,2013-08-02 18:00,2014-01-05 18:00,2014-01-05 18:00,,2017-01-01 00:00,2017-01-01 00:00,,,2013-09-11 08:00,2013-09-20 18:00,,,,,PT_Normal,,,,,uPCMwHHyTDaqpteon2AmXA,bRvQkrv8BE+dTpbkHJ/J/w,,,N,0,0,,,2017-01-24 14:42,2017-01-24 14:53,CLEMENTL,CLEMENTL
749,49428576,751235,10651553,1227199,1,100,N,N,N,CP_Drtn,TT_Task,DT_FixedDUR2,RV_OK,TK_Complete,823A-ST-SCCT-1b-4070,Removal internal falsework and formwork for roof,,,,0,416,0,416,16,32,32,0,,2013-08-19 08:00,2013-09-02 18:00,2014-01-05 18:00,2014-01-05 18:00,,2017-01-01 00:00,2017-01-01 00:00,,,2013-09-26 08:00,2013-09-27 18:00,,,,,PT_Normal,,,,,/cWumnaMQsiVdeJDkJ0a7Q,loo6X9aDGEuSb/cvpYpEuQ,,,N,416,32,,,2017-01-24 14:42,2017-01-24 14:53,CLEMENTL,CLEMENTL
750,49428577,751235,10651553,1239098,1,100,N,N,N,CP_Drtn,TT_Task,DT_FixedDUR2,RV_OK,TK_Complete,823A-ST-SCCT-1b-4060,Preparation of construction joint  for roof,,,,0,0,0,0,8,0,0,0,,2013-08-03 08:00,2013-08-03 18:00,2014-01-05 18:00,2014-01-05 18:00,,2017-01-01 00:00,2017-01-01 00:00,,,2013-09-11 08:00,2013-09-11 18:00,,,,,PT_Normal,,,,,ujnIa5BVQQeBQw+cqiz0qQ,SWlPqoTnH0OJIu6fatvfZg,,,N,0,0,,,2017-01-24 14:42,2017-01-24 14:53,CLEMENTL,CLEMENTL
751,49428578,751235,10651553,1227199,1,100,N,N,N,CP_Drtn,TT_Task,DT_FixedDUR2,RV_OK,TK_Complete,823A-ST-SCCT-1b-4080,Side walkway and cable bracket (204m3),,,,0,1040,0,1040,40,80,80,0,,2013-08-13 08:00,2013-10-12 18:00,2017-06-12 18:00,2017-06-12 18:00,,2017-01-01 00:00,2017-01-01 00:00,,,2013-12-06 08:00,2013-12-11 18:00,,,,,PT_Normal,,,,,0hGHNLZwS3+JlGNk+Tz3yQ,pjxL5WGBmkmD2do13jpq3g,,,N,1040,80,,,2017-01-24 14:42,2017-01-24 15:36,CLEMENTL,CLEMENTL
752,49428579,751235,10651553,1227199,1,100,N,N,N,CP_Drtn,TT_Task,DT_FixedDUR2,RV_OK,TK_Complete,823A-ST-SCCT-1b-4010,Erect internal formwork & Falsework for roof,,,,0,0,0,624,32,48,0,0,,2013-07-13 08:00,2013-07-17 18:00,2014-01-05 18:00,2014-01-05 18:00,,2017-01-01 00:00,2017-01-01 00:00,,,2013-09-02 08:00,2013-09-05 18:00,,,,,PT_Normal,,,,,MJ1rdySoSoKq0dfG18PI4Q,BWRknJjT4EiR7Qt9E2th/Q,,,N,0,0,,,2017-01-24 14:42,2017-01-24 14:53,CLEMENTL,CLEMENTL
753,49428580,751235,10651554,1227199,1,100,N,N,N,CP_Drtn,TT_Task,DT_FixedDUR2,RV_OK,TK_Complete,823A-ST-SCCT-1b-2090,Side walkway and cable bracket (204m3),,,,0,0,0,1040,40,80,0,0,,2013-08-30 08:00,2013-10-18 18:00,2017-06-12 18:00,2017-06-12 18:00,,2017-01-01 00:00,2017-01-01 00:00,,,2014-01-25 08:00,2014-01-30 18:00,,,,,PT_Normal,,,,,/l5QsaciRUeKZE/PGPHOgA,cnKL1UDtrEic5hVNnhDuHg,,,N,0,0,,,2017-01-24 14:42,2017-01-24 15:36,CLEMENTL,CLEMENTL
754,49428581,751235,10651554,1227199,1,100,N,N,N,CP_Drtn,TT_Task,DT_FixedDUR2,RV_OK,TK_Complete,823A-ST-SCCT-1b-2010,Erect internal formwork & Falsework for wall and roof,,,,0,0,0,624,80,48,0,0,,2013-03-01 08:00,2013-03-06 18:00,2014-01-05 18:00,2014-01-05 18:00,,2017-01-01 00:00,2017-01-01 00:00,,,2013-07-09 08:00,2013-07-19 18:00,,,,,PT_Normal,,,,,Gr6CSUyTSkin2RALyHbs7Q,Z9KDNiiahUSbFF6VbB+wIw,,,N,0,0,,,2017-01-24 14:42,2017-01-24 14:53,CLEMENTL,CLEMENTL
755,49428582,751235,10651554,1227199,1,100,N,N,N,CP_Drtn,TT_Task,DT_FixedDUR2,RV_OK,TK_Complete,823A-ST-SCCT-1b-2020,Rebar fixing for wall and roof,,,,0,0,0,544,24,32,0,0,,2013-03-07 08:00,2013-03-14 18:00,2014-01-05 18:00,2014-01-05 18:00,,2017-01-01 00:00,2017-01-01 00:00,,,2013-07-20 08:00,2013-07-23 18:00,,,,,PT_Normal,,,,,shY/LWZERP2eUhsWNWyCpA,rx+g+1N320irowwNUBewrg,,,N,0,0,,,2017-01-24 14:42,2017-01-24 14:53,CLEMENTL,CLEMENTL
756,49428583,751235,10651554,1227199,1,100,N,N,N,CP_Drtn,TT_Task,DT_FixedDUR2,RV_OK,TK_Complete,823A-ST-SCCT-1b-2030,Erect external formwork for wall and roof,,,,0,0,0,208,16,16,0,0,,2013-03-12 08:00,2013-03-14 18:00,2014-01-05 18:00,2014-01-05 18:00,,2017-01-01 00:00,2017-01-01 00:00,,,2013-07-24 08:00,2013-07-25 18:00,,,,,PT_Normal,,,,,Q3AaFCb2QSeEvwR/3mPSnQ,IdxlAXD7lUOirOauZF4bgg,,,N,0,0,,,2017-01-24 14:42,2017-01-24 14:53,CLEMENTL,CLEMENTL
757,49428584,751235,10651554,1227199,1,100,N,N,N,CP_Drtn,TT_Task,DT_FixedDUR2,RV_OK,TK_Complete,823A-ST-SCCT-1b-2070,Removal external and internal formwork for wall,,,,0,144,0,144,16,16,16,0,,2013-03-20 08:00,2013-03-21 18:00,2014-01-05 18:00,2014-01-05 18:00,,2017-01-01 00:00,2017-01-01 00:00,,,2013-07-29 08:00,2013-07-30 18:00,,,,,PT_Normal,,,,,Kw6WSDN1SyOhFTpq9bcSig,oCIauCMRXk+QllexuZWz6g,,,N,144,16,,,2017-01-24 14:42,2017-01-24 14:53,CLEMENTL,CLEMENTL
758,49428585,751235,10651554,1239099,1,100,N,N,N,CP_Drtn,TT_Task,DT_FixedDUR2,RV_OK,TK_Complete,823A-ST-SCCT-1b-2050,Curing for wall and roof,,,,0,0,0,224,80,0,0,0,,2013-03-16 08:00,2013-03-18 18:00,2014-01-05 18:00,2014-01-05 18:00,,2017-01-01 00:00,2017-01-01 00:00,,,2013-07-27 08:00,2013-08-05 18:00,,,,,PT_Normal,,,,,ZvybUsuHTl+g0fPQWeKVNA,V7vGvi4/jk+oeRJmjqLKoQ,,,N,0,0,,,2017-01-24 14:42,2017-01-24 14:53,CLEMENTL,CLEMENTL
759,49428586,751235,10651554,1227199,1,100,N,N,N,CP_Drtn,TT_Task,DT_FixedDUR2,RV_OK,TK_Complete,823A-ST-SCCT-1b-2080,Removal internal falsework and formwork for roof,,,,0,0,0,416,8,32,0,0,,2013-03-22 08:00,2013-03-22 18:00,2014-01-05 18:00,2014-01-05 18:00,,2017-01-01 00:00,2017-01-01 00:00,,,2013-08-06 08:00,2013-08-06 18:00,,,,,PT_Normal,,,,,zGmCEdZmSwO/9Op5Mex9fA,IDAa5+bKLkao/lLsI3l6rA,,,N,0,0,,,2017-01-24 14:42,2017-01-24 14:53,CLEMENTL,CLEMENTL
760,49428587,751235,10651554,1239098,1,100,N,N,N,CP_Drtn,TT_Task,DT_FixedDUR2,RV_OK,TK_Complete,823A-ST-SCCT-1b-2060,Preparation of construction joint for wall and roof,,,,0,0,0,0,8,0,0,0,,2013-03-19 08:00,2013-03-19 18:00,2014-01-05 18:00,2014-01-05 18:00,,2017-01-01 00:00,2017-01-01 00:00,,,2013-07-27 08:00,2013-07-27 18:00,,,,,PT_Normal,,,,,6lS8l1kZRGme9xYDerq/pg,OX7E0sJ8+UKeyJG153nZTw,,,N,0,0,,,2017-01-24 14:42,2017-01-24 14:53,CLEMENTL,CLEMENTL
761,49428588,751235,10651554,1227199,1,100,N,N,N,CP_Drtn,TT_Task,DT_FixedDUR2,RV_OK,TK_Complete,823A-ST-SCCT-1b-2040,Concreting for wall and roof (450m3),,,,0,0,0,208,8,16,0,0,,2013-03-15 08:00,2013-03-15 18:00,2014-01-05 18:00,2014-01-05 18:00,,2017-01-01 00:00,2017-01-01 00:00,,,2013-07-26 08:00,2013-07-26 18:00,,,,,PT_Normal,,,,,zwrTdfyPRJieIPaTxk41uw,zmldgU3xLU2x4ebBHL7okA,,,N,0,0,,,2017-01-24 14:42,2017-01-24 14:53,CLEMENTL,CLEMENTL
762,49428589,751235,10651556,1227199,1,100,N,N,N,CP_Drtn,TT_Task,DT_FixedDUR2,RV_OK,TK_Complete,823A-ST-SCCT-4a-1010,Placing of waterproof member T-lock & testing for base slab,,,,0,0,0,64,8,0,0,0,,2012-12-20 08:00,2012-12-20 18:00,2014-01-05 18:00,2014-01-05 18:00,,2017-01-01 00:00,2017-01-01 00:00,,,2013-06-01 08:00,2013-06-01 18:00,,,,,PT_Normal,,,,,7+F49Mo8QnCxl1xzwQ4CCA,O1iq+RxQcUaaktd1CHgSgQ,,,Y,0,0,,,2017-01-24 14:42,2017-01-24 14:53,CLEMENTL,CLEMENTL
763,49428590,751235,10651556,1227199,1,100,N,N,N,CP_Drtn,TT_Task,DT_FixedDUR2,RV_OK,TK_Complete,823A-ST-SCCT-4a-1020,Erect external formwork for base slab,,,,0,0,0,104,8,8,0,0,,2012-12-21 08:00,2012-12-22 18:00,2014-01-05 18:00,2014-01-05 18:00,,2017-01-01 00:00,2017-01-01 00:00,,,2013-06-03 08:00,2013-06-03 18:00,,,,,PT_Normal,,,,,dzh5INFbSWOa/gVfY/WXeg,i+TytOjNs0+AQCBETc4QkA,,,Y,0,0,,,2017-01-24 14:42,2017-01-24 14:53,CLEMENTL,CLEMENTL
764,49428591,751235,10651556,1227199,1,100,N,N,N,CP_Drtn,TT_Task,DT_FixedDUR2,RV_OK,TK_Complete,823A-ST-SCCT-4a-1030,Rebar fixing for base slab,,,,0,0,0,272,16,16,0,0,,2012-12-22 08:00,2012-12-24 18:00,2014-01-05 18:00,2014-01-05 18:00,,2017-01-01 00:00,2017-01-01 00:00,,,2013-06-04 08:00,2013-06-05 18:00,,,,,PT_Normal,,,,,lG4uhrVNTayOqSlnM6/gcg,6Y10FjF0MEieJ7ujUoqroQ,,,Y,0,0,,,2017-01-24 14:42,2017-01-24 14:53,CLEMENTL,CLEMENTL
765,49428592,751235,10651556,1227199,1,100,N,N,N,CP_Drtn,TT_Task,DT_FixedDUR2,RV_OK,TK_Complete,823A-ST-SCCT-4a-1040,Erect internal kicker formwork for base slab,,,,0,0,0,288,8,16,0,0,,2012-12-27 08:00,2012-12-27 18:00,2014-01-05 18:00,2014-01-05 18:00,,2017-01-01 00:00,2017-01-01 00:00,,,2013-06-06 08:00,2013-06-06 18:00,,,,,PT_Normal,,,,,wk24qoCGRZ+XlRUSAWZ8uw,eDrtTe1zRk2CDva3F86VvQ,,,Y,0,0,,,2017-01-24 14:42,2017-01-24 14:53,CLEMENTL,CLEMENTL
766,49428593,751235,10651556,1227199,1,100,N,N,N,CP_Drtn,TT_Task,DT_FixedDUR2,RV_OK,TK_Complete,823A-ST-SCCT-4a-1050,Concreting for base slab (363m3),,,,0,0,0,208,8,16,0,0,,2012-12-27 08:00,2012-12-27 18:00,2014-01-05 18:00,2014-01-05 18:00,,2017-01-01 00:00,2017-01-01 00:00,,,2013-06-06 08:00,2013-06-06 18:00,,,,,PT_Normal,,,,,hl0PONQBQvqUp/dVpWJ0Zg,y0d+p1dFAk2YVTNATqZhKQ,,,Y,0,0,,,2017-01-24 14:42,2017-01-24 14:53,CLEMENTL,CLEMENTL
767,49428594,751235,10651556,1239099,1,100,N,N,N,CP_Drtn,TT_Task,DT_FixedDUR2,RV_OK,TK_Complete,823A-ST-SCCT-4a-1060,Curing for base slab,,,,0,224,0,224,56,0,0,0,,2012-12-28 08:00,2013-01-09 18:00,2014-01-05 18:00,2014-01-05 18:00,,2017-01-01 00:00,2017-01-01 00:00,,,2013-06-07 08:00,2013-06-13 18:00,,,,,PT_Normal,,,,,zYfb2V+WR+y3TVGDaznpqw,2o4W946P4kK5r1uQr8kA0A,,,Y,224,0,,,2017-01-24 14:42,2017-01-24 14:53,CLEMENTL,CLEMENTL
768,49428595,751235,10651556,1227199,1,100,N,N,N,CP_Drtn,TT_Task,DT_FixedDUR2,RV_OK,TK_Complete,823A-ST-SCCT-4a-1080,Removal of formwork for base slab,,,,0,0,0,72,8,8,0,0,,2013-01-11 08:00,2013-01-11 18:00,2014-01-05 18:00,2014-01-05 18:00,,2017-01-01 00:00,2017-01-01 00:00,,,2013-06-08 08:00,2013-06-08 18:00,,,,,PT_Normal,,,,,dprUXIAiSOql+Q6eD7SM8w,4B9KXxbX50GBxajt0q4A9w,,,Y,0,0,,,2017-01-24 14:42,2017-01-24 14:53,CLEMENTL,CLEMENTL
769,49428596,751235,10651556,1227199,1,100,N,N,N,CP_Drtn,TT_Task,DT_FixedDUR2,RV_OK,TK_Complete,823A-ST-SCCT-4a-1090,Shear beam,,,,0,0,0,128,32,16,0,0,,2013-01-12 08:00,2013-01-12 18:00,2014-01-05 18:00,2014-01-05 18:00,,2017-01-01 00:00,2017-01-01 00:00,,,2013-06-10 08:00,2013-06-14 18:00,,,,,PT_Normal,,,,,SWCIy7qwTuSuXAf/HWyLFA,/hmfe7WmTkG35KU0XCbBcw,,,Y,0,0,,,2017-01-24 14:42,2017-01-24 14:53,CLEMENTL,CLEMENTL
770,49428597,751235,10651556,1227199,1,100,N,N,N,CP_Drtn,TT_Task,DT_FixedDUR2,RV_OK,TK_Complete,823A-ST-SCCT-4a-1110,Removal strut S5 and S4,,,,0,0,0,144,32,16,0,0,,2013-01-15 08:00,2013-01-26 18:00,2014-01-05 18:00,2014-01-05 18:00,,2017-01-01 00:00,2017-01-01 00:00,,,2013-06-17 08:00,2013-06-20 18:00,,,,,PT_Normal,,,,,r8Nqq+qRSze+RrR2qoEh2A,1qEQRLg88UKQs75+C2TeDQ,,,Y,0,0,,,2017-01-24 14:42,2017-01-24 14:53,CLEMENTL,CLEMENTL
771,49428598,751235,10651556,1239098,1,100,N,N,N,CP_Drtn,TT_Task,DT_FixedDUR2,RV_OK,TK_Complete,823A-ST-SCCT-4a-1070,Preparation of construction joint for base slab,,,,0,0,0,0,8,0,0,0,,2013-01-10 08:00,2013-01-10 18:00,2014-01-05 18:00,2014-01-05 18:00,,2017-01-01 00:00,2017-01-01 00:00,,,2013-06-07 08:00,2013-06-07 18:00,,,,,PT_Normal,,,,,vVTzg7opQnqWptj5RLQ93w,5OQmnOkxCkyjEOUjBlLXPA,,,Y,0,0,,,2017-01-24 14:42,2017-01-24 14:53,CLEMENTL,CLEMENTL
772,49428599,751235,10651556,1239099,1,100,N,N,N,CP_Drtn,TT_Task,DT_FixedDUR2,RV_OK,TK_Complete,823A-ST-SCCT-4a-1100,Curing,,,,0,0,0,224,8,0,0,0,,2013-01-14 08:00,2013-01-14 18:00,2014-01-05 18:00,2014-01-05 18:00,,2017-01-01 00:00,2017-01-01 00:00,,,2013-06-15 08:00,2013-06-15 18:00,,,,,PT_Normal,,,,,rXiaCnWSR4KCVuYZhDmZKA,sNkiSo3YU0mj9HPoYrk08A,,,Y,0,0,,,2017-01-24 14:42,2017-01-24 14:53,CLEMENTL,CLEMENTL
773,49428600,751235,10651557,1227199,1,100,N,N,N,CP_Drtn,TT_Task,DT_FixedDUR2,RV_OK,TK_Complete,823A-ST-SCCT-4a-3080,Removal internal falsework and formwork for roof,,,,0,0,0,416,8,32,0,0,,2013-03-11 08:00,2013-03-11 18:00,2014-01-05 18:00,2014-01-05 18:00,,2017-01-01 00:00,2017-01-01 00:00,,,2013-07-02 08:00,2013-07-02 18:00,,,,,PT_Normal,,,,,RCrWgPZJRkqzXy8URqLjlQ,lX+i5P5kokytzgWUFzE5+g,,,N,0,0,,,2017-01-24 14:42,2017-01-24 14:53,CLEMENTL,CLEMENTL
774,49428601,751235,10651557,1239098,1,100,N,N,N,CP_Drtn,TT_Task,DT_FixedDUR2,RV_OK,TK_Complete,823A-ST-SCCT-4a-3060,Preparation of construction joint for wall and roof,,,,0,0,0,0,8,0,0,0,,2013-03-08 08:00,2013-03-08 18:00,2014-01-05 18:00,2014-01-05 18:00,,2017-01-01 00:00,2017-01-01 00:00,,,2013-06-21 08:00,2013-06-21 18:00,,,,,PT_Normal,,,,,COPeTdd8RnaXRfjkT7WidQ,PVMPMo5BwkuzroifDmuO3A,,,Y,0,0,,,2017-01-24 14:42,2017-01-24 14:53,CLEMENTL,CLEMENTL
775,49428602,751235,10651557,1227199,1,100,N,N,N,CP_Drtn,TT_Task,DT_FixedDUR2,RV_OK,TK_Complete,823A-ST-SCCT-4a-3090,Side walkway and cable bracket (204m3),,,,0,1040,0,1040,40,80,80,0,,2015-07-02 08:00,2015-10-03 18:00,2017-06-12 18:00,2017-06-12 18:00,,2017-01-01 00:00,2017-01-01 00:00,,,2015-08-24 08:00,2015-08-28 18:00,,,,,PT_Normal,,,,,xmr4E69fQdygZohTlmyTgg,QvkL5cJ3PE6tZGJtaW+Wgg,,,N,1040,80,,,2017-01-24 14:42,2017-01-24 15:36,CLEMENTL,CLEMENTL
776,49428603,751235,10651557,1227199,1,100,N,N,N,CP_Drtn,TT_Task,DT_FixedDUR2,RV_OK,TK_Complete,823A-ST-SCCT-4a-3010,Erect internal formwork & Falsework for wall and roof,,,,0,0,0,624,32,48,0,0,,2013-02-18 08:00,2013-02-21 18:00,2014-01-05 18:00,2014-01-05 18:00,,2017-01-01 00:00,2017-01-01 00:00,,,2013-06-08 08:00,2013-06-13 18:00,,,,,PT_Normal,,,,,Hx0q6DgpS2mhFZajhWJFmA,vw3gZ4Oto0eH352hzzLJoA,,,Y,0,0,,,2017-01-24 14:42,2017-01-24 14:53,CLEMENTL,CLEMENTL
777,49428604,751235,10651557,1227199,1,100,N,N,N,CP_Drtn,TT_Task,DT_FixedDUR2,RV_OK,TK_Complete,823A-ST-SCCT-4a-3020,Rebar fixing for wall and roof,,,,0,0,0,544,24,32,0,0,,2013-02-21 08:00,2013-02-25 18:00,2014-01-05 18:00,2014-01-05 18:00,,2017-01-01 00:00,2017-01-01 00:00,,,2013-06-14 08:00,2013-06-17 18:00,,,,,PT_Normal,,,,,2MaKWz9uTAuO/2b4L08vFg,xfJZwwBSn0mNjn1s33Ld1g,,,Y,0,0,,,2017-01-24 14:42,2017-01-24 14:53,CLEMENTL,CLEMENTL
778,49428605,751235,10651557,1227199,1,100,N,N,N,CP_Drtn,TT_Task,DT_FixedDUR2,RV_OK,TK_Complete,823A-ST-SCCT-4a-3030,Erect external formwork for wall and roof,,,,0,0,0,208,16,16,0,0,,2013-02-26 08:00,2013-03-01 18:00,2014-01-05 18:00,2014-01-05 18:00,,2017-01-01 00:00,2017-01-01 00:00,,,2013-06-18 08:00,2013-06-19 18:00,,,,,PT_Normal,,,,,fBBfy6a4RW6r1pxLMFspZg,+SAEMhTfG0CoMvmiRkuDdA,,,Y,0,0,,,2017-01-24 14:42,2017-01-24 14:53,CLEMENTL,CLEMENTL
779,49428606,751235,10651557,1227199,1,100,N,N,N,CP_Drtn,TT_Task,DT_FixedDUR2,RV_OK,TK_Complete,823A-ST-SCCT-4a-3040,Concreting for wall and roof (450m3),,,,0,0,0,208,8,16,0,0,,2013-03-02 08:00,2013-03-02 18:00,2014-01-05 18:00,2014-01-05 18:00,,2017-01-01 00:00,2017-01-01 00:00,,,2013-06-20 08:00,2013-06-20 18:00,,,,,PT_Normal,,,,,P3mJFDUHRuWOO1G22QcUNQ,H6jBMYKBoUm4ZsWFcWiCiQ,,,Y,0,0,,,2017-01-24 14:42,2017-01-24 14:53,CLEMENTL,CLEMENTL
780,49428607,751235,10651557,1227199,1,100,N,N,N,CP_Drtn,TT_Task,DT_FixedDUR2,RV_OK,TK_Complete,823A-ST-SCCT-4a-3070,Removal external and internal formwork for wall,,,,0,0,0,144,16,16,0,0,,2013-03-08 08:00,2013-03-09 18:00,2014-01-05 18:00,2014-01-05 18:00,,2017-01-01 00:00,2017-01-01 00:00,,,2013-06-22 08:00,2013-06-24 18:00,,,,,PT_Normal,,,,,nor/1KU/QhKikx7MXSH7gw,upnyRkU5R0W5Ub3qjxm13Q,,,Y,0,0,,,2017-01-24 14:42,2017-01-24 14:53,CLEMENTL,CLEMENTL
781,49428608,751235,10651557,1239099,1,100,N,N,N,CP_Drtn,TT_Task,DT_FixedDUR2,RV_OK,TK_Complete,823A-ST-SCCT-4a-3050,Curing for wall and roof,,,,0,0,0,224,80,0,0,0,,2013-03-04 08:00,2013-03-06 18:00,2014-01-05 18:00,2014-01-05 18:00,,2017-01-01 00:00,2017-01-01 00:00,,,2013-06-21 08:00,2013-06-30 18:00,,,,,PT_Normal,,,,,WCp8dP/kQN2FM4JMyaXhMg,fldCeE3otkm9dHsnjiXW7A,,,N,0,0,,,2017-01-24 14:42,2017-01-24 14:53,CLEMENTL,CLEMENTL
782,49428609,751235,10651558,1227199,1,100,N,N,N,CP_Drtn,TT_Task,DT_FixedDUR2,RV_OK,TK_Complete,823A-ST-SCCT-4a-2090,Side walkway and cable bracket (204m3),,,,0,0,0,1040,40,80,0,0,,2014-12-12 08:00,2014-12-17 18:00,2017-06-12 18:00,2017-06-12 18:00,,2017-01-01 00:00,2017-01-01 00:00,,,2014-12-12 08:00,2014-12-17 18:00,,,,,PT_Normal,,,,,RFFOOcFpSTO4FgqIsBaufA,v9y3NkW+kUirVYfWr/IYIg,,,N,0,0,,,2017-01-24 14:42,2017-01-24 15:36,CLEMENTL,CLEMENTL
783,49428610,751235,10651558,1227199,1,100,N,N,N,CP_Drtn,TT_Task,DT_FixedDUR2,RV_OK,TK_Complete,823A-ST-SCCT-4a-2010,Erect internal formwork & Falsework for wall and roof,,,,0,0,0,624,32,48,0,0,,2013-03-06 08:00,2013-03-09 18:00,2014-01-05 18:00,2014-01-05 18:00,,2017-01-01 00:00,2017-01-01 00:00,,,2013-06-08 08:00,2013-06-13 18:00,,,,,PT_Normal,,,,,iYfddZ/+Q2eTxUiCkriBsA,JfGGd5pf5UiZ1qnzl71TqQ,,,Y,0,0,,,2017-01-24 14:42,2017-01-24 14:53,CLEMENTL,CLEMENTL
784,49428611,751235,10651558,1227199,1,100,N,N,N,CP_Drtn,TT_Task,DT_FixedDUR2,RV_OK,TK_Complete,823A-ST-SCCT-4a-2020,Rebar fixing for wall and roof,,,,0,0,0,544,24,32,0,0,,2013-03-11 08:00,2013-03-13 18:00,2014-01-05 18:00,2014-01-05 18:00,,2017-01-01 00:00,2017-01-01 00:00,,,2013-06-14 08:00,2013-06-17 18:00,,,,,PT_Normal,,,,,scaV01UhRqaZ600VZMyyUA,y6MgWh74PkKVAZYYM2wC4Q,,,Y,0,0,,,2017-01-24 14:42,2017-01-24 14:53,CLEMENTL,CLEMENTL
785,49428612,751235,10651558,1227199,1,100,N,N,N,CP_Drtn,TT_Task,DT_FixedDUR2,RV_OK,TK_Complete,823A-ST-SCCT-4a-2030,Erect external formwork for wall and roof,,,,0,0,0,208,16,16,0,0,,2013-03-12 08:00,2013-03-13 18:00,2014-01-05 18:00,2014-01-05 18:00,,2017-01-01 00:00,2017-01-01 00:00,,,2013-06-18 08:00,2013-06-19 18:00,,,,,PT_Normal,,,,,4DRe4CY8TvO6cltDJiiizQ,R+6XYBkrtESV8CqGnqMysA,,,Y,0,0,,,2017-01-24 14:42,2017-01-24 14:53,CLEMENTL,CLEMENTL
786,49428613,751235,10651558,1227199,1,100,N,N,N,CP_Drtn,TT_Task,DT_FixedDUR2,RV_OK,TK_Complete,823A-ST-SCCT-4a-2040,Concreting for wall and roof (450m3),,,,0,0,0,208,8,16,0,0,,2013-03-14 08:00,2013-03-14 18:00,2014-01-05 18:00,2014-01-05 18:00,,2017-01-01 00:00,2017-01-01 00:00,,,2013-06-20 08:00,2013-06-20 18:00,,,,,PT_Normal,,,,,gsggA1q1QPGNMITIaecFyA,NlpwqGjhH0e7Hn/yaqa0Iw,,,Y,0,0,,,2017-01-24 14:42,2017-01-24 14:53,CLEMENTL,CLEMENTL
787,49428614,751235,10651558,1227199,1,100,N,N,N,CP_Drtn,TT_Task,DT_FixedDUR2,RV_OK,TK_Complete,823A-ST-SCCT-4a-2070,Removal external and internal formwork for wall,,,,0,0,0,144,16,16,0,0,,2013-03-16 08:00,2013-03-16 18:00,2014-01-05 18:00,2014-01-05 18:00,,2017-01-01 00:00,2017-01-01 00:00,,,2013-06-22 08:00,2013-06-24 18:00,,,,,PT_Normal,,,,,6eUYwbksSeaDdy77zlyLXA,d7coEj3MFECBdY4dGPfrBQ,,,Y,0,0,,,2017-01-24 14:42,2017-01-24 14:53,CLEMENTL,CLEMENTL
788,49428615,751235,10651558,1239099,1,100,N,N,N,CP_Drtn,TT_Task,DT_FixedDUR2,RV_OK,TK_Complete,823A-ST-SCCT-4a-2050,Curing for wall and roof,,,,0,0,0,224,80,0,0,0,,2013-03-15 08:00,2013-03-16 18:00,2014-01-05 18:00,2014-01-05 18:00,,2017-01-01 00:00,2017-01-01 00:00,,,2013-06-21 08:00,2013-06-30 18:00,,,,,PT_Normal,,,,,3wrV2wrlTMeR1uiqWnHrfw,gheBtslTMkGW8qzZGNBysg,,,N,0,0,,,2017-01-24 14:42,2017-01-24 14:53,CLEMENTL,CLEMENTL
789,49428616,751235,10651558,1227199,1,100,N,N,N,CP_Drtn,TT_Task,DT_FixedDUR2,RV_OK,TK_Complete,823A-ST-SCCT-4a-2080,Removal internal falsework and formwork for roof,,,,0,0,0,416,8,32,0,0,,2013-03-19 08:00,2013-03-19 18:00,2014-01-05 18:00,2014-01-05 18:00,,2017-01-01 00:00,2017-01-01 00:00,,,2013-07-02 08:00,2013-07-02 18:00,,,,,PT_Normal,,,,,50IdyZ59SYuD5rKTUjSBeQ,iUc+xIwyCkyZjPjeyVet2g,,,N,0,0,,,2017-01-24 14:42,2017-01-24 14:53,CLEMENTL,CLEMENTL
790,49428617,751235,10651558,1239098,1,100,N,N,N,CP_Drtn,TT_Task,DT_FixedDUR2,RV_OK,TK_Complete,823A-ST-SCCT-4a-2060,Preparation of construction joint for wall and roof,,,,0,0,0,0,8,0,0,0,,2013-03-18 08:00,2013-03-18 18:00,2014-01-05 18:00,2014-01-05 18:00,,2017-01-01 00:00,2017-01-01 00:00,,,2013-06-21 08:00,2013-06-21 18:00,,,,,PT_Normal,,,,,5hwqvkppRomf6YsqwcEpFA,XnA0bPlcVESEx+/sWw/3xw,,,Y,0,0,,,2017-01-24 14:42,2017-01-24 14:53,CLEMENTL,CLEMENTL
791,49428618,751235,10651560,1227199,1,100,N,N,N,CP_Drtn,TT_Task,DT_FixedDUR2,RV_OK,TK_Complete,823A-ST-SCCT-2a-4090,Side walkway and cable bracket (204m3),,,,0,1040,0,1040,40,80,80,0,,2013-08-23 08:00,2013-10-18 18:00,2017-06-12 18:00,2017-06-12 18:00,,2017-01-01 00:00,2017-01-01 00:00,,,2014-01-09 08:00,2014-01-14 18:00,,,,,PT_Normal,,,,,JyQJ8OaYRVm637vNs4AC2A,Gq0NUP04/km/nb71zpFtQA,,,N,1040,80,,,2017-01-24 14:42,2017-01-24 15:36,CLEMENTL,CLEMENTL
792,49428619,751235,10651560,1227199,1,100,N,N,N,CP_Drtn,TT_Task,DT_FixedDUR2,RV_OK,TK_Complete,823A-ST-SCCT-2a-4010,Erect internal formwork & Falsework for roof,,,,0,0,0,624,32,48,0,0,,2013-05-23 08:00,2013-05-27 18:00,2014-01-05 18:00,2014-01-05 18:00,,2017-01-01 00:00,2017-01-01 00:00,,,2013-08-01 08:00,2013-08-05 18:00,,,,,PT_Normal,,,,,mTT1rpCDQ1WPMmoJodBkug,O+vuua8dg0Ookto+Tyq4Bw,,,N,0,0,,,2017-01-24 14:42,2017-01-24 14:53,CLEMENTL,CLEMENTL
793,49428620,751235,10651560,1227199,1,100,N,N,N,CP_Drtn,TT_Task,DT_FixedDUR2,RV_OK,TK_Complete,823A-ST-SCCT-2a-4030,Erect external formwork for roof,,,,0,0,0,208,8,16,0,0,,2013-05-30 08:00,2013-05-30 18:00,2014-01-05 18:00,2014-01-05 18:00,,2017-01-01 00:00,2017-01-01 00:00,,,2013-08-08 08:00,2013-08-08 18:00,,,,,PT_Normal,,,,,vLiUA7R3T7uCfsiWLzJQdw,u28hwggTu0a7A9Fgy9ATMw,,,N,0,0,,,2017-01-24 14:42,2017-01-24 14:53,CLEMENTL,CLEMENTL
794,49428621,751235,10651560,1227199,1,100,N,N,N,CP_Drtn,TT_Task,DT_FixedDUR2,RV_OK,TK_Complete,823A-ST-SCCT-2a-4040,Concreting for roof (444m3),,,,0,0,0,208,8,16,0,0,,2013-05-31 08:00,2013-05-31 18:00,2014-01-05 18:00,2014-01-05 18:00,,2017-01-01 00:00,2017-01-01 00:00,,,2013-08-09 08:00,2013-08-09 18:00,,,,,PT_Normal,,,,,0Wm7yghYTZ++QwAVfxJUeQ,6hrlwV5Vw0Ggp790RBn9Cw,,,N,0,0,,,2017-01-24 14:42,2017-01-24 14:53,CLEMENTL,CLEMENTL
795,49428622,751235,10651560,1239099,1,100,N,N,N,CP_Drtn,TT_Task,DT_FixedDUR2,RV_OK,TK_Complete,823A-ST-SCCT-2a-4050,Curing for roof,,,,0,0,0,224,56,0,0,0,,2013-06-01 08:00,2013-06-08 18:00,2014-01-05 18:00,2014-01-05 18:00,,2017-01-01 00:00,2017-01-01 00:00,,,2013-08-01 08:00,2013-08-07 18:00,,,,,PT_Normal,,,,,8MpEsdfaTyK5np/LW/KkwQ,4Hqx/rTNEkOifvD/bkdH6A,,,N,0,0,,,2017-01-24 14:42,2017-01-24 14:53,CLEMENTL,CLEMENTL
796,49428623,751235,10651560,1227199,1,100,N,N,N,CP_Drtn,TT_Task,DT_FixedDUR2,RV_OK,TK_Complete,823A-ST-SCCT-2a-4080,Removal internal falsework and formwork for roof,,,,0,0,0,416,16,32,0,0,,2013-06-11 08:00,2013-06-13 18:00,2014-01-05 18:00,2014-01-05 18:00,,2017-01-01 00:00,2017-01-01 00:00,,,2013-08-08 08:00,2013-08-09 18:00,,,,,PT_Normal,,,,,BoORsGYFQkC2t+GfBeYfBQ,Sh0PhJ0jIUmHrvrCikikcw,,,N,0,0,,,2017-01-24 14:42,2017-01-24 14:53,CLEMENTL,CLEMENTL
797,49428624,751235,10651560,1239098,1,100,N,N,N,CP_Drtn,TT_Task,DT_FixedDUR2,RV_OK,TK_Complete,823A-ST-SCCT-2a-4060,Preparation of construction joint  for roof,,,,0,0,0,0,8,0,0,0,,2013-06-10 08:00,2013-06-10 18:00,2014-01-05 18:00,2014-01-05 18:00,,2017-01-01 00:00,2017-01-01 00:00,,,2013-08-01 08:00,2013-08-01 18:00,,,,,PT_Normal,,,,,++rHqGoITe21tH+ahr50Rg,k4kygQKpNkurIG2Mh9hp3g,,,N,0,0,,,2017-01-24 14:42,2017-01-24 14:53,CLEMENTL,CLEMENTL
798,49428625,751235,10651560,1227199,1,100,N,N,N,CP_Drtn,TT_Task,DT_FixedDUR2,RV_OK,TK_Complete,823A-ST-SCCT-2a-4020,Rebar fixing for roof,,,,0,0,0,544,16,32,0,0,,2013-05-28 08:00,2013-05-29 18:00,2014-01-05 18:00,2014-01-05 18:00,,2017-01-01 00:00,2017-01-01 00:00,,,2013-08-06 08:00,2013-08-07 18:00,,,,,PT_Normal,,,,,KHdVpwxlQ7qAmOjrnVEdNQ,/7Y+G2aMWEqQEHOGV5vCSA,,,N,0,0,,,2017-01-24 14:42,2017-01-24 14:53,CLEMENTL,CLEMENTL
799,49428626,751235,10651561,1227199,1,100,N,N,N,CP_Drtn,TT_Task,DT_FixedDUR2,RV_OK,TK_Complete,823A-ST-SCCT-2a-3090,Side walkway and cable bracket (204m3),,,,0,0,0,1040,40,80,0,0,,2015-02-23 08:00,2015-02-27 18:00,2017-06-12 18:00,2017-06-12 18:00,,2017-01-01 00:00,2017-01-01 00:00,,,2015-04-02 08:00,2015-04-11 18:00,,,,,PT_Normal,,,,,MveiFKFgSUe0c9uJk3n6sg,RcZYaw6QyEqrDFD+aNI2tQ,,,N,0,0,,,2017-01-24 14:42,2017-01-24 15:36,CLEMENTL,CLEMENTL
800,49428627,751235,10651561,1227199,1,100,N,N,N,CP_Drtn,TT_Task,DT_FixedDUR2,RV_OK,TK_Complete,823A-ST-SCCT-2a-3010,Erect internal formwork & Falsework for wall and roof,,,,0,0,0,624,32,48,0,0,,2013-04-15 08:00,2013-04-19 18:00,2014-01-05 18:00,2014-01-05 18:00,,2017-01-01 00:00,2017-01-01 00:00,,,2013-06-08 08:00,2013-06-13 18:00,,,,,PT_Normal,,,,,//abn0R9R3y5WeUhgLFQpQ,RsR2lkCiVUuoDq6wLKUSrQ,,,N,0,0,,,2017-01-24 14:42,2017-01-24 14:53,CLEMENTL,CLEMENTL
801,49428628,751235,10651561,1227199,1,100,N,N,N,CP_Drtn,TT_Task,DT_FixedDUR2,RV_OK,TK_Complete,823A-ST-SCCT-2a-3020,Rebar fixing for wall and roof,,,,0,0,0,544,24,32,0,0,,2013-04-20 08:00,2013-04-24 18:00,2014-01-05 18:00,2014-01-05 18:00,,2017-01-01 00:00,2017-01-01 00:00,,,2013-06-14 08:00,2013-06-17 18:00,,,,,PT_Normal,,,,,9tt+hmc9TCijaIph49STNw,uGT79Hkt5EK4032zKmFy7Q,,,N,0,0,,,2017-01-24 14:42,2017-01-24 14:53,CLEMENTL,CLEMENTL
802,49428629,751235,10651561,1227199,1,100,N,N,N,CP_Drtn,TT_Task,DT_FixedDUR2,RV_OK,TK_Complete,823A-ST-SCCT-2a-3030,Erect external formwork for wall and roof,,,,0,0,0,208,16,16,0,0,,2013-04-25 08:00,2013-04-27 18:00,2014-01-05 18:00,2014-01-05 18:00,,2017-01-01 00:00,2017-01-01 00:00,,,2013-06-18 08:00,2013-06-19 18:00,,,,,PT_Normal,,,,,aauI1pU4TJSK3U1JFzKEzg,k6xiJGkBIEOgfMsNffo4Jg,,,N,0,0,,,2017-01-24 14:42,2017-01-24 14:53,CLEMENTL,CLEMENTL
803,49428630,751235,10651561,1227199,1,100,N,N,N,CP_Drtn,TT_Task,DT_FixedDUR2,RV_OK,TK_Complete,823A-ST-SCCT-2a-3070,Removal external and internal formwork for wall,,,,0,0,0,144,16,16,0,0,,2013-05-28 08:00,2013-05-29 18:00,2014-01-05 18:00,2014-01-05 18:00,,2017-01-01 00:00,2017-01-01 00:00,,,2013-06-22 08:00,2013-06-24 18:00,,,,,PT_Normal,,,,,Em9UXAi/SJav0cR2wnX8Sw,BEWI7aHybUmf4Gu7++/+QA,,,N,0,0,,,2017-01-24 14:42,2017-01-24 14:53,CLEMENTL,CLEMENTL
804,49428631,751235,10651561,1239099,1,100,N,N,N,CP_Drtn,TT_Task,DT_FixedDUR2,RV_OK,TK_Complete,823A-ST-SCCT-2a-3050,Curing for wall and roof,,,,0,0,0,224,80,0,0,0,,2013-05-25 08:00,2013-05-25 18:00,2014-01-05 18:00,2014-01-05 18:00,,2017-01-01 00:00,2017-01-01 00:00,,,2013-06-21 08:00,2013-06-30 18:00,,,,,PT_Normal,,,,,ucgLxEE9SI+OkFByRRxYqQ,lxWEVnSpK0Wgd0mYus0YDg,,,N,0,0,,,2017-01-24 14:42,2017-01-24 14:53,CLEMENTL,CLEMENTL
805,49428632,751235,10651561,1227199,1,100,N,N,N,CP_Drtn,TT_Task,DT_FixedDUR2,RV_OK,TK_Complete,823A-ST-SCCT-2a-3080,Removal internal falsework and formwork for roof,,,,0,0,0,416,8,32,0,0,,2013-05-30 08:00,2013-05-30 18:00,2014-01-05 18:00,2014-01-05 18:00,,2017-01-01 00:00,2017-01-01 00:00,,,2013-07-02 08:00,2013-07-02 18:00,,,,,PT_Normal,,,,,Gi0GN6bYQgSVQXlG7TGsDQ,6M/ASlUr+UiQ0CMxV4T4lA,,,N,0,0,,,2017-01-24 14:42,2017-01-24 14:53,CLEMENTL,CLEMENTL
806,49428633,751235,10651561,1239098,1,100,N,N,N,CP_Drtn,TT_Task,DT_FixedDUR2,RV_OK,TK_Complete,823A-ST-SCCT-2a-3060,Preparation of construction joint for wall and roof,,,,0,0,0,0,8,0,0,0,,2013-05-27 08:00,2013-05-27 18:00,2014-01-05 18:00,2014-01-05 18:00,,2017-01-01 00:00,2017-01-01 00:00,,,2013-06-21 08:00,2013-06-21 18:00,,,,,PT_Normal,,,,,iUwmZfBuSCe5nap061vvHA,lQToL2rzyESzy94vqm9/BQ,,,N,0,0,,,2017-01-24 14:42,2017-01-24 14:53,CLEMENTL,CLEMENTL
807,49428634,751235,10651561,1227199,1,100,N,N,N,CP_Drtn,TT_Task,DT_FixedDUR2,RV_OK,TK_Complete,823A-ST-SCCT-2a-3040,Concreting for wall and roof (450m3),,,,0,0,0,208,8,16,0,0,,2013-05-24 08:00,2013-05-24 18:00,2014-01-05 18:00,2014-01-05 18:00,,2017-01-01 00:00,2017-01-01 00:00,,,2013-06-20 08:00,2013-06-20 18:00,,,,,PT_Normal,,,,,kIUHpK6TTN2V8eu3qE6eqA,0DmTwFZsgESqhCBIKxChwA,,,N,0,0,,,2017-01-24 14:42,2017-01-24 14:53,CLEMENTL,CLEMENTL
808,49428635,751235,10651562,1227199,1,100,N,N,N,CP_Drtn,TT_Task,DT_FixedDUR2,RV_OK,TK_Complete,823A-ST-SCCT-2a-1010,Placing of waterproof member T-lock & testing for base slab,,,,0,0,0,64,16,0,0,0,,2013-02-16 08:00,2013-02-16 18:00,2014-01-05 18:00,2014-01-05 18:00,,2017-01-01 00:00,2017-01-01 00:00,,,2013-06-01 08:00,2013-06-03 18:00,,,,,PT_Normal,,,,,b4hdcxm+TyiVZTg44HTBJw,LiDt9keRVk2DWDlhJO2cdA,,,N,0,0,,,2017-01-24 14:42,2017-01-24 14:53,CLEMENTL,CLEMENTL
809,49428636,751235,10651562,1227199,1,100,N,N,N,CP_Drtn,TT_Task,DT_FixedDUR2,RV_OK,TK_Complete,823A-ST-SCCT-2a-1020,Erect external formwork for base slab,,,,0,0,0,104,16,8,0,0,,2013-02-20 08:00,2013-02-21 18:00,2014-01-05 18:00,2014-01-05 18:00,,2017-01-01 00:00,2017-01-01 00:00,,,2013-06-04 08:00,2013-06-05 18:00,,,,,PT_Normal,,,,,/+YGzqTcQr23RVXpm6B96A,i3HRKFqPm06pD+rYpkKLNA,,,N,0,0,,,2017-01-24 14:42,2017-01-24 14:53,CLEMENTL,CLEMENTL
810,49428637,751235,10651562,1227199,1,100,N,N,N,CP_Drtn,TT_Task,DT_FixedDUR2,RV_OK,TK_Complete,823A-ST-SCCT-2a-1030,Rebar fixing for base slab,,,,0,0,0,272,24,16,0,0,,2013-02-22 08:00,2013-02-23 18:00,2014-01-05 18:00,2014-01-05 18:00,,2017-01-01 00:00,2017-01-01 00:00,,,2013-06-06 08:00,2013-06-08 18:00,,,,,PT_Normal,,,,,eWsGCFs1RnKcZ3wbGXUEZA,Vw5XhyOZy0y9jOk/qfLZpA,,,N,0,0,,,2017-01-24 14:42,2017-01-24 14:53,CLEMENTL,CLEMENTL
811,49428638,751235,10651562,1227199,1,100,N,N,N,CP_Drtn,TT_Task,DT_FixedDUR2,RV_OK,TK_Complete,823A-ST-SCCT-2a-1040,Erect internal kicker formwork for base slab,,,,0,0,0,288,16,16,0,0,,2013-02-26 08:00,2013-02-28 18:00,2014-01-05 18:00,2014-01-05 18:00,,2017-01-01 00:00,2017-01-01 00:00,,,2013-06-10 08:00,2013-06-11 18:00,,,,,PT_Normal,,,,,R1DCLKnhRcK1zYRfJtvN/w,kep3FWk43kaGFfJIPQvGtw,,,N,0,0,,,2017-01-24 14:42,2017-01-24 14:53,CLEMENTL,CLEMENTL
812,49428639,751235,10651562,1227199,1,100,N,N,N,CP_Drtn,TT_Task,DT_FixedDUR2,RV_OK,TK_Complete,823A-ST-SCCT-2a-1050,Concreting for base slab (363m3),,,,0,0,0,208,8,16,0,0,,2013-03-01 08:00,2013-03-01 18:00,2014-01-05 18:00,2014-01-05 18:00,,2017-01-01 00:00,2017-01-01 00:00,,,2013-06-13 08:00,2013-06-13 18:00,,,,,PT_Normal,,,,,01fryeqxQhKJ455VrW3OpA,+44TH/ZaDEORx+iX0EjVzQ,,,N,0,0,,,2017-01-24 14:42,2017-01-24 14:53,CLEMENTL,CLEMENTL
813,49428640,751235,10651562,1239099,1,100,N,N,N,CP_Drtn,TT_Task,DT_FixedDUR2,RV_OK,TK_Complete,823A-ST-SCCT-2a-1060,Curing for base slab,,,,0,0,0,224,56,0,0,0,,2013-03-02 08:00,2013-03-08 18:00,2014-01-05 18:00,2014-01-05 18:00,,2017-01-01 00:00,2017-01-01 00:00,,,2013-06-14 08:00,2013-06-20 18:00,,,,,PT_Normal,,,,,6aDF1Kr0S6+mav4KESwALQ,1JNwER/fLEyERABN+zyWQA,,,N,0,0,,,2017-01-24 14:42,2017-01-24 14:53,CLEMENTL,CLEMENTL
814,49428641,751235,10651562,1227199,1,100,N,N,N,CP_Drtn,TT_Task,DT_FixedDUR2,RV_OK,TK_Complete,823A-ST-SCCT-2a-1080,Removal of formwork for base slab,,,,0,0,0,72,8,8,0,0,,2013-03-04 08:00,2013-03-04 18:00,2014-01-05 18:00,2014-01-05 18:00,,2017-01-01 00:00,2017-01-01 00:00,,,2013-06-15 08:00,2013-06-15 18:00,,,,,PT_Normal,,,,,+TuSUB8iQDygIn9TMBGW9w,aPf0YEhxpE+pDiukIY8l/g,,,N,0,0,,,2017-01-24 14:42,2017-01-24 14:53,CLEMENTL,CLEMENTL
815,49428642,751235,10651562,1227199,1,100,N,N,N,CP_Drtn,TT_Task,DT_FixedDUR2,RV_OK,TK_Complete,823A-ST-SCCT-2a-1090,Infill concrete in between D-wall and base slab,,,,0,0,0,128,8,16,0,0,,2013-03-05 08:00,2013-03-05 18:00,2014-01-05 18:00,2014-01-05 18:00,,2017-01-01 00:00,2017-01-01 00:00,,,2013-06-17 08:00,2013-06-17 18:00,,,,,PT_Normal,,,,,eibRp7X2TSmLQ5HzxkBYDQ,gLLDD2I6S0eDG6D7Y4qp0A,,,N,0,0,,,2017-01-24 14:42,2017-01-24 14:53,CLEMENTL,CLEMENTL
816,49428643,751235,10651562,1227199,1,100,N,N,N,CP_Drtn,TT_Task,DT_FixedDUR2,RV_OK,TK_Complete,823A-ST-SCCT-2a-1110,Removal strut S5 and S4,,,,0,0,0,144,32,16,0,0,,2013-03-08 08:00,2013-03-12 18:00,2014-01-05 18:00,2014-01-05 18:00,,2017-01-01 00:00,2017-01-01 00:00,,,2013-06-01 08:00,2013-06-05 18:00,,,,,PT_Normal,,,,,y5VQpnJzSn6E/svpOlW3Og,zbAUiDg/yEemsJXbKo+S9A,,,N,0,0,,,2017-01-24 14:42,2017-01-24 14:53,CLEMENTL,CLEMENTL
817,49428644,751235,10651562,1239098,1,100,N,N,N,CP_Drtn,TT_Task,DT_FixedDUR2,RV_OK,TK_Complete,823A-ST-SCCT-2a-1070,Preparation of construction joint for base slab,,,,0,0,0,0,8,0,0,0,,2013-03-02 08:00,2013-03-02 18:00,2014-01-05 18:00,2014-01-05 18:00,,2017-01-01 00:00,2017-01-01 00:00,,,2013-06-14 08:00,2013-06-14 18:00,,,,,PT_Normal,,,,,0YzqFhsqST2UvvjhHIf5qw,aMjs2yqFdUKAQ6E+bkm3Cw,,,N,0,0,,,2017-01-24 14:42,2017-01-24 14:53,CLEMENTL,CLEMENTL
818,49428645,751235,10651562,1239099,1,100,N,N,N,CP_Drtn,TT_Task,DT_FixedDUR2,RV_OK,TK_Complete,823A-ST-SCCT-2a-1100,Curing,,,,0,0,0,224,8,0,0,0,,2013-03-06 08:00,2013-03-07 18:00,2014-01-05 18:00,2014-01-05 18:00,,2017-01-01 00:00,2017-01-01 00:00,,,2013-06-21 08:00,2013-06-21 18:00,,,,,PT_Normal,,,,,9CY+HjXDQ72mPH2lcjWu8w,cyHqJ8wof0mTxux3iLpqHg,,,N,0,0,,,2017-01-24 14:42,2017-01-24 14:53,CLEMENTL,CLEMENTL
819,49428646,751235,10651563,1227199,1,100,N,N,N,CP_Drtn,TT_Task,DT_FixedDUR2,RV_OK,TK_Complete,823A-ST-SCCT-2a-2090,Side walkway and cable bracket (204m3),,,,0,0,0,1040,40,80,0,0,,2013-10-05 08:00,2013-10-12 18:00,2017-06-12 18:00,2017-06-12 18:00,,2017-01-01 00:00,2017-01-01 00:00,,,2014-02-19 08:00,2014-02-24 18:00,,,,,PT_Normal,,,,,Alqil3kqQdGPVGuuP1IydA,iDHJEKsYg02prKwFg3T0+Q,,,N,0,0,,,2017-01-24 14:42,2017-01-24 15:36,CLEMENTL,CLEMENTL
820,49428647,751235,10651563,1227199,1,100,N,N,N,CP_Drtn,TT_Task,DT_FixedDUR2,RV_OK,TK_Complete,823A-ST-SCCT-2a-2010,Erect internal formwork & Falsework for wall and roof,,,,0,0,0,624,32,48,0,0,,2013-04-20 08:00,2013-04-25 18:00,2014-01-05 18:00,2014-01-05 18:00,,2017-01-01 00:00,2017-01-01 00:00,,,2013-06-25 08:00,2013-06-28 18:00,,,,,PT_Normal,,,,,8IfG9Px1TU2yEIhqz4ch0w,Vdx7RciisUixpdRpel64Cw,,,N,0,0,,,2017-01-24 14:42,2017-01-24 14:53,CLEMENTL,CLEMENTL
821,49428648,751235,10651563,1227199,1,100,N,N,N,CP_Drtn,TT_Task,DT_FixedDUR2,RV_OK,TK_Complete,823A-ST-SCCT-2a-2020,Rebar fixing for wall and roof,,,,0,0,0,544,24,32,0,0,,2013-05-03 08:00,2013-05-08 18:00,2014-01-05 18:00,2014-01-05 18:00,,2017-01-01 00:00,2017-01-01 00:00,,,2013-06-29 08:00,2013-07-03 18:00,,,,,PT_Normal,,,,,yQBd8zR/SHqw6YdFmmry0Q,1HXap6aLBUiir+w8dkBWHA,,,N,0,0,,,2017-01-24 14:42,2017-01-24 14:53,CLEMENTL,CLEMENTL
822,49428649,751235,10651563,1227199,1,100,N,N,N,CP_Drtn,TT_Task,DT_FixedDUR2,RV_OK,TK_Complete,823A-ST-SCCT-2a-2030,Erect external formwork for wall and roof,,,,0,208,0,208,16,16,16,0,,2013-05-16 08:00,2013-05-23 18:00,2014-01-05 18:00,2014-01-05 18:00,,2017-01-01 00:00,2017-01-01 00:00,,,2013-07-04 08:00,2013-07-05 18:00,,,,,PT_Normal,,,,,UhfTZRWRQKGnyk69GgkDUQ,AyQmMw/yXUK4IknOsd5XAA,,,N,208,16,,,2017-01-24 14:42,2017-01-24 14:53,CLEMENTL,CLEMENTL
823,49428650,751235,10651563,1227199,1,100,N,N,N,CP_Drtn,TT_Task,DT_FixedDUR2,RV_OK,TK_Complete,823A-ST-SCCT-2a-2040,Concreting for wall and roof (450m3),,,,0,0,0,208,8,16,0,0,,2013-05-24 08:00,2013-05-24 18:00,2014-01-05 18:00,2014-01-05 18:00,,2017-01-01 00:00,2017-01-01 00:00,,,2013-07-06 08:00,2013-07-06 18:00,,,,,PT_Normal,,,,,mkZLvZP5Sxyli9Jg/evgLw,fQ5p+Ip0vUy/BIPiyWerRQ,,,N,0,0,,,2017-01-24 14:42,2017-01-24 14:53,CLEMENTL,CLEMENTL
824,49428651,751235,10651563,1227199,1,100,N,N,N,CP_Drtn,TT_Task,DT_FixedDUR2,RV_OK,TK_Complete,823A-ST-SCCT-2a-2070,Removal external and internal formwork for wall,,,,0,0,0,144,16,16,0,0,,2013-05-29 08:00,2013-05-29 18:00,2014-01-05 18:00,2014-01-05 18:00,,2017-01-01 00:00,2017-01-01 00:00,,,2013-07-09 08:00,2013-07-10 18:00,,,,,PT_Normal,,,,,sstTWr9RR8W6N6gLnqGuJg,7/UCQfusIki5E7vRc3glyA,,,N,0,0,,,2017-01-24 14:42,2017-01-24 14:53,CLEMENTL,CLEMENTL
825,49428652,751235,10651563,1239099,1,100,N,N,N,CP_Drtn,TT_Task,DT_FixedDUR2,RV_OK,TK_Complete,823A-ST-SCCT-2a-2050,Curing for wall and roof,,,,0,0,0,224,80,0,0,0,,2013-05-25 08:00,2013-05-25 18:00,2014-01-05 18:00,2014-01-05 18:00,,2017-01-01 00:00,2017-01-01 00:00,,,2013-07-07 08:00,2013-07-16 18:00,,,,,PT_Normal,,,,,pWJu2eX0Qgis2cWh5bHxMQ,rVtlTs0v40WlXkpXLudANQ,,,N,0,0,,,2017-01-24 14:42,2017-01-24 14:53,CLEMENTL,CLEMENTL
826,49428653,751235,10651563,1227199,1,100,N,N,N,CP_Drtn,TT_Task,DT_FixedDUR2,RV_OK,TK_Complete,823A-ST-SCCT-2a-2080,Removal internal falsework and formwork for roof,,,,0,0,0,416,8,32,0,0,,2013-05-30 08:00,2013-05-30 18:00,2014-01-05 18:00,2014-01-05 18:00,,2017-01-01 00:00,2017-01-01 00:00,,,2013-07-17 08:00,2013-07-17 18:00,,,,,PT_Normal,,,,,/uy4VPLVR7uD+Xp2HwSnmw,e98iDaU3yE6AcY0KJSNOFg,,,N,0,0,,,2017-01-24 14:42,2017-01-24 14:53,CLEMENTL,CLEMENTL
827,49428654,751235,10651563,1239098,1,100,N,N,N,CP_Drtn,TT_Task,DT_FixedDUR2,RV_OK,TK_Complete,823A-ST-SCCT-2a-2060,Preparation of construction joint for wall and roof,,,,0,0,0,0,8,0,0,0,,2013-05-27 08:00,2013-05-27 18:00,2014-01-05 18:00,2014-01-05 18:00,,2017-01-01 00:00,2017-01-01 00:00,,,2013-07-08 08:00,2013-07-08 18:00,,,,,PT_Normal,,,,,Fq8m7hSOSH6iC2LlOsF4GQ,UainWBZ9L0yag2WeQiwWuA,,,N,0,0,,,2017-01-24 14:42,2017-01-24 14:53,CLEMENTL,CLEMENTL
828,49428655,751235,10651565,1227199,1,100,N,N,N,CP_Drtn,TT_Task,DT_FixedDUR2,RV_OK,TK_Complete,823A-ST-SCCT-4b-3090,Side walkway and cable bracket (204m3),,,,0,1040,0,1040,40,80,80,0,,2015-07-02 08:00,2015-10-02 18:00,2017-06-12 18:00,2017-06-12 18:00,,2017-01-01 00:00,2017-01-01 00:00,,,2015-08-18 08:00,2015-08-22 18:00,,,,,PT_Normal,,,,,yOIrkD18Seac2B5DvVHqRw,HFfC2xigl0WAIW8RJykCYQ,,,N,1040,80,,,2017-01-24 14:42,2017-01-24 15:36,CLEMENTL,CLEMENTL
829,49428656,751235,10651565,1227199,1,100,N,N,N,CP_Drtn,TT_Task,DT_FixedDUR2,RV_OK,TK_Complete,823A-ST-SCCT-4b-3010,Erect internal formwork & Falsework for wall and roof,,,,0,0,0,624,32,48,0,0,,2013-02-21 08:00,2013-02-26 18:00,2014-01-05 18:00,2014-01-05 18:00,,2017-01-01 00:00,2017-01-01 00:00,,,2013-06-08 08:00,2013-06-13 18:00,,,,,PT_Normal,,,,,lZTjDD8IT5Oa88t3L1l6NQ,R77DMw+Nj0WPWNGARMlASA,,,Y,0,0,,,2017-01-24 14:42,2017-01-24 14:53,CLEMENTL,CLEMENTL
830,49428657,751235,10651565,1227199,1,100,N,N,N,CP_Drtn,TT_Task,DT_FixedDUR2,RV_OK,TK_Complete,823A-ST-SCCT-4b-3020,Rebar fixing for wall and roof,,,,0,0,0,544,24,32,0,0,,2013-02-26 08:00,2013-03-01 18:00,2014-01-05 18:00,2014-01-05 18:00,,2017-01-01 00:00,2017-01-01 00:00,,,2013-06-14 08:00,2013-06-17 18:00,,,,,PT_Normal,,,,,zB4BfY7GSiySHkTw+eH87w,m0Gy0mT/u0WHI85q0OLdvg,,,Y,0,0,,,2017-01-24 14:42,2017-01-24 14:53,CLEMENTL,CLEMENTL
831,49428658,751235,10651565,1227199,1,100,N,N,N,CP_Drtn,TT_Task,DT_FixedDUR2,RV_OK,TK_Complete,823A-ST-SCCT-4b-3030,Erect external formwork for wall and roof,,,,0,0,0,208,16,16,0,0,,2013-02-27 08:00,2013-03-01 18:00,2014-01-05 18:00,2014-01-05 18:00,,2017-01-01 00:00,2017-01-01 00:00,,,2013-06-18 08:00,2013-06-19 18:00,,,,,PT_Normal,,,,,SiMK/rorT8ekw0PRC2UFmA,RYByufr/kUSKAG3CJVJP+Q,,,Y,0,0,,,2017-01-24 14:42,2017-01-24 14:53,CLEMENTL,CLEMENTL
832,49428659,751235,10651565,1227199,1,100,N,N,N,CP_Drtn,TT_Task,DT_FixedDUR2,RV_OK,TK_Complete,823A-ST-SCCT-4b-3040,Concreting for wall and roof (450m3),,,,0,0,0,208,8,16,0,0,,2013-03-02 08:00,2013-03-02 18:00,2014-01-05 18:00,2014-01-05 18:00,,2017-01-01 00:00,2017-01-01 00:00,,,2013-06-20 08:00,2013-06-20 18:00,,,,,PT_Normal,,,,,HdR3JrxzTr2wiWK30llcOg,d5dyVBSJeE2oocd2Dh6J3g,,,Y,0,0,,,2017-01-24 14:42,2017-01-24 14:53,CLEMENTL,CLEMENTL
833,49428660,751235,10651565,1239099,1,100,N,N,N,CP_Drtn,TT_Task,DT_FixedDUR2,RV_OK,TK_Complete,823A-ST-SCCT-4b-3050,Curing for wall and roof,,,,0,0,0,224,80,0,0,0,,2013-03-04 08:00,2013-03-05 18:00,2014-01-05 18:00,2014-01-05 18:00,,2017-01-01 00:00,2017-01-01 00:00,,,2013-06-21 08:00,2013-06-30 18:00,,,,,PT_Normal,,,,,gJWiyOGnQYG1uphrchOrGQ,aurNkq+gg0STbYyDUfuwdA,,,N,0,0,,,2017-01-24 14:42,2017-01-24 14:53,CLEMENTL,CLEMENTL
834,49428661,751235,10651565,1227199,1,100,N,N,N,CP_Drtn,TT_Task,DT_FixedDUR2,RV_OK,TK_Complete,823A-ST-SCCT-4b-3080,Removal internal falsework and formwork for roof,,,,0,0,0,416,8,32,0,0,,2013-03-09 08:00,2013-03-11 18:00,2014-01-05 18:00,2014-01-05 18:00,,2017-01-01 00:00,2017-01-01 00:00,,,2013-07-02 08:00,2013-07-02 18:00,,,,,PT_Normal,,,,,HC8voOpDRCa6RfzpVom4Iw,j88o7dhiaEmn3Qfl/dRi7A,,,N,0,0,,,2017-01-24 14:42,2017-01-24 14:53,CLEMENTL,CLEMENTL
835,49428662,751235,10651565,1239098,1,100,N,N,N,CP_Drtn,TT_Task,DT_FixedDUR2,RV_OK,TK_Complete,823A-ST-SCCT-4b-3060,Preparation of construction joint for wall and roof,,,,0,0,0,0,8,0,0,0,,2013-03-06 08:00,2013-03-07 18:00,2014-01-05 18:00,2014-01-05 18:00,,2017-01-01 00:00,2017-01-01 00:00,,,2013-06-21 08:00,2013-06-21 18:00,,,,,PT_Normal,,,,,xUCeFOzISuO2+ykmMHrn+w,ephsvsRCu065/0TEKDe5Gw,,,Y,0,0,,,2017-01-24 14:42,2017-01-24 14:53,CLEMENTL,CLEMENTL
836,49428663,751235,10651565,1227199,1,100,N,N,N,CP_Drtn,TT_Task,DT_FixedDUR2,RV_OK,TK_Complete,823A-ST-SCCT-4b-3070,Removal external and internal formwork for wall,,,,0,0,0,144,16,16,0,0,,2013-03-08 08:00,2013-03-09 18:00,2014-01-05 18:00,2014-01-05 18:00,,2017-01-01 00:00,2017-01-01 00:00,,,2013-06-22 08:00,2013-06-24 18:00,,,,,PT_Normal,,,,,7tEl3ED8QyuWhbSULjoX9g,igvX1sTTrESNTntuZ3t66Q,,,Y,0,0,,,2017-01-24 14:42,2017-01-24 14:53,CLEMENTL,CLEMENTL
837,49428664,751235,10651566,1227199,1,100,N,N,N,CP_Drtn,TT_Task,DT_FixedDUR2,RV_OK,TK_Complete,823A-ST-SCCT-4b-2090,Side walkway and cable bracket (204m3),,,,0,0,0,1040,40,80,0,0,,2014-12-06 08:00,2014-12-11 18:00,2017-06-12 18:00,2017-06-12 18:00,,2017-01-01 00:00,2017-01-01 00:00,,,2014-12-06 08:00,2014-12-11 18:00,,,,,PT_Normal,,,,,dHgZ/+QPRPuhQMfjAen6Mw,IYC4ouk1b0qpXnlDkFKjEw,,,N,0,0,,,2017-01-24 14:42,2017-01-24 15:36,CLEMENTL,CLEMENTL
838,49428665,751235,10651566,1227199,1,100,N,N,N,CP_Drtn,TT_Task,DT_FixedDUR2,RV_OK,TK_Complete,823A-ST-SCCT-4b-2010,Erect internal formwork & Falsework for wall and roof,,,,0,0,0,624,32,48,0,0,,2013-03-06 08:00,2013-03-09 18:00,2014-01-05 18:00,2014-01-05 18:00,,2017-01-01 00:00,2017-01-01 00:00,,,2013-06-08 08:00,2013-06-13 18:00,,,,,PT_Normal,,,,,kmg9ynfxSQioqc2sO77T2g,OZsdRnBAU0GzCwzaSCUXZQ,,,Y,0,0,,,2017-01-24 14:42,2017-01-24 14:53,CLEMENTL,CLEMENTL
839,49428666,751235,10651566,1227199,1,100,N,N,N,CP_Drtn,TT_Task,DT_FixedDUR2,RV_OK,TK_Complete,823A-ST-SCCT-4b-2020,Rebar fixing for wall and roof,,,,0,0,0,544,24,32,0,0,,2013-03-11 08:00,2013-03-13 18:00,2014-01-05 18:00,2014-01-05 18:00,,2017-01-01 00:00,2017-01-01 00:00,,,2013-06-14 08:00,2013-06-17 18:00,,,,,PT_Normal,,,,,M972AyGiTImIppLj1aNz4Q,VEDA7WVv/U6TMfARjEyNpw,,,Y,0,0,,,2017-01-24 14:42,2017-01-24 14:53,CLEMENTL,CLEMENTL
840,49428667,751235,10651566,1227199,1,100,N,N,N,CP_Drtn,TT_Task,DT_FixedDUR2,RV_OK,TK_Complete,823A-ST-SCCT-4b-2030,Erect external formwork for wall and roof,,,,0,0,0,208,16,16,0,0,,2013-03-12 08:00,2013-03-13 18:00,2014-01-05 18:00,2014-01-05 18:00,,2017-01-01 00:00,2017-01-01 00:00,,,2013-06-18 08:00,2013-06-19 18:00,,,,,PT_Normal,,,,,BcLnmhe5TbeufNfN06KAQQ,oKzWRSUPaU24lNmrd72JLA,,,Y,0,0,,,2017-01-24 14:42,2017-01-24 14:53,CLEMENTL,CLEMENTL
841,49428668,751235,10651566,1227199,1,100,N,N,N,CP_Drtn,TT_Task,DT_FixedDUR2,RV_OK,TK_Complete,823A-ST-SCCT-4b-2040,Concreting for wall and roof (450m3),,,,0,0,0,208,8,16,0,0,,2013-03-14 08:00,2013-03-14 18:00,2014-01-05 18:00,2014-01-05 18:00,,2017-01-01 00:00,2017-01-01 00:00,,,2013-06-20 08:00,2013-06-20 18:00,,,,,PT_Normal,,,,,XulGkh4XTHqdQzHGMmxJdw,8ewo87yBvEubk4a2nhivAg,,,Y,0,0,,,2017-01-24 14:42,2017-01-24 14:53,CLEMENTL,CLEMENTL
842,49428669,751235,10651566,1227199,1,100,N,N,N,CP_Drtn,TT_Task,DT_FixedDUR2,RV_OK,TK_Complete,823A-ST-SCCT-4b-2070,Removal external and internal formwork for wall,,,,0,0,0,144,16,16,0,0,,2013-03-20 08:00,2013-03-21 18:00,2014-01-05 18:00,2014-01-05 18:00,,2017-01-01 00:00,2017-01-01 00:00,,,2013-06-22 08:00,2013-06-24 18:00,,,,,PT_Normal,,,,,/LZoJ1ruTz6vGJuufwmj5g,w7yuKHS2qE6cgVRlr8SbzA,,,Y,0,0,,,2017-01-24 14:42,2017-01-24 14:53,CLEMENTL,CLEMENTL
843,49428670,751235,10651566,1239099,1,100,N,N,N,CP_Drtn,TT_Task,DT_FixedDUR2,RV_OK,TK_Complete,823A-ST-SCCT-4b-2050,Curing for wall and roof,,,,0,0,0,224,80,0,0,0,,2013-03-15 08:00,2013-03-18 18:00,2014-01-05 18:00,2014-01-05 18:00,,2017-01-01 00:00,2017-01-01 00:00,,,2013-06-21 08:00,2013-06-30 18:00,,,,,PT_Normal,,,,,CnGngNROQZy3EEdVfPQTiw,JFnACEVkzEaMdHhA8yCZ6g,,,N,0,0,,,2017-01-24 14:42,2017-01-24 14:53,CLEMENTL,CLEMENTL
844,49428671,751235,10651566,1227199,1,100,N,N,N,CP_Drtn,TT_Task,DT_FixedDUR2,RV_OK,TK_Complete,823A-ST-SCCT-4b-2080,Removal internal falsework and formwork for roof,,,,0,0,0,416,8,32,0,0,,2013-03-21 08:00,2013-03-22 18:00,2014-01-05 18:00,2014-01-05 18:00,,2017-01-01 00:00,2017-01-01 00:00,,,2013-07-02 08:00,2013-07-02 18:00,,,,,PT_Normal,,,,,2DxPsutxR1mVrIjaQQ3YjA,F3W0573wE06pfQt0E+eaug,,,N,0,0,,,2017-01-24 14:42,2017-01-24 14:53,CLEMENTL,CLEMENTL
845,49428672,751235,10651566,1239098,1,100,N,N,N,CP_Drtn,TT_Task,DT_FixedDUR2,RV_OK,TK_Complete,823A-ST-SCCT-4b-2060,Preparation of construction joint for wall and roof,,,,0,0,0,0,8,0,0,0,,2013-03-19 08:00,2013-03-19 18:00,2014-01-05 18:00,2014-01-05 18:00,,2017-01-01 00:00,2017-01-01 00:00,,,2013-06-21 08:00,2013-06-21 18:00,,,,,PT_Normal,,,,,w3EMDp95TnWbhbQ7NQVchA,VSiIwKwF10anWMSsDmfIhw,,,Y,0,0,,,2017-01-24 14:42,2017-01-24 14:53,CLEMENTL,CLEMENTL
846,49428673,751235,10651567,1227199,1,100,N,N,N,CP_Drtn,TT_Task,DT_FixedDUR2,RV_OK,TK_Complete,823A-ST-SCCT-4b-1010,Placing of waterproof member T-lock & testing for base slab,,,,0,0,0,64,8,0,0,0,,2013-01-14 08:00,2013-01-14 18:00,2014-01-05 18:00,2014-01-05 18:00,,2017-01-01 00:00,2017-01-01 00:00,,,2013-06-01 08:00,2013-06-01 18:00,,,,,PT_Normal,,,,,bFWYv20VQWCqOIQQc7amAA,xVG4hlz5ZkC/1MfiS1BIWA,,,Y,0,0,,,2017-01-24 14:42,2017-01-24 14:53,CLEMENTL,CLEMENTL
847,49428674,751235,10651567,1227199,1,100,N,N,N,CP_Drtn,TT_Task,DT_FixedDUR2,RV_OK,TK_Complete,823A-ST-SCCT-4b-1020,Erect external formwork for base slab,,,,0,0,0,104,16,8,0,0,,2013-01-15 08:00,2013-01-16 18:00,2014-01-05 18:00,2014-01-05 18:00,,2017-01-01 00:00,2017-01-01 00:00,,,2013-06-03 08:00,2013-06-04 18:00,,,,,PT_Normal,,,,,J5cULLxNRq+l4Ax9ZMXsSA,MXAJ42awC0qa93ieM+dlCw,,,Y,0,0,,,2017-01-24 14:42,2017-01-24 14:53,CLEMENTL,CLEMENTL
848,49428675,751235,10651567,1227199,1,100,N,N,N,CP_Drtn,TT_Task,DT_FixedDUR2,RV_OK,TK_Complete,823A-ST-SCCT-4b-1030,Rebar fixing for base slab,,,,0,0,0,272,16,16,0,0,,2013-01-17 08:00,2013-01-18 18:00,2014-01-05 18:00,2014-01-05 18:00,,2017-01-01 00:00,2017-01-01 00:00,,,2013-06-05 08:00,2013-06-06 18:00,,,,,PT_Normal,,,,,WdZN630cTvyrUztG+lRuxg,sc/WPnWbFEqTxPB9k9ZiBQ,,,Y,0,0,,,2017-01-24 14:42,2017-01-24 14:53,CLEMENTL,CLEMENTL
849,49428676,751235,10651567,1227199,1,100,N,N,N,CP_Drtn,TT_Task,DT_FixedDUR2,RV_OK,TK_Complete,823A-ST-SCCT-4b-1040,Erect internal kicker formwork for base slab,,,,0,0,0,288,16,16,0,0,,2013-01-18 08:00,2013-01-18 18:00,2014-01-05 18:00,2014-01-05 18:00,,2017-01-01 00:00,2017-01-01 00:00,,,2013-06-05 08:00,2013-06-06 18:00,,,,,PT_Normal,,,,,FihGir7wR/e2rnVYYMJ2eQ,xRz7Y++7vkGHFcsUaJl3BQ,,,Y,0,0,,,2017-01-24 14:42,2017-01-24 14:53,CLEMENTL,CLEMENTL
850,49428677,751235,10651567,1227199,1,100,N,N,N,CP_Drtn,TT_Task,DT_FixedDUR2,RV_OK,TK_Complete,823A-ST-SCCT-4b-1050,Concreting for base slab (363m3),,,,0,0,0,208,8,16,0,0,,2013-01-19 08:00,2013-01-19 18:00,2014-01-05 18:00,2014-01-05 18:00,,2017-01-01 00:00,2017-01-01 00:00,,,2013-06-07 08:00,2013-06-07 18:00,,,,,PT_Normal,,,,,KUS6qiEvT+mEPrkk4OTuDQ,W7PvSzcRYkiZACZqgFTTMw,,,Y,0,0,,,2017-01-24 14:42,2017-01-24 14:53,CLEMENTL,CLEMENTL
851,49428678,751235,10651567,1239099,1,100,N,N,N,CP_Drtn,TT_Task,DT_FixedDUR2,RV_OK,TK_Complete,823A-ST-SCCT-4b-1060,Curing for base slab,,,,0,0,0,224,56,0,0,0,,2013-01-21 08:00,2013-01-28 18:00,2014-01-05 18:00,2014-01-05 18:00,,2017-01-01 00:00,2017-01-01 00:00,,,2013-06-08 08:00,2013-06-14 18:00,,,,,PT_Normal,,,,,HtGKcXl7SvmgncWM+uUXmg,kipWPvcZ00+TyvUVz4Du6A,,,Y,0,0,,,2017-01-24 14:42,2017-01-24 14:53,CLEMENTL,CLEMENTL
852,49428679,751235,10651567,1227199,1,100,N,N,N,CP_Drtn,TT_Task,DT_FixedDUR2,RV_OK,TK_Complete,823A-ST-SCCT-4b-1080,Removal of formwork for base slab,,,,0,0,0,72,8,8,0,0,,2013-01-21 08:00,2013-01-21 18:00,2014-01-05 18:00,2014-01-05 18:00,,2017-01-01 00:00,2017-01-01 00:00,,,2013-06-10 08:00,2013-06-10 18:00,,,,,PT_Normal,,,,,asaztlMbQnKq+k+nv1E0kQ,dmg1BI8Xv0ynrfjGmGZsFg,,,Y,0,0,,,2017-01-24 14:42,2017-01-24 14:53,CLEMENTL,CLEMENTL
853,49428680,751235,10651567,1227199,1,100,N,N,N,CP_Drtn,TT_Task,DT_FixedDUR2,RV_OK,TK_Complete,823A-ST-SCCT-4b-1090,Infill concrete in between D-wall and base slab,,,,0,0,0,128,8,16,0,0,,2013-01-21 08:00,2013-01-21 18:00,2014-01-05 18:00,2014-01-05 18:00,,2017-01-01 00:00,2017-01-01 00:00,,,2013-06-11 08:00,2013-06-11 18:00,,,,,PT_Normal,,,,,752tJCz8T8O7IheFVKAaNQ,1M26yrynVkCWxlVOcyI40A,,,Y,0,0,,,2017-01-24 14:42,2017-01-24 14:53,CLEMENTL,CLEMENTL
854,49428681,751235,10651567,1227199,1,100,N,N,N,CP_Drtn,TT_Task,DT_FixedDUR2,RV_OK,TK_Complete,823A-ST-SCCT-4b-1110,Removal strut S5 and S4,,,,0,0,0,144,32,16,0,0,,2013-01-23 08:00,2013-01-26 18:00,2014-01-05 18:00,2014-01-05 18:00,,2017-01-01 00:00,2017-01-01 00:00,,,2013-06-17 08:00,2013-06-20 18:00,,,,,PT_Normal,,,,,6gn2XoXHSnGoFMxtbfWZ1w,7IjqFuBOF0apI/Oxlk8TXg,,,Y,0,0,,,2017-01-24 14:42,2017-01-24 14:53,CLEMENTL,CLEMENTL
855,49428682,751235,10651567,1239098,1,100,N,N,N,CP_Drtn,TT_Task,DT_FixedDUR2,RV_OK,TK_Complete,823A-ST-SCCT-4b-1070,Preparation of construction joint for base slab,,,,0,0,0,0,8,0,0,0,,2013-01-29 08:00,2013-01-29 18:00,2014-01-05 18:00,2014-01-05 18:00,,2017-01-01 00:00,2017-01-01 00:00,,,2013-06-08 08:00,2013-06-08 18:00,,,,,PT_Normal,,,,,PsgBD6JYQJy1Arh/VVuHMg,5DL++wZl0kO91TVVEapl2A,,,Y,0,0,,,2017-01-24 14:42,2017-01-24 14:53,CLEMENTL,CLEMENTL
856,49428683,751235,10651567,1239099,1,100,N,N,N,CP_Drtn,TT_Task,DT_FixedDUR2,RV_OK,TK_Complete,823A-ST-SCCT-4b-1100,Curing,,,,0,0,0,224,8,0,0,0,,2013-01-22 08:00,2013-01-22 18:00,2014-01-05 18:00,2014-01-05 18:00,,2017-01-01 00:00,2017-01-01 00:00,,,2013-06-15 08:00,2013-06-15 18:00,,,,,PT_Normal,,,,,gPSQLZkoRMGvoxFAxTE0oQ,+LOZwDhVV0i0pxx+LAjq0A,,,Y,0,0,,,2017-01-24 14:42,2017-01-24 14:53,CLEMENTL,CLEMENTL
857,49428684,751235,10651569,1227199,1,100,N,N,N,CP_Drtn,TT_Task,DT_FixedDUR2,RV_OK,TK_Complete,823A-ST-SCCT-6a-1010,Placing of waterproof member T-lock & testing for base slab,,,,0,64,0,64,8,0,0,0,,2012-11-12 08:00,2012-11-12 18:00,2014-01-05 18:00,2014-01-05 18:00,,2017-01-01 00:00,2017-01-01 00:00,,,2012-11-12 08:00,2012-11-12 18:00,,,,,PT_Normal,,,,,7Hc+JnK3Soe/2uNhagFB3w,scaIIBwX2UOcY8xaiWHXUg,,,Y,64,0,,,2017-01-24 14:42,2017-01-24 14:53,CLEMENTL,CLEMENTL
858,49428685,751235,10651569,1227199,1,100,N,N,N,CP_Drtn,TT_Task,DT_FixedDUR2,RV_OK,TK_Complete,823A-ST-SCCT-6a-1020,Erect external formwork for base slab,,,,0,104,0,104,16,8,8,0,,2012-11-13 08:00,2012-11-14 18:00,2014-01-05 18:00,2014-01-05 18:00,,2017-01-01 00:00,2017-01-01 00:00,,,2012-11-13 08:00,2012-11-14 18:00,,,,,PT_Normal,,,,,UCIYCY6pTU+GliWaTj+21w,D0E8CJ4wPEaLgxWecS3tkw,,,Y,104,8,,,2017-01-24 14:42,2017-01-24 14:53,CLEMENTL,CLEMENTL
859,49428686,751235,10651569,1227199,1,100,N,N,N,CP_Drtn,TT_Task,DT_FixedDUR2,RV_OK,TK_Complete,823A-ST-SCCT-6a-1030,Rebar fixing for base slab,,,,0,272,0,272,16,16,16,0,,2012-11-15 08:00,2012-11-16 18:00,2014-01-05 18:00,2014-01-05 18:00,,2017-01-01 00:00,2017-01-01 00:00,,,2012-11-15 08:00,2012-11-16 18:00,,,,,PT_Normal,,,,,q78xibJYRFem4Yh6uTSx5g,fi71k45RO0uNFqhl54JldA,,,Y,272,16,,,2017-01-24 14:42,2017-01-24 14:53,CLEMENTL,CLEMENTL
860,49428687,751235,10651569,1227199,1,100,N,N,N,CP_Drtn,TT_Task,DT_FixedDUR2,RV_OK,TK_Complete,823A-ST-SCCT-6a-1040,Erect internal kicker formwork for base slab,,,,0,288,0,288,8,16,16,0,,2012-11-17 08:00,2012-11-17 18:00,2014-01-05 18:00,2014-01-05 18:00,,2017-01-01 00:00,2017-01-01 00:00,,,2012-11-17 08:00,2012-11-17 18:00,,,,,PT_Normal,,,,,Ua8KeUpORb+xifp7FhE4CA,CaulxBFvzUKCSqod2kZzpA,,,Y,288,16,,,2017-01-24 14:42,2017-01-24 14:53,CLEMENTL,CLEMENTL
861,49428688,751235,10651569,1227199,1,100,N,N,N,CP_Drtn,TT_Task,DT_FixedDUR2,RV_OK,TK_Complete,823A-ST-SCCT-6a-1050,Concreting for base slab (363m3),,,,0,208,0,208,8,16,16,0,,2012-11-19 08:00,2012-11-19 18:00,2014-01-05 18:00,2014-01-05 18:00,,2017-01-01 00:00,2017-01-01 00:00,,,2012-11-19 08:00,2012-11-19 18:00,,,,,PT_Normal,,,,,t8D+yjCQSnq27ovQPfPPww,rdrTOlISPU24/RAhvfIASg,,,Y,208,16,,,2017-01-24 14:42,2017-01-24 14:53,CLEMENTL,CLEMENTL
862,49428689,751235,10651569,1239099,1,100,N,N,N,CP_Drtn,TT_Task,DT_FixedDUR2,RV_OK,TK_Complete,823A-ST-SCCT-6a-1060,Curing for base slab,,,,0,224,0,224,56,0,0,0,,2012-11-20 08:00,2012-11-26 18:00,2014-01-05 18:00,2014-01-05 18:00,,2017-01-01 00:00,2017-01-01 00:00,,,2012-11-20 08:00,2012-11-26 18:00,,,,,PT_Normal,,,,,+UxPCLvETDm0rshmgFlkvg,VDfZ5eGS4kyA6NbcerEpNw,,,Y,224,0,,,2017-01-24 14:42,2017-01-24 14:53,CLEMENTL,CLEMENTL
863,49428690,751235,10651569,1227199,1,100,N,N,N,CP_Drtn,TT_Task,DT_FixedDUR2,RV_OK,TK_Complete,823A-ST-SCCT-6a-1170,Side walkway and cable bracket (204m3),,,,0,0,0,1040,40,80,0,0,,2014-12-01 08:00,2014-12-05 18:00,2017-06-12 18:00,2017-06-12 18:00,,2017-01-01 00:00,2017-01-01 00:00,,,2015-01-08 08:00,2015-01-13 18:00,,,,,PT_Normal,,,,,QK/my6OTTpCyQSTOaZKfPw,1c/CyvxoU0axGAXdQjvi4A,,,N,0,0,,,2017-01-24 14:42,2017-01-24 15:36,CLEMENTL,CLEMENTL
864,49428691,751235,10651569,1227199,1,100,N,N,N,CP_Drtn,TT_Task,DT_FixedDUR2,RV_OK,TK_Complete,823A-ST-SCCT-6a-1090,Erect internal formwork & Falsework for wall and roof,,,,0,0,0,624,40,48,0,0,,2012-12-21 08:00,2012-12-27 18:00,2014-01-05 18:00,2014-01-05 18:00,,2017-01-01 00:00,2017-01-01 00:00,,,2013-06-21 08:00,2013-06-26 18:00,,,,,PT_Normal,,,,,ehddErPiRV6gmaLecz3cew,pW2k8pk4ykiVEIx+/Phtgw,,,Y,0,0,,,2017-01-24 14:42,2017-01-24 14:53,CLEMENTL,CLEMENTL
865,49428692,751235,10651569,1227199,1,100,N,N,N,CP_Drtn,TT_Task,DT_FixedDUR2,RV_OK,TK_Complete,823A-ST-SCCT-6a-1100,Rebar fixing for wall and roof,,,,0,0,0,544,40,32,0,0,,2012-12-28 08:00,2013-01-03 18:00,2014-01-05 18:00,2014-01-05 18:00,,2017-01-01 00:00,2017-01-01 00:00,,,2013-06-27 08:00,2013-07-03 18:00,,,,,PT_Normal,,,,,P1pT2xxKQ325jM1YBAxUIw,5Sw/zfPCK0OzL0IpfHOs6Q,,,Y,0,0,,,2017-01-24 14:42,2017-01-24 14:53,CLEMENTL,CLEMENTL
866,49428693,751235,10651569,1227199,1,100,N,N,N,CP_Drtn,TT_Task,DT_FixedDUR2,RV_OK,TK_Complete,823A-ST-SCCT-6a-1110,Erect external formwork for wall and roof,,,,0,0,0,208,24,16,0,0,,2013-01-04 08:00,2013-01-07 18:00,2014-01-05 18:00,2014-01-05 18:00,,2017-01-01 00:00,2017-01-01 00:00,,,2013-07-04 08:00,2013-07-06 18:00,,,,,PT_Normal,,,,,ApB80i5NTtumbJbyLcfNDQ,zoZOpMRBXEuNaESvUTIuAA,,,Y,0,0,,,2017-01-24 14:42,2017-01-24 14:53,CLEMENTL,CLEMENTL
867,49428694,751235,10651569,1227199,1,100,N,N,N,CP_Drtn,TT_Task,DT_FixedDUR2,RV_OK,TK_Complete,823A-ST-SCCT-6a-1120,Concreting for wall and roof (450m3),,,,0,0,0,208,8,16,0,0,,2013-01-08 08:00,2013-01-08 18:00,2014-01-05 18:00,2014-01-05 18:00,,2017-01-01 00:00,2017-01-01 00:00,,,2013-07-08 08:00,2013-07-08 18:00,,,,,PT_Normal,,,,,KpYaViW1R5GfpMuGIC0wlA,egNPax2v6UqwSQEBOrwpKw,,,Y,0,0,,,2017-01-24 14:42,2017-01-24 14:53,CLEMENTL,CLEMENTL
868,49428695,751235,10651569,1227199,1,100,N,N,N,CP_Drtn,TT_Task,DT_FixedDUR2,RV_OK,TK_Complete,823A-ST-SCCT-6a-1150,Removal external and internal formwork for wall,,,,0,0,0,144,16,16,0,0,,2013-01-22 08:00,2013-01-23 18:00,2014-01-05 18:00,2014-01-05 18:00,,2017-01-01 00:00,2017-01-01 00:00,,,2013-07-10 08:00,2013-07-11 18:00,,,,,PT_Normal,,,,,Mv6z2F4oRdiu0XtkRu8RYA,lYOoxOasPkO4hhV4cp0baA,,,Y,0,0,,,2017-01-24 14:42,2017-01-24 14:53,CLEMENTL,CLEMENTL
869,49428696,751235,10651569,1239099,1,100,N,N,N,CP_Drtn,TT_Task,DT_FixedDUR2,RV_OK,TK_Complete,823A-ST-SCCT-6a-1130,Curing for wall and roof,,,,0,0,0,224,80,0,0,0,,2013-01-09 08:00,2013-01-19 18:00,2014-01-05 18:00,2014-01-05 18:00,,2017-01-01 00:00,2017-01-01 00:00,,,2013-07-09 08:00,2013-07-18 18:00,,,,,PT_Normal,,,,,G6LCjm0yRoChzZGKbPz+gQ,V4TcNrgxZUakwCUJMPFD5Q,,,N,0,0,,,2017-01-24 14:42,2017-01-24 14:53,CLEMENTL,CLEMENTL
870,49428697,751235,10651569,1227199,1,100,N,N,N,CP_Drtn,TT_Task,DT_FixedDUR2,RV_OK,TK_Complete,823A-ST-SCCT-6a-1160,Removal internal falsework and formwork for roof,,,,0,0,0,416,8,32,0,0,,2013-01-24 08:00,2013-01-25 18:00,2014-01-05 18:00,2014-01-05 18:00,,2017-01-01 00:00,2017-01-01 00:00,,,2013-07-19 08:00,2013-07-19 18:00,,,,,PT_Normal,,,,,oRAw52ioQA2ZN4fe2tvz1w,oM40xW/Kc0+T6byjY0TeLg,,,N,0,0,,,2017-01-24 14:42,2017-01-24 14:53,CLEMENTL,CLEMENTL
871,49428698,751235,10651569,1239098,1,100,N,N,N,CP_Drtn,TT_Task,DT_FixedDUR2,RV_OK,TK_Complete,823A-ST-SCCT-6a-1070,Preparation of construction joint for base slab,,,,0,0,0,0,8,0,0,0,,2012-11-20 08:00,2012-11-20 18:00,2014-01-05 18:00,2014-01-05 18:00,,2017-01-01 00:00,2017-01-01 00:00,,,2012-11-20 08:00,2012-11-20 18:00,,,,,PT_Normal,,,,,N2kmv2NJRzeRlsmf4zSHew,,,,Y,0,0,,,2017-01-24 14:42,2017-01-24 14:53,CLEMENTL,CLEMENTL
872,49428699,751235,10651569,1239098,1,100,N,N,N,CP_Drtn,TT_Task,DT_FixedDUR2,RV_OK,TK_Complete,823A-ST-SCCT-6a-1140,Preparation of construction joint for wall and roof,,,,0,0,0,0,8,0,0,0,,2013-01-21 08:00,2013-01-21 18:00,2014-01-05 18:00,2014-01-05 18:00,,2017-01-01 00:00,2017-01-01 00:00,,,2013-07-09 08:00,2013-07-09 18:00,,,,,PT_Normal,,,,,ttKxarzmTkaAuLtjkXth/A,,,,Y,0,0,,,2017-01-24 14:42,2017-01-24 14:53,CLEMENTL,CLEMENTL
873,49428700,751235,10651569,1227199,1,100,N,N,N,CP_Drtn,TT_Task,DT_FixedDUR2,RV_OK,TK_Complete,823A-ST-SCCT-6a-1080,Removal of formwork for base slab,,,,0,72,0,72,8,8,8,0,,2012-11-21 08:00,2012-11-21 18:00,2014-01-05 18:00,2014-01-05 18:00,,2017-01-01 00:00,2017-01-01 00:00,,,2012-11-21 08:00,2012-11-21 18:00,,,,,PT_Normal,,,,,KYZFDG3pQjyebyn6OABEEg,d5xJ3KMiIUqjKPaoFZZm5A,,,Y,72,8,,,2017-01-24 14:42,2017-01-24 14:53,CLEMENTL,CLEMENTL
874,49428701,751235,10651570,1227199,1,100,N,N,N,CP_Drtn,TT_Task,DT_FixedDUR2,RV_OK,TK_Complete,823A-ST-SCCT-6a-2050,Concreting for base slab (363m3),,,,0,208,0,208,8,16,16,0,,2012-11-23 08:00,2012-11-23 18:00,2014-01-05 18:00,2014-01-05 18:00,,2017-01-01 00:00,2017-01-01 00:00,,,2012-11-23 08:00,2012-11-23 18:00,,,,,PT_Normal,,,,,IafgtwLwRhy8sU8XrIRUFw,KEm7ugG2O0+S643pGkxujw,,,Y,208,16,,,2017-01-24 14:42,2017-01-24 14:53,CLEMENTL,CLEMENTL
875,49428702,751235,10651570,1239099,1,100,N,N,N,CP_Drtn,TT_Task,DT_FixedDUR2,RV_OK,TK_Complete,823A-ST-SCCT-6a-2060,Curing for base slab,,,,0,224,0,224,56,0,0,0,,2012-11-23 08:00,2012-11-29 18:00,2014-01-05 18:00,2014-01-05 18:00,,2017-01-01 00:00,2017-01-01 00:00,,,2012-11-23 08:00,2012-11-29 18:00,,,,,PT_Normal,,,,,cNm4QbWvTHm08hPF64CrOw,vL/FRzt3DU2EsKlV3sVs2g,,,Y,224,0,,,2017-01-24 14:42,2017-01-24 14:53,CLEMENTL,CLEMENTL
876,49428703,751235,10651570,1227199,1,100,N,N,N,CP_Drtn,TT_Task,DT_FixedDUR2,RV_OK,TK_Complete,823A-ST-SCCT-6a-2080,Removal of formwork for base slab,,,,0,72,0,72,8,8,8,0,,2012-11-24 08:00,2012-11-24 18:00,2014-01-05 18:00,2014-01-05 18:00,,2017-01-01 00:00,2017-01-01 00:00,,,2012-11-24 08:00,2012-11-24 18:00,,,,,PT_Normal,,,,,mfk3oCFjRoCwUquHJ1ym2A,8mzd9g8O0kunLjU7H8Bh9A,,,Y,72,8,,,2017-01-24 14:42,2017-01-24 14:53,CLEMENTL,CLEMENTL
877,49428704,751235,10651570,1239098,1,100,N,N,N,CP_Drtn,TT_Task,DT_FixedDUR2,RV_OK,TK_Complete,823A-ST-SCCT-6a-2070,Preparation of construction joint for base slab,,,,0,0,0,0,8,0,0,0,,2012-11-24 08:00,2012-11-24 18:00,2014-01-05 18:00,2014-01-05 18:00,,2017-01-01 00:00,2017-01-01 00:00,,,2012-11-24 08:00,2012-11-24 18:00,,,,,PT_Normal,,,,,LFqPcHuoQ7SDYdJ+I8ov6w,dl7HlbF8NU2dLbexuxntJQ,,,Y,0,0,,,2017-01-24 14:42,2017-01-24 14:53,CLEMENTL,CLEMENTL
878,49428705,751235,10651570,1227199,1,100,N,N,N,CP_Drtn,TT_Task,DT_FixedDUR2,RV_OK,TK_Complete,823A-ST-SCCT-6a-2090,Rebar fixing for central slab,,,,0,272,0,272,8,16,16,0,,2012-11-24 08:00,2012-11-24 18:00,2014-01-05 18:00,2014-01-05 18:00,,2017-01-01 00:00,2017-01-01 00:00,,,2012-11-24 08:00,2012-11-24 18:00,,,,,PT_Normal,,,,,A7EFwM1XSK2MLgilfEoVsQ,4KxhwJn3GUG3zqVEsUnxfA,,,Y,272,16,,,2017-01-24 14:42,2017-01-24 14:53,CLEMENTL,CLEMENTL
879,49428706,751235,10651570,1227199,1,100,N,N,N,CP_Drtn,TT_Task,DT_FixedDUR2,RV_OK,TK_Complete,823A-ST-SCCT-6a-2110,Concreting for central slab (450m3),,,,0,208,0,208,8,16,16,0,,2012-11-26 08:00,2012-11-26 18:00,2014-01-05 18:00,2014-01-05 18:00,,2017-01-01 00:00,2017-01-01 00:00,,,2012-11-26 08:00,2012-11-26 18:00,,,,,PT_Normal,,,,,0E5mjj73QRunDB9aPr1yQQ,KEm7ugG2O0+S643pGkxujw,,,Y,208,16,,,2017-01-24 14:42,2017-01-24 14:53,CLEMENTL,CLEMENTL
880,49428707,751235,10651570,1239099,1,100,N,N,N,CP_Drtn,TT_Task,DT_FixedDUR2,RV_OK,TK_Complete,823A-ST-SCCT-6a-2120,Curing for central slab,,,,0,224,0,224,56,0,0,0,,2012-11-27 08:00,2012-12-03 18:00,2014-01-05 18:00,2014-01-05 18:00,,2017-01-01 00:00,2017-01-01 00:00,,,2012-11-27 08:00,2012-12-03 18:00,,,,,PT_Normal,,,,,aV1IJxSySNCYgJpc5HgZlw,vL/FRzt3DU2EsKlV3sVs2g,,,Y,224,0,,,2017-01-24 14:42,2017-01-24 14:53,CLEMENTL,CLEMENTL
881,49428708,751235,10651570,1227199,1,100,N,N,N,CP_Drtn,TT_Task,DT_FixedDUR2,RV_OK,TK_Complete,823A-ST-SCCT-6a-2150,Removal strut S5 and S4,,,,0,144,0,144,144,16,16,0,,2012-11-29 08:00,2012-12-10 18:00,2014-01-05 18:00,2014-01-05 18:00,,2017-01-01 00:00,2017-01-01 00:00,,,2012-11-29 08:00,2012-12-19 18:00,,,,,PT_Normal,,,,,70O0gyhiQaS4Vr4ayu/BvQ,+XuE34rDMEyVwctnc9gAjA,,,Y,144,16,,,2017-01-24 14:42,2017-01-24 14:53,CLEMENTL,CLEMENTL
882,49428709,751235,10651570,1239098,1,100,N,N,N,CP_Drtn,TT_Task,DT_FixedDUR2,RV_OK,TK_Complete,823A-ST-SCCT-6a-2130,Preparation of construction joint for central slab,,,,0,0,0,0,8,0,0,0,,2012-11-27 08:00,2012-11-27 18:00,2014-01-05 18:00,2014-01-05 18:00,,2017-01-01 00:00,2017-01-01 00:00,,,2012-11-27 08:00,2012-11-27 18:00,,,,,PT_Normal,,,,,WglFo0abT8i051+8525htA,dl7HlbF8NU2dLbexuxntJQ,,,Y,0,0,,,2017-01-24 14:42,2017-01-24 14:53,CLEMENTL,CLEMENTL
883,49428710,751235,10651570,1227199,1,100,N,N,N,CP_Drtn,TT_Task,DT_FixedDUR2,RV_OK,TK_Complete,823A-ST-SCCT-6a-2240,Side walkway and cable bracket (204m3),,,,0,0,0,1040,40,80,0,0,,2015-10-08 08:00,2015-10-13 18:00,2017-06-12 18:00,2017-06-12 18:00,,2017-01-01 00:00,2017-01-01 00:00,,,2015-11-19 08:00,2015-11-24 18:00,,,,,PT_Normal,,,,,+adEZBNrQ9yIn3GV9hH3gg,mw5mmtBTpESiSUWdZK8oHA,,,N,0,0,,,2017-01-24 14:42,2017-01-24 15:36,CLEMENTL,CLEMENTL
884,49428711,751235,10651570,1227199,1,100,N,N,N,CP_Drtn,TT_Task,DT_FixedDUR2,RV_OK,TK_Complete,823A-ST-SCCT-6a-2160,Erect internal formwork & Falsework for wall and roof,,,,0,0,0,624,32,48,0,0,,2012-12-20 08:00,2012-12-24 18:00,2014-01-05 18:00,2014-01-05 18:00,,2017-01-01 00:00,2017-01-01 00:00,,,2013-06-21 08:00,2013-06-25 18:00,,,,,PT_Normal,,,,,UIUGM/iSQF2UNDojFvAHow,b1QQxHL3QUOkaIKXrc63+w,,,Y,0,0,,,2017-01-24 14:42,2017-01-24 14:53,CLEMENTL,CLEMENTL
885,49428712,751235,10651570,1227199,1,100,N,N,N,CP_Drtn,TT_Task,DT_FixedDUR2,RV_OK,TK_Complete,823A-ST-SCCT-6a-2170,Rebar fixing for wall and roof,,,,0,0,0,544,32,32,0,0,,2012-12-27 08:00,2012-12-31 18:00,2014-01-05 18:00,2014-01-05 18:00,,2017-01-01 00:00,2017-01-01 00:00,,,2013-06-26 08:00,2013-06-29 18:00,,,,,PT_Normal,,,,,2xZPgDYOTKi6sNR/3NDpIg,Dkf1xORL3kybh8punxKuow,,,Y,0,0,,,2017-01-24 14:42,2017-01-24 14:53,CLEMENTL,CLEMENTL
886,49428713,751235,10651570,1227199,1,100,N,N,N,CP_Drtn,TT_Task,DT_FixedDUR2,RV_OK,TK_Complete,823A-ST-SCCT-6a-2180,Erect external formwork for wall and roof,,,,0,0,0,208,24,16,0,0,,2013-01-02 08:00,2013-01-04 18:00,2014-01-05 18:00,2014-01-05 18:00,,2017-01-01 00:00,2017-01-01 00:00,,,2013-07-02 08:00,2013-07-04 18:00,,,,,PT_Normal,,,,,31aJT2zxTrWR0v3IbLEbfQ,VOYVvd3WdUyo/UjGGw9yyA,,,Y,0,0,,,2017-01-24 14:42,2017-01-24 14:53,CLEMENTL,CLEMENTL
887,49428714,751235,10651570,1227199,1,100,N,N,N,CP_Drtn,TT_Task,DT_FixedDUR2,RV_OK,TK_Complete,823A-ST-SCCT-6a-2190,Concreting for wall and roof (450m3),,,,0,0,0,208,8,16,0,0,,2013-01-05 08:00,2013-01-05 18:00,2014-01-05 18:00,2014-01-05 18:00,,2017-01-01 00:00,2017-01-01 00:00,,,2013-07-05 08:00,2013-07-05 18:00,,,,,PT_Normal,,,,,pcEoOIwOSOiPf51Igkf3Kw,6hS3kY2n70ixOKqVhM7qpQ,,,Y,0,0,,,2017-01-24 14:42,2017-01-24 14:53,CLEMENTL,CLEMENTL
888,49428715,751235,10651570,1227199,1,100,N,N,N,CP_Drtn,TT_Task,DT_FixedDUR2,RV_OK,TK_Complete,823A-ST-SCCT-6a-2220,Removal external and internal formwork for wall,,,,0,0,0,144,16,16,0,0,,2013-01-18 08:00,2013-01-19 18:00,2014-01-05 18:00,2014-01-05 18:00,,2017-01-01 00:00,2017-01-01 00:00,,,2013-07-08 08:00,2013-07-09 18:00,,,,,PT_Normal,,,,,ouRxwl9aQS+LwfWnYb7h4g,jtGyoSIuV0WQFrpZ9iNKKw,,,Y,0,0,,,2017-01-24 14:42,2017-01-24 14:53,CLEMENTL,CLEMENTL
889,49428716,751235,10651570,1239099,1,100,N,N,N,CP_Drtn,TT_Task,DT_FixedDUR2,RV_OK,TK_Complete,823A-ST-SCCT-6a-2200,Curing for wall and roof,,,,0,0,0,224,80,0,0,0,,2013-01-07 08:00,2013-01-16 18:00,2014-01-05 18:00,2014-01-05 18:00,,2017-01-01 00:00,2017-01-01 00:00,,,2013-07-06 08:00,2013-07-15 18:00,,,,,PT_Normal,,,,,zUr/tuOxSK2niH8iux0MWg,aDq1LZ2Im0WPaSGOZCiskA,,,N,0,0,,,2017-01-24 14:42,2017-01-24 14:53,CLEMENTL,CLEMENTL
890,49428717,751235,10651570,1227199,1,100,N,N,N,CP_Drtn,TT_Task,DT_FixedDUR2,RV_OK,TK_Complete,823A-ST-SCCT-6a-2230,Removal internal falsework and formwork for roof,,,,0,0,0,416,8,32,0,0,,2013-01-21 08:00,2013-01-21 18:00,2014-01-05 18:00,2014-01-05 18:00,,2017-01-01 00:00,2017-01-01 00:00,,,2013-07-16 08:00,2013-07-16 18:00,,,,,PT_Normal,,,,,QXrQZAbsQQ+o/rRr2beJvw,M3nexcP04Uiycp5/Pv3Mrg,,,N,0,0,,,2017-01-24 14:42,2017-01-24 14:53,CLEMENTL,CLEMENTL
891,49428718,751235,10651570,1239098,1,100,N,N,N,CP_Drtn,TT_Task,DT_FixedDUR2,RV_OK,TK_Complete,823A-ST-SCCT-6a-2210,Preparation of construction joint for wall and roof,,,,0,0,0,0,8,0,0,0,,2013-01-17 08:00,2013-01-17 18:00,2014-01-05 18:00,2014-01-05 18:00,,2017-01-01 00:00,2017-01-01 00:00,,,2013-07-06 08:00,2013-07-06 18:00,,,,,PT_Normal,,,,,aEIjS32TRP6iseXRglNHZg,H3GEk0Vep0utYrSyPYm1cg,,,Y,0,0,,,2017-01-24 14:42,2017-01-24 14:53,CLEMENTL,CLEMENTL
892,49428719,751235,10651570,1227199,1,100,N,N,N,CP_Drtn,TT_Task,DT_FixedDUR2,RV_OK,TK_Complete,823A-ST-SCCT-6a-2140,Removal of formwork for central slab,,,,0,72,0,72,8,8,8,0,,2012-11-28 08:00,2012-11-28 18:00,2014-01-05 18:00,2014-01-05 18:00,,2017-01-01 00:00,2017-01-01 00:00,,,2012-11-28 08:00,2012-11-28 18:00,,,,,PT_Normal,,,,,ZSr4XBZwRWakB494mqOFsw,iQxcQ+ko3kuZbTDkr7trFg,,,Y,72,8,,,2017-01-24 14:42,2017-01-24 14:53,CLEMENTL,CLEMENTL
893,49428720,751235,10651570,1227199,1,100,N,N,N,CP_Drtn,TT_Task,DT_FixedDUR2,RV_OK,TK_Complete,823A-ST-SCCT-6a-2100,Erect external formwork for central slab,,,,0,104,0,104,8,8,8,0,,2012-11-26 08:00,2012-11-26 18:00,2014-01-05 18:00,2014-01-05 18:00,,2017-01-01 00:00,2017-01-01 00:00,,,2012-11-26 08:00,2012-11-26 18:00,,,,,PT_Normal,,,,,xeS6k7tpQiW+gSs4NMs37A,hbtU3k+EoUK1r8T8ZmgUgQ,,,Y,104,8,,,2017-01-24 14:42,2017-01-24 14:53,CLEMENTL,CLEMENTL
894,49428721,751235,10651570,1227199,1,100,N,N,N,CP_Drtn,TT_Task,DT_FixedDUR2,RV_OK,TK_Complete,823A-ST-SCCT-6a-2010,Placing of waterproof member T-lock & testing for base slab,,,,0,64,0,64,8,0,0,0,,2012-11-13 08:00,2012-11-13 18:00,2014-01-05 18:00,2014-01-05 18:00,,2017-01-01 00:00,2017-01-01 00:00,,,2012-11-13 08:00,2012-11-13 18:00,,,,,PT_Normal,,,,,BlArHrfURi2M8EC01Sy2ew,fH05l7a5JUCsICGV3Kmecw,,,Y,64,0,,,2017-01-24 14:42,2017-01-24 14:53,CLEMENTL,CLEMENTL
895,49428722,751235,10651570,1227199,1,100,N,N,N,CP_Drtn,TT_Task,DT_FixedDUR2,RV_OK,TK_Complete,823A-ST-SCCT-6a-2020,Erect external formwork for base slab,,,,0,104,0,104,24,8,8,0,,2012-11-14 08:00,2012-11-16 18:00,2014-01-05 18:00,2014-01-05 18:00,,2017-01-01 00:00,2017-01-01 00:00,,,2012-11-14 08:00,2012-11-16 18:00,,,,,PT_Normal,,,,,q/7CnioMRymU6pUCS4ZqeQ,nG3TSItsBkG1qGCuJ8WcaA,,,Y,104,8,,,2017-01-24 14:42,2017-01-24 14:53,CLEMENTL,CLEMENTL
896,49428723,751235,10651570,1227199,1,100,N,N,N,CP_Drtn,TT_Task,DT_FixedDUR2,RV_OK,TK_Complete,823A-ST-SCCT-6a-2030,Rebar fixing for base slab,,,,0,272,0,272,24,16,16,0,,2012-11-19 08:00,2012-11-21 18:00,2014-01-05 18:00,2014-01-05 18:00,,2017-01-01 00:00,2017-01-01 00:00,,,2012-11-19 08:00,2012-11-21 18:00,,,,,PT_Normal,,,,,c92rXMgYQOqOntDllLVMUw,4KxhwJn3GUG3zqVEsUnxfA,,,Y,272,16,,,2017-01-24 14:42,2017-01-24 14:53,CLEMENTL,CLEMENTL
897,49428724,751235,10651570,1227199,1,100,N,N,N,CP_Drtn,TT_Task,DT_FixedDUR2,RV_OK,TK_Complete,823A-ST-SCCT-6a-2040,Erect internal kicker formwork for base slab,,,,0,288,0,288,8,16,16,0,,2012-11-22 08:00,2012-11-22 18:00,2014-01-05 18:00,2014-01-05 18:00,,2017-01-01 00:00,2017-01-01 00:00,,,2012-11-22 08:00,2012-11-22 18:00,,,,,PT_Normal,,,,,EpFE7+5lR2CDeSu13HKNZQ,IhW6BSGLQkqeas9h4geN6A,,,Y,288,16,,,2017-01-24 14:42,2017-01-24 14:53,CLEMENTL,CLEMENTL
898,49428725,751235,10651572,1227199,1,100,N,N,N,CP_Drtn,TT_Task,DT_FixedDUR2,RV_OK,TK_Complete,823A-ST-SCCT-3a-3090,Side walkway and cable bracket (204m3),,,,0,1040,0,1040,40,80,80,0,,2015-07-02 08:00,2015-10-02 18:00,2017-06-12 18:00,2017-06-12 18:00,,2017-01-01 00:00,2017-01-01 00:00,,,2015-08-12 08:00,2015-08-17 18:00,,,,,PT_Normal,,,,,1ueTNZWmTfWLxXTq3jMteQ,0lIIk+/Lh0S7V+DMsCzCyg,,,N,1040,80,,,2017-01-24 14:42,2017-01-24 15:36,CLEMENTL,CLEMENTL
899,49428726,751235,10651572,1227199,1,100,N,N,N,CP_Drtn,TT_Task,DT_FixedDUR2,RV_OK,TK_Complete,823A-ST-SCCT-3a-3010,Erect internal formwork & Falsework for wall and roof,,,,0,0,0,624,32,48,0,0,,2013-03-13 08:00,2013-03-20 18:00,2014-01-05 18:00,2014-01-05 18:00,,2017-01-01 00:00,2017-01-01 00:00,,,2013-06-08 08:00,2013-06-13 18:00,,,,,PT_Normal,,,,,FKPKHnXBTdWlmlpbRBRHLA,DjSmwzpfm0iajl07uhuMeQ,,,N,0,0,,,2017-01-24 14:42,2017-01-24 14:53,CLEMENTL,CLEMENTL
900,49428727,751235,10651572,1227199,1,100,N,N,N,CP_Drtn,TT_Task,DT_FixedDUR2,RV_OK,TK_Complete,823A-ST-SCCT-3a-3020,Rebar fixing for wall and roof,,,,0,0,0,544,24,32,0,0,,2013-03-21 08:00,2013-03-26 18:00,2014-01-05 18:00,2014-01-05 18:00,,2017-01-01 00:00,2017-01-01 00:00,,,2013-06-14 08:00,2013-06-17 18:00,,,,,PT_Normal,,,,,83JCjW9cSiCYeqIDDSgd9Q,U286EG4J+UikhtvvavYXRQ,,,N,0,0,,,2017-01-24 14:42,2017-01-24 14:53,CLEMENTL,CLEMENTL
901,49428728,751235,10651572,1227199,1,100,N,N,N,CP_Drtn,TT_Task,DT_FixedDUR2,RV_OK,TK_Complete,823A-ST-SCCT-3a-3030,Erect external formwork for wall and roof,,,,0,0,0,208,16,16,0,0,,2013-03-27 08:00,2013-04-06 18:00,2014-01-05 18:00,2014-01-05 18:00,,2017-01-01 00:00,2017-01-01 00:00,,,2013-06-18 08:00,2013-06-19 18:00,,,,,PT_Normal,,,,,1B545jZuRr+l8KSf2/La8Q,QMhDQN/J1keqgoWMdcEF4g,,,N,0,0,,,2017-01-24 14:42,2017-01-24 14:53,CLEMENTL,CLEMENTL
902,49428729,751235,10651572,1227199,1,100,N,N,N,CP_Drtn,TT_Task,DT_FixedDUR2,RV_OK,TK_Complete,823A-ST-SCCT-3a-3040,Concreting for wall and roof (450m3),,,,0,0,0,208,8,16,0,0,,2013-04-13 08:00,2013-04-13 18:00,2014-01-05 18:00,2014-01-05 18:00,,2017-01-01 00:00,2017-01-01 00:00,,,2013-06-20 08:00,2013-06-20 18:00,,,,,PT_Normal,,,,,pJGs516mT8CFlzooIDj1vw,7De+/16320yhT2skhC9oXQ,,,N,0,0,,,2017-01-24 14:42,2017-01-24 14:53,CLEMENTL,CLEMENTL
903,49428730,751235,10651572,1227199,1,100,N,N,N,CP_Drtn,TT_Task,DT_FixedDUR2,RV_OK,TK_Complete,823A-ST-SCCT-3a-3070,Removal external wall formwork for wall,,,,0,0,0,144,8,16,0,0,,2013-04-30 08:00,2013-04-30 18:00,2014-01-05 18:00,2014-01-05 18:00,,2017-01-01 00:00,2017-01-01 00:00,,,2013-06-22 08:00,2013-06-22 18:00,,,,,PT_Normal,,,,,nFURv98MRq+trZc8yUrKQQ,JneY2KlRYkyhl6OT6849Aw,,,N,0,0,,,2017-01-24 14:42,2017-01-24 14:53,CLEMENTL,CLEMENTL
904,49428731,751235,10651572,1239099,1,100,N,N,N,CP_Drtn,TT_Task,DT_FixedDUR2,RV_OK,TK_Complete,823A-ST-SCCT-3a-3050,Curing for wall and roof,,,,0,0,0,224,80,0,0,0,,2013-04-15 08:00,2013-04-15 18:00,2014-01-05 18:00,2014-01-05 18:00,,2017-01-01 00:00,2017-01-01 00:00,,,2013-06-21 08:00,2013-06-30 18:00,,,,,PT_Normal,,,,,pAp5w3bjQo66yI7D3rT2Hw,Afy1d6hAZUOnoriwVAQhlg,,,N,0,0,,,2017-01-24 14:42,2017-01-24 14:53,CLEMENTL,CLEMENTL
905,49428732,751235,10651572,1239098,1,100,N,N,N,CP_Drtn,TT_Task,DT_FixedDUR2,RV_OK,TK_Complete,823A-ST-SCCT-3a-3060,Preparation of construction joint for wall and roof,,,,0,0,0,0,8,0,0,0,,2013-04-16 08:00,2013-04-16 18:00,2014-01-05 18:00,2014-01-05 18:00,,2017-01-01 00:00,2017-01-01 00:00,,,2013-06-21 08:00,2013-06-21 18:00,,,,,PT_Normal,,,,,flIk8LugTYGBneElpQhI1w,kgtAiBg/D0GZ/mJJjqtYgw,,,N,0,0,,,2017-01-24 14:42,2017-01-24 14:53,CLEMENTL,CLEMENTL
906,49428733,751235,10651572,1227199,1,100,N,N,N,CP_Drtn,TT_Task,DT_FixedDUR2,RV_OK,TK_Complete,823A-ST-SCCT-3a-3080,Removal internal falsework and formwork for wall and roof,,,,0,0,0,416,16,32,0,0,,2013-04-30 08:00,2013-04-30 18:00,2014-01-05 18:00,2014-01-05 18:00,,2017-01-01 00:00,2017-01-01 00:00,,,2013-07-02 08:00,2013-07-03 18:00,,,,,PT_Normal,,,,,K8wmrYgxRfOUeD4wTlvD4Q,/0nPeLGKNE2XIvZ1rv9j3g,,,N,0,0,,,2017-01-24 14:42,2017-01-24 14:53,CLEMENTL,CLEMENTL
907,49428734,751235,10651573,1227199,1,100,N,N,N,CP_Drtn,TT_Task,DT_FixedDUR2,RV_OK,TK_Complete,823A-ST-SCCT-3a-1010,Placing of waterproof member T-lock & testing for base slab,,,,0,0,0,64,8,0,0,0,,2013-01-25 08:00,2013-01-25 18:00,2014-01-05 18:00,2014-01-05 18:00,,2017-01-01 00:00,2017-01-01 00:00,,,2013-06-01 08:00,2013-06-01 18:00,,,,,PT_Normal,,,,,wn+rXL2DT5ejKLMcKV1G4w,YUcWQr7y0kKnt8cxR7Xj2w,,,N,0,0,,,2017-01-24 14:42,2017-01-24 14:53,CLEMENTL,CLEMENTL
908,49428735,751235,10651573,1227199,1,100,N,N,N,CP_Drtn,TT_Task,DT_FixedDUR2,RV_OK,TK_Complete,823A-ST-SCCT-3a-1020,Erect external formwork for base slab,,,,0,0,0,104,16,8,0,0,,2013-01-26 08:00,2013-01-28 18:00,2014-01-05 18:00,2014-01-05 18:00,,2017-01-01 00:00,2017-01-01 00:00,,,2013-06-03 08:00,2013-06-04 18:00,,,,,PT_Normal,,,,,aAICzu+NSmuvcTWHUtwd8A,kkxA6+57pkeAvj44ZOA5Pw,,,N,0,0,,,2017-01-24 14:42,2017-01-24 14:53,CLEMENTL,CLEMENTL
909,49428736,751235,10651573,1227199,1,100,N,N,N,CP_Drtn,TT_Task,DT_FixedDUR2,RV_OK,TK_Complete,823A-ST-SCCT-3a-1030,Rebar fixing for base slab,,,,0,0,0,272,24,16,0,0,,2013-01-28 08:00,2013-02-01 18:00,2014-01-05 18:00,2014-01-05 18:00,,2017-01-01 00:00,2017-01-01 00:00,,,2013-06-05 08:00,2013-06-07 18:00,,,,,PT_Normal,,,,,UvYngdTxR5O3iRkvDrbA2w,SQmdRp+dekajVu/1cmMxLw,,,N,0,0,,,2017-01-24 14:42,2017-01-24 14:53,CLEMENTL,CLEMENTL
910,49428737,751235,10651573,1227199,1,100,N,N,N,CP_Drtn,TT_Task,DT_FixedDUR2,RV_OK,TK_Complete,823A-ST-SCCT-3a-1040,Erect internal kicker formwork for base slab,,,,0,0,0,288,16,16,0,0,,2013-02-01 08:00,2013-02-01 18:00,2014-01-05 18:00,2014-01-05 18:00,,2017-01-01 00:00,2017-01-01 00:00,,,2013-06-08 08:00,2013-06-10 18:00,,,,,PT_Normal,,,,,mKn5ll5sTnq6KMVjlNI+tg,errr2B9k50O0HZ/dA0dTVg,,,N,0,0,,,2017-01-24 14:42,2017-01-24 14:53,CLEMENTL,CLEMENTL
911,49428738,751235,10651573,1227199,1,100,N,N,N,CP_Drtn,TT_Task,DT_FixedDUR2,RV_OK,TK_Complete,823A-ST-SCCT-3a-1050,Concreting for base slab (363m3),,,,0,0,0,208,8,16,0,0,,2013-02-02 08:00,2013-02-02 18:00,2014-01-05 18:00,2014-01-05 18:00,,2017-01-01 00:00,2017-01-01 00:00,,,2013-06-11 08:00,2013-06-11 18:00,,,,,PT_Normal,,,,,KnTw3MYATfyN8IBlRNUnSw,8/k93HiYUkOT7nipOIvY3Q,,,N,0,0,,,2017-01-24 14:42,2017-01-24 14:53,CLEMENTL,CLEMENTL
912,49428739,751235,10651573,1239099,1,100,N,N,N,CP_Drtn,TT_Task,DT_FixedDUR2,RV_OK,TK_Complete,823A-ST-SCCT-3a-1060,Curing for base slab,,,,0,0,0,224,56,0,0,0,,2013-02-04 08:00,2013-02-08 18:00,2014-01-05 18:00,2014-01-05 18:00,,2017-01-01 00:00,2017-01-01 00:00,,,2013-06-12 08:00,2013-06-18 18:00,,,,,PT_Normal,,,,,+x6fV3Q/SsGbTwCPUG+J2g,5ghmuqurB0CAq8onPVFcNg,,,N,0,0,,,2017-01-24 14:42,2017-01-24 14:53,CLEMENTL,CLEMENTL
913,49428740,751235,10651573,1227199,1,100,N,N,N,CP_Drtn,TT_Task,DT_FixedDUR2,RV_OK,TK_Complete,823A-ST-SCCT-3a-1080,Removal of formwork for base slab,,,,0,0,0,72,8,8,0,0,,2013-02-04 08:00,2013-02-04 18:00,2014-01-05 18:00,2014-01-05 18:00,,2017-01-01 00:00,2017-01-01 00:00,,,2013-06-14 08:00,2013-06-14 18:00,,,,,PT_Normal,,,,,hIMaVhZhROWsYPCmkl+oKw,qauFvB9A8kuIB9uzeM6iYw,,,N,0,0,,,2017-01-24 14:42,2017-01-24 14:53,CLEMENTL,CLEMENTL
914,49428741,751235,10651573,1227199,1,100,N,N,N,CP_Drtn,TT_Task,DT_FixedDUR2,RV_OK,TK_Complete,823A-ST-SCCT-3a-1090,Infill concrete in between D-wall and base slab,,,,0,0,0,128,8,16,0,0,,2013-02-05 08:00,2013-02-05 18:00,2014-01-05 18:00,2014-01-05 18:00,,2017-01-01 00:00,2017-01-01 00:00,,,2013-06-15 08:00,2013-06-15 18:00,,,,,PT_Normal,,,,,bA1/S+ELT3WpX8oVfsgHnA,e93BYXCWcEidI21+TfBRKw,,,N,0,0,,,2017-01-24 14:42,2017-01-24 14:53,CLEMENTL,CLEMENTL
915,49428742,751235,10651573,1227199,1,100,N,N,N,CP_Drtn,TT_Task,DT_FixedDUR2,RV_OK,TK_Complete,823A-ST-SCCT-3a-1110,Removal strut S5 and S4,,,,0,0,0,144,32,16,0,0,,2013-02-07 08:00,2013-02-16 18:00,2014-01-05 18:00,2014-01-05 18:00,,2017-01-01 00:00,2017-01-01 00:00,,,2013-06-20 08:00,2013-06-24 18:00,,,,,PT_Normal,,,,,LuBZdS8xTyuYpzoXbqGM3g,Bv3P6pesqEqLTY5YaGMAJw,,,N,0,0,,,2017-01-24 14:42,2017-01-24 14:53,CLEMENTL,CLEMENTL
916,49428743,751235,10651573,1239098,1,100,N,N,N,CP_Drtn,TT_Task,DT_FixedDUR2,RV_OK,TK_Complete,823A-ST-SCCT-3a-1070,Preparation of construction joint for base slab,,,,0,0,0,0,8,0,0,0,,2013-02-15 08:00,2013-02-15 18:00,2014-01-05 18:00,2014-01-05 18:00,,2017-01-01 00:00,2017-01-01 00:00,,,2013-06-13 08:00,2013-06-13 18:00,,,,,PT_Normal,,,,,rq2Bo3wXSB6323PgTS6jeQ,ukF4LO0d10Kum6JjE+nhjA,,,N,0,0,,,2017-01-24 14:42,2017-01-24 14:53,CLEMENTL,CLEMENTL
917,49428744,751235,10651573,1239099,1,100,N,N,N,CP_Drtn,TT_Task,DT_FixedDUR2,RV_OK,TK_Complete,823A-ST-SCCT-3a-1100,Curing,,,,0,0,0,224,8,0,0,0,,2013-02-06 08:00,2013-02-06 18:00,2014-01-05 18:00,2014-01-05 18:00,,2017-01-01 00:00,2017-01-01 00:00,,,2013-06-19 08:00,2013-06-19 18:00,,,,,PT_Normal,,,,,2laKtwG6Rg28Ir5WhH5gYg,6kjf0TlxJUeFn14s2N2gpA,,,N,0,0,,,2017-01-24 14:42,2017-01-24 14:53,CLEMENTL,CLEMENTL
918,49428745,751235,10651574,1227199,1,100,N,N,N,CP_Drtn,TT_Task,DT_FixedDUR2,RV_OK,TK_Complete,823A-ST-SCCT-3a-2090,Side walkway and cable bracket (204m3),,,,0,0,0,1040,40,80,0,0,,2013-10-05 08:00,2013-10-12 18:00,2017-06-12 18:00,2017-06-12 18:00,,2017-01-01 00:00,2017-01-01 00:00,,,2014-03-08 08:00,2014-03-13 18:00,,,,,PT_Normal,,,,,u4+5tMGOS02YfekSKFGrwQ,HFfC2xigl0WAIW8RJykCYQ,,,N,0,0,,,2017-01-24 14:42,2017-01-24 15:36,CLEMENTL,CLEMENTL
919,49428746,751235,10651574,1227199,1,100,N,N,N,CP_Drtn,TT_Task,DT_FixedDUR2,RV_OK,TK_Complete,823A-ST-SCCT-3a-2010,Erect internal formwork & Falsework for wall and roof,,,,0,624,0,624,56,48,48,0,,2013-08-24 08:00,2013-08-31 18:00,2014-01-05 18:00,2014-01-05 18:00,,2017-01-01 00:00,2017-01-01 00:00,,,2013-06-19 08:00,2013-06-26 18:00,,,,,PT_Normal,,,,,ZcBjfIbhTUe6w1V8x+dxqg,R77DMw+Nj0WPWNGARMlASA,,,N,624,48,,,2017-01-24 14:42,2017-01-24 14:53,CLEMENTL,CLEMENTL
920,49428747,751235,10651574,1227199,1,100,N,N,N,CP_Drtn,TT_Task,DT_FixedDUR2,RV_OK,TK_Complete,823A-ST-SCCT-3a-2020,Rebar fixing for wall and roof,,,,0,0,0,544,24,32,0,0,,2013-09-02 08:00,2013-09-05 18:00,2014-01-05 18:00,2014-01-05 18:00,,2017-01-01 00:00,2017-01-01 00:00,,,2013-10-02 08:00,2013-10-04 18:00,,,,,PT_Normal,,,,,YnV1DnN7SaSpT7kL4wVIyg,m0Gy0mT/u0WHI85q0OLdvg,,,N,0,0,,,2017-01-24 14:42,2017-01-24 14:53,CLEMENTL,CLEMENTL
921,49428748,751235,10651574,1227199,1,100,N,N,N,CP_Drtn,TT_Task,DT_FixedDUR2,RV_OK,TK_Complete,823A-ST-SCCT-3a-2030,Erect external formwork for wall and roof,,,,0,0,0,208,16,16,0,0,,2013-09-06 08:00,2013-09-12 18:00,2014-01-05 18:00,2014-01-05 18:00,,2017-01-01 00:00,2017-01-01 00:00,,,2013-10-05 08:00,2013-10-07 18:00,,,,,PT_Normal,,,,,vZ0CsWJbQamaOFy2aAQuOw,RYByufr/kUSKAG3CJVJP+Q,,,N,0,0,,,2017-01-24 14:42,2017-01-24 14:53,CLEMENTL,CLEMENTL
922,49428749,751235,10651574,1227199,1,100,N,N,N,CP_Drtn,TT_Task,DT_FixedDUR2,RV_OK,TK_Complete,823A-ST-SCCT-3a-2040,Concreting for wall and roof (450m3),,,,0,0,0,208,8,16,0,0,,2013-09-13 08:00,2013-09-13 18:00,2014-01-05 18:00,2014-01-05 18:00,,2017-01-01 00:00,2017-01-01 00:00,,,2013-10-08 08:00,2013-10-08 18:00,,,,,PT_Normal,,,,,iw2IjnL3R+OZZo6YayfoUQ,d5dyVBSJeE2oocd2Dh6J3g,,,N,0,0,,,2017-01-24 14:42,2017-01-24 14:53,CLEMENTL,CLEMENTL
923,49428750,751235,10651574,1227199,1,100,N,N,N,CP_Drtn,TT_Task,DT_FixedDUR2,RV_OK,TK_Complete,823A-ST-SCCT-3a-2070,Removal external and internal formwork for wall,,,,0,0,0,144,16,16,0,0,,2013-09-25 08:00,2013-09-25 18:00,2014-01-05 18:00,2014-01-05 18:00,,2017-01-01 00:00,2017-01-01 00:00,,,2013-10-10 08:00,2013-10-11 18:00,,,,,PT_Normal,,,,,IvBdfnczQ0uEiGx2JkbzDg,igvX1sTTrESNTntuZ3t66Q,,,N,0,0,,,2017-01-24 14:42,2017-01-24 14:53,CLEMENTL,CLEMENTL
924,49428751,751235,10651574,1239099,1,100,N,N,N,CP_Drtn,TT_Task,DT_FixedDUR2,RV_OK,TK_Complete,823A-ST-SCCT-3a-2050,Curing for wall and roof,,,,0,0,0,224,80,0,0,0,,2013-09-14 08:00,2013-09-23 18:00,2014-01-05 18:00,2014-01-05 18:00,,2017-01-01 00:00,2017-01-01 00:00,,,2013-10-09 08:00,2013-10-18 18:00,,,,,PT_Normal,,,,,BXuXBeeDRVepvpyLHk0kPg,aurNkq+gg0STbYyDUfuwdA,,,N,0,0,,,2017-01-24 14:42,2017-01-24 14:53,CLEMENTL,CLEMENTL
925,49428752,751235,10651574,1227199,1,100,N,N,N,CP_Drtn,TT_Task,DT_FixedDUR2,RV_OK,TK_Complete,823A-ST-SCCT-3a-2080,Removal internal falsework and formwork for roof,,,,0,0,0,416,8,32,0,0,,2013-09-26 08:00,2013-09-26 18:00,2014-01-05 18:00,2014-01-05 18:00,,2017-01-01 00:00,2017-01-01 00:00,,,2013-10-19 08:00,2013-10-19 18:00,,,,,PT_Normal,,,,,sbj57xvWQrOKONBtPIcEhw,j88o7dhiaEmn3Qfl/dRi7A,,,N,0,0,,,2017-01-24 14:42,2017-01-24 14:53,CLEMENTL,CLEMENTL
926,49428753,751235,10651574,1239098,1,100,N,N,N,CP_Drtn,TT_Task,DT_FixedDUR2,RV_OK,TK_Complete,823A-ST-SCCT-3a-2060,Preparation of construction joint for wall and roof,,,,0,0,0,0,8,0,0,0,,2013-09-24 08:00,2013-09-24 18:00,2014-01-05 18:00,2014-01-05 18:00,,2017-01-01 00:00,2017-01-01 00:00,,,2013-10-09 08:00,2013-10-09 18:00,,,,,PT_Normal,,,,,b/nBn9VuQpuTWGkDCU4bEA,ephsvsRCu065/0TEKDe5Gw,,,N,0,0,,,2017-01-24 14:42,2017-01-24 14:53,CLEMENTL,CLEMENTL
927,49428754,751235,10651576,1227199,1,100,N,N,N,CP_Drtn,TT_Task,DT_FixedDUR2,RV_OK,TK_Complete,823A-ST-SCCT-2b-2090,Side walkway and cable bracket (204m3),,,,0,0,0,1040,40,80,0,0,,2013-08-23 08:00,2013-10-18 18:00,2017-06-12 18:00,2017-06-12 18:00,,2017-01-01 00:00,2017-01-01 00:00,,,2014-02-10 08:00,2014-02-14 18:00,,,,,PT_Normal,,,,,d1d4wL9oQ3mf/6Ogtg5H8Q,2c3rKy8jGUOZIv76WSrEag,,,N,0,0,,,2017-01-24 14:42,2017-01-24 15:36,CLEMENTL,CLEMENTL
928,49428755,751235,10651576,1227199,1,100,N,N,N,CP_Drtn,TT_Task,DT_FixedDUR2,RV_OK,TK_Complete,823A-ST-SCCT-2b-2010,Erect internal formwork & Falsework for wall and roof,,,,0,624,0,624,32,48,48,0,,2013-06-26 08:00,2013-07-02 18:00,2014-01-05 18:00,2014-01-05 18:00,,2017-01-01 00:00,2017-01-01 00:00,,,2013-08-01 08:00,2013-08-05 18:00,,,,,PT_Normal,,,,,43LRyD/TQdKPVURQclFceQ,3nwsqL5prEyH7mMzn9jxqg,,,N,624,48,,,2017-01-24 14:42,2017-01-24 14:53,CLEMENTL,CLEMENTL
929,49428756,751235,10651576,1227199,1,100,N,N,N,CP_Drtn,TT_Task,DT_FixedDUR2,RV_OK,TK_Complete,823A-ST-SCCT-2b-2020,Rebar fixing for wall and roof,,,,0,0,0,544,24,32,0,0,,2013-07-03 08:00,2013-07-15 18:00,2014-01-05 18:00,2014-01-05 18:00,,2017-01-01 00:00,2017-01-01 00:00,,,2013-08-06 08:00,2013-08-08 18:00,,,,,PT_Normal,,,,,j0nyGRv+ShmRAzoizeIfVA,mbe13kjVjEyg7yRhgazf8w,,,N,0,0,,,2017-01-24 14:42,2017-01-24 14:53,CLEMENTL,CLEMENTL
930,49428757,751235,10651576,1227199,1,100,N,N,N,CP_Drtn,TT_Task,DT_FixedDUR2,RV_OK,TK_Complete,823A-ST-SCCT-2b-2030,Erect external formwork for wall and roof,,,,0,0,0,208,16,16,0,0,,2013-07-10 08:00,2013-07-26 18:00,2014-01-05 18:00,2014-01-05 18:00,,2017-01-01 00:00,2017-01-01 00:00,,,2013-08-09 08:00,2013-08-10 18:00,,,,,PT_Normal,,,,,8fnglNX1SNuzE57+2Pe+GA,WnwFA+0NJUGbr/oJ1DdJtw,,,N,0,0,,,2017-01-24 14:42,2017-01-24 14:53,CLEMENTL,CLEMENTL
931,49428758,751235,10651576,1227199,1,100,N,N,N,CP_Drtn,TT_Task,DT_FixedDUR2,RV_OK,TK_Complete,823A-ST-SCCT-2b-2040,Concreting for wall and roof (450m3),,,,0,0,0,208,8,16,0,0,,2013-07-27 08:00,2013-07-27 18:00,2014-01-05 18:00,2014-01-05 18:00,,2017-01-01 00:00,2017-01-01 00:00,,,2013-08-12 08:00,2013-08-12 18:00,,,,,PT_Normal,,,,,ZlRo9ak9RoirNAh/7Uf+bw,giEVcpwvl0Sk8PG2OMaXTQ,,,N,0,0,,,2017-01-24 14:42,2017-01-24 14:53,CLEMENTL,CLEMENTL
932,49428759,751235,10651576,1227199,1,100,N,N,N,CP_Drtn,TT_Task,DT_FixedDUR2,RV_OK,TK_Complete,823A-ST-SCCT-2b-2070,Removal external and internal formwork for wall,,,,0,144,0,144,16,16,16,0,,2013-08-05 08:00,2013-08-06 18:00,2014-01-05 18:00,2014-01-05 18:00,,2017-01-01 00:00,2017-01-01 00:00,,,2013-09-03 08:00,2013-09-04 18:00,,,,,PT_Normal,,,,,Jmuw0E9LSXqwek/SiSKHjA,8gbOIn5L706eZhGL5BNYCQ,,,N,144,16,,,2017-01-24 14:42,2017-01-24 14:53,CLEMENTL,CLEMENTL
933,49428760,751235,10651576,1239099,1,100,N,N,N,CP_Drtn,TT_Task,DT_FixedDUR2,RV_OK,TK_Complete,823A-ST-SCCT-2b-2050,Curing for wall and roof,,,,0,0,0,224,80,0,0,0,,2013-07-29 08:00,2013-07-31 18:00,2014-01-05 18:00,2014-01-05 18:00,,2017-01-01 00:00,2017-01-01 00:00,,,2013-08-13 08:00,2013-08-22 18:00,,,,,PT_Normal,,,,,M3h4SbqsR9WPhA72wuOAIA,nY0vgqueT0WltDnE0f6ekA,,,N,0,0,,,2017-01-24 14:42,2017-01-24 14:53,CLEMENTL,CLEMENTL
934,49428761,751235,10651576,1227199,1,100,N,N,N,CP_Drtn,TT_Task,DT_FixedDUR2,RV_OK,TK_Complete,823A-ST-SCCT-2b-2080,Removal internal falsework and formwork for roof,,,,0,416,0,416,8,32,32,0,,2013-08-07 08:00,2013-08-08 18:00,2014-01-05 18:00,2014-01-05 18:00,,2017-01-01 00:00,2017-01-01 00:00,,,2013-09-05 08:00,2013-09-05 18:00,,,,,PT_Normal,,,,,6Rcs7NtTSL2IewqOfupSYg,2f1xBUdaxUi52Rt2oQrB/g,,,N,416,32,,,2017-01-24 14:42,2017-01-24 14:53,CLEMENTL,CLEMENTL
935,49428762,751235,10651576,1239098,1,100,N,N,N,CP_Drtn,TT_Task,DT_FixedDUR2,RV_OK,TK_Complete,823A-ST-SCCT-2b-2060,Preparation of construction joint for wall and roof,,,,0,0,0,0,8,0,0,0,,2013-08-02 08:00,2013-08-03 18:00,2014-01-05 18:00,2014-01-05 18:00,,2017-01-01 00:00,2017-01-01 00:00,,,2013-09-02 08:00,2013-09-02 18:00,,,,,PT_Normal,,,,,6TtSMsnsQiOa39awbwBBgQ,AhDK1RD2CkacIXkFdBRv9Q,,,N,0,0,,,2017-01-24 14:42,2017-01-24 14:53,CLEMENTL,CLEMENTL
936,49428763,751235,10651577,1227199,1,100,N,N,N,CP_Drtn,TT_Task,DT_FixedDUR2,RV_OK,TK_Complete,823A-ST-SCCT-2b-3090,Side walkway and cable bracket (204m3),,,,0,0,0,1040,40,80,0,0,,2013-08-30 08:00,2013-10-18 18:00,2017-06-12 18:00,2017-06-12 18:00,,2017-01-01 00:00,2017-01-01 00:00,,,2014-07-05 08:00,2014-07-10 18:00,,,,,PT_Normal,,,,,4qs0wvwqSQOIcWJUkzsaVg,RGLCZ6AAbkytpmjW7tmIbA,,,N,0,0,,,2017-01-24 14:42,2017-01-24 15:36,CLEMENTL,CLEMENTL
937,49428764,751235,10651577,1227199,1,100,N,N,N,CP_Drtn,TT_Task,DT_FixedDUR2,RV_OK,TK_Complete,823A-ST-SCCT-2b-3010,Erect internal formwork & Falsework for wall and roof,,,,0,0,0,624,32,48,0,0,,2013-07-08 08:00,2013-07-15 18:00,2014-01-05 18:00,2014-01-05 18:00,,2017-01-01 00:00,2017-01-01 00:00,,,2013-08-01 08:00,2013-08-05 18:00,,,,,PT_Normal,,,,,rxbCz1hJSYKJZRvZ1vOJ/Q,SX1oXJoeWECAzby8AJoywQ,,,N,0,0,,,2017-01-24 14:42,2017-01-24 14:53,CLEMENTL,CLEMENTL
938,49428765,751235,10651577,1227199,1,100,N,N,N,CP_Drtn,TT_Task,DT_FixedDUR2,RV_OK,TK_Complete,823A-ST-SCCT-2b-3020,Rebar fixing for wall and roof,,,,0,0,0,544,24,32,0,0,,2013-07-16 08:00,2013-07-29 18:00,2014-01-05 18:00,2014-01-05 18:00,,2017-01-01 00:00,2017-01-01 00:00,,,2013-08-06 08:00,2013-08-08 18:00,,,,,PT_Normal,,,,,c7h3p+x2TrysNQaLXIoKRQ,EKRyvZEGz0OfwTvC+4BhYw,,,N,0,0,,,2017-01-24 14:42,2017-01-24 14:53,CLEMENTL,CLEMENTL
939,49428766,751235,10651577,1227199,1,100,N,N,N,CP_Drtn,TT_Task,DT_FixedDUR2,RV_OK,TK_Complete,823A-ST-SCCT-2b-3030,Erect external formwork for wall and roof,,,,0,208,0,208,16,16,16,0,,2013-07-30 08:00,2013-07-31 18:00,2014-01-05 18:00,2014-01-05 18:00,,2017-01-01 00:00,2017-01-01 00:00,,,2013-08-09 08:00,2013-08-10 18:00,,,,,PT_Normal,,,,,d/DCzwD0R+uNRN6PCIgKUQ,5rg9cdWsFEywZCkfMggXng,,,N,208,16,,,2017-01-24 14:42,2017-01-24 14:53,CLEMENTL,CLEMENTL
940,49428767,751235,10651577,1227199,1,100,N,N,N,CP_Drtn,TT_Task,DT_FixedDUR2,RV_OK,TK_Complete,823A-ST-SCCT-2b-3040,Concreting for wall and roof (450m3),,,,0,208,0,208,8,16,16,0,,2013-08-07 08:00,2013-08-07 18:00,2014-01-05 18:00,2014-01-05 18:00,,2017-01-01 00:00,2017-01-01 00:00,,,2013-09-03 08:00,2013-09-03 18:00,,,,,PT_Normal,,,,,9OeToqnRT3K/iJHTFD0p9Q,ojEUJJh2gECjYCI7dklZmA,,,N,208,16,,,2017-01-24 14:42,2017-01-24 14:53,CLEMENTL,CLEMENTL
941,49428768,751235,10651577,1227199,1,100,N,N,N,CP_Drtn,TT_Task,DT_FixedDUR2,RV_OK,TK_Complete,823A-ST-SCCT-2b-3070,Removal external and internal formwork for wall,,,,0,0,0,144,16,16,0,0,,2013-08-22 08:00,2013-08-23 18:00,2014-01-05 18:00,2014-01-05 18:00,,2017-01-01 00:00,2017-01-01 00:00,,,2013-09-05 08:00,2013-09-06 18:00,,,,,PT_Normal,,,,,TqLG4+0PT9+VPnqeWoM+qQ,h/Kb8pt1tUCuCywrlqBq+w,,,N,0,0,,,2017-01-24 14:42,2017-01-24 14:53,CLEMENTL,CLEMENTL
942,49428769,751235,10651577,1239099,1,100,N,N,N,CP_Drtn,TT_Task,DT_FixedDUR2,RV_OK,TK_Complete,823A-ST-SCCT-2b-3050,Curing for wall and roof,,,,0,0,0,224,80,0,0,0,,2013-08-08 08:00,2013-08-19 18:00,2014-01-05 18:00,2014-01-05 18:00,,2017-01-01 00:00,2017-01-01 00:00,,,2013-09-04 08:00,2013-09-13 18:00,,,,,PT_Normal,,,,,gwv/zG1iQNSYsKs/BGDGvw,ohLfQbPVxE+F44XzND3sNg,,,N,0,0,,,2017-01-24 14:42,2017-01-24 14:53,CLEMENTL,CLEMENTL
943,49428770,751235,10651577,1227199,1,100,N,N,N,CP_Drtn,TT_Task,DT_FixedDUR2,RV_OK,TK_Complete,823A-ST-SCCT-2b-3080,Removal internal falsework and formwork for roof,,,,0,0,0,416,8,32,0,0,,2013-08-24 08:00,2013-08-24 18:00,2014-01-05 18:00,2014-01-05 18:00,,2017-01-01 00:00,2017-01-01 00:00,,,2013-09-14 08:00,2013-09-14 18:00,,,,,PT_Normal,,,,,h21JZkmBRxC6qNwF9IxRgA,QOWsz7+/hkKfY20f8jGiXQ,,,N,0,0,,,2017-01-24 14:42,2017-01-24 14:53,CLEMENTL,CLEMENTL
944,49428771,751235,10651577,1239098,1,100,N,N,N,CP_Drtn,TT_Task,DT_FixedDUR2,RV_OK,TK_Complete,823A-ST-SCCT-2b-3060,Preparation of construction joint for wall and roof,,,,0,0,0,0,8,0,0,0,,2013-08-20 08:00,2013-08-21 18:00,2014-01-05 18:00,2014-01-05 18:00,,2017-01-01 00:00,2017-01-01 00:00,,,2013-09-04 08:00,2013-09-04 18:00,,,,,PT_Normal,,,,,qAEBf4LTT8q2qp8ynv3ceQ,Dpz8W2Akx0+akSFPoAwstA,,,N,0,0,,,2017-01-24 14:42,2017-01-24 14:53,CLEMENTL,CLEMENTL
945,49428772,751235,10651578,1227199,1,100,N,N,N,CP_Drtn,TT_Task,DT_FixedDUR2,RV_OK,TK_Complete,823A-ST-SCCT-2b-4090,Side walkway and cable bracket (204m3),,,,0,1040,0,1040,40,80,80,0,,2013-08-13 08:00,2013-08-29 18:00,2017-06-12 18:00,2017-06-12 18:00,,2017-01-01 00:00,2017-01-01 00:00,,,2013-12-24 13:00,2014-01-02 12:00,,,,,PT_Normal,,,,,A9uGEtP8ROWvT6amIu0cug,ybRPHTCdC0iP7n1IsO8QcQ,,,N,1040,80,,,2017-01-24 14:42,2017-01-24 15:36,CLEMENTL,CLEMENTL
946,49428773,751235,10651578,1227199,1,100,N,N,N,CP_Drtn,TT_Task,DT_FixedDUR2,RV_OK,TK_Complete,823A-ST-SCCT-2b-4010,Erect internal formwork & Falsework for roof,,,,0,624,0,624,32,48,48,0,,2013-08-30 08:00,2013-09-03 18:00,2014-01-05 18:00,2014-01-05 18:00,,2017-01-01 00:00,2017-01-01 00:00,,,2013-10-02 08:00,2013-10-05 18:00,,,,,PT_Normal,,,,,ZYunNcEET+mh+53BZ9B/+w,zs6AVwl4+UCt/9h3x+VRqg,,,N,624,48,,,2017-01-24 14:42,2017-01-24 14:53,CLEMENTL,CLEMENTL
947,49428774,751235,10651578,1227199,1,100,N,N,N,CP_Drtn,TT_Task,DT_FixedDUR2,RV_OK,TK_Complete,823A-ST-SCCT-2b-4020,Rebar fixing for roof,,,,0,0,0,544,16,32,0,0,,2013-09-10 08:00,2013-09-14 18:00,2014-01-05 18:00,2014-01-05 18:00,,2017-01-01 00:00,2017-01-01 00:00,,,2013-10-07 08:00,2013-10-08 18:00,,,,,PT_Normal,,,,,EfxE5zvGQiOya5u3IlUjFQ,ll5l820aMU2dbewUzOzRrg,,,N,0,0,,,2017-01-24 14:42,2017-01-24 14:53,CLEMENTL,CLEMENTL
948,49428775,751235,10651578,1227199,1,100,N,N,N,CP_Drtn,TT_Task,DT_FixedDUR2,RV_OK,TK_Complete,823A-ST-SCCT-2b-4030,Erect external formwork for roof,,,,0,208,0,208,8,16,16,0,,2013-09-16 08:00,2013-09-17 18:00,2014-01-05 18:00,2014-01-05 18:00,,2017-01-01 00:00,2017-01-01 00:00,,,2013-10-09 08:00,2013-10-09 18:00,,,,,PT_Normal,,,,,tFedDBAbT/yN5T1rpO9H+w,Ns3MnmZrDU+HRJ1UEsFBtA,,,N,208,16,,,2017-01-24 14:42,2017-01-24 14:53,CLEMENTL,CLEMENTL
949,49428776,751235,10651578,1227199,1,100,N,N,N,CP_Drtn,TT_Task,DT_FixedDUR2,RV_OK,TK_Complete,823A-ST-SCCT-2b-4040,Concreting for roof (363m3),,,,0,0,0,208,8,16,0,0,,2013-09-18 08:00,2013-09-18 18:00,2014-01-05 18:00,2014-01-05 18:00,,2017-01-01 00:00,2017-01-01 00:00,,,2013-10-10 08:00,2013-10-10 18:00,,,,,PT_Normal,,,,,QKuaGfrERIeAoA3yDN58CA,HKwl3RZ/HEGmtGHYf2vRfQ,,,N,0,0,,,2017-01-24 14:42,2017-01-24 14:53,CLEMENTL,CLEMENTL
950,49428777,751235,10651578,1239099,1,100,N,N,N,CP_Drtn,TT_Task,DT_FixedDUR2,RV_OK,TK_Complete,823A-ST-SCCT-2b-4050,Curing for roof,,,,0,0,0,224,80,0,0,0,,2013-09-19 08:00,2013-09-23 18:00,2014-01-05 18:00,2014-01-05 18:00,,2017-01-01 00:00,2017-01-01 00:00,,,2013-10-11 08:00,2013-10-20 18:00,,,,,PT_Normal,,,,,ld3zTdiEQsKr2yVhMBHQaw,zagJlY2G4km3b9HwfCRl/g,,,N,0,0,,,2017-01-24 14:42,2017-01-24 14:53,CLEMENTL,CLEMENTL
951,49428778,751235,10651578,1239098,1,100,N,N,N,CP_Drtn,TT_Task,DT_FixedDUR2,RV_OK,TK_Complete,823A-ST-SCCT-2b-4060,Preparation of construction joint  for roof,,,,0,0,0,0,8,0,0,0,,2013-09-24 08:00,2013-09-24 18:00,2014-01-05 18:00,2014-01-05 18:00,,2017-01-01 00:00,2017-01-01 00:00,,,2013-10-11 08:00,2013-10-11 18:00,,,,,PT_Normal,,,,,JCkSRfZ4TtCasCtZD73RnQ,Om6oyARp3kSW6ZPK0zzxFQ,,,N,0,0,,,2017-01-24 14:42,2017-01-24 14:53,CLEMENTL,CLEMENTL
952,49428779,751235,10651578,1227199,1,100,N,N,N,CP_Drtn,TT_Task,DT_FixedDUR2,RV_OK,TK_Complete,823A-ST-SCCT-2b-4080,Removal internal falsework and formwork for roof,,,,0,0,0,416,16,32,0,0,,2013-09-25 08:00,2013-09-26 18:00,2014-01-05 18:00,2014-01-05 18:00,,2017-01-01 00:00,2017-01-01 00:00,,,2013-10-21 08:00,2013-10-22 18:00,,,,,PT_Normal,,,,,fPh9cbdqTpeQVTHt5MtpDA,P3urL5WuCk6LYo7SJzruWg,,,N,0,0,,,2017-01-24 14:42,2017-01-24 14:53,CLEMENTL,CLEMENTL
953,49428780,751235,10651579,1227199,1,100,N,N,N,CP_Drtn,TT_Task,DT_FixedDUR2,RV_OK,TK_Complete,823A-ST-SCCT-2b-1010,Placing of waterproof member T-lock & testing for base slab,,,,0,0,0,64,8,0,0,0,,2013-02-20 08:00,2013-02-20 18:00,2014-01-05 18:00,2014-01-05 18:00,,2017-01-01 00:00,2017-01-01 00:00,,,2013-06-01 08:00,2013-06-01 18:00,,,,,PT_Normal,,,,,zBQKZcI6TMGZElp/1tqTbQ,r5SBtbzVvE2Gc8TkpZCxIw,,,N,0,0,,,2017-01-24 14:42,2017-01-24 14:53,CLEMENTL,CLEMENTL
954,49428781,751235,10651579,1227199,1,100,N,N,N,CP_Drtn,TT_Task,DT_FixedDUR2,RV_OK,TK_Complete,823A-ST-SCCT-2b-1020,Erect external formwork for base slab,,,,0,0,0,104,16,8,0,0,,2013-02-21 08:00,2013-02-22 18:00,2014-01-05 18:00,2014-01-05 18:00,,2017-01-01 00:00,2017-01-01 00:00,,,2013-06-03 08:00,2013-06-04 18:00,,,,,PT_Normal,,,,,vviape5BShGB43DZ3OT/Dw,YnT0UqaIxkOautFgJfzMgA,,,N,0,0,,,2017-01-24 14:42,2017-01-24 14:53,CLEMENTL,CLEMENTL
955,49428782,751235,10651579,1227199,1,100,N,N,N,CP_Drtn,TT_Task,DT_FixedDUR2,RV_OK,TK_Complete,823A-ST-SCCT-2b-1030,Rebar fixing for base slab,,,,0,0,0,272,24,16,0,0,,2013-03-04 08:00,2013-03-06 18:00,2014-01-05 18:00,2014-01-05 18:00,,2017-01-01 00:00,2017-01-01 00:00,,,2013-06-05 08:00,2013-06-07 18:00,,,,,PT_Normal,,,,,mQai800jS+izB0YSSbAcrA,TPOfHIX2WEiSBjnl+dZh6A,,,N,0,0,,,2017-01-24 14:42,2017-01-24 14:53,CLEMENTL,CLEMENTL
956,49428783,751235,10651579,1227199,1,100,N,N,N,CP_Drtn,TT_Task,DT_FixedDUR2,RV_OK,TK_Complete,823A-ST-SCCT-2b-1040,Erect internal kicker formwork for base slab,,,,0,0,0,288,16,16,0,0,,2013-03-05 08:00,2013-03-06 18:00,2014-01-05 18:00,2014-01-05 18:00,,2017-01-01 00:00,2017-01-01 00:00,,,2013-06-08 08:00,2013-06-10 18:00,,,,,PT_Normal,,,,,xAayh53WScKEdCCCjNwHsw,JSvT1xy1002iSxwOulTh0A,,,N,0,0,,,2017-01-24 14:42,2017-01-24 14:53,CLEMENTL,CLEMENTL
957,49428784,751235,10651579,1227199,1,100,N,N,N,CP_Drtn,TT_Task,DT_FixedDUR2,RV_OK,TK_Complete,823A-ST-SCCT-2b-1050,Concreting for base slab (363m3),,,,0,0,0,208,8,16,0,0,,2013-03-07 08:00,2013-03-07 18:00,2014-01-05 18:00,2014-01-05 18:00,,2017-01-01 00:00,2017-01-01 00:00,,,2013-06-11 08:00,2013-06-11 18:00,,,,,PT_Normal,,,,,qrIL++GNQWuSmD6PQh9AUQ,5GLsB+Zt2E+yvE2VUenr0A,,,N,0,0,,,2017-01-24 14:42,2017-01-24 14:53,CLEMENTL,CLEMENTL
958,49428785,751235,10651579,1239099,1,100,N,N,N,CP_Drtn,TT_Task,DT_FixedDUR2,RV_OK,TK_Complete,823A-ST-SCCT-2b-1060,Curing for base slab,,,,0,0,0,224,56,0,0,0,,2013-03-08 08:00,2013-03-11 18:00,2014-01-05 18:00,2014-01-05 18:00,,2017-01-01 00:00,2017-01-01 00:00,,,2013-06-12 08:00,2013-06-18 18:00,,,,,PT_Normal,,,,,85HeC5NcRraPO2W94TSrPw,w2FkoX4qNkKKP5H+FeWK7g,,,N,0,0,,,2017-01-24 14:42,2017-01-24 14:53,CLEMENTL,CLEMENTL
959,49428786,751235,10651579,1227199,1,100,N,N,N,CP_Drtn,TT_Task,DT_FixedDUR2,RV_OK,TK_Complete,823A-ST-SCCT-2b-1080,Removal of formwork for base slab,,,,0,0,0,72,8,8,0,0,,2013-03-08 08:00,2013-03-08 18:00,2014-01-05 18:00,2014-01-05 18:00,,2017-01-01 00:00,2017-01-01 00:00,,,2013-06-14 08:00,2013-06-14 18:00,,,,,PT_Normal,,,,,/iluH7ULQW2fx9Jy40b3JA,CERu6CGtJkurLOFUwFkrqQ,,,N,0,0,,,2017-01-24 14:42,2017-01-24 14:53,CLEMENTL,CLEMENTL
960,49428787,751235,10651579,1227199,1,100,N,N,N,CP_Drtn,TT_Task,DT_FixedDUR2,RV_OK,TK_Complete,823A-ST-SCCT-2b-1090,Infill concrete in between D-wall and base slab,,,,0,0,0,128,8,16,0,0,,2013-03-11 08:00,2013-03-11 18:00,2014-01-05 18:00,2014-01-05 18:00,,2017-01-01 00:00,2017-01-01 00:00,,,2013-06-15 08:00,2013-06-15 18:00,,,,,PT_Normal,,,,,jGUwDCR9TBefE0WukqYLtQ,8IuRGJAJLUmm9EcMlNomuw,,,N,0,0,,,2017-01-24 14:42,2017-01-24 14:53,CLEMENTL,CLEMENTL
961,49428788,751235,10651579,1227199,1,100,N,N,N,CP_Drtn,TT_Task,DT_FixedDUR2,RV_OK,TK_Complete,823A-ST-SCCT-2b-1110,Removal strut S5 and S4,,,,0,144,0,144,32,16,16,0,,2013-06-22 08:00,2013-06-24 18:00,2014-01-05 18:00,2014-01-05 18:00,,2017-01-01 00:00,2017-01-01 00:00,,,2013-06-24 08:00,2013-06-27 18:00,,,,,PT_Normal,,,,,QvGsD5mCTYeYR/1jglkxVw,knJkZrABXUa7DCZ5+zLVpA,,,N,144,16,,,2017-01-24 14:42,2017-01-24 14:53,CLEMENTL,CLEMENTL
962,49428789,751235,10651579,1239098,1,100,N,N,N,CP_Drtn,TT_Task,DT_FixedDUR2,RV_OK,TK_Complete,823A-ST-SCCT-2b-1070,Preparation of construction joint for base slab,,,,0,0,0,0,8,0,0,0,,2013-03-12 08:00,2013-03-12 18:00,2014-01-05 18:00,2014-01-05 18:00,,2017-01-01 00:00,2017-01-01 00:00,,,2013-06-13 08:00,2013-06-13 18:00,,,,,PT_Normal,,,,,rHKk+onFSbah6uvfGE63mQ,pPFz9NqlJkiJztvsz/ah0g,,,N,0,0,,,2017-01-24 14:42,2017-01-24 14:53,CLEMENTL,CLEMENTL
963,49428790,751235,10651579,1239099,1,100,N,N,N,CP_Drtn,TT_Task,DT_FixedDUR2,RV_OK,TK_Complete,823A-ST-SCCT-2b-1100,Curing,,,,0,0,0,224,8,0,0,0,,2013-03-13 08:00,2013-03-13 18:00,2014-01-05 18:00,2014-01-05 18:00,,2017-01-01 00:00,2017-01-01 00:00,,,2013-06-01 08:00,2013-06-01 18:00,,,,,PT_Normal,,,,,MYQm0lz8RrSiS7dQaZEsvQ,tv89b1YuO0yqmnyLm0BEAw,,,N,0,0,,,2017-01-24 14:42,2017-01-24 14:53,CLEMENTL,CLEMENTL
964,49428791,751235,10651581,1227199,1,100,N,N,N,CP_Drtn,TT_Task,DT_FixedDUR2,RV_OK,TK_Complete,823A-ST-SCCT-3b-1010,Placing of waterproof member T-lock & testing for base slab,,,,0,0,0,64,8,0,0,0,,2013-02-04 08:00,2013-02-04 18:00,2014-01-05 18:00,2014-01-05 18:00,,2017-01-01 00:00,2017-01-01 00:00,,,2013-06-01 08:00,2013-06-01 18:00,,,,,PT_Normal,,,,,dIQVq9aORn+rKZCUMSnSJg,G/lCarUTnUOsihzomIfbpA,,,N,0,0,,,2017-01-24 14:42,2017-01-24 14:53,CLEMENTL,CLEMENTL
965,49428792,751235,10651581,1227199,1,100,N,N,N,CP_Drtn,TT_Task,DT_FixedDUR2,RV_OK,TK_Complete,823A-ST-SCCT-3b-1020,Erect external formwork for base slab,,,,0,0,0,104,16,8,0,0,,2013-02-05 08:00,2013-02-07 18:00,2014-01-05 18:00,2014-01-05 18:00,,2017-01-01 00:00,2017-01-01 00:00,,,2013-06-03 08:00,2013-06-04 18:00,,,,,PT_Normal,,,,,ZB4LJQ55Q1qs1iFAqR1Jgg,6qQ3NXCXGE+pfaStunqhrQ,,,N,0,0,,,2017-01-24 14:42,2017-01-24 14:53,CLEMENTL,CLEMENTL
966,49428793,751235,10651581,1227199,1,100,N,N,N,CP_Drtn,TT_Task,DT_FixedDUR2,RV_OK,TK_Complete,823A-ST-SCCT-3b-1030,Rebar fixing for base slab,,,,0,0,0,272,24,16,0,0,,2013-02-14 08:00,2013-02-16 18:00,2014-01-05 18:00,2014-01-05 18:00,,2017-01-01 00:00,2017-01-01 00:00,,,2013-06-05 08:00,2013-06-07 18:00,,,,,PT_Normal,,,,,kKDxlWjhTBiGpwQCmQd2+w,7ogT2t1IgkaJvkpkLV2gHw,,,N,0,0,,,2017-01-24 14:42,2017-01-24 14:53,CLEMENTL,CLEMENTL
967,49428794,751235,10651581,1227199,1,100,N,N,N,CP_Drtn,TT_Task,DT_FixedDUR2,RV_OK,TK_Complete,823A-ST-SCCT-3b-1040,Erect internal kicker formwork for base slab,,,,0,0,0,288,16,16,0,0,,2013-02-16 08:00,2013-02-16 18:00,2014-01-05 18:00,2014-01-05 18:00,,2017-01-01 00:00,2017-01-01 00:00,,,2013-06-08 08:00,2013-06-10 18:00,,,,,PT_Normal,,,,,2e4d5ISYRvG+mcn1tBZEJA,sHk+Zn/+2UqU7UsNQxcdwg,,,N,0,0,,,2017-01-24 14:42,2017-01-24 14:53,CLEMENTL,CLEMENTL
968,49428795,751235,10651581,1227199,1,100,N,N,N,CP_Drtn,TT_Task,DT_FixedDUR2,RV_OK,TK_Complete,823A-ST-SCCT-3b-1050,Concreting for base slab (363m3),,,,0,0,0,208,8,16,0,0,,2013-02-18 08:00,2013-02-18 18:00,2014-01-05 18:00,2014-01-05 18:00,,2017-01-01 00:00,2017-01-01 00:00,,,2013-06-11 08:00,2013-06-11 18:00,,,,,PT_Normal,,,,,g6AlnJF5RSipVhkIg4+b+Q,4vAtDrjrPEenLn7P6FpyGg,,,N,0,0,,,2017-01-24 14:42,2017-01-24 14:53,CLEMENTL,CLEMENTL
969,49428796,751235,10651581,1239099,1,100,N,N,N,CP_Drtn,TT_Task,DT_FixedDUR2,RV_OK,TK_Complete,823A-ST-SCCT-3b-1060,Curing for base slab,,,,0,0,0,224,56,0,0,0,,2013-02-19 08:00,2013-02-26 18:00,2014-01-05 18:00,2014-01-05 18:00,,2017-01-01 00:00,2017-01-01 00:00,,,2013-06-12 08:00,2013-06-18 18:00,,,,,PT_Normal,,,,,8ZwJ4G0SS2aYkgoRy2JnjA,a+7MjTge1kWgZ13aU2fsOg,,,N,0,0,,,2017-01-24 14:42,2017-01-24 14:53,CLEMENTL,CLEMENTL
970,49428797,751235,10651581,1227199,1,100,N,N,N,CP_Drtn,TT_Task,DT_FixedDUR2,RV_OK,TK_Complete,823A-ST-SCCT-3b-1080,Removal of formwork for base slab,,,,0,0,0,72,8,8,0,0,,2013-02-19 08:00,2013-02-19 18:00,2014-01-05 18:00,2014-01-05 18:00,,2017-01-01 00:00,2017-01-01 00:00,,,2013-06-14 08:00,2013-06-14 18:00,,,,,PT_Normal,,,,,29+JmC3PQwCvI7m85JVnZg,OQyrzYd+Hk2BHm+FywfD9Q,,,N,0,0,,,2017-01-24 14:42,2017-01-24 14:53,CLEMENTL,CLEMENTL
971,49428798,751235,10651581,1227199,1,100,N,N,N,CP_Drtn,TT_Task,DT_FixedDUR2,RV_OK,TK_Complete,823A-ST-SCCT-3b-1090,Infill concrete in between D-wall and base slab,,,,0,128,0,128,8,16,16,0,,2013-02-26 08:00,2013-02-26 18:00,2014-01-05 18:00,2014-01-05 18:00,,2017-01-01 00:00,2017-01-01 00:00,,,2013-06-15 08:00,2013-06-15 18:00,,,,,PT_Normal,,,,,V/qxrQrcR7CM0MGRUPw7Wg,CbAcNpoKfEyQbRVNaUlC5A,,,N,128,16,,,2017-01-24 14:42,2017-01-24 14:53,CLEMENTL,CLEMENTL
972,49428799,751235,10651581,1227199,1,100,N,N,N,CP_Drtn,TT_Task,DT_FixedDUR2,RV_OK,TK_Complete,823A-ST-SCCT-3b-1110,Removal strut S5 and S4,,,,0,0,0,144,32,16,0,0,,2013-03-04 08:00,2013-03-07 18:00,2014-01-05 18:00,2014-01-05 18:00,,2017-01-01 00:00,2017-01-01 00:00,,,2013-06-20 08:00,2013-06-24 18:00,,,,,PT_Normal,,,,,wJMC2+xUToONvPChnkQ2UQ,4UGCUdwtOU6wDH1ajgAqBQ,,,N,0,0,,,2017-01-24 14:42,2017-01-24 14:53,CLEMENTL,CLEMENTL
973,49428800,751235,10651581,1239098,1,100,N,N,N,CP_Drtn,TT_Task,DT_FixedDUR2,RV_OK,TK_Complete,823A-ST-SCCT-3b-1070,Preparation of construction joint for base slab,,,,0,0,0,0,8,0,0,0,,2013-02-27 08:00,2013-02-27 18:00,2014-01-05 18:00,2014-01-05 18:00,,2017-01-01 00:00,2017-01-01 00:00,,,2013-06-13 08:00,2013-06-13 18:00,,,,,PT_Normal,,,,,BE9R2m2nTpCiEWldUPCgVQ,6tkQ+AUxm0uPNqiNWunV3A,,,N,0,0,,,2017-01-24 14:42,2017-01-24 14:53,CLEMENTL,CLEMENTL
974,49428801,751235,10651581,1239099,1,100,N,N,N,CP_Drtn,TT_Task,DT_FixedDUR2,RV_OK,TK_Complete,823A-ST-SCCT-3b-1100,Curing,,,,0,0,0,224,8,0,0,0,,2013-02-27 08:00,2013-02-27 18:00,2014-01-05 18:00,2014-01-05 18:00,,2017-01-01 00:00,2017-01-01 00:00,,,2013-06-19 08:00,2013-06-19 18:00,,,,,PT_Normal,,,,,LmTfvuTcTPCsVMDAIFaDSA,VVz0PPjlWkWyUOR/Brx7eg,,,N,0,0,,,2017-01-24 14:42,2017-01-24 14:53,CLEMENTL,CLEMENTL
975,49428802,751235,10651582,1227199,1,100,N,N,N,CP_Drtn,TT_Task,DT_FixedDUR2,RV_OK,TK_Complete,823A-ST-SCCT-3b-3010,Erect internal formwork & Falsework for wall and roof,,,,0,0,0,624,32,48,0,0,,2013-03-21 08:00,2013-03-27 18:00,2014-01-05 18:00,2014-01-05 18:00,,2017-01-01 00:00,2017-01-01 00:00,,,2013-06-08 08:00,2013-06-13 18:00,,,,,PT_Normal,,,,,QcFhTXNHTSm6IjKRaZVWFg,wpXoVRsgF0y/4d8g+SN6tA,,,N,0,0,,,2017-01-24 14:42,2017-01-24 14:53,CLEMENTL,CLEMENTL
976,49428803,751235,10651582,1227199,1,100,N,N,N,CP_Drtn,TT_Task,DT_FixedDUR2,RV_OK,TK_Complete,823A-ST-SCCT-3b-3020,Rebar fixing for wall and roof,,,,0,0,0,544,24,32,0,0,,2013-04-02 08:00,2013-04-08 18:00,2014-01-05 18:00,2014-01-05 18:00,,2017-01-01 00:00,2017-01-01 00:00,,,2013-06-14 08:00,2013-06-17 18:00,,,,,PT_Normal,,,,,3jo8qRJ1SgeDpxFvV4tdIg,qzsGMk+BvkO1VPE4JJ0Ayg,,,N,0,0,,,2017-01-24 14:42,2017-01-24 14:53,CLEMENTL,CLEMENTL
977,49428804,751235,10651582,1227199,1,100,N,N,N,CP_Drtn,TT_Task,DT_FixedDUR2,RV_OK,TK_Complete,823A-ST-SCCT-3b-3030,Erect external formwork for wall and roof,,,,0,0,0,208,16,16,0,0,,2013-04-09 08:00,2013-04-11 18:00,2014-01-05 18:00,2014-01-05 18:00,,2017-01-01 00:00,2017-01-01 00:00,,,2013-06-18 08:00,2013-06-19 18:00,,,,,PT_Normal,,,,,YimSUZ58RjilVbkTKOvUbg,GsqjTLXQCkONmeUeOI/2Wg,,,N,0,0,,,2017-01-24 14:42,2017-01-24 14:53,CLEMENTL,CLEMENTL
978,49428805,751235,10651582,1227199,1,100,N,N,N,CP_Drtn,TT_Task,DT_FixedDUR2,RV_OK,TK_Complete,823A-ST-SCCT-3b-3040,Concreting for wall and roof (450m3),,,,0,0,0,208,8,16,0,0,,2013-04-13 08:00,2013-04-13 18:00,2014-01-05 18:00,2014-01-05 18:00,,2017-01-01 00:00,2017-01-01 00:00,,,2013-06-20 08:00,2013-06-20 18:00,,,,,PT_Normal,,,,,ErkC9jrsQoKZv/fQd5HLMQ,adCo6IqMVkeUHcQSYhbAug,,,N,0,0,,,2017-01-24 14:42,2017-01-24 14:53,CLEMENTL,CLEMENTL
979,49428806,751235,10651582,1227199,1,100,N,N,N,CP_Drtn,TT_Task,DT_FixedDUR2,RV_OK,TK_Complete,823A-ST-SCCT-3b-3070,Removal external wall formwork for wall,,,,0,0,0,144,8,16,0,0,,2013-04-17 08:00,2013-04-17 18:00,2014-01-05 18:00,2014-01-05 18:00,,2017-01-01 00:00,2017-01-01 00:00,,,2013-06-10 08:00,2013-06-10 18:00,,,,,PT_Normal,,,,,SJHn+OqURXGXbO4I45bUZg,86OKHtEzPkeXkJ6lAKwgRQ,,,N,0,0,,,2017-01-24 14:42,2017-01-24 14:53,CLEMENTL,CLEMENTL
980,49428807,751235,10651582,1239099,1,100,N,N,N,CP_Drtn,TT_Task,DT_FixedDUR2,RV_OK,TK_Complete,823A-ST-SCCT-3b-3050,Curing for wall and roof,,,,0,0,0,224,80,0,0,0,,2013-04-15 08:00,2013-04-15 18:00,2014-01-05 18:00,2014-01-05 18:00,,2017-01-01 00:00,2017-01-01 00:00,,,2013-06-21 08:00,2013-06-30 18:00,,,,,PT_Normal,,,,,bzGvCO7zR2yj1Rnc7K1d6g,s+WvOKr+lkeN858yMp6euw,,,N,0,0,,,2017-01-24 14:42,2017-01-24 14:53,CLEMENTL,CLEMENTL
981,49428808,751235,10651582,1227199,1,100,N,N,N,CP_Drtn,TT_Task,DT_FixedDUR2,RV_OK,TK_Complete,823A-ST-SCCT-3b-3080,Removal internal falsework and formwork for wall and roof,,,,0,0,0,416,16,32,0,0,,2013-04-22 08:00,2013-04-23 18:00,2014-01-05 18:00,2014-01-05 18:00,,2017-01-01 00:00,2017-01-01 00:00,,,2013-06-11 08:00,2013-06-13 18:00,,,,,PT_Normal,,,,,n2QFlT/6Szu+919sjTkMzw,vb1AFOmipUGg2Z3iQnQq8g,,,N,0,0,,,2017-01-24 14:42,2017-01-24 14:53,CLEMENTL,CLEMENTL
982,49428809,751235,10651582,1239098,1,100,N,N,N,CP_Drtn,TT_Task,DT_FixedDUR2,RV_OK,TK_Complete,823A-ST-SCCT-3b-3060,Preparation of construction joint for wall and roof,,,,0,0,0,0,8,0,0,0,,2013-04-16 08:00,2013-04-16 18:00,2014-01-05 18:00,2014-01-05 18:00,,2017-01-01 00:00,2017-01-01 00:00,,,2013-06-08 08:00,2013-06-08 18:00,,,,,PT_Normal,,,,,7NeSLJhATgeZgugJ04SrBQ,yQNsJEY0MUyaf5hI7jSWqg,,,N,0,0,,,2017-01-24 14:42,2017-01-24 14:53,CLEMENTL,CLEMENTL
983,49428810,751235,10651582,1227199,1,100,N,N,N,CP_Drtn,TT_Task,DT_FixedDUR2,RV_OK,TK_Complete,823A-ST-SCCT-3b-3090,Side walkway and cable bracket (204m3),,,,0,0,0,1040,40,80,0,0,,2015-07-27 08:00,2015-07-31 18:00,2017-06-12 18:00,2017-06-12 18:00,,2017-01-01 00:00,2017-01-01 00:00,,,2015-08-06 08:00,2015-08-11 18:00,,,,,PT_Normal,,,,,dNYZ7zLSTt6FgwEUlWvkcA,KpzlRXBxQkCqvoR0tA1mPQ,,,N,0,0,,,2017-01-24 14:42,2017-01-24 15:36,CLEMENTL,CLEMENTL
984,49428811,751235,10651583,1227199,1,100,N,N,N,CP_Drtn,TT_Task,DT_FixedDUR2,RV_OK,TK_Complete,823A-ST-SCCT-3b-4090,Side walkway and cable bracket (204m3),,,,0,0,0,1040,40,80,0,0,,2015-07-02 08:00,2015-07-07 18:00,2017-06-12 18:00,2017-06-12 18:00,,2017-01-01 00:00,2017-01-01 00:00,,,2015-07-02 08:00,2015-07-07 18:00,,,,,PT_Normal,,,,,10qol099T4aO9WmgN/VQ7A,i7E/z3ROb02Pe2RMD1CCjg,,,N,0,0,,,2017-01-24 14:42,2017-01-24 15:36,CLEMENTL,CLEMENTL
985,49428812,751235,10651583,1227199,1,100,N,N,N,CP_Drtn,TT_Task,DT_FixedDUR2,RV_OK,TK_Complete,823A-ST-SCCT-3b-4010,Erect internal formwork & Falsework for roof,,,,0,0,0,624,32,48,0,0,,2013-06-22 08:00,2013-06-26 18:00,2014-01-05 18:00,2014-01-05 18:00,,2017-01-01 00:00,2017-01-01 00:00,,,2013-09-12 08:00,2013-09-16 18:00,,,,,PT_Normal,,,,,JgpgBY25SEO/v6w8FAZP+Q,/FNiweSh90K8LCQxyRDcnQ,,,N,0,0,,,2017-01-24 14:42,2017-01-24 14:53,CLEMENTL,CLEMENTL
986,49428813,751235,10651583,1227199,1,100,N,N,N,CP_Drtn,TT_Task,DT_FixedDUR2,RV_OK,TK_Complete,823A-ST-SCCT-3b-4020,Rebar fixing for roof,,,,0,0,0,544,16,32,0,0,,2013-06-27 08:00,2013-07-05 18:00,2014-01-05 18:00,2014-01-05 18:00,,2017-01-01 00:00,2017-01-01 00:00,,,2013-09-17 08:00,2013-09-18 18:00,,,,,PT_Normal,,,,,vi56ekM2RHuFYEOlH6j86w,H1fbThWFX0meN4fYWzgnTA,,,N,0,0,,,2017-01-24 14:42,2017-01-24 14:53,CLEMENTL,CLEMENTL
987,49428814,751235,10651583,1227199,1,100,N,N,N,CP_Drtn,TT_Task,DT_FixedDUR2,RV_OK,TK_Complete,823A-ST-SCCT-3b-4030,Erect external formwork for roof,,,,0,0,0,208,8,16,0,0,,2013-07-06 08:00,2013-07-10 18:00,2014-01-05 18:00,2014-01-05 18:00,,2017-01-01 00:00,2017-01-01 00:00,,,2013-09-19 08:00,2013-09-19 18:00,,,,,PT_Normal,,,,,hUkWPKaBQL6XU2qOlON1Hg,/6zMvIY6vEKoSS+4QQOkrQ,,,N,0,0,,,2017-01-24 14:42,2017-01-24 14:53,CLEMENTL,CLEMENTL
988,49428815,751235,10651583,1227199,1,100,N,N,N,CP_Drtn,TT_Task,DT_FixedDUR2,RV_OK,TK_Complete,823A-ST-SCCT-3b-4040,Concreting for roof (444m3),,,,0,0,0,208,8,16,0,0,,2013-07-11 08:00,2013-07-11 18:00,2014-01-05 18:00,2014-01-05 18:00,,2017-01-01 00:00,2017-01-01 00:00,,,2013-09-21 08:00,2013-09-21 18:00,,,,,PT_Normal,,,,,SnHPbnShRsmO8YgDszC9xw,jxDEjfDPNkCthTwkMzC44g,,,N,0,0,,,2017-01-24 14:42,2017-01-24 14:53,CLEMENTL,CLEMENTL
989,49428816,751235,10651583,1239099,1,100,N,N,N,CP_Drtn,TT_Task,DT_FixedDUR2,RV_OK,TK_Complete,823A-ST-SCCT-3b-4050,Curing for roof,,,,0,0,0,224,80,0,0,0,,2013-07-12 08:00,2013-07-15 18:00,2014-01-05 18:00,2014-01-05 18:00,,2017-01-01 00:00,2017-01-01 00:00,,,2013-09-22 08:00,2013-10-01 18:00,,,,,PT_Normal,,,,,59F0wZNXRkWrTsP0bYLBPA,P1JjjwGOEkqKiiquNRAU+Q,,,N,0,0,,,2017-01-24 14:42,2017-01-24 14:53,CLEMENTL,CLEMENTL
990,49428817,751235,10651583,1227199,1,100,N,N,N,CP_Drtn,TT_Task,DT_FixedDUR2,RV_OK,TK_Complete,823A-ST-SCCT-3b-4080,Removal internal falsework and formwork for roof,,,,0,0,0,416,16,32,0,0,,2013-07-18 08:00,2013-07-20 18:00,2014-01-05 18:00,2014-01-05 18:00,,2017-01-01 00:00,2017-01-01 00:00,,,2013-10-02 08:00,2013-10-03 18:00,,,,,PT_Normal,,,,,8vZGHUcESP6h+oDQk+8X0Q,PSAE1Rh1o0u10FyJIVs7IQ,,,N,0,0,,,2017-01-24 14:42,2017-01-24 14:53,CLEMENTL,CLEMENTL
991,49428818,751235,10651583,1239098,1,100,N,N,N,CP_Drtn,TT_Task,DT_FixedDUR2,RV_OK,TK_Complete,823A-ST-SCCT-3b-4060,Preparation of construction joint  for roof,,,,0,0,0,0,8,0,0,0,,2013-07-16 08:00,2013-07-16 18:00,2014-01-05 18:00,2014-01-05 18:00,,2017-01-01 00:00,2017-01-01 00:00,,,2013-09-23 08:00,2013-09-23 18:00,,,,,PT_Normal,,,,,tvbfDzvjSk2NaRE+Obqqfw,yzPcUNI9f0SY273oE92WJg,,,N,0,0,,,2017-01-24 14:42,2017-01-24 14:53,CLEMENTL,CLEMENTL
992,49428819,751235,10651584,1227199,1,100,N,N,N,CP_Drtn,TT_Task,DT_FixedDUR2,RV_OK,TK_Complete,823A-ST-SCCT-3b-2090,Side walkway and cable bracket (204m3),,,,0,0,0,1040,40,80,0,0,,2013-10-05 08:00,2013-10-12 18:00,2017-06-12 18:00,2017-06-12 18:00,,2017-01-01 00:00,2017-01-01 00:00,,,2014-03-03 08:00,2014-03-07 18:00,,,,,PT_Normal,,,,,4R5um6V8THSv2E7emnoQ0A,H8GeUlH3y0yWG3OQIq67fw,,,N,0,0,,,2017-01-24 14:42,2017-01-24 15:36,CLEMENTL,CLEMENTL
993,49428820,751235,10651584,1227199,1,100,N,N,N,CP_Drtn,TT_Task,DT_FixedDUR2,RV_OK,TK_Complete,823A-ST-SCCT-3b-2010,Erect internal formwork & Falsework for wall and roof,,,,0,0,0,624,32,48,0,0,,2013-06-22 08:00,2013-06-26 18:00,2014-01-05 18:00,2014-01-05 18:00,,2017-01-01 00:00,2017-01-01 00:00,,,2013-07-12 08:00,2013-07-16 18:00,,,,,PT_Normal,,,,,iiW/NfSiQzeWv6Czdvoqdw,1U+JBi+a+k+1wFeQe7B9XA,,,N,0,0,,,2017-01-24 14:42,2017-01-24 14:53,CLEMENTL,CLEMENTL
994,49428821,751235,10651584,1227199,1,100,N,N,N,CP_Drtn,TT_Task,DT_FixedDUR2,RV_OK,TK_Complete,823A-ST-SCCT-3b-2020,Rebar fixing for wall and roof,,,,0,544,0,544,24,32,32,0,,2013-06-27 08:00,2013-07-05 18:00,2014-01-05 18:00,2014-01-05 18:00,,2017-01-01 00:00,2017-01-01 00:00,,,2013-07-17 08:00,2013-07-19 18:00,,,,,PT_Normal,,,,,vPQQ8Lr3TfueClWQU16/cQ,yvIc3AUetEiVUIYgSRyzeA,,,N,544,32,,,2017-01-24 14:42,2017-01-24 14:53,CLEMENTL,CLEMENTL
995,49428822,751235,10651584,1227199,1,100,N,N,N,CP_Drtn,TT_Task,DT_FixedDUR2,RV_OK,TK_Complete,823A-ST-SCCT-3b-2030,Erect external formwork for wall and roof,,,,0,0,0,208,16,16,0,0,,2013-07-06 08:00,2013-07-10 18:00,2014-01-05 18:00,2014-01-05 18:00,,2017-01-01 00:00,2017-01-01 00:00,,,2013-08-14 08:00,2013-08-15 18:00,,,,,PT_Normal,,,,,CrAiHXgdT/umgQ4ijU3HLQ,ayW8XeU2WEqEPiQRA22Hqg,,,N,0,0,,,2017-01-24 14:42,2017-01-24 14:53,CLEMENTL,CLEMENTL
996,49428823,751235,10651584,1227199,1,100,N,N,N,CP_Drtn,TT_Task,DT_FixedDUR2,RV_OK,TK_Complete,823A-ST-SCCT-3b-2040,Concreting for wall and roof (450m3),,,,0,0,0,208,8,16,0,0,,2013-07-11 08:00,2013-07-11 18:00,2014-01-05 18:00,2014-01-05 18:00,,2017-01-01 00:00,2017-01-01 00:00,,,2013-08-16 08:00,2013-08-16 18:00,,,,,PT_Normal,,,,,3Y590QRbRWGKrhBW7sPlKg,1VF+Ffch60mO1bQ0waYrcg,,,N,0,0,,,2017-01-24 14:42,2017-01-24 14:53,CLEMENTL,CLEMENTL
997,49428824,751235,10651584,1227199,1,100,N,N,N,CP_Drtn,TT_Task,DT_FixedDUR2,RV_OK,TK_Complete,823A-ST-SCCT-3b-2070,Removal external and internal formwork for wall,,,,0,0,0,144,16,16,0,0,,2013-07-17 08:00,2013-07-17 18:00,2014-01-05 18:00,2014-01-05 18:00,,2017-01-01 00:00,2017-01-01 00:00,,,2013-08-13 08:00,2013-08-14 18:00,,,,,PT_Normal,,,,,zEg7yJLhRIyHXbtr41EtcQ,7yiDMnx/S0KGe11nP5I7cA,,,N,0,0,,,2017-01-24 14:42,2017-01-24 14:53,CLEMENTL,CLEMENTL
998,49428825,751235,10651584,1239099,1,100,N,N,N,CP_Drtn,TT_Task,DT_FixedDUR2,RV_OK,TK_Complete,823A-ST-SCCT-3b-2050,Curing for wall and roof,,,,0,0,0,224,80,0,0,0,,2013-07-12 08:00,2013-07-15 18:00,2014-01-05 18:00,2014-01-05 18:00,,2017-01-01 00:00,2017-01-01 00:00,,,2013-08-11 08:00,2013-08-20 18:00,,,,,PT_Normal,,,,,9HPbaVr1TsKLFYcQGTSOZQ,I2H90NvioEytADnAoop1GA,,,N,0,0,,,2017-01-24 14:42,2017-01-24 14:53,CLEMENTL,CLEMENTL
999,49428826,751235,10651584,1227199,1,100,N,N,N,CP_Drtn,TT_Task,DT_FixedDUR2,RV_OK,TK_Complete,823A-ST-SCCT-3b-2080,Removal internal falsework and formwork for roof,,,,0,0,0,416,8,32,0,0,,2013-07-18 08:00,2013-07-20 18:00,2014-01-05 18:00,2014-01-05 18:00,,2017-01-01 00:00,2017-01-01 00:00,,,2013-08-21 08:00,2013-08-21 18:00,,,,,PT_Normal,,,,,EvbDroASTSOyROeZ6j9OQw,B6c5bjq0pk+8QSWnsUtt7w,,,N,0,0,,,2017-01-24 14:42,2017-01-24 14:53,CLEMENTL,CLEMENTL
1000,49428827,751235,10651584,1239098,1,100,N,N,N,CP_Drtn,TT_Task,DT_FixedDUR2,RV_OK,TK_Complete,823A-ST-SCCT-3b-2060,Preparation of construction joint for wall and roof,,,,0,0,0,0,8,0,0,0,,2013-07-16 08:00,2013-07-16 18:00,2014-01-05 18:00,2014-01-05 18:00,,2017-01-01 00:00,2017-01-01 00:00,,,2013-08-12 08:00,2013-08-12 18:00,,,,,PT_Normal,,,,,Sw0kvYX1TqWrMqJ0iA4akw,+GF1EwR9CUOu7qxDzBnbOQ,,,N,0,0,,,2017-01-24 14:42,2017-01-24 14:53,CLEMENTL,CLEMENTL
1001,49428828,751235,10651586,1227199,1,100,N,N,N,CP_Drtn,TT_Task,DT_FixedDUR2,RV_OK,TK_Complete,823A-ST-SCCT-5b-2090,Side walkway and cable bracket (204m3),,,,0,0,0,1040,40,80,0,0,,2014-12-18 08:00,2014-12-23 18:00,2017-06-12 18:00,2017-06-12 18:00,,2017-01-01 00:00,2017-01-01 00:00,,,2014-12-18 08:00,2014-12-23 18:00,,,,,PT_Normal,,,,,eEW5BRq0Rf+RacQ6Lad5eA,cCoJW1DoJ0eIAKXPrlrP+A,,,N,0,0,,,2017-01-24 14:42,2017-01-24 15:36,CLEMENTL,CLEMENTL
1002,49428829,751235,10651586,1227199,1,100,N,N,N,CP_Drtn,TT_Task,DT_FixedDUR2,RV_OK,TK_Complete,823A-ST-SCCT-5b-2010,Erect internal formwork & Falsework for wall and roof,,,,0,0,0,624,32,48,0,0,,2012-12-24 08:00,2012-12-29 18:00,2014-01-05 18:00,2014-01-05 18:00,,2017-01-01 00:00,2017-01-01 00:00,,,2013-06-01 08:00,2013-06-05 18:00,,,,,PT_Normal,,,,,FlP5lH1sTlmy/oryE673dA,ptdpmbhloECmEKjwzSbSCQ,,,Y,0,0,,,2017-01-24 14:42,2017-01-24 14:53,CLEMENTL,CLEMENTL
1003,49428830,751235,10651586,1227199,1,100,N,N,N,CP_Drtn,TT_Task,DT_FixedDUR2,RV_OK,TK_Complete,823A-ST-SCCT-5b-2020,Rebar fixing for wall and roof,,,,0,0,0,544,40,32,0,0,,2012-12-31 08:00,2013-01-05 18:00,2014-01-05 18:00,2014-01-05 18:00,,2017-01-01 00:00,2017-01-01 00:00,,,2013-06-06 08:00,2013-06-11 18:00,,,,,PT_Normal,,,,,TgcZoSdoRPu4A9/JIDgo2A,bMFDX/jEC0eHZx0QUJh1og,,,Y,0,0,,,2017-01-24 14:42,2017-01-24 14:53,CLEMENTL,CLEMENTL
1004,49428831,751235,10651586,1227199,1,100,N,N,N,CP_Drtn,TT_Task,DT_FixedDUR2,RV_OK,TK_Complete,823A-ST-SCCT-5b-2030,Erect external formwork for wall and roof,,,,0,0,0,208,24,16,0,0,,2013-01-07 08:00,2013-01-09 18:00,2014-01-05 18:00,2014-01-05 18:00,,2017-01-01 00:00,2017-01-01 00:00,,,2013-06-13 08:00,2013-06-15 18:00,,,,,PT_Normal,,,,,PRfM+/sXQDC8gEHE/IzL+w,OqlqAz97dUGmI1bu+PjXGg,,,Y,0,0,,,2017-01-24 14:42,2017-01-24 14:53,CLEMENTL,CLEMENTL
1005,49428832,751235,10651586,1227199,1,100,N,N,N,CP_Drtn,TT_Task,DT_FixedDUR2,RV_OK,TK_Complete,823A-ST-SCCT-5b-2040,Concreting for wall and roof (450m3),,,,0,0,0,208,8,16,0,0,,2013-01-10 08:00,2013-01-10 18:00,2014-01-05 18:00,2014-01-05 18:00,,2017-01-01 00:00,2017-01-01 00:00,,,2013-06-17 08:00,2013-06-17 18:00,,,,,PT_Normal,,,,,C1qjbxuuRRCXEaA4CO2Brg,g+xpoxGKXEyU+POxw8Uutw,,,Y,0,0,,,2017-01-24 14:42,2017-01-24 14:53,CLEMENTL,CLEMENTL
1006,49428833,751235,10651586,1227199,1,100,N,N,N,CP_Drtn,TT_Task,DT_FixedDUR2,RV_OK,TK_Complete,823A-ST-SCCT-5b-2070,Removal external and internal formwork for wall,,,,0,0,0,144,16,16,0,0,,2013-01-25 08:00,2013-01-26 18:00,2014-01-05 18:00,2014-01-05 18:00,,2017-01-01 00:00,2017-01-01 00:00,,,2013-06-19 08:00,2013-06-20 18:00,,,,,PT_Normal,,,,,E36G5y8NTw61WJFGu+N3wQ,QBcdXC+4pEOtwyPFDdHuFg,,,Y,0,0,,,2017-01-24 14:42,2017-01-24 14:53,CLEMENTL,CLEMENTL
1007,49428834,751235,10651586,1239099,1,100,N,N,N,CP_Drtn,TT_Task,DT_FixedDUR2,RV_OK,TK_Complete,823A-ST-SCCT-5b-2050,Curing for wall and roof,,,,0,0,0,224,80,0,0,0,,2013-01-11 08:00,2013-01-22 18:00,2014-01-05 18:00,2014-01-05 18:00,,2017-01-01 00:00,2017-01-01 00:00,,,2013-06-18 08:00,2013-06-27 18:00,,,,,PT_Normal,,,,,8AnT41VrSDadXXQ5W03KfA,wyRbGMa850qFUvmxQdQ2Aw,,,N,0,0,,,2017-01-24 14:42,2017-01-24 14:53,CLEMENTL,CLEMENTL
1008,49428835,751235,10651586,1227199,1,100,N,N,N,CP_Drtn,TT_Task,DT_FixedDUR2,RV_OK,TK_Complete,823A-ST-SCCT-5b-2080,Removal internal falsework and formwork for roof,,,,0,0,0,416,8,32,0,0,,2013-01-28 08:00,2013-01-28 18:00,2014-01-05 18:00,2014-01-05 18:00,,2017-01-01 00:00,2017-01-01 00:00,,,2013-06-28 08:00,2013-06-28 18:00,,,,,PT_Normal,,,,,0Rx6qfgiRAGzZ+eNcTiXIA,paT3R1UrEUKC6DjYmlIdaQ,,,N,0,0,,,2017-01-24 14:42,2017-01-24 14:53,CLEMENTL,CLEMENTL
1009,49428836,751235,10651586,1239098,1,100,N,N,N,CP_Drtn,TT_Task,DT_FixedDUR2,RV_OK,TK_Complete,823A-ST-SCCT-5b-2060,Preparation of construction joint for wall and roof,,,,0,0,0,0,8,0,0,0,,2013-01-23 08:00,2013-01-24 18:00,2014-01-05 18:00,2014-01-05 18:00,,2017-01-01 00:00,2017-01-01 00:00,,,2013-06-18 08:00,2013-06-18 18:00,,,,,PT_Normal,,,,,4QkuUiZRSDScLxIA158fuw,h1tuSRVn2ECe88oVTCAS7A,,,Y,0,0,,,2017-01-24 14:42,2017-01-24 14:53,CLEMENTL,CLEMENTL
1010,49428837,751235,10651587,1227199,1,100,N,N,N,CP_Drtn,TT_Task,DT_FixedDUR2,RV_OK,TK_Complete,823A-ST-SCCT-5b-1010,Placing of waterproof member T-lock & testing for base slab,,,,0,64,0,64,8,0,0,0,,2012-11-21 08:00,2012-11-21 18:00,2014-01-05 18:00,2014-01-05 18:00,,2017-01-01 00:00,2017-01-01 00:00,,,2012-11-21 08:00,2012-11-21 18:00,,,,,PT_Normal,,,,,cgcFKSH/Q4m8y50DggBEYA,FAnsXEBKHUyjSMSWfaz1IA,,,Y,64,0,,,2017-01-24 14:42,2017-01-24 14:53,CLEMENTL,CLEMENTL
1011,49428838,751235,10651587,1227199,1,100,N,N,N,CP_Drtn,TT_Task,DT_FixedDUR2,RV_OK,TK_Complete,823A-ST-SCCT-5b-1020,Erect external formwork for base slab,,,,0,104,0,104,24,8,8,0,,2012-11-22 08:00,2012-11-24 18:00,2014-01-05 18:00,2014-01-05 18:00,,2017-01-01 00:00,2017-01-01 00:00,,,2012-11-22 08:00,2012-11-24 18:00,,,,,PT_Normal,,,,,IoTqoDPhTGOoT031RJdAlQ,eHH3oKG8tUO1lv8Toz5X2g,,,Y,104,8,,,2017-01-24 14:42,2017-01-24 14:53,CLEMENTL,CLEMENTL
1012,49428839,751235,10651587,1227199,1,100,N,N,N,CP_Drtn,TT_Task,DT_FixedDUR2,RV_OK,TK_Complete,823A-ST-SCCT-5b-1030,Rebar fixing for base slab,,,,0,272,0,272,24,16,16,0,,2012-11-26 08:00,2012-11-28 18:00,2014-01-05 18:00,2014-01-05 18:00,,2017-01-01 00:00,2017-01-01 00:00,,,2012-11-26 08:00,2012-11-28 18:00,,,,,PT_Normal,,,,,bfpbl1+pS1KXReLMCed8dQ,k7RMHqiULECZmr0BzVsz9w,,,Y,272,16,,,2017-01-24 14:42,2017-01-24 14:53,CLEMENTL,CLEMENTL
1013,49428840,751235,10651587,1227199,1,100,N,N,N,CP_Drtn,TT_Task,DT_FixedDUR2,RV_OK,TK_Complete,823A-ST-SCCT-5b-1040,Erect internal kicker formwork for base slab,,,,0,288,0,288,8,16,16,0,,2012-11-29 08:00,2012-11-29 18:00,2014-01-05 18:00,2014-01-05 18:00,,2017-01-01 00:00,2017-01-01 00:00,,,2012-11-29 08:00,2012-11-29 18:00,,,,,PT_Normal,,,,,hUZ23MlpSbORxz3UHJzPQA,yiOLQ1FGaUyJdnoJ7h9sww,,,Y,288,16,,,2017-01-24 14:42,2017-01-24 14:53,CLEMENTL,CLEMENTL
1014,49428841,751235,10651587,1227199,1,100,N,N,N,CP_Drtn,TT_Task,DT_FixedDUR2,RV_OK,TK_Complete,823A-ST-SCCT-5b-1050,Concreting for base slab (363m3),,,,0,208,0,208,8,16,16,0,,2012-11-30 08:00,2012-11-30 18:00,2014-01-05 18:00,2014-01-05 18:00,,2017-01-01 00:00,2017-01-01 00:00,,,2012-11-30 08:00,2012-11-30 18:00,,,,,PT_Normal,,,,,1JU47tNkROSvkDttjdSK+g,KNtq/HHB+EKTm1rNrdEVZw,,,Y,208,16,,,2017-01-24 14:42,2017-01-24 14:53,CLEMENTL,CLEMENTL
1015,49428842,751235,10651587,1239099,1,100,N,N,N,CP_Drtn,TT_Task,DT_FixedDUR2,RV_OK,TK_Complete,823A-ST-SCCT-5b-1060,Curing for base slab,,,,0,0,0,224,56,0,0,0,,2012-12-01 08:00,2012-12-08 18:00,2014-01-05 18:00,2014-01-05 18:00,,2017-01-01 00:00,2017-01-01 00:00,,,2013-06-01 08:00,2013-06-07 18:00,,,,,PT_Normal,,,,,eB2SVGBZT6aam4rH/ygy1A,8eHlx3ajIkmbd5RWjWxn/g,,,Y,0,0,,,2017-01-24 14:42,2017-01-24 14:53,CLEMENTL,CLEMENTL
1016,49428843,751235,10651587,1227199,1,100,N,N,N,CP_Drtn,TT_Task,DT_FixedDUR2,RV_OK,TK_Complete,823A-ST-SCCT-5b-1080,Removal of formwork for base slab,,,,0,0,0,72,8,8,0,0,,2012-12-11 08:00,2012-12-11 18:00,2014-01-05 18:00,2014-01-05 18:00,,2017-01-01 00:00,2017-01-01 00:00,,,2013-06-03 08:00,2013-06-03 18:00,,,,,PT_Normal,,,,,J8ZraexjQpuoldehXKpJ0A,B18bLvJHF0+FgFijo6W2sg,,,Y,0,0,,,2017-01-24 14:42,2017-01-24 14:53,CLEMENTL,CLEMENTL
1017,49428844,751235,10651587,1227199,1,100,N,N,N,CP_Drtn,TT_Task,DT_FixedDUR2,RV_OK,TK_Complete,823A-ST-SCCT-5b-1090,Shear beam,,,,0,0,0,128,56,16,0,0,,2012-12-12 08:00,2012-12-12 18:00,2014-01-05 18:00,2014-01-05 18:00,,2017-01-01 00:00,2017-01-01 00:00,,,2013-06-08 08:00,2013-06-17 18:00,,,,,PT_Normal,,,,,zCzO0UTgTCijo5Xauy5gHg,0/aPOMMiHECb+iu3w9pkHQ,,,Y,0,0,,,2017-01-24 14:42,2017-01-24 14:53,CLEMENTL,CLEMENTL
1018,49428845,751235,10651587,1227199,1,100,N,N,N,CP_Drtn,TT_Task,DT_FixedDUR2,RV_OK,TK_Complete,823A-ST-SCCT-5b-1110,Removal strut S5 and S4,,,,0,0,0,144,48,16,0,0,,2012-12-14 08:00,2012-12-20 18:00,2014-01-05 18:00,2014-01-05 18:00,,2017-01-01 00:00,2017-01-01 00:00,,,2013-06-19 08:00,2013-06-25 18:00,,,,,PT_Normal,,,,,NDPOV0pfRSmAJBPKUNrmwA,0cMtrzSsJ0GPOFcOMYRwRA,,,Y,0,0,,,2017-01-24 14:42,2017-01-24 14:53,CLEMENTL,CLEMENTL
1019,49428846,751235,10651587,1239098,1,100,N,N,N,CP_Drtn,TT_Task,DT_FixedDUR2,RV_OK,TK_Complete,823A-ST-SCCT-5b-1070,Preparation of construction joint for base slab,,,,0,0,0,0,8,0,0,0,,2012-12-10 08:00,2012-12-10 18:00,2014-01-05 18:00,2014-01-05 18:00,,2017-01-01 00:00,2017-01-01 00:00,,,2013-06-01 08:00,2013-06-01 18:00,,,,,PT_Normal,,,,,dmlW30okTsKmJUDBBXWFcw,0jyQBq7bnECS84f/cktDnA,,,Y,0,0,,,2017-01-24 14:42,2017-01-24 14:53,CLEMENTL,CLEMENTL
1020,49428847,751235,10651587,1239099,1,100,N,N,N,CP_Drtn,TT_Task,DT_FixedDUR2,RV_OK,TK_Complete,823A-ST-SCCT-5b-1100,Curing,,,,0,0,0,224,8,0,0,0,,2012-12-13 08:00,2012-12-13 18:00,2014-01-05 18:00,2014-01-05 18:00,,2017-01-01 00:00,2017-01-01 00:00,,,2013-06-18 08:00,2013-06-18 18:00,,,,,PT_Normal,,,,,TN5zqvDxT6eTkaGw7CaEvg,OcrNQX6kV0Cn9EVDC/zPsw,,,Y,0,0,,,2017-01-24 14:42,2017-01-24 14:53,CLEMENTL,CLEMENTL
1021,49428848,751235,10651588,1227199,1,100,N,N,N,CP_Drtn,TT_Task,DT_FixedDUR2,RV_OK,TK_Complete,823A-ST-SCCT-5b-3090,Side walkway and cable bracket (204m3),,,,0,1040,0,1040,40,80,80,0,,2015-07-02 08:00,2015-10-03 18:00,2017-06-12 18:00,2017-06-12 18:00,,2017-01-01 00:00,2017-01-01 00:00,,,2015-08-29 08:00,2015-09-03 18:00,,,,,PT_Normal,,,,,7rKrvRxuQ5K4L0U5TUgUIw,v9y3NkW+kUirVYfWr/IYIg,,,N,1040,80,,,2017-01-24 14:42,2017-01-24 15:36,CLEMENTL,CLEMENTL
1022,49428849,751235,10651588,1227199,1,100,N,N,N,CP_Drtn,TT_Task,DT_FixedDUR2,RV_OK,TK_Complete,823A-ST-SCCT-5b-3010,Erect internal formwork & Falsework for wall and roof,,,,0,0,0,624,64,48,0,0,,2013-01-05 08:00,2013-01-09 18:00,2014-01-05 18:00,2014-01-05 18:00,,2017-01-01 00:00,2017-01-01 00:00,,,2013-06-01 08:00,2013-06-10 18:00,,,,,PT_Normal,,,,,A1J4GkR1S26XzgtpsidWsw,JfGGd5pf5UiZ1qnzl71TqQ,,,Y,0,0,,,2017-01-24 14:42,2017-01-24 14:53,CLEMENTL,CLEMENTL
1023,49428850,751235,10651588,1227199,1,100,N,N,N,CP_Drtn,TT_Task,DT_FixedDUR2,RV_OK,TK_Complete,823A-ST-SCCT-5b-3020,Rebar fixing for wall and roof,,,,0,0,0,544,56,32,0,0,,2013-01-10 08:00,2013-01-17 18:00,2014-01-05 18:00,2014-01-05 18:00,,2017-01-01 00:00,2017-01-01 00:00,,,2013-06-11 08:00,2013-06-19 18:00,,,,,PT_Normal,,,,,vNoRg0/bQ9KzbwN49ypcsg,y6MgWh74PkKVAZYYM2wC4Q,,,Y,0,0,,,2017-01-24 14:42,2017-01-24 14:53,CLEMENTL,CLEMENTL
1024,49428851,751235,10651588,1227199,1,100,N,N,N,CP_Drtn,TT_Task,DT_FixedDUR2,RV_OK,TK_Complete,823A-ST-SCCT-5b-3030,Erect external formwork for wall and roof,,,,0,0,0,208,16,16,0,0,,2013-01-17 08:00,2013-01-19 18:00,2014-01-05 18:00,2014-01-05 18:00,,2017-01-01 00:00,2017-01-01 00:00,,,2013-06-20 08:00,2013-06-21 18:00,,,,,PT_Normal,,,,,qoz/gF/PREqcWueMwqePsw,R+6XYBkrtESV8CqGnqMysA,,,Y,0,0,,,2017-01-24 14:42,2017-01-24 14:53,CLEMENTL,CLEMENTL
1025,49428852,751235,10651588,1227199,1,100,N,N,N,CP_Drtn,TT_Task,DT_FixedDUR2,RV_OK,TK_Complete,823A-ST-SCCT-5b-3040,Concreting for wall and roof (450m3),,,,0,0,0,208,8,16,0,0,,2013-01-21 08:00,2013-01-21 18:00,2014-01-05 18:00,2014-01-05 18:00,,2017-01-01 00:00,2017-01-01 00:00,,,2013-06-22 08:00,2013-06-22 18:00,,,,,PT_Normal,,,,,mCuSjarCSZmoSjX0Fuq0KA,NlpwqGjhH0e7Hn/yaqa0Iw,,,Y,0,0,,,2017-01-24 14:42,2017-01-24 14:53,CLEMENTL,CLEMENTL
1026,49428853,751235,10651588,1227199,1,100,N,N,N,CP_Drtn,TT_Task,DT_FixedDUR2,RV_OK,TK_Complete,823A-ST-SCCT-5b-3070,Removal external and internal formwork for wall,,,,0,0,0,144,16,16,0,0,,2013-02-04 08:00,2013-02-05 18:00,2014-01-05 18:00,2014-01-05 18:00,,2017-01-01 00:00,2017-01-01 00:00,,,2013-06-25 08:00,2013-06-26 18:00,,,,,PT_Normal,,,,,G0DnMQ2nSyy8+3RH3bo/Kg,d7coEj3MFECBdY4dGPfrBQ,,,Y,0,0,,,2017-01-24 14:42,2017-01-24 14:53,CLEMENTL,CLEMENTL
1027,49428854,751235,10651588,1239099,1,100,N,N,N,CP_Drtn,TT_Task,DT_FixedDUR2,RV_OK,TK_Complete,823A-ST-SCCT-5b-3050,Curing for wall and roof,,,,0,0,0,224,80,0,0,0,,2013-01-22 08:00,2013-02-01 18:00,2014-01-05 18:00,2014-01-05 18:00,,2017-01-01 00:00,2017-01-01 00:00,,,2013-06-23 08:00,2013-07-02 18:00,,,,,PT_Normal,,,,,bYJAEriiS0CiAj70V6dVvQ,gheBtslTMkGW8qzZGNBysg,,,N,0,0,,,2017-01-24 14:42,2017-01-24 14:53,CLEMENTL,CLEMENTL
1028,49428855,751235,10651588,1227199,1,100,N,N,N,CP_Drtn,TT_Task,DT_FixedDUR2,RV_OK,TK_Complete,823A-ST-SCCT-5b-3080,Removal internal falsework and formwork for roof,,,,0,0,0,416,8,32,0,0,,2013-02-06 08:00,2013-02-07 18:00,2014-01-05 18:00,2014-01-05 18:00,,2017-01-01 00:00,2017-01-01 00:00,,,2013-07-03 08:00,2013-07-03 18:00,,,,,PT_Normal,,,,,2sCl2eQdTEO8K5IojWPRRA,iUc+xIwyCkyZjPjeyVet2g,,,N,0,0,,,2017-01-24 14:42,2017-01-24 14:53,CLEMENTL,CLEMENTL
1029,49428856,751235,10651588,1239098,1,100,N,N,N,CP_Drtn,TT_Task,DT_FixedDUR2,RV_OK,TK_Complete,823A-ST-SCCT-5b-3060,Preparation of construction joint for wall and roof,,,,0,0,0,0,8,0,0,0,,2013-02-02 08:00,2013-02-02 18:00,2014-01-05 18:00,2014-01-05 18:00,,2017-01-01 00:00,2017-01-01 00:00,,,2013-06-24 08:00,2013-06-24 18:00,,,,,PT_Normal,,,,,ozvmw3m2TXK8HTzgYoj/qw,XnA0bPlcVESEx+/sWw/3xw,,,Y,0,0,,,2017-01-24 14:42,2017-01-24 14:53,CLEMENTL,CLEMENTL
1030,49428857,751235,10651590,1227199,1,100,N,N,N,CP_Drtn,TT_Task,DT_FixedDUR2,RV_OK,TK_Complete,823A-ST-SCCT-5a-1010,Placing of waterproof member T-lock & testing for base slab,,,,0,0,0,64,8,0,0,0,,2012-12-13 08:00,2012-12-13 18:00,2014-01-05 18:00,2014-01-05 18:00,,2017-01-01 00:00,2017-01-01 00:00,,,2013-06-01 08:00,2013-06-01 18:00,,,,,PT_Normal,,,,,GsK82iHsT/GsggkHNNbzJg,G0QWgGro8ky+cxkPLH+Hog,,,Y,0,0,,,2017-01-24 14:42,2017-01-24 14:53,CLEMENTL,CLEMENTL
1031,49428858,751235,10651590,1227199,1,100,N,N,N,CP_Drtn,TT_Task,DT_FixedDUR2,RV_OK,TK_Complete,823A-ST-SCCT-5a-1020,Erect external formwork for base slab,,,,0,0,0,104,8,8,0,0,,2012-12-14 08:00,2012-12-15 18:00,2014-01-05 18:00,2014-01-05 18:00,,2017-01-01 00:00,2017-01-01 00:00,,,2013-06-03 08:00,2013-06-03 18:00,,,,,PT_Normal,,,,,2wpbYERuRBS0ATkiE+/yvg,NZofHm44NkWjv5YKFTMbyw,,,Y,0,0,,,2017-01-24 14:42,2017-01-24 14:53,CLEMENTL,CLEMENTL
1032,49428859,751235,10651590,1227199,1,100,N,N,N,CP_Drtn,TT_Task,DT_FixedDUR2,RV_OK,TK_Complete,823A-ST-SCCT-5a-1030,Rebar fixing for base slab,,,,0,0,0,272,16,16,0,0,,2012-12-15 08:00,2012-12-17 18:00,2014-01-05 18:00,2014-01-05 18:00,,2017-01-01 00:00,2017-01-01 00:00,,,2013-06-04 08:00,2013-06-05 18:00,,,,,PT_Normal,,,,,YWOuCLXcSGWw3K/CRG30cA,HTCQpi4DOEG5p9aa3TlQWw,,,Y,0,0,,,2017-01-24 14:42,2017-01-24 14:53,CLEMENTL,CLEMENTL
1033,49428860,751235,10651590,1227199,1,100,N,N,N,CP_Drtn,TT_Task,DT_FixedDUR2,RV_OK,TK_Complete,823A-ST-SCCT-5a-1040,Erect internal kicker formwork for base slab,,,,0,0,0,288,16,16,0,0,,2012-12-17 08:00,2012-12-17 18:00,2014-01-05 18:00,2014-01-05 18:00,,2017-01-01 00:00,2017-01-01 00:00,,,2013-06-04 08:00,2013-06-05 18:00,,,,,PT_Normal,,,,,1qTQfU07SqO4tadj9vgTZA,333H0eP550Wyyz+TUbhQKw,,,Y,0,0,,,2017-01-24 14:42,2017-01-24 14:53,CLEMENTL,CLEMENTL
1034,49428861,751235,10651590,1227199,1,100,N,N,N,CP_Drtn,TT_Task,DT_FixedDUR2,RV_OK,TK_Complete,823A-ST-SCCT-5a-1050,Concreting for base slab (363m3),,,,0,0,0,208,8,16,0,0,,2012-12-18 08:00,2012-12-18 18:00,2014-01-05 18:00,2014-01-05 18:00,,2017-01-01 00:00,2017-01-01 00:00,,,2013-06-06 08:00,2013-06-06 18:00,,,,,PT_Normal,,,,,VnlQNfsRTzmBv2ZJ7kwjtg,b8rzD6Fnqke8GeglmJq37A,,,Y,0,0,,,2017-01-24 14:42,2017-01-24 14:53,CLEMENTL,CLEMENTL
1035,49428862,751235,10651590,1239099,1,100,N,N,N,CP_Drtn,TT_Task,DT_FixedDUR2,RV_OK,TK_Complete,823A-ST-SCCT-5a-1060,Curing for base slab,,,,0,0,0,224,56,0,0,0,,2012-12-19 08:00,2012-12-27 18:00,2014-01-05 18:00,2014-01-05 18:00,,2017-01-01 00:00,2017-01-01 00:00,,,2013-06-07 08:00,2013-06-13 18:00,,,,,PT_Normal,,,,,KfX6EJSBRgW2ZP/ak3GChA,IZgHecIiJUO6dGic26Jtgw,,,Y,0,0,,,2017-01-24 14:42,2017-01-24 14:53,CLEMENTL,CLEMENTL
1036,49428863,751235,10651590,1227199,1,100,N,N,N,CP_Drtn,TT_Task,DT_FixedDUR2,RV_OK,TK_Complete,823A-ST-SCCT-5a-1080,Removal of formwork for base slab,,,,0,0,0,72,8,8,0,0,,2012-12-29 08:00,2012-12-29 18:00,2014-01-05 18:00,2014-01-05 18:00,,2017-01-01 00:00,2017-01-01 00:00,,,2013-06-08 08:00,2013-06-08 18:00,,,,,PT_Normal,,,,,SMBU3UmHQKW8NAnO9bZkiA,fPkUdGKOw0iGB9nbGcgDnw,,,Y,0,0,,,2017-01-24 14:42,2017-01-24 14:53,CLEMENTL,CLEMENTL
1037,49428864,751235,10651590,1227199,1,100,N,N,N,CP_Drtn,TT_Task,DT_FixedDUR2,RV_OK,TK_Complete,823A-ST-SCCT-5a-1090,Shear beam,,,,0,0,0,128,16,16,0,0,,2012-12-31 08:00,2013-01-02 18:00,2014-01-05 18:00,2014-01-05 18:00,,2017-01-01 00:00,2017-01-01 00:00,,,2013-06-10 08:00,2013-06-11 18:00,,,,,PT_Normal,,,,,XaHs2/b9T+G8L2/7wB6mvw,CyVTi9nSzUam0EQzC1Av2g,,,Y,0,0,,,2017-01-24 14:42,2017-01-24 14:53,CLEMENTL,CLEMENTL
1038,49428865,751235,10651590,1227199,1,100,N,N,N,CP_Drtn,TT_Task,DT_FixedDUR2,RV_OK,TK_Complete,823A-ST-SCCT-5a-1110,Removal strut S5 and S4,,,,0,0,0,144,24,16,0,0,,2013-01-04 08:00,2013-01-07 18:00,2014-01-05 18:00,2014-01-05 18:00,,2017-01-01 00:00,2017-01-01 00:00,,,2013-06-13 08:00,2013-06-15 18:00,,,,,PT_Normal,,,,,iorZ24fcSp+kz+A5fqMgnQ,Q0gupv4wgUS1yOzFi/M7Ig,,,Y,0,0,,,2017-01-24 14:42,2017-01-24 14:53,CLEMENTL,CLEMENTL
1039,49428866,751235,10651590,1239098,1,100,N,N,N,CP_Drtn,TT_Task,DT_FixedDUR2,RV_OK,TK_Complete,823A-ST-SCCT-5a-1070,Preparation of construction joint for base slab,,,,0,0,0,0,8,0,0,0,,2012-12-28 08:00,2012-12-28 18:00,2014-01-05 18:00,2014-01-05 18:00,,2017-01-01 00:00,2017-01-01 00:00,,,2013-06-07 08:00,2013-06-07 18:00,,,,,PT_Normal,,,,,DTNwJNRqS2uv9hUCSCqjgw,d+HRGmlYmEqyyv4LpgNqFA,,,Y,0,0,,,2017-01-24 14:42,2017-01-24 14:53,CLEMENTL,CLEMENTL
1040,49428867,751235,10651590,1239099,1,100,N,N,N,CP_Drtn,TT_Task,DT_FixedDUR2,RV_OK,TK_Complete,823A-ST-SCCT-5a-1100,Curing,,,,0,0,0,224,8,0,0,0,,2013-01-03 08:00,2013-01-03 18:00,2014-01-05 18:00,2014-01-05 18:00,,2017-01-01 00:00,2017-01-01 00:00,,,2013-06-12 08:00,2013-06-12 18:00,,,,,PT_Normal,,,,,x5LDoxTYTT6RBsXxZgooKw,vBO0b2OfDUydv+WWaZEx7w,,,Y,0,0,,,2017-01-24 14:42,2017-01-24 14:53,CLEMENTL,CLEMENTL
1041,49428868,751235,10651591,1227199,1,100,N,N,N,CP_Drtn,TT_Task,DT_FixedDUR2,RV_OK,TK_Complete,823A-ST-SCCT-5a-3090,Side walkway and cable bracket,,,,0,1040,0,1040,40,80,80,0,,2015-07-02 08:00,2015-10-05 18:00,2017-06-12 18:00,2017-06-12 18:00,,2017-01-01 00:00,2017-01-01 00:00,,,2015-09-04 08:00,2015-09-09 18:00,,,,,PT_Normal,,,,,H9qG/oQ5Tm+ftUUe0hDrNA,VoIV1POL1UemDJrdOrFyMg,,,N,1040,80,,,2017-01-24 14:42,2017-01-24 15:36,CLEMENTL,CLEMENTL
1042,49428869,751235,10651591,1227199,1,100,N,N,N,CP_Drtn,TT_Task,DT_FixedDUR2,RV_OK,TK_Complete,823A-ST-SCCT-5a-3010,Erect internal formwork & Falsework for wall and roof,,,,0,0,0,624,32,48,0,0,,2012-12-27 08:00,2013-01-03 18:00,2014-01-05 18:00,2014-01-05 18:00,,2017-01-01 00:00,2017-01-01 00:00,,,2013-06-01 08:00,2013-06-05 18:00,,,,,PT_Normal,,,,,rByiASXTTMGMStqESitOLg,xwx3NunaN0etOSOG3eSH9Q,,,Y,0,0,,,2017-01-24 14:42,2017-01-24 14:53,CLEMENTL,CLEMENTL
1043,49428870,751235,10651591,1227199,1,100,N,N,N,CP_Drtn,TT_Task,DT_FixedDUR2,RV_OK,TK_Complete,823A-ST-SCCT-5a-3020,Rebar fixing for wall and roof,,,,0,544,0,544,80,32,32,0,,2013-01-10 08:00,2013-01-21 18:00,2014-01-05 18:00,2014-01-05 18:00,,2017-01-01 00:00,2017-01-01 00:00,,,2013-06-06 08:00,2013-06-18 18:00,,,,,PT_Normal,,,,,F8Q0JsRmSBeE20oXS9/nkQ,ScWQjkaR3U2bf7zkq7AA8g,,,Y,544,32,,,2017-01-24 14:42,2017-01-24 14:53,CLEMENTL,CLEMENTL
1044,49428871,751235,10651591,1227199,1,100,N,N,N,CP_Drtn,TT_Task,DT_FixedDUR2,RV_OK,TK_Complete,823A-ST-SCCT-5a-3030,Erect external formwork for wall and roof,,,,0,0,0,208,32,16,0,0,,2013-01-21 08:00,2013-01-25 18:00,2014-01-05 18:00,2014-01-05 18:00,,2017-01-01 00:00,2017-01-01 00:00,,,2013-06-19 08:00,2013-06-22 18:00,,,,,PT_Normal,,,,,7+94Vh1ERB60UzuJZF/BQg,1f6iR7+TgE2QlMUO1KlExA,,,Y,0,0,,,2017-01-24 14:42,2017-01-24 14:53,CLEMENTL,CLEMENTL
1045,49428872,751235,10651591,1227199,1,100,N,N,N,CP_Drtn,TT_Task,DT_FixedDUR2,RV_OK,TK_Complete,823A-ST-SCCT-5a-3040,Concreting for wall and roof (450m3),,,,0,0,0,208,8,16,0,0,,2013-01-26 08:00,2013-01-26 18:00,2014-01-05 18:00,2014-01-05 18:00,,2017-01-01 00:00,2017-01-01 00:00,,,2013-06-24 08:00,2013-06-24 18:00,,,,,PT_Normal,,,,,oNHLbDgOS5qyzkYSqkL5kg,sqoKy78kwUSBx8jfLqJpoA,,,Y,0,0,,,2017-01-24 14:42,2017-01-24 14:53,CLEMENTL,CLEMENTL
1046,49428873,751235,10651591,1227199,1,100,N,N,N,CP_Drtn,TT_Task,DT_FixedDUR2,RV_OK,TK_Complete,823A-ST-SCCT-5a-3070,Removal external wall formwork for wall,,,,0,0,0,144,16,16,0,0,,2013-02-08 08:00,2013-02-08 18:00,2014-01-05 18:00,2014-01-05 18:00,,2017-01-01 00:00,2017-01-01 00:00,,,2013-06-26 08:00,2013-06-27 18:00,,,,,PT_Normal,,,,,JP4L3qEeR8mSVT2zdgdLQQ,z+ha1M4bpEKv1BTkVSCHoQ,,,Y,0,0,,,2017-01-24 14:42,2017-01-24 14:53,CLEMENTL,CLEMENTL
1047,49428874,751235,10651591,1239099,1,100,N,N,N,CP_Drtn,TT_Task,DT_FixedDUR2,RV_OK,TK_Complete,823A-ST-SCCT-5a-3050,Curing for wall and roof,,,,0,0,0,224,80,0,0,0,,2013-01-28 08:00,2013-02-07 18:00,2014-01-05 18:00,2014-01-05 18:00,,2017-01-01 00:00,2017-01-01 00:00,,,2013-06-25 08:00,2013-07-04 18:00,,,,,PT_Normal,,,,,YI5cf8mBT+2U1fEqrHUa5g,PpxgnTijYkuisUxQ72Sm0w,,,N,0,0,,,2017-01-24 14:42,2017-01-24 14:53,CLEMENTL,CLEMENTL
1048,49428875,751235,10651591,1227199,1,100,N,N,N,CP_Drtn,TT_Task,DT_FixedDUR2,RV_OK,TK_Complete,823A-ST-SCCT-5a-3080,Removal internal falsework and formwork for roof,,,,0,0,0,416,8,32,0,0,,2013-02-15 08:00,2013-02-15 18:00,2014-01-05 18:00,2014-01-05 18:00,,2017-01-01 00:00,2017-01-01 00:00,,,2013-07-05 08:00,2013-07-05 18:00,,,,,PT_Normal,,,,,7oCGDERRRYKZj+fSHAessg,TOYJl5pPQ0mlw//6RymvBA,,,N,0,0,,,2017-01-24 14:42,2017-01-24 14:53,CLEMENTL,CLEMENTL
1049,49428876,751235,10651591,1239098,1,100,N,N,N,CP_Drtn,TT_Task,DT_FixedDUR2,RV_OK,TK_Complete,823A-ST-SCCT-5a-3060,Preparation of construction joint for wall and roof,,,,0,0,0,0,8,0,0,0,,2013-02-07 08:00,2013-02-08 18:00,2014-01-05 18:00,2014-01-05 18:00,,2017-01-01 00:00,2017-01-01 00:00,,,2013-06-25 08:00,2013-06-25 18:00,,,,,PT_Normal,,,,,PpLMcBd5S6++uRZOhWJWKA,sYFSpl5wH0mDPyhkNC3J9Q,,,Y,0,0,,,2017-01-24 14:42,2017-01-24 14:53,CLEMENTL,CLEMENTL
1050,49428877,751235,10651592,1227199,1,100,N,N,N,CP_Drtn,TT_Task,DT_FixedDUR2,RV_OK,TK_Complete,823A-ST-SCCT-5a-2090,Side walkway and cable bracket,,,,0,0,0,1040,40,80,0,0,,2014-12-24 08:00,2014-12-31 18:00,2017-06-12 18:00,2017-06-12 18:00,,2017-01-01 00:00,2017-01-01 00:00,,,2014-12-24 08:00,2014-12-31 18:00,,,,,PT_Normal,,,,,735dQY/3QV+4GGbWVZZJLg,ALMeU0waKku0uH0tud1jjQ,,,N,0,0,,,2017-01-24 14:42,2017-01-24 15:36,CLEMENTL,CLEMENTL
1051,49428878,751235,10651592,1227199,1,100,N,N,N,CP_Drtn,TT_Task,DT_FixedDUR2,RV_OK,TK_Complete,823A-ST-SCCT-5a-2010,Erect internal formwork & Falsework for wall and roof,,,,0,0,0,624,32,48,0,0,,2012-12-29 08:00,2013-01-03 18:00,2014-01-05 18:00,2014-01-05 18:00,,2017-01-01 00:00,2017-01-01 00:00,,,2013-06-01 08:00,2013-06-05 18:00,,,,,PT_Normal,,,,,xVLuJ1klQ7W1juGL5RomGg,KUa+IMjHy0uOS7ogIZ0eiw,,,Y,0,0,,,2017-01-24 14:42,2017-01-24 14:53,CLEMENTL,CLEMENTL
1052,49428879,751235,10651592,1227199,1,100,N,N,N,CP_Drtn,TT_Task,DT_FixedDUR2,RV_OK,TK_Complete,823A-ST-SCCT-5a-2020,Rebar fixing for wall and roof,,,,0,0,0,544,40,32,0,0,,2013-01-04 08:00,2013-01-09 18:00,2014-01-05 18:00,2014-01-05 18:00,,2017-01-01 00:00,2017-01-01 00:00,,,2013-06-06 08:00,2013-06-11 18:00,,,,,PT_Normal,,,,,yi1dotEBSXKgBhkZH83pyw,ahOFSzrIj0mEME3FNYL+mw,,,Y,0,0,,,2017-01-24 14:42,2017-01-24 14:53,CLEMENTL,CLEMENTL
1053,49428880,751235,10651592,1227199,1,100,N,N,N,CP_Drtn,TT_Task,DT_FixedDUR2,RV_OK,TK_Complete,823A-ST-SCCT-5a-2030,Erect external formwork for wall and roof,,,,0,0,0,208,32,16,0,0,,2013-01-10 08:00,2013-01-14 18:00,2014-01-05 18:00,2014-01-05 18:00,,2017-01-01 00:00,2017-01-01 00:00,,,2013-06-13 08:00,2013-06-17 18:00,,,,,PT_Normal,,,,,VAPRY0MiRzSJ+0uQygf0cA,5K6haeBWlkCAyisrOHE2MQ,,,Y,0,0,,,2017-01-24 14:42,2017-01-24 14:53,CLEMENTL,CLEMENTL
1054,49428881,751235,10651592,1227199,1,100,N,N,N,CP_Drtn,TT_Task,DT_FixedDUR2,RV_OK,TK_Complete,823A-ST-SCCT-5a-2040,Concreting for wall and roof (450m3),,,,0,0,0,208,8,16,0,0,,2013-01-15 08:00,2013-01-15 18:00,2014-01-05 18:00,2014-01-05 18:00,,2017-01-01 00:00,2017-01-01 00:00,,,2013-06-18 08:00,2013-06-18 18:00,,,,,PT_Normal,,,,,20evSD/+TY6Hrp11i89QTw,+nyf55UoMkyPA2+AwAGcRQ,,,Y,0,0,,,2017-01-24 14:42,2017-01-24 14:53,CLEMENTL,CLEMENTL
1055,49428882,751235,10651592,1227199,1,100,N,N,N,CP_Drtn,TT_Task,DT_FixedDUR2,RV_OK,TK_Complete,823A-ST-SCCT-5a-2070,Removal external and internal formwork for wall,,,,0,0,0,144,16,16,0,0,,2013-01-29 08:00,2013-01-30 18:00,2014-01-05 18:00,2014-01-05 18:00,,2017-01-01 00:00,2017-01-01 00:00,,,2013-06-20 08:00,2013-06-21 18:00,,,,,PT_Normal,,,,,b+lclpoFQxCnUGIqm9NU5A,kGw8L4s32E2jqyJJ0WExMA,,,Y,0,0,,,2017-01-24 14:42,2017-01-24 14:53,CLEMENTL,CLEMENTL
1056,49428883,751235,10651592,1239099,1,100,N,N,N,CP_Drtn,TT_Task,DT_FixedDUR2,RV_OK,TK_Complete,823A-ST-SCCT-5a-2050,Curing for wall and roof,,,,0,0,0,224,80,0,0,0,,2013-01-16 08:00,2013-01-26 18:00,2014-01-05 18:00,2014-01-05 18:00,,2017-01-01 00:00,2017-01-01 00:00,,,2013-06-19 08:00,2013-06-28 18:00,,,,,PT_Normal,,,,,K6WOVJeDQcOainepekSSrA,Nz5k3UPf2EiqH9dhVuy4AA,,,Y,0,0,,,2017-01-24 14:42,2017-01-24 14:53,CLEMENTL,CLEMENTL
1057,49428884,751235,10651592,1227199,1,100,N,N,N,CP_Drtn,TT_Task,DT_FixedDUR2,RV_OK,TK_Complete,823A-ST-SCCT-5a-2080,Removal internal falsework and formwork for roof,,,,0,0,0,416,8,32,0,0,,2013-01-31 08:00,2013-01-31 18:00,2014-01-05 18:00,2014-01-05 18:00,,2017-01-01 00:00,2017-01-01 00:00,,,2013-06-29 08:00,2013-06-29 18:00,,,,,PT_Normal,,,,,7JU1WtIdRvSoFClNEEKNOw,1apvo+8f90WCMDHYF9Ep/Q,,,Y,0,0,,,2017-01-24 14:42,2017-01-24 14:53,CLEMENTL,CLEMENTL
1058,49428885,751235,10651592,1239098,1,100,N,N,N,CP_Drtn,TT_Task,DT_FixedDUR2,RV_OK,TK_Complete,823A-ST-SCCT-5a-2060,Preparation of construction joint for wall and roof,,,,0,0,0,0,8,0,0,0,,2013-01-28 08:00,2013-01-28 18:00,2014-01-05 18:00,2014-01-05 18:00,,2017-01-01 00:00,2017-01-01 00:00,,,2013-06-19 08:00,2013-06-19 18:00,,,,,PT_Normal,,,,,hmj5YpXpTReXbzFQMcV5NA,Hp3YZIh7iEqqQMWZX9FPCA,,,Y,0,0,,,2017-01-24 14:42,2017-01-24 14:53,CLEMENTL,CLEMENTL
1059,49428886,751235,10651594,1239098,1,100,N,N,N,CP_Drtn,TT_Task,DT_FixedDUR2,RV_OK,TK_Complete,823A-ST-SCCT-6b-3070,Preparation of construction joint for base slab,,,,0,0,0,0,8,0,0,0,,2012-12-15 08:00,2012-12-17 18:00,2014-01-05 18:00,2014-01-05 18:00,,2017-01-01 00:00,2017-01-01 00:00,,,2013-06-08 08:00,2013-06-08 18:00,,,,,PT_Normal,,,,,TAfTKUd5RgGNhSBt9u6rJA,72gI+6sat0GNXoCiUhiZCg,,,Y,0,0,,,2017-01-24 14:42,2017-01-24 14:53,CLEMENTL,CLEMENTL
1060,49428887,751235,10651594,1227199,1,100,N,N,N,CP_Drtn,TT_Task,DT_FixedDUR2,RV_OK,TK_Complete,823A-ST-SCCT-6b-3190,Side walkway and cable bracket (204m3),,,,0,0,0,1040,40,80,0,0,,2015-10-06 08:00,2015-10-10 18:00,2017-06-12 18:00,2017-06-12 18:00,,2017-01-01 00:00,2017-01-01 00:00,,,2015-11-09 08:00,2015-11-13 18:00,,,,,PT_Normal,,,,,CftmSqbaR4yDGTfwxb/j0Q,uAvtwHZlxUi61XsF6wwcHA,,,N,0,0,,,2017-01-24 14:42,2017-01-24 15:36,CLEMENTL,CLEMENTL
1061,49428888,751235,10651594,1227199,1,100,N,N,N,CP_Drtn,TT_Task,DT_FixedDUR2,RV_OK,TK_Complete,823A-ST-SCCT-6b-3110,Erect internal formwork & Falsework for wall and roof,,,,0,0,0,624,24,48,0,0,,2012-12-27 08:00,2013-01-03 18:00,2014-01-05 18:00,2014-01-05 18:00,,2017-01-01 00:00,2017-01-01 00:00,,,2013-06-11 08:00,2013-06-14 18:00,,,,,PT_Normal,,,,,iJEq0cewRLKCCFBwM01aFg,DUtBVILtE0C3h5MzGw1Zuw,,,Y,0,0,,,2017-01-24 14:42,2017-01-24 14:53,CLEMENTL,CLEMENTL
1062,49428889,751235,10651594,1227199,1,100,N,N,N,CP_Drtn,TT_Task,DT_FixedDUR2,RV_OK,TK_Complete,823A-ST-SCCT-6b-3120,Rebar fixing for wall and roof,,,,0,0,0,544,16,32,0,0,,2013-01-10 08:00,2013-01-21 18:00,2014-01-05 18:00,2014-01-05 18:00,,2017-01-01 00:00,2017-01-01 00:00,,,2013-06-15 08:00,2013-06-17 18:00,,,,,PT_Normal,,,,,gtMbFoQSTlOMfizbviqyFQ,Pnl3ltLjFEm0OFNpyZK2NA,,,Y,0,0,,,2017-01-24 14:42,2017-01-24 14:53,CLEMENTL,CLEMENTL
1063,49428890,751235,10651594,1227199,1,100,N,N,N,CP_Drtn,TT_Task,DT_FixedDUR2,RV_OK,TK_Complete,823A-ST-SCCT-6b-3130,Erect external formwork for wall,,,,0,0,0,208,8,16,0,0,,2013-01-21 08:00,2013-01-25 18:00,2014-01-05 18:00,2014-01-05 18:00,,2017-01-01 00:00,2017-01-01 00:00,,,2013-06-18 08:00,2013-06-18 18:00,,,,,PT_Normal,,,,,PO86uZVGTzmHvCfpM5NT5w,Zg0NeiKtD0GRtDju67vzFg,,,Y,0,0,,,2017-01-24 14:42,2017-01-24 14:53,CLEMENTL,CLEMENTL
1064,49428891,751235,10651594,1227199,1,100,N,N,N,CP_Drtn,TT_Task,DT_FixedDUR2,RV_OK,TK_Complete,823A-ST-SCCT-6b-3140,Concreting for wall and roof (444m3),,,,0,0,0,208,8,16,0,0,,2013-01-26 08:00,2013-01-26 18:00,2014-01-05 18:00,2014-01-05 18:00,,2017-01-01 00:00,2017-01-01 00:00,,,2013-06-19 08:00,2013-06-19 18:00,,,,,PT_Normal,,,,,31TpSqm+TRm4c6uEzQNx0A,Aj6nMUlH6ESmkn68+FYsCA,,,Y,0,0,,,2017-01-24 14:42,2017-01-24 14:53,CLEMENTL,CLEMENTL
1065,49428892,751235,10651594,1227199,1,100,N,N,N,CP_Drtn,TT_Task,DT_FixedDUR2,RV_OK,TK_Complete,823A-ST-SCCT-6b-3170,Removal external and internal formwork for wall,,,,0,0,0,144,16,16,0,0,,2013-02-05 08:00,2013-02-07 18:00,2014-01-05 18:00,2014-01-05 18:00,,2017-01-01 00:00,2017-01-01 00:00,,,2013-06-21 08:00,2013-06-22 18:00,,,,,PT_Normal,,,,,6gXtdgXQSwiEcayzDQuGuA,eC1oLmunuUum1ayAvhH0kg,,,Y,0,0,,,2017-01-24 14:42,2017-01-24 14:53,CLEMENTL,CLEMENTL
1066,49428893,751235,10651594,1239099,1,100,N,N,N,CP_Drtn,TT_Task,DT_FixedDUR2,RV_OK,TK_Complete,823A-ST-SCCT-6b-3150,Curing for wall and roof,,,,0,0,0,224,80,0,0,0,,2013-01-26 08:00,2013-02-06 18:00,2014-01-05 18:00,2014-01-05 18:00,,2017-01-01 00:00,2017-01-01 00:00,,,2013-06-20 08:00,2013-06-29 18:00,,,,,PT_Normal,,,,,WduIMi/0RLePKNqyJ3V3Qg,KZI2dEebk0C8mSuxpuKluw,,,N,0,0,,,2017-01-24 14:42,2017-01-24 14:53,CLEMENTL,CLEMENTL
1067,49428894,751235,10651594,1227199,1,100,N,N,N,CP_Drtn,TT_Task,DT_FixedDUR2,RV_OK,TK_Complete,823A-ST-SCCT-6b-3180,Removal internal falsework and formwork for roof,,,,0,0,0,416,8,32,0,0,,2013-02-08 08:00,2013-02-09 18:00,2014-01-05 18:00,2014-01-05 18:00,,2017-01-01 00:00,2017-01-01 00:00,,,2013-07-02 08:00,2013-07-02 18:00,,,,,PT_Normal,,,,,9UHEdRk0SQ2hN9/vkUDaHw,6ZUba7f+qUero1C0Wj4PHg,,,N,0,0,,,2017-01-24 14:42,2017-01-24 14:53,CLEMENTL,CLEMENTL
1068,49428895,751235,10651594,1227199,1,100,N,N,N,CP_Drtn,TT_Task,DT_FixedDUR2,RV_OK,TK_Complete,823A-ST-SCCT-6b-3010,Placing of waterproof member T-lock & testing for base slab,,,,0,0,0,64,8,0,0,0,,2012-11-27 08:00,2012-11-27 18:00,2014-01-05 18:00,2014-01-05 18:00,,2017-01-01 00:00,2017-01-01 00:00,,,2013-06-01 08:00,2013-06-01 18:00,,,,,PT_Normal,,,,,3J9FUx8wTQKn7enV+qcEdw,MZm+tSiru0eCCcbeeDi1TQ,,,Y,0,0,,,2017-01-24 14:42,2017-01-24 14:53,CLEMENTL,CLEMENTL
1069,49428896,751235,10651594,1227199,1,100,N,N,N,CP_Drtn,TT_Task,DT_FixedDUR2,RV_OK,TK_Complete,823A-ST-SCCT-6b-3020,Erect external formwork for base slab,,,,0,0,0,104,8,8,0,0,,2012-11-28 08:00,2012-12-01 18:00,2014-01-05 18:00,2014-01-05 18:00,,2017-01-01 00:00,2017-01-01 00:00,,,2013-06-03 08:00,2013-06-03 18:00,,,,,PT_Normal,,,,,aQXr+C7tTTebW0jS8mHyRg,KnkesamYp0mvmjAh5Ftm5w,,,Y,0,0,,,2017-01-24 14:42,2017-01-24 14:53,CLEMENTL,CLEMENTL
1070,49428897,751235,10651594,1227199,1,100,N,N,N,CP_Drtn,TT_Task,DT_FixedDUR2,RV_OK,TK_Complete,823A-ST-SCCT-6b-3030,Rebar fixing for base slab,,,,0,0,0,272,16,16,0,0,,2012-12-03 08:00,2012-12-05 18:00,2014-01-05 18:00,2014-01-05 18:00,,2017-01-01 00:00,2017-01-01 00:00,,,2013-06-04 08:00,2013-06-05 18:00,,,,,PT_Normal,,,,,wjbv1+6fRbCdSje+s3LnaQ,+4Tl1RpVqUCbU9ux/XGXAQ,,,Y,0,0,,,2017-01-24 14:42,2017-01-24 14:53,CLEMENTL,CLEMENTL
1071,49428898,751235,10651594,1227199,1,100,N,N,N,CP_Drtn,TT_Task,DT_FixedDUR2,RV_OK,TK_Complete,823A-ST-SCCT-6b-3040,Erect internal kicker formwork for base slab,,,,0,0,0,288,8,16,0,0,,2012-12-06 08:00,2012-12-06 18:00,2014-01-05 18:00,2014-01-05 18:00,,2017-01-01 00:00,2017-01-01 00:00,,,2013-06-06 08:00,2013-06-06 18:00,,,,,PT_Normal,,,,,DoJTQORbQzWFi1L5kKEZQQ,EaTuP4YQ2U+zboLJ51CbSg,,,Y,0,0,,,2017-01-24 14:42,2017-01-24 14:53,CLEMENTL,CLEMENTL
1072,49428899,751235,10651594,1227199,1,100,N,N,N,CP_Drtn,TT_Task,DT_FixedDUR2,RV_OK,TK_Complete,823A-ST-SCCT-6b-3050,Concreting for base slab (363m3),,,,0,0,0,208,8,16,0,0,,2012-12-07 08:00,2012-12-07 18:00,2014-01-05 18:00,2014-01-05 18:00,,2017-01-01 00:00,2017-01-01 00:00,,,2013-06-07 08:00,2013-06-07 18:00,,,,,PT_Normal,,,,,Iaxnowa9QQi2nYaqnS98fA,14LlmblIrkOCgduG1ZHauQ,,,Y,0,0,,,2017-01-24 14:42,2017-01-24 14:53,CLEMENTL,CLEMENTL
1073,49428900,751235,10651594,1239099,1,100,N,N,N,CP_Drtn,TT_Task,DT_FixedDUR2,RV_OK,TK_Complete,823A-ST-SCCT-6b-3060,Curing for base slab,,,,0,224,0,224,56,0,0,0,,2012-12-08 08:00,2012-12-14 18:00,2017-06-12 18:00,2017-06-12 18:00,,2017-01-01 00:00,2017-01-01 00:00,,,2013-06-08 08:00,2013-06-14 18:00,,,,,PT_Normal,,,,,PnDxDdTBS5WCEQL+e/kSsw,TkxqqLMUw0G5A/FZ+jdf4g,,,N,224,0,,,2017-01-24 14:42,2017-01-24 15:36,CLEMENTL,CLEMENTL
1074,49428901,751235,10651594,1227199,1,100,N,N,N,CP_Drtn,TT_Task,DT_FixedDUR2,RV_OK,TK_Complete,823A-ST-SCCT-6b-3080,Removal of formwork for base slab,,,,0,0,0,72,8,8,0,0,,2012-12-18 08:00,2012-12-18 18:00,2014-01-05 18:00,2014-01-05 18:00,,2017-01-01 00:00,2017-01-01 00:00,,,2013-06-10 08:00,2013-06-10 18:00,,,,,PT_Normal,,,,,sgsCNmyJTAer22UgfKILEg,h78l4uv1pUisJYg3fYpP7g,,,Y,0,0,,,2017-01-24 14:42,2017-01-24 14:53,CLEMENTL,CLEMENTL
1075,49428902,751235,10651595,1227199,1,100,N,N,N,CP_Drtn,TT_Task,DT_FixedDUR2,RV_OK,TK_Complete,823A-ST-SCCT-6b-1150,Removal external and internal formwork for wall,,,,0,0,0,144,16,16,0,0,,2013-01-30 08:00,2013-01-31 18:00,2014-01-05 18:00,2014-01-05 18:00,,2017-01-01 00:00,2017-01-01 00:00,,,2013-07-17 08:00,2013-07-18 18:00,,,,,PT_Normal,,,,,TlIkWKN+SKC7Qh/jcSTcoA,QBcdXC+4pEOtwyPFDdHuFg,,,Y,0,0,,,2017-01-24 14:42,2017-01-24 14:53,CLEMENTL,CLEMENTL
1076,49428903,751235,10651595,1239099,1,100,N,N,N,CP_Drtn,TT_Task,DT_FixedDUR2,RV_OK,TK_Complete,823A-ST-SCCT-6b-1130,Curing for wall and roof,,,,0,0,0,224,80,0,0,0,,2013-01-16 08:00,2013-01-28 18:00,2014-01-05 18:00,2014-01-05 18:00,,2017-01-01 00:00,2017-01-01 00:00,,,2013-07-16 08:00,2013-07-25 18:00,,,,,PT_Normal,,,,,aVD1bFqJSfO6NPvNhS4dyg,wyRbGMa850qFUvmxQdQ2Aw,,,N,0,0,,,2017-01-24 14:42,2017-01-24 14:53,CLEMENTL,CLEMENTL
1077,49428904,751235,10651595,1227199,1,100,N,N,N,CP_Drtn,TT_Task,DT_FixedDUR2,RV_OK,TK_Complete,823A-ST-SCCT-6b-1160,Removal internal falsework and formwork for roof,,,,0,0,0,416,8,32,0,0,,2013-02-01 08:00,2013-02-01 18:00,2014-01-05 18:00,2014-01-05 18:00,,2017-01-01 00:00,2017-01-01 00:00,,,2013-07-26 08:00,2013-07-26 18:00,,,,,PT_Normal,,,,,SVxHscGzRXOU8kfw0HUSHw,paT3R1UrEUKC6DjYmlIdaQ,,,N,0,0,,,2017-01-24 14:42,2017-01-24 14:53,CLEMENTL,CLEMENTL
1078,49428905,751235,10651595,1239098,1,100,N,N,N,CP_Drtn,TT_Task,DT_FixedDUR2,RV_OK,TK_Complete,823A-ST-SCCT-6b-1070,Preparation of construction joint for base slab,,,,0,0,0,0,8,0,0,0,,2012-12-17 08:00,2012-12-17 18:00,2014-01-05 18:00,2014-01-05 18:00,,2017-01-01 00:00,2017-01-01 00:00,,,2013-06-08 08:00,2013-06-08 18:00,,,,,PT_Normal,,,,,/9+6CITUQgin+2/VoaV03Q,0jyQBq7bnECS84f/cktDnA,,,Y,0,0,,,2017-01-24 14:42,2017-01-24 14:53,CLEMENTL,CLEMENTL
1079,49428906,751235,10651595,1239098,1,100,N,N,N,CP_Drtn,TT_Task,DT_FixedDUR2,RV_OK,TK_Complete,823A-ST-SCCT-6b-1140,Preparation of construction joint for wall and roof,,,,0,0,0,0,8,0,0,0,,2013-01-29 08:00,2013-01-29 18:00,2014-01-05 18:00,2014-01-05 18:00,,2017-01-01 00:00,2017-01-01 00:00,,,2013-07-16 08:00,2013-07-16 18:00,,,,,PT_Normal,,,,,lV0BKJGvTk+BynO7FaWgiA,,,,Y,0,0,,,2017-01-24 14:42,2017-01-24 14:53,CLEMENTL,CLEMENTL
1080,49428907,751235,10651595,1227199,1,100,N,N,N,CP_Drtn,TT_Task,DT_FixedDUR2,RV_OK,TK_Complete,823A-ST-SCCT-6b-1010,Placing of waterproof member T-lock & testing for base slab,,,,0,64,0,64,8,0,0,0,,2012-11-27 08:00,2012-11-27 18:00,2014-01-05 18:00,2014-01-05 18:00,,2017-01-01 00:00,2017-01-01 00:00,,,2012-11-27 08:00,2012-11-27 18:00,,,,,PT_Normal,,,,,Kxe9rXzjTuK9XT6MlMQzoQ,FAnsXEBKHUyjSMSWfaz1IA,,,Y,64,0,,,2017-01-24 14:42,2017-01-24 14:53,CLEMENTL,CLEMENTL
1081,49428908,751235,10651595,1227199,1,100,N,N,N,CP_Drtn,TT_Task,DT_FixedDUR2,RV_OK,TK_Complete,823A-ST-SCCT-6b-1020,Erect external formwork for base slab,,,,0,104,0,104,32,8,8,0,,2012-11-28 08:00,2012-12-01 18:00,2014-01-05 18:00,2014-01-05 18:00,,2017-01-01 00:00,2017-01-01 00:00,,,2012-11-28 08:00,2012-12-01 18:00,,,,,PT_Normal,,,,,5i16IxdDSGO1kApkMRj2Cw,eHH3oKG8tUO1lv8Toz5X2g,,,Y,104,8,,,2017-01-24 14:42,2017-01-24 14:53,CLEMENTL,CLEMENTL
1082,49428909,751235,10651595,1227199,1,100,N,N,N,CP_Drtn,TT_Task,DT_FixedDUR2,RV_OK,TK_Complete,823A-ST-SCCT-6b-1030,Rebar fixing for base slab,,,,0,0,0,272,24,16,0,0,,2012-12-03 08:00,2012-12-05 18:00,2014-01-05 18:00,2014-01-05 18:00,,2017-01-01 00:00,2017-01-01 00:00,,,2013-06-03 08:00,2013-06-05 18:00,,,,,PT_Normal,,,,,YYX2whpcSe+x7ia0DoFtHg,k7RMHqiULECZmr0BzVsz9w,,,Y,0,0,,,2017-01-24 14:42,2017-01-24 14:53,CLEMENTL,CLEMENTL
1083,49428910,751235,10651595,1227199,1,100,N,N,N,CP_Drtn,TT_Task,DT_FixedDUR2,RV_OK,TK_Complete,823A-ST-SCCT-6b-1040,Erect internal kicker formwork for base slab,,,,0,0,0,288,8,16,0,0,,2012-12-06 08:00,2012-12-06 18:00,2014-01-05 18:00,2014-01-05 18:00,,2017-01-01 00:00,2017-01-01 00:00,,,2013-06-06 08:00,2013-06-06 18:00,,,,,PT_Normal,,,,,qMrLk11ZRAiquN5VIn+H0A,yiOLQ1FGaUyJdnoJ7h9sww,,,Y,0,0,,,2017-01-24 14:42,2017-01-24 14:53,CLEMENTL,CLEMENTL
1084,49428911,751235,10651595,1227199,1,100,N,N,N,CP_Drtn,TT_Task,DT_FixedDUR2,RV_OK,TK_Complete,823A-ST-SCCT-6b-1050,Concreting for base slab (363m3),,,,0,0,0,208,8,16,0,0,,2012-12-07 08:00,2012-12-07 18:00,2014-01-05 18:00,2014-01-05 18:00,,2017-01-01 00:00,2017-01-01 00:00,,,2013-06-07 08:00,2013-06-07 18:00,,,,,PT_Normal,,,,,cRyc+qG4SdWAvMzxytOSNA,KNtq/HHB+EKTm1rNrdEVZw,,,Y,0,0,,,2017-01-24 14:42,2017-01-24 14:53,CLEMENTL,CLEMENTL
1085,49428912,751235,10651595,1239099,1,100,N,N,N,CP_Drtn,TT_Task,DT_FixedDUR2,RV_OK,TK_Complete,823A-ST-SCCT-6b-1060,Curing for base slab,,,,0,0,0,224,56,0,0,0,,2012-12-08 08:00,2012-12-15 18:00,2014-01-05 18:00,2014-01-05 18:00,,2017-01-01 00:00,2017-01-01 00:00,,,2013-06-08 08:00,2013-06-14 18:00,,,,,PT_Normal,,,,,X80SiRNJSyuMSksXMrPY8Q,8eHlx3ajIkmbd5RWjWxn/g,,,Y,0,0,,,2017-01-24 14:42,2017-01-24 14:53,CLEMENTL,CLEMENTL
1086,49428913,751235,10651595,1227199,1,100,N,N,N,CP_Drtn,TT_Task,DT_FixedDUR2,RV_OK,TK_Complete,823A-ST-SCCT-6b-1080,Removal of formwork for base slab,,,,0,0,0,72,8,8,0,0,,2012-12-18 08:00,2012-12-18 18:00,2014-01-05 18:00,2014-01-05 18:00,,2017-01-01 00:00,2017-01-01 00:00,,,2013-06-10 08:00,2013-06-10 18:00,,,,,PT_Normal,,,,,BftKeXkRTL6LWK6+/x9BJw,B18bLvJHF0+FgFijo6W2sg,,,Y,0,0,,,2017-01-24 14:42,2017-01-24 14:53,CLEMENTL,CLEMENTL
1087,49428914,751235,10651595,1227199,1,100,N,N,N,CP_Drtn,TT_Task,DT_FixedDUR2,RV_OK,TK_Complete,823A-ST-SCCT-6b-1170,Side walkway and cable bracket,,,,0,0,0,1040,40,80,0,0,,2014-12-01 08:00,2014-12-05 18:00,2017-06-12 18:00,2017-06-12 18:00,,2017-01-01 00:00,2017-01-01 00:00,,,2015-01-02 08:00,2015-01-07 18:00,,,,,PT_Normal,,,,,m8gDFTTQRoWsD3BDq4ocxQ,cCoJW1DoJ0eIAKXPrlrP+A,,,N,0,0,,,2017-01-24 14:42,2017-01-24 15:36,CLEMENTL,CLEMENTL
1088,49428915,751235,10651595,1227199,1,100,N,N,N,CP_Drtn,TT_Task,DT_FixedDUR2,RV_OK,TK_Complete,823A-ST-SCCT-6b-1090,Erect internal formwork & Falsework for wall and roof,,,,0,0,0,624,48,48,0,0,,2012-12-29 08:00,2013-01-03 18:00,2014-01-05 18:00,2014-01-05 18:00,,2017-01-01 00:00,2017-01-01 00:00,,,2013-06-26 08:00,2013-07-03 18:00,,,,,PT_Normal,,,,,sr0/M5lcRJq2byQrp9Ql2A,ptdpmbhloECmEKjwzSbSCQ,,,Y,0,0,,,2017-01-24 14:42,2017-01-24 14:53,CLEMENTL,CLEMENTL
1089,49428916,751235,10651595,1227199,1,100,N,N,N,CP_Drtn,TT_Task,DT_FixedDUR2,RV_OK,TK_Complete,823A-ST-SCCT-6b-1100,Rebar fixing for wall and roof,,,,0,0,0,544,40,32,0,0,,2013-01-04 08:00,2013-01-09 18:00,2014-01-05 18:00,2014-01-05 18:00,,2017-01-01 00:00,2017-01-01 00:00,,,2013-07-04 08:00,2013-07-09 18:00,,,,,PT_Normal,,,,,IKUc43gVTmKY8MO7+DxH+w,bMFDX/jEC0eHZx0QUJh1og,,,Y,0,0,,,2017-01-24 14:42,2017-01-24 14:53,CLEMENTL,CLEMENTL
1090,49428917,751235,10651595,1227199,1,100,N,N,N,CP_Drtn,TT_Task,DT_FixedDUR2,RV_OK,TK_Complete,823A-ST-SCCT-6b-1110,Erect external formwork for wall and roof,,,,0,0,0,208,32,16,0,0,,2013-01-10 08:00,2013-01-14 18:00,2014-01-05 18:00,2014-01-05 18:00,,2017-01-01 00:00,2017-01-01 00:00,,,2013-07-10 08:00,2013-07-13 18:00,,,,,PT_Normal,,,,,KyiD7UxISMe4Qm/4pAyoBg,OqlqAz97dUGmI1bu+PjXGg,,,Y,0,0,,,2017-01-24 14:42,2017-01-24 14:53,CLEMENTL,CLEMENTL
1091,49428918,751235,10651595,1227199,1,100,N,N,N,CP_Drtn,TT_Task,DT_FixedDUR2,RV_OK,TK_Complete,823A-ST-SCCT-6b-1120,Concreting for wall and roof (450m3),,,,0,0,0,208,8,16,0,0,,2013-01-15 08:00,2013-01-15 18:00,2014-01-05 18:00,2014-01-05 18:00,,2017-01-01 00:00,2017-01-01 00:00,,,2013-07-15 08:00,2013-07-15 18:00,,,,,PT_Normal,,,,,wGmed0dYQfu0b6kx7jlxWg,g+xpoxGKXEyU+POxw8Uutw,,,Y,0,0,,,2017-01-24 14:42,2017-01-24 14:53,CLEMENTL,CLEMENTL
1092,49428919,751235,10651596,1227199,1,100,N,N,N,CP_Drtn,TT_Task,DT_FixedDUR2,RV_OK,TK_Complete,823A-ST-SCCT-6b-2050,Concreting for base slab (363m3),,,,0,0,0,208,8,16,0,0,,2012-12-07 08:00,2012-12-07 18:00,2014-01-05 18:00,2014-01-05 18:00,,2017-01-01 00:00,2017-01-01 00:00,,,2013-06-07 08:00,2013-06-07 18:00,,,,,PT_Normal,,,,,w5+FznMWSheuqy7Xbdj5Tw,H6dQDCRGAUyZFR2vWVKzSA,,,Y,0,0,,,2017-01-24 14:42,2017-01-24 14:53,CLEMENTL,CLEMENTL
1093,49428920,751235,10651596,1239099,1,100,N,N,N,CP_Drtn,TT_Task,DT_FixedDUR2,RV_OK,TK_Complete,823A-ST-SCCT-6b-2060,Curing for base slab,,,,0,0,0,224,56,0,0,0,,2012-12-08 08:00,2012-12-15 18:00,2014-01-05 18:00,2014-01-05 18:00,,2017-01-01 00:00,2017-01-01 00:00,,,2013-06-08 08:00,2013-06-14 18:00,,,,,PT_Normal,,,,,qnmol2FmSCqcjVBQYW1iDA,iJqLjzV/akCeWvqCSgKHUA,,,Y,0,0,,,2017-01-24 14:42,2017-01-24 14:53,CLEMENTL,CLEMENTL
1094,49428921,751235,10651596,1227199,1,100,N,N,N,CP_Drtn,TT_Task,DT_FixedDUR2,RV_OK,TK_Complete,823A-ST-SCCT-6b-2080,Removal of formwork for base slab,,,,0,0,0,72,8,8,0,0,,2012-12-18 08:00,2012-12-18 18:00,2014-01-05 18:00,2014-01-05 18:00,,2017-01-01 00:00,2017-01-01 00:00,,,2013-06-10 08:00,2013-06-10 18:00,,,,,PT_Normal,,,,,xmbsKJP8RUm8quKz3vJhgA,JADFTe/rB02tSD+DaGwn+g,,,Y,0,0,,,2017-01-24 14:42,2017-01-24 14:53,CLEMENTL,CLEMENTL
1095,49428922,751235,10651596,1239098,1,100,N,N,N,CP_Drtn,TT_Task,DT_FixedDUR2,RV_OK,TK_Complete,823A-ST-SCCT-6b-2070,Preparation of construction joint for base slab,,,,0,0,0,0,8,0,0,0,,2012-12-17 08:00,2012-12-17 18:00,2014-01-05 18:00,2014-01-05 18:00,,2017-01-01 00:00,2017-01-01 00:00,,,2013-06-08 08:00,2013-06-08 18:00,,,,,PT_Normal,,,,,PTadIbffQdaT3QpgfFOcQw,/piElVtHp0GnFTkg+Lzwyw,,,Y,0,0,,,2017-01-24 14:42,2017-01-24 14:53,CLEMENTL,CLEMENTL
1096,49428923,751235,10651596,1227199,1,100,N,N,N,CP_Drtn,TT_Task,DT_FixedDUR2,RV_OK,TK_Complete,823A-ST-SCCT-6b-2100,Erect external formwork for central slab,,,,0,0,0,104,8,8,0,0,,2012-12-11 08:00,2012-12-11 18:00,2014-01-05 18:00,2014-01-05 18:00,,2017-01-01 00:00,2017-01-01 00:00,,,2013-06-11 08:00,2013-06-11 18:00,,,,,PT_Normal,,,,,btwHOFJdTNWbqBCl43qa0w,uFKMM0ExEESKaTeY3cR5/Q,,,Y,0,0,,,2017-01-24 14:42,2017-01-24 14:53,CLEMENTL,CLEMENTL
1097,49428924,751235,10651596,1227199,1,100,N,N,N,CP_Drtn,TT_Task,DT_FixedDUR2,RV_OK,TK_Complete,823A-ST-SCCT-6b-2090,Rebar fixing for central slab,,,,0,0,0,272,8,16,0,0,,2012-12-10 08:00,2012-12-11 18:00,2014-01-05 18:00,2014-01-05 18:00,,2017-01-01 00:00,2017-01-01 00:00,,,2013-06-11 08:00,2013-06-11 18:00,,,,,PT_Normal,,,,,tvXI5iGVTkGVslx3sgyx6w,gaJkLaWM4kKiMytx9gr15A,,,Y,0,0,,,2017-01-24 14:42,2017-01-24 14:53,CLEMENTL,CLEMENTL
1098,49428925,751235,10651596,1227199,1,100,N,N,N,CP_Drtn,TT_Task,DT_FixedDUR2,RV_OK,TK_Complete,823A-ST-SCCT-6b-2110,Concreting for central slab,,,,0,0,0,208,8,16,0,0,,2012-12-12 08:00,2012-12-12 18:00,2014-01-05 18:00,2014-01-05 18:00,,2017-01-01 00:00,2017-01-01 00:00,,,2013-06-13 08:00,2013-06-13 18:00,,,,,PT_Normal,,,,,L3vapambQUm3mkfK7iw+6A,NLmlysQqBEmsL/i4ibmUFw,,,Y,0,0,,,2017-01-24 14:42,2017-01-24 14:53,CLEMENTL,CLEMENTL
1099,49428926,751235,10651596,1239099,1,100,N,N,N,CP_Drtn,TT_Task,DT_FixedDUR2,RV_OK,TK_Complete,823A-ST-SCCT-6b-2120,Curing for central slab,,,,0,0,0,224,56,0,0,0,,2012-12-13 08:00,2012-12-19 18:00,2014-01-05 18:00,2014-01-05 18:00,,2017-01-01 00:00,2017-01-01 00:00,,,2013-06-14 08:00,2013-06-20 18:00,,,,,PT_Normal,,,,,ONnVgn/PTjWCqmKTKzwGjA,S5L9HroTUUic9/8dOjvdUw,,,Y,0,0,,,2017-01-24 14:42,2017-01-24 14:53,CLEMENTL,CLEMENTL
1100,49428927,751235,10651596,1227199,1,100,N,N,N,CP_Drtn,TT_Task,DT_FixedDUR2,RV_OK,TK_Complete,823A-ST-SCCT-6b-2140,Removal of formwork for central slab,,,,0,0,0,72,8,8,0,0,,2012-12-21 08:00,2012-12-21 18:00,2014-01-05 18:00,2014-01-05 18:00,,2017-01-01 00:00,2017-01-01 00:00,,,2013-06-15 08:00,2013-06-15 18:00,,,,,PT_Normal,,,,,MWa5P60kTOaWt4WqK6OvCA,vfA++KOXGE+b1jFGWyqpbQ,,,Y,0,0,,,2017-01-24 14:42,2017-01-24 14:53,CLEMENTL,CLEMENTL
1101,49428928,751235,10651596,1227199,1,100,N,N,N,CP_Drtn,TT_Task,DT_FixedDUR2,RV_OK,TK_Complete,823A-ST-SCCT-6b-2150,Removal strut S5 and S4,,,,0,0,0,144,64,16,0,0,,2012-12-22 08:00,2012-12-31 18:00,2014-01-05 18:00,2014-01-05 18:00,,2017-01-01 00:00,2017-01-01 00:00,,,2013-06-17 08:00,2013-06-25 18:00,,,,,PT_Normal,,,,,l1/7IVZnTYiOy5qbPVIecQ,EQ5ab4l6QUWVE4pKvVIyPg,,,Y,0,0,,,2017-01-24 14:42,2017-01-24 14:53,CLEMENTL,CLEMENTL
1102,49428929,751235,10651596,1239098,1,100,N,N,N,CP_Drtn,TT_Task,DT_FixedDUR2,RV_OK,TK_Complete,823A-ST-SCCT-6b-2130,Preparation of construction joint for central slab,,,,0,0,0,0,8,0,0,0,,2012-12-20 08:00,2012-12-20 18:00,2014-01-05 18:00,2014-01-05 18:00,,2017-01-01 00:00,2017-01-01 00:00,,,2013-06-14 08:00,2013-06-14 18:00,,,,,PT_Normal,,,,,LcuQhbVOTKOqRg7CyFdmuw,095d3nUy+ESoWuPwB4GTfA,,,Y,0,0,,,2017-01-24 14:42,2017-01-24 14:53,CLEMENTL,CLEMENTL
1103,49428930,751235,10651596,1227199,1,100,N,N,N,CP_Drtn,TT_Task,DT_FixedDUR2,RV_OK,TK_Complete,823A-ST-SCCT-6b-2240,Side walkway and cable bracket (204m3),,,,0,1040,0,1040,40,80,80,0,,2015-07-02 08:00,2015-10-07 18:00,2017-06-12 18:00,2017-06-12 18:00,,2017-01-01 00:00,2017-01-01 00:00,,,2015-09-16 08:00,2015-09-21 18:00,,,,,PT_Normal,,,,,hUuGNp0hRe2EDKqVhJFS5Q,UnXEklMbZEe4y7nA3+ehVQ,,,N,1040,80,,,2017-01-24 14:42,2017-01-24 15:36,CLEMENTL,CLEMENTL
1104,49428931,751235,10651596,1227199,1,100,N,N,N,CP_Drtn,TT_Task,DT_FixedDUR2,RV_OK,TK_Complete,823A-ST-SCCT-6b-2160,Erect internal formwork & Falsework for wall and roof,,,,0,0,0,624,48,48,0,0,,2012-12-27 08:00,2013-01-03 18:00,2014-01-05 18:00,2014-01-05 18:00,,2017-01-01 00:00,2017-01-01 00:00,,,2013-06-26 08:00,2013-07-03 18:00,,,,,PT_Normal,,,,,XCB5onR8TkiLgx/2UMZUig,Qa5O3rNsnU6wIpEq3qMnSw,,,Y,0,0,,,2017-01-24 14:42,2017-01-24 14:53,CLEMENTL,CLEMENTL
1105,49428932,751235,10651596,1227199,1,100,N,N,N,CP_Drtn,TT_Task,DT_FixedDUR2,RV_OK,TK_Complete,823A-ST-SCCT-6b-2170,Rebar fixing for wall and roof,,,,0,0,0,544,72,32,0,0,,2013-01-10 08:00,2013-01-21 18:00,2014-01-05 18:00,2014-01-05 18:00,,2017-01-01 00:00,2017-01-01 00:00,,,2013-07-04 08:00,2013-07-13 18:00,,,,,PT_Normal,,,,,1M8n4m1sQquMZyFACawrKA,QsloRUz80EuRiyFdPd7Btg,,,Y,0,0,,,2017-01-24 14:42,2017-01-24 14:53,CLEMENTL,CLEMENTL
1106,49428933,751235,10651596,1227199,1,100,N,N,N,CP_Drtn,TT_Task,DT_FixedDUR2,RV_OK,TK_Complete,823A-ST-SCCT-6b-2180,Erect external formwork for wall,,,,0,208,0,208,40,16,16,0,,2013-01-21 08:00,2013-01-25 18:00,2014-01-05 18:00,2014-01-05 18:00,,2017-01-01 00:00,2017-01-01 00:00,,,2013-07-15 08:00,2013-07-19 18:00,,,,,PT_Normal,,,,,MHfJ7ZjSTN6tCKICvRRLbg,e49EV+ndnk6CYaZtViPqQA,,,Y,208,16,,,2017-01-24 14:42,2017-01-24 14:53,CLEMENTL,CLEMENTL
1107,49428934,751235,10651596,1227199,1,100,N,N,N,CP_Drtn,TT_Task,DT_FixedDUR2,RV_OK,TK_Complete,823A-ST-SCCT-6b-2190,Concreting for wall and roof (450m3),,,,0,0,0,208,8,16,0,0,,2013-01-26 08:00,2013-01-26 18:00,2014-01-05 18:00,2014-01-05 18:00,,2017-01-01 00:00,2017-01-01 00:00,,,2013-07-20 08:00,2013-07-20 18:00,,,,,PT_Normal,,,,,bZ3a01afR5qIKfSpg6g76Q,A3EayIQVX0iXuMQb/CjRKg,,,Y,0,0,,,2017-01-24 14:42,2017-01-24 14:53,CLEMENTL,CLEMENTL
1108,49428935,751235,10651596,1239099,1,100,N,N,N,CP_Drtn,TT_Task,DT_FixedDUR2,RV_OK,TK_Complete,823A-ST-SCCT-6b-2200,Curing for wall and roof,,,,0,0,0,224,80,0,0,0,,2013-01-28 08:00,2013-02-07 18:00,2014-01-05 18:00,2014-01-05 18:00,,2017-01-01 00:00,2017-01-01 00:00,,,2013-07-21 08:00,2013-07-30 18:00,,,,,PT_Normal,,,,,/bxBEXNMQImB7BJRsIN2Pw,4oogFmWp3UiOCwisigFzBw,,,N,0,0,,,2017-01-24 14:42,2017-01-24 14:53,CLEMENTL,CLEMENTL
1109,49428936,751235,10651596,1227199,1,100,N,N,N,CP_Drtn,TT_Task,DT_FixedDUR2,RV_OK,TK_Complete,823A-ST-SCCT-6b-2230,Removal internal falsework and formwork for roof,,,,0,0,0,416,8,32,0,0,,2013-02-08 08:00,2013-02-08 18:00,2014-01-05 18:00,2014-01-05 18:00,,2017-01-01 00:00,2017-01-01 00:00,,,2013-07-31 08:00,2013-07-31 18:00,,,,,PT_Normal,,,,,w2O6T8MrR7i1uKiANWXD5Q,tsbLWIsGL0uWkquhHnUhFQ,,,N,0,0,,,2017-01-24 14:42,2017-01-24 14:53,CLEMENTL,CLEMENTL
1110,49428937,751235,10651596,1239098,1,100,N,N,N,CP_Drtn,TT_Task,DT_FixedDUR2,RV_OK,TK_Complete,823A-ST-SCCT-6b-2210,Preparation of construction joint for wall and roof,,,,0,0,0,0,8,0,0,0,,2013-02-08 08:00,2013-02-08 18:00,2014-01-05 18:00,2014-01-05 18:00,,2017-01-01 00:00,2017-01-01 00:00,,,2013-07-22 08:00,2013-07-22 18:00,,,,,PT_Normal,,,,,uyLAUZwoScGYvZxgPx/vwQ,5wFsBla7xU+eu/Apdarveg,,,Y,0,0,,,2017-01-24 14:42,2017-01-24 14:53,CLEMENTL,CLEMENTL
1111,49428938,751235,10651596,1227199,1,100,N,N,N,CP_Drtn,TT_Task,DT_FixedDUR2,RV_OK,TK_Complete,823A-ST-SCCT-6b-2010,Placing of waterproof member T-lock & testing for base slab,,,,0,64,0,64,8,0,0,0,,2012-11-27 08:00,2012-11-27 18:00,2014-01-05 18:00,2014-01-05 18:00,,2017-01-01 00:00,2017-01-01 00:00,,,2012-11-27 08:00,2012-11-27 18:00,,,,,PT_Normal,,,,,y76clVAWR0eM0pSYtaBqXQ,+LEG/RAKeUeaD04WJqEEeA,,,Y,64,0,,,2017-01-24 14:42,2017-01-24 14:53,CLEMENTL,CLEMENTL
1112,49428939,751235,10651596,1227199,1,100,N,N,N,CP_Drtn,TT_Task,DT_FixedDUR2,RV_OK,TK_Complete,823A-ST-SCCT-6b-2020,Erect external formwork for base slab,,,,0,104,0,104,32,8,8,0,,2012-11-28 08:00,2012-12-01 18:00,2014-01-05 18:00,2014-01-05 18:00,,2017-01-01 00:00,2017-01-01 00:00,,,2012-11-28 08:00,2012-12-01 18:00,,,,,PT_Normal,,,,,KwurXX98RlG8NcBoXP9EDA,58wKKE6o5kG1Phm2iHAIJA,,,Y,104,8,,,2017-01-24 14:42,2017-01-24 14:53,CLEMENTL,CLEMENTL
1113,49428940,751235,10651596,1227199,1,100,N,N,N,CP_Drtn,TT_Task,DT_FixedDUR2,RV_OK,TK_Complete,823A-ST-SCCT-6b-2030,Rebar fixing for base slab,,,,0,0,0,272,24,16,0,0,,2012-12-03 08:00,2012-12-05 18:00,2014-01-05 18:00,2014-01-05 18:00,,2017-01-01 00:00,2017-01-01 00:00,,,2013-06-03 08:00,2013-06-05 18:00,,,,,PT_Normal,,,,,Ixc+ihHtSGGHMqN/5Q7oHA,FGckWhFbWkqk3Rf53CYeWg,,,Y,0,0,,,2017-01-24 14:42,2017-01-24 14:53,CLEMENTL,CLEMENTL
1114,49428941,751235,10651596,1227199,1,100,N,N,N,CP_Drtn,TT_Task,DT_FixedDUR2,RV_OK,TK_Complete,823A-ST-SCCT-6b-2040,Erect internal kicker formwork for base slab,,,,0,0,0,288,8,16,0,0,,2012-12-06 08:00,2012-12-06 18:00,2014-01-05 18:00,2014-01-05 18:00,,2017-01-01 00:00,2017-01-01 00:00,,,2013-06-06 08:00,2013-06-06 18:00,,,,,PT_Normal,,,,,JW74HJZMRq+y8ffSrBVWyg,hIshge7720mu/5ez5RroDg,,,Y,0,0,,,2017-01-24 14:42,2017-01-24 14:53,CLEMENTL,CLEMENTL
1115,49428942,751235,10651596,1227199,1,100,N,N,N,CP_Drtn,TT_Task,DT_FixedDUR2,RV_OK,TK_Complete,823A-ST-SCCT-6b-2220,Removal external and internal formwork for wall,,,,0,0,0,144,16,16,0,0,,2013-02-08 08:00,2013-02-08 18:00,2014-01-05 18:00,2014-01-05 18:00,,2017-01-01 00:00,2017-01-01 00:00,,,2013-07-22 08:00,2013-07-23 18:00,,,,,PT_Normal,,,,,wMWIOD8oTy+5RvvHt0UYyQ,go7gnAhzg02BuGGZ8ccegQ,,,Y,0,0,,,2017-01-24 14:42,2017-01-24 14:53,CLEMENTL,CLEMENTL
1116,49428943,751235,10651598,1227199,1,100,N,N,N,CP_Drtn,TT_Task,DT_FixedDUR2,RV_OK,TK_Complete,823A-ST-TBM-PR-1120,Setup TBM facilities,,,,0,0,0,0,784,0,0,0,,2012-08-01 08:00,2012-11-26 18:00,2014-01-05 18:00,2014-01-05 18:00,,2017-01-01 00:00,2017-01-01 00:00,,,2012-08-01 08:00,2012-11-26 18:00,,,,,PT_Normal,,,,,V8P1FEtwQaWddNCAmiCaZw,1fPa5rcDakin3wbvUdUbgA,,,Y,0,0,,,2017-01-24 14:42,2017-01-24 14:53,CLEMENTL,CLEMENTL
1117,49428944,751235,10651598,1227199,1,100,N,N,N,CP_Drtn,TT_Task,DT_FixedDUR2,RV_OK,TK_Complete,823A-ST-TBM-PR-1060,TBM equipments order and delivery to factory,,,,0,0,0,0,672,0,0,0,,2011-12-12 08:00,2012-03-24 18:00,2014-01-05 18:00,2014-01-05 18:00,,2017-01-01 00:00,2017-01-01 00:00,,,2011-12-12 08:00,2012-03-24 18:00,,,,,PT_Normal,,,,,P2vv8Oe+Q/KLf4eZZW5FQA,PxY1vmFaT9Cr+auDtihPZQ,,,Y,0,0,,,2017-01-24 14:42,2017-01-24 14:53,CLEMENTL,CLEMENTL
1118,49428945,751235,10651598,1227199,1,100,N,N,N,CP_Drtn,TT_Task,DT_FixedDUR2,RV_OK,TK_Complete,823A-ST-TBM-PR-1070,TBM Fabrication,,,,0,0,0,0,704,0,0,0,,2012-02-01 08:00,2012-05-19 18:00,2014-01-05 18:00,2014-01-05 18:00,,2017-01-01 00:00,2017-01-01 00:00,,,2012-02-01 08:00,2012-05-19 18:00,,,,,PT_Normal,,,,,faLAnyHNRXecFZIiUO+d6A,AnwPZxdbQmKLYoVg9uUuGA,,,Y,0,0,,,2017-01-24 14:42,2017-01-24 14:53,CLEMENTL,CLEMENTL
1119,49428946,751235,10651598,1227199,1,100,N,N,N,CP_Drtn,TT_Task,DT_FixedDUR2,RV_OK,TK_Complete,823A-ST-TBM-PR-1090,TBM test Run,,,,0,0,0,0,136,0,0,0,,2012-06-11 08:00,2012-06-30 18:00,2014-01-05 18:00,2014-01-05 18:00,,2017-01-01 00:00,2017-01-01 00:00,,,2012-06-11 08:00,2012-06-30 18:00,,,,,PT_Normal,,,,,7A/qbYW/QjWTkd2Lnx5mnA,C6TEsWH8T3OU560WOJTx4A,,,Y,0,0,,,2017-01-24 14:42,2017-01-24 14:53,CLEMENTL,CLEMENTL
1120,49428947,751235,10651598,1227199,1,100,N,N,N,CP_Drtn,TT_Task,DT_FixedDUR2,RV_OK,TK_Complete,823A-ST-TBM-PR-1100,TBM disassembly and packing for shipping to HK,,,,0,0,0,0,128,0,0,0,,2012-07-03 08:00,2012-07-20 18:00,2014-01-05 18:00,2014-01-05 18:00,,2017-01-01 00:00,2017-01-01 00:00,,,2012-07-03 08:00,2012-07-20 18:00,,,,,PT_Normal,,,,,/01AdqP0TDCjs0fAVhi6ag,a8DizTKKQ5uDXsWni85WGA,,,Y,0,0,,,2017-01-24 14:42,2017-01-24 14:53,CLEMENTL,CLEMENTL
1121,49428948,751235,10651598,1227199,1,100,N,N,N,CP_Drtn,TT_Task,DT_FixedDUR2,RV_OK,TK_Complete,823A-ST-TBM-PR-1110,TBM Shipping to HK and delivery to site,,,,0,0,0,0,72,0,0,0,,2012-07-21 08:00,2012-07-31 18:00,2014-01-05 18:00,2014-01-05 18:00,,2017-01-01 00:00,2017-01-01 00:00,,,2012-07-21 08:00,2012-07-31 18:00,,,,,PT_Normal,,,,,WAiwI2HeR52WVoej1jA26Q,sj6x5I90TFqQUlHUiT/kdg,,,Y,0,0,,,2017-01-24 14:42,2017-01-24 14:53,CLEMENTL,CLEMENTL
1122,49428949,751235,10651598,1227199,1,100,N,N,N,CP_Drtn,TT_Task,DT_FixedDUR2,RV_OK,TK_Complete,823A-ST-TBM-PR-1140,Fabrication 50% of South Tunnel South Bound Precast Lining,,,,0,0,0,0,208,0,0,0,,2012-08-01 08:00,2012-08-30 18:00,2014-07-24 08:00,2014-07-24 08:00,,2017-01-01 00:00,2017-01-01 00:00,,,2012-08-01 08:00,2012-08-30 18:00,,,,,PT_Normal,,,,,2PQt4Ay7QmOi7c1lUSJpvA,dK2adiRWQqmPoF+c48Ad/g,,,Y,0,0,,,2017-01-24 14:42,2017-01-24 14:53,CLEMENTL,CLEMENTL
1123,49428950,751235,10651598,1227199,1,100,N,N,N,CP_Drtn,TT_Task,DT_FixedDUR2,RV_OK,TK_Complete,823A-ST-TBM-PR-1160,Fabrication 50% of South Tunnel North Bound Precast Lining,,,,0,0,0,0,968,0,0,0,,2012-10-03 08:00,2013-02-26 18:00,2014-07-24 08:00,2014-07-24 08:00,,2017-01-01 00:00,2017-01-01 00:00,,,2012-10-03 08:00,2013-02-28 18:00,,,,,PT_Normal,,,,,0nK6s9qgQB+X5usBVnIBTw,iSvpKciVSdimRo7t9OWuaA,,,Y,0,0,,,2017-01-24 14:42,2017-01-24 14:53,CLEMENTL,CLEMENTL
1124,49428951,751235,10651598,1227199,1,100,N,N,N,CP_Drtn,TT_Task,DT_FixedDUR2,RV_OK,TK_Complete,823A-ST-TBM-PR-1150,Fabrication 100% of South Tunnel South Bound Precast Lining,,,,0,0,0,0,208,0,0,0,,2012-08-31 08:00,2012-09-29 18:00,2014-07-24 08:00,2014-07-24 08:00,,2017-01-01 00:00,2017-01-01 00:00,,,2012-08-31 08:00,2012-09-29 18:00,,,,,PT_Normal,,,,,frOcX4hQQ82sxAzFBmICOw,G9MROnIvTweoluq7raAzlA,,,Y,0,0,,,2017-01-24 14:42,2017-01-24 14:53,CLEMENTL,CLEMENTL
1125,49428952,751235,10651598,1227199,1,100,N,N,N,CP_Drtn,TT_Task,DT_FixedDUR2,RV_OK,TK_Complete,823A-ST-TBM-PR-1170,Fabrication 100% of South Tunnel North Bound Precast Lining,,,,0,0,0,0,984,0,0,0,,2013-02-27 08:00,2013-05-29 18:00,2014-07-24 08:00,2014-07-24 08:00,,2017-01-01 00:00,2017-01-01 00:00,,,2013-08-26 08:00,2014-01-22 18:00,,,,,PT_Normal,,,,,hWrDz3t7Rfupfo+CIKIjEg,XHG0NiOsTEaSCi6KF9CoBA,,,Y,0,0,,,2017-01-24 14:42,2017-01-24 14:53,CLEMENTL,CLEMENTL
1126,49428953,751235,10651598,1227199,1,100,N,N,N,CP_Drtn,TT_Task,DT_FixedDUR2,RV_OK,TK_Complete,823A-ST-TBM-PR-1030,Procurement and Confirmation of the order of 2nd tunnel boring machine,,,,0,0,0,0,184,0,0,0,,2011-11-15 08:00,2011-12-10 18:00,2014-01-05 18:00,2014-01-05 18:00,,2017-01-01 00:00,2017-01-01 00:00,,,2011-11-15 08:00,2011-12-10 18:00,,,,,PT_Normal,,,,,wLYdzHokT1aSl7Lw5p4uFw,vsCycLEORk+kWz/8lLB5ng,,,Y,0,0,,,2017-01-24 14:42,2017-01-24 14:53,CLEMENTL,CLEMENTL
1127,49428954,751235,10651598,1227199,1,100,N,N,N,CP_Drtn,TT_Task,DT_FixedDUR2,RV_OK,TK_Complete,823A-ST-TBM-PR-1040,TBM design and submission for approval,,,,0,0,0,0,184,0,0,0,,2011-11-15 08:00,2011-12-10 18:00,2014-01-05 18:00,2014-01-05 18:00,,2017-01-01 00:00,2017-01-01 00:00,,,2011-11-15 08:00,2011-12-10 18:00,,,,,PT_Normal,,,,,sPf05NLsQNOvPHNzefgtPw,uYsnCtOsRkOkdQs3tqnXvA,,,Y,0,0,,,2017-01-24 14:42,2017-01-24 14:53,CLEMENTL,CLEMENTL
1128,49428955,751235,10651598,1227199,1,100,N,N,N,CP_Drtn,TT_Task,DT_FixedDUR2,RV_OK,TK_Complete,823A-ST-TBM-PR-1050,TBM materials order and delivery to factory,,,,0,0,0,0,304,0,0,0,,2011-12-12 08:00,2012-01-31 18:00,2014-01-05 18:00,2014-01-05 18:00,,2017-01-01 00:00,2017-01-01 00:00,,,2011-12-12 08:00,2012-01-31 18:00,,,,,PT_Normal,,,,,MF0L6jNPTMOP+U2rw1kfWQ,iY/zQy1yTCGM6u/PQeHkzQ,,,Y,0,0,,,2017-01-24 14:42,2017-01-24 14:53,CLEMENTL,CLEMENTL
1129,49428956,751235,10651598,1227199,0,100,N,N,N,CP_Drtn,TT_Mile,DT_FixedDrtn,RV_OK,TK_Complete,823A-ST-TBM-PR-1010,Engineer Instruction for procurement of 2nd TBM,,,,0,0,0,0,0,0,0,0,2011-11-15 08:00,2011-11-15 08:00,2011-11-15 08:00,2014-01-05 18:00,2014-01-05 18:00,,2017-01-01 00:00,2017-01-01 00:00,,,2011-11-15 08:00,2011-11-15 08:00,,,,CS_MSO,PT_Normal,,,,,EMNpUhwsRiaXBb9huvQYIA,9Sv9QDxoRtK4x36MVLVvxg,,,Y,0,0,,,2017-01-24 14:42,2017-01-24 14:53,CLEMENTL,CLEMENTL
1130,49428957,751235,10651598,1227199,1,100,N,N,N,CP_Drtn,TT_Task,DT_FixedDUR2,RV_OK,TK_Complete,823A-ST-TBM-PR-1020,"Application of power supply, environmental permits and construction substation",,,,0,0,0,0,2280,0,0,0,,2011-11-15 08:00,2012-10-31 18:00,2014-01-05 18:00,2014-01-05 18:00,,2017-01-01 00:00,2017-01-01 00:00,,,2011-11-15 08:00,2012-10-31 18:00,,,,,PT_Normal,,,,,hGs4msKdRD+lgbBsR+kuCw,gzai6NOVTzKecHfp2Tv1Zw,,,Y,0,0,,,2017-01-24 14:42,2017-01-24 14:53,CLEMENTL,CLEMENTL
1131,49428958,751235,10651598,1227199,1,100,N,N,N,CP_Drtn,TT_Task,DT_FixedDUR2,RV_OK,TK_Complete,823A-ST-TBM-PR-1080,Final assembly for tunnel boring machine at the factory,,,,0,0,0,0,328,0,0,0,,2012-04-21 08:00,2012-06-09 18:00,2014-01-05 18:00,2014-01-05 18:00,,2017-01-01 00:00,2017-01-01 00:00,,,2012-04-21 08:00,2012-06-09 18:00,,,,,PT_Normal,,,,,yxlm0cxHS0OXE3mSY9rCjA,tj2yZwgjTaGV4RPsrMwmbw,,,Y,0,0,,,2017-01-24 14:42,2017-01-24 14:53,CLEMENTL,CLEMENTL
1132,49428959,751235,10651599,1227199,1,100,N,N,N,CP_Drtn,TT_Task,DT_FixedDUR2,RV_OK,TK_Complete,823A-ST-TBM-NB-1020,"TBM assemble, testing and commissioning",268574,,,0,14152,0,14152,440,3416,3416,0,,2014-07-14 08:00,2014-10-27 18:00,2014-07-24 08:00,2014-07-24 08:00,,2017-01-01 00:00,2017-01-01 00:00,,,2014-07-02 08:00,2014-09-03 18:00,,,,,PT_Normal,,,,,r0vgvoSrQhyOkcZswORR6g,dOvbCobMMkW1RRrS09zl8A,,,Y,14152,3416,,,2017-01-24 14:42,2017-01-24 14:53,CLEMENTL,CLEMENTL
1133,49428960,751235,10651599,1227199,1,100,N,N,N,CP_Drtn,TT_Task,DT_FixedDUR2,RV_OK,TK_Complete,823A-ST-TBM-NB-1060,TBM drive & lining installation CH125+027 to CH125+353  (Final Drive),268568,,,0,10368,0,10368,288,3168,3168,0,,2014-12-08 08:00,2015-08-07 00:00,2014-07-24 08:00,2014-07-24 08:00,,2017-01-01 00:00,2017-01-01 00:00,,,2015-01-02 08:00,2015-02-12 18:00,,,,,PT_Normal,,,,,5sa31JGAT1S/g2K5LgVEQA,q9mt2yOSiEmvShM2RGx25w,,,Y,10368,3168,,,2017-01-24 14:42,2017-01-24 15:34,CLEMENTL,CLEMENTL
1134,49428961,751235,10651599,1227199,1,100,N,N,N,CP_Drtn,TT_Task,DT_FixedDUR2,RV_OK,TK_Complete,823A-ST-TBM-NB-1070,Dis-assemble TBM,268574,,,0,6264,0,6264,216,1296,1296,0,,2015-08-10 08:00,2015-09-24 18:00,2017-04-15 08:00,2017-04-15 08:00,,2017-01-01 00:00,2017-01-01 00:00,,,2015-08-04 08:00,2015-09-03 18:00,,,,,PT_Normal,,,,,2p7S02dxTQCpHQo1bdE1+A,DUxlOrxamk2kY0zVTk+RTg,,,N,6264,1296,,,2017-01-24 14:42,2017-01-24 15:39,CLEMENTL,CLEMENTL
1135,49428962,751235,10651599,1227199,1,100,N,N,N,CP_Drtn,TT_Task,DT_FixedDUR2,RV_OK,TK_Complete,823A-ST-TBM-NB-1080,Invert slab and side walkway,,,,0,7104,0,7104,296,592,592,0,,2015-09-09 08:00,2015-11-10 18:00,2017-04-15 08:00,2017-04-15 08:00,,2017-01-01 00:00,2017-01-01 00:00,,,2015-09-09 08:00,2015-10-24 18:00,,,,,PT_Normal,,,,,C22YAEPIT/WXO3ZFRBYY6w,k0iHa2yhdECMx8rtviLFFw,,,N,7104,592,,,2017-01-24 14:42,2017-01-24 15:39,CLEMENTL,CLEMENTL
1136,49428963,751235,10651599,1227199,1,100,N,N,N,CP_Drtn,TT_Task,DT_FixedDUR2,RV_OK,TK_Complete,823A-ST-TBM-NB-1065,Demobilization of TBM facilities and noise enclosure,,,,0,0,0,0,184,0,0,0,,2015-08-10 08:00,2015-10-19 18:00,2014-07-24 08:00,2014-07-24 08:00,,2017-01-01 00:00,2017-01-01 00:00,,,2015-08-04 08:00,2015-08-29 18:00,,,,,PT_Normal,,,,,3LtB3gAtT2qdmS1PXr7Eig,HiveUUraCkWM3Hu+DDpZOA,,,Y,0,0,,,2017-01-24 14:42,2017-01-24 15:36,CLEMENTL,CLEMENTL
1137,49428964,751235,10651599,1227199,1,100,N,N,N,CP_Drtn,TT_Task,DT_FixedDUR2,RV_OK,TK_Complete,823A-ST-TBM-NB-1040,Reinstate of noise enclosure,268572,,,0,1152,0,1152,184,640,640,0,,2014-10-28 08:00,2015-01-09 18:00,2014-07-24 08:00,2014-07-24 08:00,,2017-01-01 00:00,2017-01-01 00:00,,,2014-10-10 08:00,2014-11-05 18:00,,,,,PT_Normal,,,,,e/fC+JzwRrWKwjQ51j3Hrw,,,,Y,1152,640,,,2017-01-24 14:42,2017-01-24 14:53,CLEMENTL,CLEMENTL
1138,49428965,751235,10651599,1227199,1,100,N,N,N,CP_Drtn,TT_Task,DT_FixedDUR2,RV_OK,TK_Complete,823A-ST-TBM-NB-1090,Installation of cable bracket,211315,,,0,576,0,576,96,0,0,0,,2015-07-02 08:00,2015-08-31 18:00,2017-06-12 18:00,2017-06-12 18:00,,2017-01-01 00:00,2017-01-01 00:00,,,2015-09-24 08:00,2015-10-09 18:00,,,,,PT_Normal,,,,,fpyfq6TkRYWFYda0M8u95A,,,,N,576,0,,,2017-01-24 14:42,2017-01-24 15:36,CLEMENTL,CLEMENTL
1139,49428966,751235,10651599,1227199,1,100,N,N,N,CP_Drtn,TT_Task,DT_FixedDUR2,RV_OK,TK_Complete,823A-ST-TBM-NB-1030,Setup back-up plant for final drive,268572,,,0,6960,0,6960,240,1200,1200,0,,2014-06-03 08:00,2014-07-04 18:00,2014-07-24 08:00,2014-07-24 08:00,,2017-01-01 00:00,2017-01-01 00:00,,,2014-06-03 08:00,2014-07-08 18:00,,,,,PT_Normal,,,,,hnluYfl6RJelUvzah4eyDw,,,,Y,6960,1200,,,2017-01-24 14:42,2017-01-24 14:53,CLEMENTL,CLEMENTL
1140,49428967,751235,10651599,1227199,1,100,N,N,N,CP_Drtn,TT_Task,DT_FixedDUR2,RV_OK,TK_Complete,823A-ST-TBM-NB-1010,Ground treatment at lauching shaft Northbound,268571,,,0,704,0,704,352,1056,1056,0,,2012-11-27 08:00,2013-01-26 18:00,2014-01-05 18:00,2014-01-05 18:00,,2017-01-01 00:00,2017-01-01 00:00,,,2012-11-27 08:00,2013-01-19 18:00,,,,,PT_Normal,,,,,pALcneXcTTe3yyLXQxt6Ig,jy6NQJdLvEuKUC4UjOMFQA,,,Y,704,1056,,,2017-01-24 14:42,2017-01-24 14:53,CLEMENTL,CLEMENTL
1141,49428968,751235,10651599,1239098,1,100,N,N,N,CP_Drtn,TT_Task,DT_FixedDUR2,RV_OK,TK_Complete,823A-ST-TBM-NB-1005,Removal of Roof of Noise Enclosure,,,,0,0,0,0,136,0,0,0,,2014-08-09 08:00,2014-08-28 18:00,2014-07-24 08:00,2014-07-24 08:00,,2017-01-01 00:00,2017-01-01 00:00,,,2014-09-01 08:00,2014-09-20 18:00,,,,,PT_Normal,,,,,110BQlyBQAOidRXF1mPlug,,,,Y,0,0,,,2017-01-24 14:42,2017-01-24 14:53,CLEMENTL,CLEMENTL
1142,49428969,751235,10651599,1227199,1,100,N,N,N,CP_Drtn,TT_Task,DT_FixedDUR2,RV_OK,TK_Complete,823A-ST-TBM-NB-1050,TBM drive & lining installation CH124+927 to CH125+027 (Initial Drive),,,,0,8640,0,8640,240,2640,2640,0,,2014-10-30 00:00,2014-12-06 18:00,2014-07-24 08:00,2014-07-24 08:00,,2017-01-01 00:00,2017-01-01 00:00,,,2014-10-10 08:00,2014-11-13 18:00,,,,,PT_Normal,,,,,FtQ9GiSNSTS7Yz6DHc1CBA,wmxMs7BFRkCciMH/U4G2lA,,,Y,8640,2640,,,2017-01-24 14:42,2017-01-24 15:33,CLEMENTL,CLEMENTL
1143,49428970,751235,10651600,1227199,1,100,N,N,N,CP_Drtn,TT_Task,DT_FixedDUR2,RV_OK,TK_Complete,823A-ST-TBM-SB-1030,Lowing back-up plant for final drive,,,,0,0,0,0,48,0,0,0,,2013-01-26 08:00,2013-02-01 18:00,2014-01-05 18:00,2014-01-05 18:00,,2017-01-01 00:00,2017-01-01 00:00,,,2013-06-01 08:00,2013-06-07 18:00,,,,,PT_Normal,,,,,2sUBeQOHQhefZ2r+yNmKoQ,,,,Y,0,0,,,2017-01-24 14:42,2017-01-24 14:53,CLEMENTL,CLEMENTL
1144,49428971,751235,10651600,1227199,1,100,N,N,N,CP_Drtn,TT_Task,DT_FixedDUR2,RV_OK,TK_Complete,823A-ST-TBM-SB-1090,Installation of cable bracket,,,,0,0,0,0,96,0,0,0,,2014-08-18 08:00,2014-09-06 18:00,2017-06-12 18:00,2017-06-12 18:00,,2017-01-01 00:00,2017-01-01 00:00,,,2014-11-03 08:00,2014-11-15 18:00,,,,,PT_Normal,,,,,4mfIDYP6Q72Stzg8tlGbLg,,,,N,0,0,,,2017-01-24 14:42,2017-01-24 15:36,CLEMENTL,CLEMENTL
1145,49428972,751235,10651600,1227199,1,100,N,N,N,CP_Drtn,TT_Task,DT_FixedDUR2,RV_OK,TK_Complete,823A-ST-TBM-SB-1020,"TBM assemble, thrust frame, testing and commissioning",,,,0,0,0,0,456,0,0,0,,2012-12-14 08:00,2013-02-27 18:00,2014-01-05 18:00,2014-01-05 18:00,,2017-01-01 00:00,2017-01-01 00:00,,,2013-06-01 08:00,2013-08-08 18:00,,,,,PT_Normal,,,,,3A3ZAXRRSCal1Jt26rsB0g,nFDzY6y+k02pmknHncVT6g,,,Y,0,0,,,2017-01-24 14:42,2017-01-24 14:53,CLEMENTL,CLEMENTL
1146,49428973,751235,10651600,1227199,1,100,N,N,N,CP_Drtn,TT_Task,DT_FixedDUR2,RV_OK,TK_Complete,823A-ST-TBM-SB-1060,TBM drive & lining installation CH125+012 to CH125+338,,,,0,0,0,0,240,0,0,0,,2013-05-27 08:00,2014-05-20 00:00,2014-07-24 08:00,2014-07-24 08:00,,2017-01-01 00:00,2017-01-01 00:00,,,2013-10-15 08:00,2013-11-18 18:00,,,,,PT_Normal,,,,,vlDSmsr0TcidU5xnOzTI3g,df+PDxN0nk+fb2jLy/W2pw,,,Y,0,0,,,2017-01-24 14:42,2017-01-24 15:33,CLEMENTL,CLEMENTL
1147,49428974,751235,10651600,1227199,1,100,N,N,N,CP_Drtn,TT_Task,DT_FixedDUR2,RV_OK,TK_Complete,823A-ST-TBM-SB-1070,Dis-assemble TBM,,,,0,0,0,0,208,0,0,0,,2014-05-22 08:00,2014-08-08 18:00,2014-07-24 08:00,2014-07-24 08:00,,2017-01-01 00:00,2017-01-01 00:00,,,2014-05-23 08:00,2014-06-23 18:00,,,,,PT_Normal,,,,,Hwz37YpWRaOzv4RtrfjM3A,Kj+DjI+KeE6BNQW84/f1Eg,,,Y,0,0,,,2017-01-24 14:42,2017-01-24 14:53,CLEMENTL,CLEMENTL
1148,49428975,751235,10651600,1227199,1,100,N,N,N,CP_Drtn,TT_Task,DT_FixedDUR2,RV_OK,TK_Complete,823A-ST-TBM-SB-1080,Invert slab and side walkway,,,,0,0,0,0,296,0,0,0,,2014-08-01 08:00,2014-09-02 18:00,2017-06-12 18:00,2017-06-12 18:00,,2017-01-01 00:00,2017-01-01 00:00,,,2014-08-01 08:00,2014-09-13 18:00,,,,,PT_Normal,,,,,Xes6B9NxTjKtHRqixgctEg,U2fWhNl8z0KyYGPvY+3wiw,,,N,0,0,,,2017-01-24 14:42,2017-01-24 15:36,CLEMENTL,CLEMENTL
1149,49428976,751235,10651600,1227199,1,100,N,N,N,CP_Drtn,TT_Task,DT_FixedDUR2,RV_OK,TK_Complete,823A-ST-TBM-SB-1050,TBM drive & lining installation CH124+912 to CH125+012 (Initial Drive),268568,,,0,12672,0,12672,344,3872,3872,0,,2013-03-11 00:00,2013-05-27 18:00,2014-01-05 18:00,2014-01-05 18:00,,2017-01-01 00:00,2017-01-01 00:00,,,2013-07-20 08:00,2013-09-07 18:00,,,,,PT_Normal,,,,,TEerKK+LQsS80IKM+Co90A,+8rPKUHB+kOERrDRsJBD3w,,,Y,12672,3872,,,2017-01-24 14:42,2017-01-24 15:33,CLEMENTL,CLEMENTL
1150,49428977,751235,10651600,1227199,1,100,N,N,N,CP_Drtn,TT_Task,DT_FixedDUR2,RV_OK,TK_Complete,823A-ST-TBM-SB-1040,Erection of noise enclosure,,,,0,0,0,0,400,0,0,0,,2013-02-18 08:00,2013-11-01 18:00,2014-07-24 08:00,2014-07-24 08:00,,2017-01-01 00:00,2017-01-01 00:00,,,2013-07-20 08:00,2013-09-16 18:00,,,,,PT_Normal,,,,,k2DVJ1ofQTGXgjaZNuuiVA,fx3ew31TiUKd0lFX9yCY6A,,,Y,0,0,,,2017-01-24 14:42,2017-01-24 14:53,CLEMENTL,CLEMENTL
1151,49428978,751235,10651600,1239098,1,100,N,N,N,CP_Drtn,TT_Task,DT_FixedDUR2,RV_OK,TK_Complete,823A-ST-TBM-SB-1035,Assemble and set up back-up plant for final drive,,,,0,0,0,0,192,0,0,0,,2013-02-02 08:00,2013-02-27 18:00,2014-01-05 18:00,2014-01-05 18:00,,2017-01-01 00:00,2017-01-01 00:00,,,2013-06-08 08:00,2013-07-08 18:00,,,,,PT_Normal,,,,,6pu7PA2ISNmwYxNxLUgRrQ,,,,Y,0,0,,,2017-01-24 14:42,2017-01-24 14:53,CLEMENTL,CLEMENTL
1152,49428979,751235,10651600,1227199,1,100,N,N,N,CP_Drtn,TT_Task,DT_FixedDUR2,RV_OK,TK_Complete,823A-ST-TBM-SB-1010,Ground treatment at lauching shaft Southbound,268571,,,0,232,0,464,232,696,464,0,,2012-10-15 08:00,2012-11-17 18:00,2014-01-05 18:00,2014-01-05 18:00,,2017-01-01 00:00,2017-01-01 00:00,,,2012-10-15 08:00,2012-11-17 18:00,,,,,PT_Normal,,,,,ONuhwHWmQiy022uF5iDUyw,JdcNfSySe0WBVprAjWkPDQ,,,Y,232,464,,,2017-01-24 14:42,2017-01-24 14:53,CLEMENTL,CLEMENTL
1153,49428980,751235,10651602,1227199,1,100,N,N,N,CP_Drtn,TT_Task,DT_FixedDrtn,RV_OK,TK_Complete,823A-ST-CP32-1000,Install and Erect Temporary support inside Main Tunnel for Cross Passage Tunnel CP32 (Partial length) at down track,,,,0,0,0,0,112,0,0,0,,2014-08-01 08:00,2014-08-09 18:00,2017-06-12 18:00,2017-06-12 18:00,,2017-01-01 00:00,2017-01-01 00:00,,,2014-08-01 08:00,2014-08-16 18:00,,,,,PT_Normal,,,,,g3s/yHmCQUSTmKrkOpEVBw,gyedOL1FeE+eRVXBxjm6Pg,,,N,0,0,,,2017-01-24 14:42,2017-01-24 15:36,CLEMENTL,CLEMENTL
1154,49428981,751235,10651602,1227199,1,100,N,N,N,CP_Drtn,TT_Task,DT_FixedRate,RV_OK,TK_Complete,823A-ST-CP32-1010,Probe/Grout,,,,0,0,0,0,72,0,0,0,,2014-08-11 08:00,2014-08-15 18:00,2017-06-12 18:00,2017-06-12 18:00,,2017-01-01 00:00,2017-01-01 00:00,,,2014-08-18 08:00,2014-08-27 18:00,,,,,PT_Normal,,,,,cOo1mL/rTJydRY4s2P3oTw,mdI1iSirDUSqot1bT2ercg,,,N,0,0,,,2017-01-24 14:42,2017-01-24 15:36,CLEMENTL,CLEMENTL
1155,49428982,751235,10651602,1227199,1,100,N,N,N,CP_Drtn,TT_Task,DT_FixedRate,RV_OK,TK_Complete,823A-ST-CP32-1020,Coring of Segment,,,,0,0,0,0,32,0,0,0,,2014-08-16 08:00,2014-08-20 18:00,2017-06-12 18:00,2017-06-12 18:00,,2017-01-01 00:00,2017-01-01 00:00,,,2014-08-28 08:00,2014-09-01 18:00,,,,,PT_Normal,,,,,fXbCbAs3SbG3zeBpnqk2dw,FT/eJkQ7rU+KCzAUonKFIg,,,N,0,0,,,2017-01-24 14:42,2017-01-24 15:36,CLEMENTL,CLEMENTL
1156,49428983,751235,10651602,1227199,1,100,N,N,N,CP_Drtn,TT_Task,DT_FixedRate,RV_OK,TK_Complete,823A-ST-CP32-1030,Removal of segment,,,,0,0,0,0,24,0,0,0,,2014-08-21 08:00,2014-08-23 18:00,2017-06-12 18:00,2017-06-12 18:00,,2017-01-01 00:00,2017-01-01 00:00,,,2014-09-02 08:00,2014-09-04 18:00,,,,,PT_Normal,,,,,XctyMtikToStVGw7UULIYg,6gTjtv6XGEWzYSmEF58y4w,,,N,0,0,,,2017-01-24 14:42,2017-01-24 15:36,CLEMENTL,CLEMENTL
1157,49428984,751235,10651602,1227199,1,100,N,N,N,CP_Drtn,TT_Task,DT_FixedRate,RV_OK,TK_Complete,823A-ST-CP32-1040,Excavation 0-4mts with Shotcrete,,,,0,0,0,0,200,0,0,0,,2014-08-25 08:00,2014-10-03 18:00,2017-06-12 18:00,2017-06-12 18:00,,2017-01-01 00:00,2017-01-01 00:00,,,2014-09-05 08:00,2014-10-07 18:00,,,,,PT_Normal,,,,,g+4IPY5uRZK/ZJsntG6wgA,uMDDRTPPp0SmWQI5EjySPw,,,N,0,0,,,2017-01-24 14:42,2017-01-24 15:36,CLEMENTL,CLEMENTL
1158,49428985,751235,10651602,1227199,1,100,N,N,N,CP_Drtn,TT_Task,DT_FixedRate,RV_OK,TK_Complete,823A-ST-CP32-1050,Invert Concrete,,,,0,0,0,0,72,0,0,0,,2014-10-04 08:00,2014-10-11 18:00,2017-06-12 18:00,2017-06-12 18:00,,2017-01-01 00:00,2017-01-01 00:00,,,2014-10-23 08:00,2014-11-01 18:00,,,,,PT_Normal,,,,,CRHrsDj/QTCDvRk6JJjYyQ,pi/LQTAX10um1zP+lxti5g,,,N,0,0,,,2017-01-24 14:42,2017-01-24 15:36,CLEMENTL,CLEMENTL
1159,49428986,751235,10651602,1227199,1,100,N,N,N,CP_Drtn,TT_Task,DT_FixedRate,RV_OK,TK_Complete,823A-ST-CP32-1060,Wall and Roof concrete,,,,0,0,0,0,112,0,0,0,,2014-10-13 08:00,2014-10-31 18:00,2017-06-12 18:00,2017-06-12 18:00,,2017-01-01 00:00,2017-01-01 00:00,,,2014-11-03 08:00,2014-11-18 18:00,,,,,PT_Normal,,,,,PRvSvAu9RQGSd9assPZ7aQ,SriGK9yBx0y78BvlfDoXsw,,,N,0,0,,,2017-01-24 14:42,2017-01-24 15:36,CLEMENTL,CLEMENTL
1160,49428987,751235,10651602,1227199,1,100,N,N,N,CP_Drtn,TT_Task,DT_FixedRate,RV_OK,TK_Complete,823A-ST-CP32-1070,Dismantle Temporary frame,,,,0,0,0,0,56,0,0,0,,2014-11-01 08:00,2014-11-08 18:00,2017-06-12 18:00,2017-06-12 18:00,,2017-01-01 00:00,2017-01-01 00:00,,,2014-11-01 08:00,2014-11-08 18:00,,,,,PT_Normal,,,,,Rv3BI4i2QHKGVSk6YR13nQ,WafQCUqRYkyR9BvyAqE2Mw,,,N,0,0,,,2017-01-24 14:42,2017-01-24 15:36,CLEMENTL,CLEMENTL
1161,49428988,751235,10651602,1227199,1,100,N,N,N,CP_Drtn,TT_Task,DT_FixedRate,RV_OK,TK_Complete,823A-ST-CP32-1080,Install Door to Cross Passage (By contract 827),,,,0,0,0,0,32,0,0,0,,2014-11-10 08:00,2014-11-13 18:00,2017-06-12 18:00,2017-06-12 18:00,,2017-01-01 00:00,2017-01-01 00:00,,,2014-11-10 08:00,2014-11-13 18:00,,,,,PT_Normal,,,,,XumjikjFSEyq4r9HxWcxFQ,CJdws8ek/0yyDZBsRQQHkw,,,N,0,0,,,2017-01-24 14:42,2017-01-24 15:36,CLEMENTL,CLEMENTL
1162,49428989,751235,10651602,1227199,1,100,N,N,N,CP_Drtn,TT_Task,DT_FixedDrtn,RV_OK,TK_Complete,823A-ST-CP32-1090,Install and Erect Temporary support inside Main Tunnel for Cross Passage Tunnel CP32 (Remaining length ) at down track,,,,0,0,0,0,128,0,0,0,,2015-04-01 08:00,2015-04-16 18:00,2017-06-12 18:00,2017-06-12 18:00,,2017-01-01 00:00,2017-01-01 00:00,,,2015-05-09 08:00,2015-05-28 18:00,,,,,PT_Normal,,,,,1Ew4cCUXRrKDgU5Adzgolg,fuQOJICvbJQA+iGkwKgLYa,,,N,0,0,,,2017-01-24 14:42,2017-01-24 15:36,CLEMENTL,CLEMENTL
1163,49428990,751235,10651602,1227199,1,100,N,N,N,CP_Drtn,TT_Task,DT_FixedRate,RV_OK,TK_Complete,823A-ST-CP32-1100,Probe/Grout,,,,0,0,0,0,8,0,0,0,,2015-04-20 08:00,2015-06-29 18:00,2017-06-12 18:00,2017-06-12 18:00,,2017-01-01 00:00,2017-01-01 00:00,,,2015-05-29 08:00,2015-05-29 18:00,,,,,PT_Normal,,,,,sm1+wpfURsSsAJucOiQrgw,fuQOJSiR5iUBtqHEwKgLYa,,,N,0,0,,,2017-01-24 14:42,2017-01-24 15:36,CLEMENTL,CLEMENTL
1164,49428991,751235,10651602,1227199,1,100,N,N,N,CP_Drtn,TT_Task,DT_FixedRate,RV_OK,TK_Complete,823A-ST-CP32-1110,Coring of Segment,,,,0,0,0,0,32,0,0,0,,2015-10-16 08:00,2015-10-20 18:00,2017-06-12 18:00,2017-06-12 18:00,,2017-01-01 00:00,2017-01-01 00:00,,,2015-10-02 08:00,2015-10-06 18:00,,,,,PT_Normal,,,,,1/6sWPWDRqac4Gy/lW2F+A,fuQOJt+LXCoBNoxdwKgLYa,,,N,0,0,,,2017-01-24 14:42,2017-01-24 15:36,CLEMENTL,CLEMENTL
1165,49428992,751235,10651602,1227199,1,100,N,N,N,CP_Drtn,TT_Task,DT_FixedRate,RV_OK,TK_Complete,823A-ST-CP32-1120,Removal of segment,,,,0,0,0,0,24,0,0,0,,2015-10-22 08:00,2015-10-24 18:00,2017-06-12 18:00,2017-06-12 18:00,,2017-01-01 00:00,2017-01-01 00:00,,,2015-10-07 08:00,2015-10-09 18:00,,,,,PT_Normal,,,,,z1twodiLRt2GIfsTXujNdg,fuQOJ+cbeGYAOUXiwKgLYa,,,N,0,0,,,2017-01-24 14:42,2017-01-24 15:36,CLEMENTL,CLEMENTL
1166,49428993,751235,10651602,1227199,1,100,N,N,N,CP_Drtn,TT_Task,DT_FixedRate,RV_OK,TK_Complete,823A-ST-CP32-1130,Excavation 0-4mts with Shotcrete,,,,0,0,0,0,136,0,0,0,,2015-10-26 08:00,2015-12-11 18:00,2017-06-12 18:00,2017-06-12 18:00,,2017-01-01 00:00,2017-01-01 00:00,,,2015-10-10 08:00,2015-10-30 18:00,,,,,PT_Normal,,,,,fWZwE5iNT9ecGfCi0JcwfQ,fuQOKBh/ZOAAGwwIwKgLYa,,,N,0,0,,,2017-01-24 14:42,2017-01-24 15:36,CLEMENTL,CLEMENTL
1167,49428994,751235,10651602,1227199,1,100,N,N,N,CP_Drtn,TT_Task,DT_FixedRate,RV_OK,TK_Complete,823A-ST-CP32-1140,Invert Concrete,,,,0,0,0,0,72,0,0,0,,2015-12-12 08:00,2015-12-24 18:00,2017-06-12 18:00,2017-06-12 18:00,,2017-01-01 00:00,2017-01-01 00:00,,,2015-12-03 08:00,2015-12-12 18:00,,,,,PT_Normal,,,,,aVOkJ+ioTYmJ8XYiQIZ0rA,fuQOKXCru8wBsx/ZwKgLYa,,,N,0,0,,,2017-01-24 14:42,2017-01-24 15:36,CLEMENTL,CLEMENTL
1168,49428995,751235,10651602,1227199,1,100,N,N,N,CP_Drtn,TT_Task,DT_FixedRate,RV_OK,TK_Complete,823A-ST-CP32-1150,Wall and Roof concrete,,,,0,0,0,0,80,0,0,0,,2015-12-28 08:00,2016-01-15 18:00,2017-06-12 18:00,2017-06-12 18:00,,2017-01-01 00:00,2017-01-01 00:00,,,2015-12-14 08:00,2015-12-24 18:00,,,,,PT_Normal,,,,,wLmE3s8jRzCo0TrKhazOKQ,fuQOKmuCNQwA7+J7wKgLYa,,,N,0,0,,,2017-01-24 14:42,2017-01-24 15:36,CLEMENTL,CLEMENTL
1169,49428996,751235,10651602,1227199,1,100,N,N,N,CP_Drtn,TT_Task,DT_FixedRate,RV_OK,TK_Complete,823A-ST-CP32-1160,Dismantle Temporary frame,,,,0,0,0,0,32,0,0,0,,2016-01-16 08:00,2016-01-16 18:00,2017-06-12 18:00,2017-06-12 18:00,,2017-01-01 00:00,2017-01-01 00:00,,,2016-01-13 08:00,2016-01-16 18:00,,,,,PT_Normal,,,,,rSU74ta1QKaepN9bKbjqsQ,fuQOKw6Rf9EA/hNdwKgLYa,,,N,0,0,,,2017-01-24 14:42,2017-01-24 15:36,CLEMENTL,CLEMENTL
1170,49428997,751235,10651602,1227199,1,100,N,N,N,CP_Drtn,TT_Task,DT_FixedRate,RV_OK,TK_Complete,823A-ST-CP32-1170,Install Door to Cross Passage (By contract 827),,,,0,0,0,0,16,0,0,0,,2016-01-18 08:00,2016-01-19 18:00,2017-06-12 18:00,2017-06-12 18:00,,2017-01-01 00:00,2017-01-01 00:00,,,2016-01-18 08:00,2016-01-19 18:00,,,,,PT_Normal,,,,,UzCChkTCTHKLVHeEQ4xDeQ,fuQOLH/934EAqVCdwKgLYa,,,N,0,0,,,2017-01-24 14:42,2017-01-24 15:36,CLEMENTL,CLEMENTL
1171,49428998,751235,10651604,1227199,1,20,N,N,N,CP_Drtn,TT_Task,DT_FixedDUR2,RV_OK,TK_Active,ST-TUT-RE-1010,Reinstatement of TUT area (Including Hydroseeding),,712,216,400,6800,2000,8800,1760,1760,1360,400,,2016-10-07 08:00,,2017-04-15 08:00,2017-06-12 18:00,,2017-01-02 08:00,2017-02-28 18:00,2017-01-02 08:00,2017-02-28 18:00,2016-10-03 08:00,2017-06-19 18:00,,2017-04-15 08:00,2017-06-12 18:00,,PT_Normal,,,,,M6vhzSTISeutrVdEVUZbbw,66b4OrmKSIyHORQFmn5nFQ,,,N,6800,1360,,,2017-01-24 14:42,2017-01-24 15:40,CLEMENTL,CLEMENTL
1172,49428999,751235,10651605,1227199,1,100,N,N,N,CP_Drtn,TT_Task,DT_FixedDUR2,RV_OK,TK_Complete,823A-ST-TUT-BF-1030,Backfilling to +18.25mPD (1229 m3 of soil),268581,,,0,512,0,512,64,256,256,0,,2016-07-25 08:00,2016-08-02 18:00,2017-04-15 08:00,2017-04-15 08:00,,2017-01-01 00:00,2017-01-01 00:00,,,2016-07-02 08:00,2016-07-11 18:00,,,,,PT_Normal,,,,,j+dNnVwbQE6GwKFpWQvneA,KZWNgu6UTgikJPCViW99Gg,,,N,512,256,,,2017-01-24 14:42,2017-01-24 15:39,CLEMENTL,CLEMENTL
1173,49429000,751235,10651605,1227199,1,100,N,N,N,CP_Drtn,TT_Task,DT_FixedDUR2,RV_OK,TK_Complete,823A-ST-TUT-BF-1010,Spray waterproofing member & testing (Wall & Roof),268571,,,0,0,0,64,16,0,0,0,,2016-03-01 08:00,2016-03-02 18:00,2017-04-15 08:00,2017-04-15 08:00,,2017-01-01 00:00,2017-01-01 00:00,,,2016-03-17 08:00,2016-03-18 18:00,,,,,PT_Normal,,,,,VTnWpP+KRtKrgS0y7P7MAg,8zvwcS5FQBaMGFyvo7R8IQ,,,N,0,0,,,2017-01-24 14:42,2017-01-24 15:39,CLEMENTL,CLEMENTL
1174,49429001,751235,10651605,1227199,1,100,N,N,N,CP_Drtn,TT_Task,DT_FixedDUR2,RV_OK,TK_Complete,823A-ST-TUT-BF-1060,Removal strut S3,,,,0,0,0,168,24,24,0,0,,2016-08-08 08:00,2016-08-10 18:00,2017-04-15 08:00,2017-04-15 08:00,,2017-01-01 00:00,2017-01-01 00:00,,,2016-08-08 08:00,2016-08-10 18:00,,,,,PT_Normal,,,,,RAKcyMAaQIiOQ0pUHxjaHg,JZNvEmbcRMutKaz5AvFvmw,,,N,0,0,,,2017-01-24 14:42,2017-01-24 15:39,CLEMENTL,CLEMENTL
1175,49429002,751235,10651605,1227199,1,100,N,N,N,CP_Drtn,TT_Task,DT_FixedDUR2,RV_OK,TK_Complete,823A-ST-TUT-BF-1070,Backfilling to 0.5m below S2 (+23.5mPD) (1984m3 of soil),268581,,,0,0,0,704,88,352,0,0,,2016-08-11 08:00,2016-08-23 18:00,2017-04-15 08:00,2017-04-15 08:00,,2017-01-01 00:00,2017-01-01 00:00,,,2016-08-11 08:00,2016-08-23 18:00,,,,,PT_Normal,,,,,5zsFZRe5S4yFD8vhSS3sxQ,Ff6ECV6bRMmA5+UpJIh1YA,,,N,0,0,,,2017-01-24 14:42,2017-01-24 15:39,CLEMENTL,CLEMENTL
1176,49429003,751235,10651605,1227199,1,100,N,N,N,CP_Drtn,TT_Task,DT_FixedDUR2,RV_OK,TK_Complete,823A-ST-TUT-BF-1080,Removal strut S2,,,,0,168,0,168,24,24,24,0,,2016-08-24 08:00,2016-09-01 18:00,2017-04-15 08:00,2017-04-15 08:00,,2017-01-01 00:00,2017-01-01 00:00,,,2016-08-24 08:00,2016-08-26 18:00,,,,,PT_Normal,,,,,iZqUSAQWSAK+iUPCSQ13Uw,ubpyo7BwS2OeB7y6YnN28Q,,,N,168,24,,,2017-01-24 14:42,2017-01-24 15:39,CLEMENTL,CLEMENTL
1177,49429004,751235,10651605,1227199,1,100,N,N,N,CP_Drtn,TT_Task,DT_FixedDUR2,RV_OK,TK_Complete,823A-ST-TUT-BF-1090,Backfilling to 0.5m below S1 (+28.5mPD) (2480m3 of soil),268580,,,0,0,0,832,104,416,0,0,,2016-09-02 08:00,2016-09-09 18:00,2017-04-15 08:00,2017-04-15 08:00,,2017-01-01 00:00,2017-01-01 00:00,,,2016-09-05 08:00,2016-09-20 18:00,,,,,PT_Normal,,,,,s1AegC0VT1enX1TDk/tt0Q,W81lyF3XRGa6o0hK9ECSNA,,,N,0,0,,,2017-01-24 14:42,2017-01-24 15:39,CLEMENTL,CLEMENTL
1178,49429005,751235,10651605,1227199,1,100,N,N,N,CP_Drtn,TT_Task,DT_FixedDUR2,RV_OK,TK_Complete,823A-ST-TUT-BF-1110,Backfilling to original ground level (approx. +31.5mPD) (1488m3 of soil),268581,,,0,0,0,448,64,192,0,0,,2016-09-15 08:00,2016-09-19 18:00,2017-04-15 08:00,2017-04-15 08:00,,2017-01-01 00:00,2017-01-01 00:00,,,2016-09-23 08:00,2016-10-03 18:00,,,,,PT_Normal,,,,,lOpGcAa1Siuqq+Jnx0Pylw,7fMIZcK0Sz+PwdyLdKd9Sg,,,N,0,0,,,2017-01-24 14:42,2017-01-24 15:39,CLEMENTL,CLEMENTL
1179,49429006,751235,10651605,1227199,1,100,N,N,N,CP_Drtn,TT_Task,DT_FixedDUR2,RV_OK,TK_Complete,823A-ST-TUT-BF-1100,Removal strut S1,,,,0,0,0,112,16,16,0,0,,2016-09-10 08:00,2016-09-14 18:00,2017-04-15 08:00,2017-04-15 08:00,,2017-01-01 00:00,2017-01-01 00:00,,,2016-09-21 08:00,2016-09-22 18:00,,,,,PT_Normal,,,,,qyidONLKRkmTcJ7LhCljBA,ehzC9E97Rj6+BiHt9/Gu3g,,,N,0,0,,,2017-01-24 14:42,2017-01-24 15:39,CLEMENTL,CLEMENTL
1180,49429007,751235,10651605,1227199,1,100,N,N,N,CP_Drtn,TT_Task,DT_FixedDUR2,RV_OK,TK_Complete,823A-ST-TUT-BF-1050,Backfilling to 0.5m below S3 (+19.5mPD) (372m3 of soil),268581,,,0,0,0,192,24,96,0,0,,2016-08-04 08:00,2016-08-06 18:00,2017-04-15 08:00,2017-04-15 08:00,,2017-01-01 00:00,2017-01-01 00:00,,,2016-08-04 08:00,2016-08-06 18:00,,,,,PT_Normal,,,,,UzOJxy8VT0+ZZRj7n28umA,5DQ4LRGRQX6HIz0OL3S8Gg,,,N,0,0,,,2017-01-24 14:42,2017-01-24 15:39,CLEMENTL,CLEMENTL
1181,49429008,751235,10651605,1227199,1,100,N,N,N,CP_Drtn,TT_Task,DT_FixedDUR2,RV_OK,TK_Complete,823A-ST-TUT-BF-1020,Protection screening to waterproofing member (Wall & Roof),,,,0,0,0,280,40,40,0,0,,2016-03-03 08:00,2016-03-08 18:00,2017-04-15 08:00,2017-04-15 08:00,,2017-01-01 00:00,2017-01-01 00:00,,,2016-03-19 08:00,2016-03-24 18:00,,,,,PT_Normal,,,,,v+37OiKgT06rkxmdj6SS/A,xk5O1g6NRrifzJQd2kNumw,,,N,0,0,,,2017-01-24 14:42,2017-01-24 15:39,CLEMENTL,CLEMENTL
1182,49429009,751235,10651605,1227199,1,100,N,N,N,CP_Drtn,TT_Task,DT_FixedDUR2,RV_OK,TK_Complete,823A-ST-TUT-BF-1040,Laying 500mm mass concrete lateral support,,,,0,0,0,40,8,8,0,0,,2016-08-03 08:00,2016-08-03 18:00,2017-04-15 08:00,2017-04-15 08:00,,2017-01-01 00:00,2017-01-01 00:00,,,2016-08-03 08:00,2016-08-03 18:00,,,,,PT_Normal,,,,,jMX8u6zaS82NtjocrB9PUA,NfaW0fYjQXCYs/cI9on50A,,,N,0,0,,,2017-01-24 14:42,2017-01-24 15:39,CLEMENTL,CLEMENTL
1183,49429010,751235,10651606,1227199,1,100,N,N,N,CP_Drtn,TT_Task,DT_FixedDUR2,RV_OK,TK_Complete,823A-ST-TUT-DW-1040,D-Wall Construction (1075m3),268570,,,0,14768,0,14768,568,1704,1704,0,,2011-08-18 08:00,2011-11-11 18:00,2014-07-24 08:00,2014-07-24 08:00,,2017-01-01 00:00,2017-01-01 00:00,,,2011-08-18 08:00,2011-11-11 18:00,,,,,PT_Normal,,,,,p51eIJyJSjKLoDFu7miY/w,TqH/btfHR/GG2+isnCoxwA,,,Y,14768,1704,,,2017-01-24 14:42,2017-01-24 14:53,CLEMENTL,CLEMENTL
1184,49429011,751235,10651606,1227199,1,100,N,N,N,CP_Drtn,TT_Task,DT_FixedDUR2,RV_OK,TK_Complete,823A-ST-TUT-DW-1020,Pre-drill and guide wall,268580,,,0,3256,0,3256,296,888,888,0,,2011-05-30 08:00,2011-07-13 18:00,2014-07-24 08:00,2014-07-24 08:00,,2017-01-01 00:00,2017-01-01 00:00,,,2011-05-30 08:00,2011-07-13 18:00,,,,,PT_Normal,,,,,Id1NRbcTSjKm9LolHq6JrA,uTLTjBc1Rial4EXY8sVlAQ,,,Y,3256,888,,,2017-01-24 14:42,2017-01-24 14:53,CLEMENTL,CLEMENTL
1185,49429012,751235,10651606,1227199,1,100,N,N,N,CP_Drtn,TT_Task,DT_FixedDUR2,RV_OK,TK_Complete,823A-ST-TUT-DW-1010,Site Possession and Site set up and Mobilization,,,,0,4144,0,4144,432,888,888,0,,2011-03-21 08:00,2011-05-28 18:00,2014-07-24 08:00,2014-07-24 08:00,,2017-01-01 00:00,2017-01-01 00:00,,,2011-03-21 08:00,2011-05-28 18:00,,,,,PT_Normal,,,,,MTcbwlcQRPqqWTAu4yZLRw,DWLsrcFCTwm1vs2YgUgJTw,,,Y,4144,888,,,2017-01-24 14:42,2017-01-24 14:53,CLEMENTL,CLEMENTL
1186,49429013,751235,10651606,1239098,1,100,N,N,N,CP_Drtn,TT_Task,DT_FixedDUR2,RV_OK,TK_Complete,823A-ST-TUT-DW-1050,"Shear pin, toe grout and pumping test",268557,,,0,5632,0,5632,704,4224,4224,0,,2011-11-12 08:00,2012-02-29 18:00,2014-07-24 08:00,2014-07-24 08:00,,2017-01-01 00:00,2017-01-01 00:00,,,2011-11-12 08:00,2012-02-29 18:00,,,,,PT_Normal,,,,,N0Gf4AABRc2mkiseRevSig,,,,Y,5632,4224,,,2017-01-24 14:42,2017-01-24 14:53,CLEMENTL,CLEMENTL
1187,49429014,751235,10651606,1239098,1,100,N,N,N,CP_Drtn,TT_Task,DT_FixedDUR2,RV_OK,TK_Complete,823A-ST-TUT-DW-1030,D-wall design review,,,,0,0,0,0,240,0,0,0,,2011-07-14 08:00,2011-08-17 18:00,2014-07-24 08:00,2014-07-24 08:00,,2017-01-01 00:00,2017-01-01 00:00,,,2011-07-14 08:00,2011-08-17 18:00,,,,,PT_Normal,,,,,ArRM6506TcG0gaHupn0Ukw,,,,Y,0,0,,,2017-01-24 14:42,2017-01-24 14:53,CLEMENTL,CLEMENTL
1188,49429015,751235,10651607,1239098,1,100,N,N,N,CP_Drtn,TT_Task,DT_FixedDUR2,RV_OK,TK_Complete,823A-ST-TUT-GT-1020,Design review of TBM ground treatment,,,,0,0,0,0,568,0,0,0,,2012-04-02 08:00,2012-06-30 18:00,2014-07-24 08:00,2014-07-24 08:00,,2017-01-01 00:00,2017-01-01 00:00,,,2012-04-02 08:00,2012-06-30 18:00,,,,,PT_Normal,,,,,0dgY0lZaS7CJQZlvUflkJA,,,,Y,0,0,,,2017-01-24 14:42,2017-01-24 14:53,CLEMENTL,CLEMENTL
1189,49429016,751235,10651607,1239098,1,100,N,N,N,CP_Drtn,TT_Task,DT_FixedDUR2,RV_OK,TK_Complete,823A-ST-TUT-GT-1030,Ground treatment for TBM southbound,268557,,,0,2496,0,2496,416,1664,1664,0,,2012-07-03 08:00,2012-08-31 18:00,2014-07-24 08:00,2014-07-24 08:00,,2017-01-01 00:00,2017-01-01 00:00,,,2012-07-03 08:00,2012-08-31 18:00,,,,,PT_Normal,,,,,sFKOSP5BSbONV0mzszrpRA,,,,Y,2496,1664,,,2017-01-24 14:42,2017-01-24 14:53,CLEMENTL,CLEMENTL
1190,49429017,751235,10651607,1239098,1,100,N,N,N,CP_Drtn,TT_Task,DT_FixedDUR2,RV_OK,TK_Complete,823A-ST-TUT-GT-1040,Ground treatment for TBM northbound,268557,,,0,2352,0,2352,392,1568,1568,0,,2012-09-01 08:00,2012-10-31 18:00,2014-07-24 08:00,2014-07-24 08:00,,2017-01-01 00:00,2017-01-01 00:00,,,2012-09-01 08:00,2012-10-31 18:00,,,,,PT_Normal,,,,,qpu9kIl2QY24wYunuZdrXA,,,,Y,2352,1568,,,2017-01-24 14:42,2017-01-24 14:53,CLEMENTL,CLEMENTL
1191,49429018,751235,10651607,1239098,1,100,N,N,N,CP_Drtn,TT_Task,DT_FixedDUR2,RV_OK,TK_Complete,823A-ST-TUT-GT-1010,SI for TBM ground treatment,268581,,,0,432,0,432,216,216,0,0,,2012-03-01 08:00,2012-03-31 18:00,2014-07-24 08:00,2014-07-24 08:00,,2017-01-01 00:00,2017-01-01 00:00,,,2012-03-01 08:00,2012-03-31 18:00,,,,,PT_Normal,,,,,7I701nuHQamonRThS2m0ww,,,,Y,432,0,,,2017-01-24 14:42,2017-01-24 14:53,CLEMENTL,CLEMENTL
1192,49429019,751235,10651608,1239098,1,100,N,N,N,CP_Drtn,TT_Task,DT_FixedDUR2,RV_OK,TK_Complete,823A-ST-TUT-ELS-1130,Temporary handover the shaft to contract 822,,,,0,0,0,0,560,0,0,0,,2012-12-03 08:00,2013-02-28 18:00,2014-07-24 08:00,2014-07-24 08:00,,2017-01-01 00:00,2017-01-01 00:00,,,2013-06-03 08:00,2013-08-24 18:00,,,,,PT_Normal,,,,,rlrmiicnSK+vPkJU8fppYA,,,,Y,0,0,,,2017-01-24 14:42,2017-01-24 14:53,CLEMENTL,CLEMENTL
1193,49429020,751235,10651608,1239098,1,100,N,N,N,CP_Drtn,TT_Task,DT_FixedDUR2,RV_OK,TK_Complete,823A-ST-TUT-ELS-1150,Rock breaking works,268580,,,0,0,0,1664,240,1248,0,0,,2013-03-18 08:00,2013-05-08 18:00,2014-07-24 08:00,2014-07-24 08:00,,2017-01-01 00:00,2017-01-01 00:00,,,2013-08-26 08:00,2013-09-30 18:00,,,,,PT_Normal,,,,,HiPnKXgQQp6w3TqD7li6wg,,,,Y,0,0,,,2017-01-24 14:42,2017-01-24 14:53,CLEMENTL,CLEMENTL
1194,49429021,751235,10651608,1239098,0,100,N,N,N,CP_Drtn,TT_Mile,DT_FixedDrtn,RV_OK,TK_Complete,823A-ST-TUT-ELS-1140,Return TUT shaft by contract 822,,,,0,0,0,0,0,0,0,0,,2013-03-18 08:00,2013-03-18 08:00,2014-07-24 08:00,2014-07-24 08:00,,2017-01-01 00:00,2017-01-01 00:00,,,2013-08-26 08:00,2013-08-26 08:00,,,,,PT_Normal,,,,,t8/tN7TZTAanS2e0tTtggA,,,,Y,0,0,,,2017-01-24 14:42,2017-01-24 14:53,CLEMENTL,CLEMENTL
1195,49429022,751235,10651608,1239098,1,100,N,N,N,CP_Drtn,TT_Task,DT_FixedDUR2,RV_OK,TK_Complete,823A-ST-TUT-ELS-1010,Capping beam construction,268580,,,0,1944,0,1944,216,216,216,0,,2012-03-01 08:00,2012-03-31 18:00,2014-07-24 08:00,2014-07-24 08:00,,2017-01-01 00:00,2017-01-01 00:00,,,2012-03-01 08:00,2012-03-31 18:00,,,,,PT_Normal,,,,,opWVbN1+TM68Qqw8qOXUsw,,,,Y,1944,216,,,2017-01-24 14:42,2017-01-24 14:53,CLEMENTL,CLEMENTL
1196,49429023,751235,10651608,1227199,1,100,N,N,N,CP_Drtn,TT_Task,DT_FixedDUR2,RV_OK,TK_Complete,823A-ST-TUT-ELS-1020,L-Shape wall construction,268580,,,0,704,0,704,64,64,64,0,,2012-04-02 08:00,2012-04-14 18:00,2014-07-24 08:00,2014-07-24 08:00,,2017-01-01 00:00,2017-01-01 00:00,,,2012-04-02 08:00,2012-04-14 18:00,,,,,PT_Normal,,,,,B9R/0GjhSseuDhcDm4YCZA,WrulxGZNQoO99Z54Yunleg,,,Y,704,64,,,2017-01-24 14:42,2017-01-24 14:53,CLEMENTL,CLEMENTL
1197,49429024,751235,10651608,1227199,1,100,N,N,N,CP_Drtn,TT_Task,DT_FixedDUR2,RV_OK,TK_Complete,823A-ST-TUT-ELS-1030,Excavate up to +28.5mPD (1488m3),268581,,,0,880,0,880,40,680,680,0,,2012-04-16 08:00,2012-04-20 18:00,2014-07-24 08:00,2014-07-24 08:00,,2017-01-01 00:00,2017-01-01 00:00,,,2012-04-16 08:00,2012-04-20 18:00,,,,,PT_Normal,,,,,ICNXWvAaTXSsf9XT2fAjSQ,jH7f9Fy5Q0O3jc7vRxeKLw,,,Y,880,680,,,2017-01-24 14:42,2017-01-24 14:53,CLEMENTL,CLEMENTL
1198,49429025,751235,10651608,1227199,1,100,N,N,N,CP_Drtn,TT_Task,DT_FixedDUR2,RV_OK,TK_Complete,823A-ST-TUT-ELS-1040,Install Strut S1 +29.0mPD,,,,0,160,0,160,32,96,96,0,,2012-04-19 08:00,2012-04-23 18:00,2014-07-24 08:00,2014-07-24 08:00,,2017-01-01 00:00,2017-01-01 00:00,,,2012-04-19 08:00,2012-04-23 18:00,,,,,PT_Normal,,,,,tyOJEhfEQIyVR/FJNT/aYA,kFNtaYJhQL6/VvzucmmWnA,,,Y,160,96,,,2017-01-24 14:42,2017-01-24 14:53,CLEMENTL,CLEMENTL
1199,49429026,751235,10651608,1227199,1,100,N,N,N,CP_Drtn,TT_Task,DT_FixedDUR2,RV_OK,TK_Complete,823A-ST-TUT-ELS-1050,Excavate up to +23.5mPD (2480m3),268580,,,0,960,0,960,64,704,704,0,,2012-04-24 08:00,2012-05-04 18:00,2014-07-24 08:00,2014-07-24 08:00,,2017-01-01 00:00,2017-01-01 00:00,,,2012-04-24 08:00,2012-05-04 18:00,,,,,PT_Normal,,,,,hThwzhnSRMGUBzpFF/KXNA,2qYrGqZfTCW2un6U4eHnzA,,,Y,960,704,,,2017-01-24 14:42,2017-01-24 14:53,CLEMENTL,CLEMENTL
1200,49429027,751235,10651608,1227199,1,100,N,N,N,CP_Drtn,TT_Task,DT_FixedDUR2,RV_OK,TK_Complete,823A-ST-TUT-ELS-1060,Install Strut S2 +24.0mPD,,,,0,160,0,160,32,96,96,0,,2012-05-05 08:00,2012-05-09 18:00,2014-07-24 08:00,2014-07-24 08:00,,2017-01-01 00:00,2017-01-01 00:00,,,2012-05-05 08:00,2012-05-09 18:00,,,,,PT_Normal,,,,,24KAoSADR3SNL35NGvGJEQ,rLn1UOhOQla2MX/g1xzPpQ,,,Y,160,96,,,2017-01-24 14:42,2017-01-24 14:53,CLEMENTL,CLEMENTL
1201,49429028,751235,10651608,1227199,1,100,N,N,N,CP_Drtn,TT_Task,DT_FixedDUR2,RV_OK,TK_Complete,823A-ST-TUT-ELS-1070,Excavate up to +19.5mPD (1984m3),268580,,,0,1408,0,1408,128,1280,1280,0,,2012-05-10 08:00,2012-05-28 18:00,2014-07-24 08:00,2014-07-24 08:00,,2017-01-01 00:00,2017-01-01 00:00,,,2012-05-10 08:00,2012-05-28 18:00,,,,,PT_Normal,,,,,DkwiI45xQYq3jGhZKi7qFg,0E6heGGMR2WLgLVxHZhG3g,,,Y,1408,1280,,,2017-01-24 14:42,2017-01-24 14:53,CLEMENTL,CLEMENTL
1202,49429029,751235,10651608,1227199,1,100,N,N,N,CP_Drtn,TT_Task,DT_FixedDUR2,RV_OK,TK_Complete,823A-ST-TUT-ELS-1080,Install Strut S3 +20.0mPD,,,,0,160,0,160,32,96,96,0,,2012-05-29 08:00,2012-06-01 18:00,2014-07-24 08:00,2014-07-24 08:00,,2017-01-01 00:00,2017-01-01 00:00,,,2012-05-29 08:00,2012-06-01 18:00,,,,,PT_Normal,,,,,AYytJFKcSC6mqPYNKSthag,qIivN1qXQ7qA9HQG/t1Akg,,,Y,160,96,,,2017-01-24 14:42,2017-01-24 14:53,CLEMENTL,CLEMENTL
1203,49429030,751235,10651608,1227199,1,100,N,N,N,CP_Drtn,TT_Task,DT_FixedDUR2,RV_OK,TK_Complete,823A-ST-TUT-ELS-1090,Excavate up to +15.5mPD (1984m3),268580,,,0,3200,0,3200,400,2800,2800,0,,2012-06-02 08:00,2012-08-01 18:00,2014-07-24 08:00,2014-07-24 08:00,,2017-01-01 00:00,2017-01-01 00:00,,,2012-06-02 08:00,2012-08-01 18:00,,,,,PT_Normal,,,,,t5ItuOUOSNWVi+vgGo6hBw,ddugI8O9S3WyWS/NowKZbA,,,Y,3200,2800,,,2017-01-24 14:42,2017-01-24 14:53,CLEMENTL,CLEMENTL
1204,49429031,751235,10651608,1227199,1,100,N,N,N,CP_Drtn,TT_Task,DT_FixedDUR2,RV_OK,TK_Complete,823A-ST-TUT-ELS-1100,Install Strut S4 +16.0mPD,,,,0,160,0,160,32,96,96,0,,2012-08-02 08:00,2012-08-06 18:00,2014-07-24 08:00,2014-07-24 08:00,,2017-01-01 00:00,2017-01-01 00:00,,,2012-08-02 08:00,2012-08-06 18:00,,,,,PT_Normal,,,,,WCAUct6fRS65h9NrsuP17A,/8d5haeJQ1ik87ZAewgVWw,,,Y,160,96,,,2017-01-24 14:42,2017-01-24 14:53,CLEMENTL,CLEMENTL
1205,49429032,751235,10651608,1227199,1,100,N,N,N,CP_Drtn,TT_Task,DT_FixedDUR2,RV_OK,TK_Complete,823A-ST-TUT-ELS-1110,Excavate up to formation (4117m3),268581,,,0,8624,0,8624,784,7056,7056,0,,2012-08-07 08:00,2012-12-01 18:00,2014-07-24 08:00,2014-07-24 08:00,,2017-01-01 00:00,2017-01-01 00:00,,,2012-08-07 08:00,2012-12-01 18:00,,,,,PT_Normal,,,,,Q34vm0d+SICmtejSTSRdow,wTniL6KPSDetcdl5gFWB5A,,,Y,8624,7056,,,2017-01-24 14:42,2017-01-24 14:53,CLEMENTL,CLEMENTL
1206,49429033,751235,10651608,1227199,1,100,N,N,N,CP_Drtn,TT_Task,DT_FixedDUR2,RV_OK,TK_Complete,823A-ST-TUT-ELS-1120,Install rock dowel and tie back,,,,0,7296,0,7296,1216,4864,4864,0,,2012-06-02 08:00,2013-02-28 18:00,2014-07-24 08:00,2014-07-24 08:00,,2017-01-01 00:00,2017-01-01 00:00,,,2012-06-02 08:00,2012-12-01 18:00,,,,,PT_Normal,,,,,YBom3BzMTKqftZM179bEjw,md4PR2ftTn6aH8s4wNjW/A,,,Y,7296,4864,,,2017-01-24 14:42,2017-01-24 14:53,CLEMENTL,CLEMENTL
1207,49429034,751235,10651608,1239098,1,100,N,N,N,CP_Drtn,TT_Task,DT_FixedDUR2,RV_OK,TK_Complete,823A-ST-TUT-ELS-1160,Temporary base Slab for TBM Drive,,,,0,0,0,0,176,0,0,0,,2013-05-09 08:00,2013-07-11 18:00,2014-07-24 08:00,2014-07-24 08:00,,2017-01-01 00:00,2017-01-01 00:00,,,2013-06-01 08:00,2013-06-27 18:00,,,,,PT_Normal,,,,,OdwZubAgS2C9NlVQN/sFvA,,,,Y,0,0,,,2017-01-24 14:42,2017-01-24 14:53,CLEMENTL,CLEMENTL
1208,49429035,751235,10651610,1227199,1,100,N,N,N,CP_Drtn,TT_Task,DT_FixedDUR2,RV_OK,TK_Complete,823A-ST-TUT-NB-1190,Erect falsework and soffit formwork (Opening),,,,0,0,0,560,80,80,0,0,,2015-12-28 08:00,2016-01-08 18:00,2017-04-15 08:00,2017-04-15 08:00,,2017-01-01 00:00,2017-01-01 00:00,,,2016-03-10 08:00,2016-03-21 18:00,,,,,PT_Normal,,,,,/nyIwPUhTWK7+EgWyu7K2A,aAc5Sx8cRkeqFyEyyK+VWA,,,N,0,0,,,2017-01-24 14:42,2017-01-24 15:39,CLEMENTL,CLEMENTL
1209,49429036,751235,10651610,1227199,1,100,N,N,N,CP_Drtn,TT_Task,DT_FixedDUR2,RV_OK,TK_Complete,823A-ST-TUT-NB-1180,Provision access opening to DC,,,,0,0,0,0,232,0,0,0,,2015-12-07 08:00,2015-12-24 18:00,2017-04-15 08:00,2017-04-15 08:00,,2017-01-01 00:00,2017-01-01 00:00,,,2016-02-02 08:00,2016-03-09 18:00,,,,,PT_Normal,,,,,Gbt2+X8GQia3rzHO5e299g,,,,N,0,0,,,2017-01-24 14:42,2017-01-24 15:39,CLEMENTL,CLEMENTL
1210,49429037,751235,10651610,1227199,1,100,N,N,N,CP_Drtn,TT_Task,DT_FixedDUR2,RV_OK,TK_Complete,823A-ST-TUT-NB-1200,Rebar fixing (Roof),,,,0,0,0,40,8,8,0,0,,2016-01-09 08:00,2016-01-09 18:00,2017-04-15 08:00,2017-04-15 08:00,,2017-01-01 00:00,2017-01-01 00:00,,,2016-03-22 08:00,2016-03-22 18:00,,,,,PT_Normal,,,,,jp5N5e9DSwOlRXgrKiXKCA,c82PjEnUSZya6Hoz45QGAg,,,N,0,0,,,2017-01-24 14:42,2017-01-24 15:39,CLEMENTL,CLEMENTL
1211,49429038,751235,10651610,1227199,1,100,N,N,N,CP_Drtn,TT_Task,DT_FixedDUR2,RV_OK,TK_Complete,823A-ST-TUT-NB-1210,Clearing and inspection (Roof),,,,0,0,0,16,8,8,0,0,,2016-01-11 08:00,2016-01-11 18:00,2017-04-15 08:00,2017-04-15 08:00,,2017-01-01 00:00,2017-01-01 00:00,,,2016-03-23 08:00,2016-03-23 18:00,,,,,PT_Normal,,,,,2iLbG5DJTee9ff90fWEP/w,JdGjLv9uRBeD9yl9StgRWg,,,N,0,0,,,2017-01-24 14:42,2017-01-24 15:39,CLEMENTL,CLEMENTL
1212,49429039,751235,10651610,1227199,1,100,N,N,N,CP_Drtn,TT_Task,DT_FixedDUR2,RV_OK,TK_Complete,823A-ST-TUT-NB-1220,Concreting (Roof) (225m3),268581,,,0,0,0,160,8,16,0,0,,2016-01-12 08:00,2016-01-12 18:00,2017-04-15 08:00,2017-04-15 08:00,,2017-01-01 00:00,2017-01-01 00:00,,,2016-03-24 08:00,2016-03-24 18:00,,,,,PT_Normal,,,,,TmP+Pkz2Rdy8PUGVQAy5MA,2VVm1zgqT8qfu947K123mA,,,N,0,0,,,2017-01-24 14:42,2017-01-24 15:39,CLEMENTL,CLEMENTL
1213,49429040,751235,10651610,1227199,1,100,N,N,N,CP_Drtn,TT_Task,DT_FixedDUR2,RV_OK,TK_Complete,823A-ST-TUT-NB-1230,Curing (Roof),,,,0,0,0,0,112,0,0,0,,2016-01-13 08:00,2016-03-12 18:00,2017-04-15 08:00,2017-04-15 08:00,,2017-01-01 00:00,2017-01-01 00:00,,,2016-03-29 08:00,2016-04-14 18:00,,,,,PT_Normal,,,,,0J2eLfhBQtChqIVSuAEyiQ,D/LgvqhwQpKTHy/zljR7Zg,,,N,0,0,,,2017-01-24 14:42,2017-01-24 15:39,CLEMENTL,CLEMENTL
1214,49429041,751235,10651610,1227199,1,100,N,N,N,CP_Drtn,TT_Task,DT_FixedDUR2,RV_OK,TK_Complete,823A-ST-TUT-NB-1240,Removal internal falsework and soffit formwork (Roof),,,,0,0,0,168,24,24,0,0,,2016-03-14 08:00,2016-03-16 18:00,2017-04-15 08:00,2017-04-15 08:00,,2017-01-01 00:00,2017-01-01 00:00,,,2016-03-14 08:00,2016-03-16 18:00,,,,,PT_Normal,,,,,WgLyJP6STvu+lUHmYtG0RQ,bqMiPRSRQv22JiV5FfDnyw,,,N,0,0,,,2017-01-24 14:42,2017-01-24 15:39,CLEMENTL,CLEMENTL
1215,49429042,751235,10651610,1227199,1,100,N,N,N,CP_Drtn,TT_Task,DT_FixedDUR2,RV_OK,TK_Complete,823A-ST-TUT-NB-1010,Placing of waterproof member T-lock & testing (Base Slab),268571,,,0,0,0,32,16,0,0,0,,2015-11-07 08:00,2015-11-14 18:00,2017-04-15 08:00,2017-04-15 08:00,,2017-01-01 00:00,2017-01-01 00:00,,,2015-11-07 08:00,2015-11-09 18:00,,,,,PT_Normal,,,,,7YNBcCvZSiCt3XYDgoosQQ,unAKpRPLmk2KrTspPIMLmA,,,N,0,0,,,2017-01-24 14:42,2017-01-24 15:39,CLEMENTL,CLEMENTL
1216,49429043,751235,10651610,1227199,1,100,N,N,N,CP_Drtn,TT_Task,DT_FixedDUR2,RV_OK,TK_Complete,823A-ST-TUT-NB-1020,Erect external formwork (Base Slab),,,,0,0,0,120,24,24,0,0,,2015-11-16 08:00,2015-11-18 18:00,2017-04-15 08:00,2017-04-15 08:00,,2017-01-01 00:00,2017-01-01 00:00,,,2015-11-10 08:00,2015-11-12 18:00,,,,,PT_Normal,,,,,Fh0BHhLXTdaBcA0chI54hA,Le6mYAzWikeJpaluxKfEcw,,,N,0,0,,,2017-01-24 14:42,2017-01-24 15:39,CLEMENTL,CLEMENTL
1217,49429044,751235,10651610,1227199,1,100,N,N,N,CP_Drtn,TT_Task,DT_FixedDUR2,RV_OK,TK_Complete,823A-ST-TUT-NB-1030,Rebar fixing (Base Slab),,,,0,0,0,288,32,32,0,0,,2015-11-19 08:00,2015-11-23 18:00,2017-04-15 08:00,2017-04-15 08:00,,2017-01-01 00:00,2017-01-01 00:00,,,2015-11-13 08:00,2015-11-17 18:00,,,,,PT_Normal,,,,,WtNtN1XxSVyyDlV0jPCTJg,ms9QrW9zPkyPmJFz2gQEuA,,,N,0,0,,,2017-01-24 14:42,2017-01-24 15:39,CLEMENTL,CLEMENTL
1218,49429045,751235,10651610,1227199,1,100,N,N,N,CP_Drtn,TT_Task,DT_FixedDUR2,RV_OK,TK_Complete,823A-ST-TUT-NB-1040,Erect internal kicker formwork (Base Slab),,,,0,0,0,168,24,24,0,0,,2015-11-24 08:00,2015-11-26 18:00,2017-04-15 08:00,2017-04-15 08:00,,2017-01-01 00:00,2017-01-01 00:00,,,2015-11-18 08:00,2015-11-20 18:00,,,,,PT_Normal,,,,,v7oiRF9BR3SnLTwnJQ43fw,GyWZWycV5kGcHeNBcbZEKA,,,N,0,0,,,2017-01-24 14:42,2017-01-24 15:39,CLEMENTL,CLEMENTL
1219,49429046,751235,10651610,1227199,1,100,N,N,N,CP_Drtn,TT_Task,DT_FixedDUR2,RV_OK,TK_Complete,823A-ST-TUT-NB-1050,Clearing and inspection (Base Slab),,,,0,0,0,16,8,8,0,0,,2015-11-27 08:00,2015-11-27 18:00,2017-04-15 08:00,2017-04-15 08:00,,2017-01-01 00:00,2017-01-01 00:00,,,2015-11-21 08:00,2015-11-21 18:00,,,,,PT_Normal,,,,,eax5KjLRSXydIvXIbhvk6Q,iM6ZOMfsy0+S3U4POoGVWw,,,N,0,0,,,2017-01-24 14:42,2017-01-24 15:39,CLEMENTL,CLEMENTL
1220,49429047,751235,10651610,1227199,1,100,N,N,N,CP_Drtn,TT_Task,DT_FixedDUR2,RV_OK,TK_Complete,823A-ST-TUT-NB-1070,Curing (Base Slab),,,,0,0,0,0,56,56,56,0,,2015-11-30 08:00,2015-12-03 18:00,2017-04-15 08:00,2017-04-15 08:00,,2017-01-01 00:00,2017-01-01 00:00,,,2015-11-24 08:00,2015-12-01 18:00,,,,,PT_Normal,,,,,cPqT/MP5S+GS+iOQ+JQ97A,E6NQ4x7Mp0GJvd7YVzAzXA,,,N,0,56,,,2017-01-24 14:42,2017-01-24 15:39,CLEMENTL,CLEMENTL
1221,49429048,751235,10651610,1227199,1,100,N,N,N,CP_Drtn,TT_Task,DT_FixedDUR2,RV_OK,TK_Complete,823A-ST-TUT-NB-1080,Removal of formwork (Base Slab),,,,0,0,0,24,8,8,0,0,,2015-12-04 08:00,2015-12-05 18:00,2017-04-15 08:00,2017-04-15 08:00,,2017-01-01 00:00,2017-01-01 00:00,,,2015-12-01 08:00,2015-12-01 18:00,,,,,PT_Normal,,,,,NcnyyQxkQzWFQnaBgdLEEw,LEIgH0hBJ06bbsu5/HoExQ,,,N,0,0,,,2017-01-24 14:42,2017-01-24 15:39,CLEMENTL,CLEMENTL
1222,49429049,751235,10651610,1227199,1,100,N,N,N,CP_Drtn,TT_Task,DT_FixedDUR2,RV_OK,TK_Complete,823A-ST-TUT-NB-1090,Erect internal formwork and scaffold system (Wall and roof),,,,0,728,0,728,56,56,56,0,,2015-12-07 08:00,2016-01-02 18:00,2017-04-15 08:00,2017-04-15 08:00,,2017-01-01 00:00,2017-01-01 00:00,,,2015-12-02 08:00,2015-12-09 18:00,,,,,PT_Normal,,,,,rcxjGJjySOC4vfnuULiVkQ,Ym1pEC8N/0mn8uwmJTOPYw,,,N,728,56,,,2017-01-24 14:42,2017-01-24 15:39,CLEMENTL,CLEMENTL
1223,49429050,751235,10651610,1227199,1,100,N,N,N,CP_Drtn,TT_Task,DT_FixedDUR2,RV_OK,TK_Complete,823A-ST-TUT-NB-1100,Rebar fixing (Wall and roof),,,,0,0,0,432,48,48,0,0,,2016-01-04 08:00,2016-01-09 18:00,2017-04-15 08:00,2017-04-15 08:00,,2017-01-01 00:00,2017-01-01 00:00,,,2016-01-04 08:00,2016-01-09 18:00,,,,,PT_Normal,,,,,LCZCkoJfS5OXNm3+UqhRDw,5EpJlSZeWkuxV8/habE0qA,,,N,0,0,,,2017-01-24 14:42,2017-01-24 15:39,CLEMENTL,CLEMENTL
1224,49429051,751235,10651610,1227199,1,100,N,N,N,CP_Drtn,TT_Task,DT_FixedDUR2,RV_OK,TK_Complete,823A-ST-TUT-NB-1110,Erect external formwork (Wall),,,,0,0,0,120,24,24,0,0,,2016-01-07 08:00,2016-01-09 18:00,2017-04-15 08:00,2017-04-15 08:00,,2017-01-01 00:00,2017-01-01 00:00,,,2016-01-11 08:00,2016-01-13 18:00,,,,,PT_Normal,,,,,xfZmxL5YQdqnF5JzqTZY+A,WbGZ1YNt8km9LEyeMST4Kw,,,N,0,0,,,2017-01-24 14:42,2017-01-24 15:39,CLEMENTL,CLEMENTL
1225,49429052,751235,10651610,1227199,1,100,N,N,N,CP_Drtn,TT_Task,DT_FixedDUR2,RV_OK,TK_Complete,823A-ST-TUT-NB-1120,Clearing and inspection (Wall and roof),,,,0,0,0,16,8,8,0,0,,2016-01-11 08:00,2016-01-11 18:00,2017-04-15 08:00,2017-04-15 08:00,,2017-01-01 00:00,2017-01-01 00:00,,,2016-01-14 08:00,2016-01-14 18:00,,,,,PT_Normal,,,,,l33PekG+SL+I7Dy87d+fhA,TjB+rLyFjkWRfgEViLf69A,,,N,0,0,,,2017-01-24 14:42,2017-01-24 15:39,CLEMENTL,CLEMENTL
1226,49429053,751235,10651610,1227199,1,100,N,N,N,CP_Drtn,TT_Task,DT_FixedDUR2,RV_OK,TK_Complete,823A-ST-TUT-NB-1130,Concreting (Wall and roof) (166m3),268581,,,0,0,0,112,8,16,0,0,,2016-01-12 08:00,2016-01-12 18:00,2017-04-15 08:00,2017-04-15 08:00,,2017-01-01 00:00,2017-01-01 00:00,,,2016-01-15 08:00,2016-01-15 18:00,,,,,PT_Normal,,,,,o1EFX0XVR+e8II8/k52eUg,XkfhLVnMT02Q/Fg/rVLfxA,,,N,0,0,,,2017-01-24 14:42,2017-01-24 15:39,CLEMENTL,CLEMENTL
1227,49429054,751235,10651610,1227199,1,100,N,N,N,CP_Drtn,TT_Task,DT_FixedDUR2,RV_OK,TK_Complete,823A-ST-TUT-NB-1060,Concreting (Base Slab) (245m3),268581,,,0,0,0,112,8,16,0,0,,2015-11-28 08:00,2015-11-28 18:00,2017-04-15 08:00,2017-04-15 08:00,,2017-01-01 00:00,2017-01-01 00:00,,,2015-11-23 08:00,2015-11-23 18:00,,,,,PT_Normal,,,,,MRxieWi6ReClu3LgpHfBfw,i545DtmBhEygpChdMZ/erA,,,N,0,0,,,2017-01-24 14:42,2017-01-24 15:39,CLEMENTL,CLEMENTL
1228,49429055,751235,10651610,1227199,1,100,N,N,N,CP_Drtn,TT_Task,DT_FixedDUR2,RV_OK,TK_Complete,823A-ST-TUT-NB-1150,Removal formwork (Wall),,,,0,0,0,120,24,24,0,0,,2016-01-28 08:00,2016-01-30 18:00,2017-04-15 08:00,2017-04-15 08:00,,2017-01-01 00:00,2017-01-01 00:00,,,2016-01-19 08:00,2016-01-21 18:00,,,,,PT_Normal,,,,,ySEbffrvTyyLXm2IYoYW6Q,2GNSmGks2EChjsKny1+SbA,,,N,0,0,,,2017-01-24 14:42,2017-01-24 15:39,CLEMENTL,CLEMENTL
1229,49429056,751235,10651610,1227199,1,100,N,N,N,CP_Drtn,TT_Task,DT_FixedDUR2,RV_OK,TK_Complete,823A-ST-TUT-NB-1140,Curing (Wall and roof),,,,0,0,0,0,104,56,0,0,,2016-01-13 08:00,2016-01-27 18:00,2017-04-15 08:00,2017-04-15 08:00,,2017-01-01 00:00,2017-01-01 00:00,,,2016-01-16 08:00,2016-01-30 18:00,,,,,PT_Normal,,,,,BLSQeeSCQWCsFw22HoAUiQ,344NxI9wk0KM6cuxT7cMNg,,,N,0,0,,,2017-01-24 14:42,2017-01-24 15:39,CLEMENTL,CLEMENTL
1230,49429057,751235,10651610,1227199,1,100,N,N,N,CP_Drtn,TT_Task,DT_FixedDUR2,RV_OK,TK_Complete,823A-ST-TUT-NB-1170,Side walkway and cable bracket (72m3),,,,0,880,0,880,80,160,160,0,,2015-11-12 08:00,2016-03-01 18:00,2017-04-15 08:00,2017-04-15 08:00,,2017-01-01 00:00,2017-01-01 00:00,,,2016-01-06 08:00,2016-01-16 18:00,,,,,PT_Normal,,,,,Xf9FKCYeRXWYJhHtCj/qlw,CbbgBtmHZE2CCGdv+wA9rQ,,,N,880,160,,,2017-01-24 14:42,2017-01-24 15:39,CLEMENTL,CLEMENTL
1231,49429058,751235,10651610,1239098,1,100,N,N,N,CP_Drtn,TT_Task,DT_FixedDUR2,RV_OK,TK_Complete,823A-ST-TUT-NB-1160,Removal formwork and falsework (Roof),268565,,,0,0,0,72,8,8,0,0,,2016-01-30 08:00,2016-01-30 18:00,2017-04-15 08:00,2017-04-15 08:00,,2017-01-01 00:00,2017-01-01 00:00,,,2016-02-01 08:00,2016-02-01 18:00,,,,,PT_Normal,,,,,GpkWXIY1SOKiwr31MAIZag,lHpMPnTqs0C6g3epJkkKoQ,,,N,0,0,,,2017-01-24 14:42,2017-01-24 15:39,CLEMENTL,CLEMENTL
1232,49429059,751235,10651611,1227199,1,100,N,N,N,CP_Drtn,TT_Task,DT_FixedDUR2,RV_OK,TK_Complete,823A-ST-TUT-SB-1010,Placing of waterproof member T-lock & testing (Base Slab),268571,,,0,0,0,32,16,0,0,0,,2014-08-14 08:00,2014-08-15 18:00,2017-06-12 18:00,2017-06-12 18:00,,2017-01-01 00:00,2017-01-01 00:00,,,2014-08-08 08:00,2014-08-09 18:00,,,,,PT_Normal,,,,,l/hQwHCQSMuExZ2t5A6tFQ,k3xsqXSjQJGsCb5tgVnk8g,,,N,0,0,,,2017-01-24 14:42,2017-01-24 15:36,CLEMENTL,CLEMENTL
1233,49429060,751235,10651611,1227199,1,100,N,N,N,CP_Drtn,TT_Task,DT_FixedDUR2,RV_OK,TK_Complete,823A-ST-TUT-SB-1020,Erect external formwork (Base Slab),,,,0,0,0,120,24,24,0,0,,2014-08-16 08:00,2014-08-19 18:00,2017-06-12 18:00,2017-06-12 18:00,,2017-01-01 00:00,2017-01-01 00:00,,,2014-08-11 08:00,2014-08-13 18:00,,,,,PT_Normal,,,,,OoAhNChOQc27p16cz5rXEw,ojky0h55RcmofJUtXZ1OtA,,,N,0,0,,,2017-01-24 14:42,2017-01-24 15:36,CLEMENTL,CLEMENTL
1234,49429061,751235,10651611,1227199,1,100,N,N,N,CP_Drtn,TT_Task,DT_FixedDUR2,RV_OK,TK_Complete,823A-ST-TUT-SB-1030,Rebar fixing (Base Slab),,,,0,0,0,288,32,32,0,0,,2014-08-20 08:00,2014-08-23 18:00,2017-06-12 18:00,2017-06-12 18:00,,2017-01-01 00:00,2017-01-01 00:00,,,2014-08-14 08:00,2014-08-18 18:00,,,,,PT_Normal,,,,,2Mfs0ZJPSNykJzH1IDgpcQ,Zif6BZKESMS+pkSP9i5zfg,,,N,0,0,,,2017-01-24 14:42,2017-01-24 15:36,CLEMENTL,CLEMENTL
1235,49429062,751235,10651611,1227199,1,100,N,N,N,CP_Drtn,TT_Task,DT_FixedDUR2,RV_OK,TK_Complete,823A-ST-TUT-SB-1040,Erect internal kicker formwork (Base Slab),,,,0,0,0,120,24,24,0,0,,2014-08-25 08:00,2014-08-27 18:00,2017-06-12 18:00,2017-06-12 18:00,,2017-01-01 00:00,2017-01-01 00:00,,,2014-08-19 08:00,2014-08-21 18:00,,,,,PT_Normal,,,,,sfq9iUUbTWSVHQc/ieBzhA,tbtFWipbQOi1RZBkaRXmUQ,,,N,0,0,,,2017-01-24 14:42,2017-01-24 15:36,CLEMENTL,CLEMENTL
1236,49429063,751235,10651611,1227199,1,100,N,N,N,CP_Drtn,TT_Task,DT_FixedDUR2,RV_OK,TK_Complete,823A-ST-TUT-SB-1050,Clearing and inspection (Base Slab),,,,0,0,0,16,8,8,0,0,,2014-08-28 08:00,2014-08-28 18:00,2017-06-12 18:00,2017-06-12 18:00,,2017-01-01 00:00,2017-01-01 00:00,,,2014-08-22 08:00,2014-08-22 18:00,,,,,PT_Normal,,,,,yOifUm+eS9eHJ2eijW/iLQ,eW43kUblTu2vnFEnZMB4uQ,,,N,0,0,,,2017-01-24 14:42,2017-01-24 15:36,CLEMENTL,CLEMENTL
1237,49429064,751235,10651611,1227199,1,100,N,N,N,CP_Drtn,TT_Task,DT_FixedDUR2,RV_OK,TK_Complete,823A-ST-TUT-SB-1060,Concreting (Base Slab) (245m3),268581,,,0,0,0,112,8,16,0,0,,2014-08-29 08:00,2014-08-29 18:00,2017-06-12 18:00,2017-06-12 18:00,,2017-01-01 00:00,2017-01-01 00:00,,,2014-08-23 08:00,2014-08-23 18:00,,,,,PT_Normal,,,,,PJChJkG8SSa+UBJnZ+ZaLg,77JuZWrHQ6Ob9XdExYqqng,,,N,0,0,,,2017-01-24 14:42,2017-01-24 15:36,CLEMENTL,CLEMENTL
1238,49429065,751235,10651611,1227199,1,100,N,N,N,CP_Drtn,TT_Task,DT_FixedDUR2,RV_OK,TK_Complete,823A-ST-TUT-SB-1070,Curing (Base Slab),,,,0,0,0,0,56,56,56,0,,2014-08-30 08:00,2014-09-06 18:00,2017-06-12 18:00,2017-06-12 18:00,,2017-01-01 00:00,2017-01-01 00:00,,,2014-08-25 08:00,2014-09-01 18:00,,,,,PT_Normal,,,,,5ht/0pToSwu2+Nh7hO/CXQ,Uhg0PLZuTda6Q/aGQSoIYw,,,N,0,56,,,2017-01-24 14:42,2017-01-24 15:36,CLEMENTL,CLEMENTL
1239,49429066,751235,10651611,1227199,1,100,N,N,N,CP_Drtn,TT_Task,DT_FixedDUR2,RV_OK,TK_Complete,823A-ST-TUT-SB-1080,Removal of formwork (Base Slab),,,,0,0,0,40,8,8,0,0,,2014-09-01 08:00,2014-09-01 18:00,2017-06-12 18:00,2017-06-12 18:00,,2017-01-01 00:00,2017-01-01 00:00,,,2014-09-08 08:00,2014-09-08 18:00,,,,,PT_Normal,,,,,aFv9jolXSZ2n+owXv02jPw,EWQVYHGST0i/S6QKSAZZHA,,,N,0,0,,,2017-01-24 14:42,2017-01-24 15:36,CLEMENTL,CLEMENTL
1240,49429067,751235,10651611,1227199,1,100,N,N,N,CP_Drtn,TT_Task,DT_FixedDUR2,RV_OK,TK_Complete,823A-ST-TUT-SB-1090,Erect internal formwork and scaffold system (Wall and roof),,,,0,0,0,728,56,56,0,0,,2014-09-02 08:00,2014-09-10 18:00,2017-06-12 18:00,2017-06-12 18:00,,2017-01-01 00:00,2017-01-01 00:00,,,2014-09-10 08:00,2014-09-17 18:00,,,,,PT_Normal,,,,,tmR4PCXdRXKTs1fUmEu7rA,HmPML7XmSzKYzl8Fcld6Ng,,,N,0,0,,,2017-01-24 14:42,2017-01-24 15:36,CLEMENTL,CLEMENTL
1241,49429068,751235,10651611,1227199,1,100,N,N,N,CP_Drtn,TT_Task,DT_FixedDUR2,RV_OK,TK_Complete,823A-ST-TUT-SB-1100,Rebar fixing (Wall and roof),,,,0,0,0,432,48,48,0,0,,2014-09-11 08:00,2014-09-20 18:00,2017-06-12 18:00,2017-06-12 18:00,,2017-01-01 00:00,2017-01-01 00:00,,,2014-09-18 08:00,2014-09-24 18:00,,,,,PT_Normal,,,,,hNG8ARIWSV2Stz04a1pOxQ,ZLYsA0o7RzuSL+wPI55yWg,,,N,0,0,,,2017-01-24 14:42,2017-01-24 15:36,CLEMENTL,CLEMENTL
1242,49429069,751235,10651611,1227199,1,100,N,N,N,CP_Drtn,TT_Task,DT_FixedDUR2,RV_OK,TK_Complete,823A-ST-TUT-SB-1110,Erect external formwork (Wall),,,,0,0,0,120,24,24,0,0,,2014-09-22 08:00,2014-09-27 18:00,2017-06-12 18:00,2017-06-12 18:00,,2017-01-01 00:00,2017-01-01 00:00,,,2014-09-25 08:00,2014-09-27 18:00,,,,,PT_Normal,,,,,3ZOVd4jAT8ePX5aEO5ulpA,hFBYfzxTSde/vmLd52HArA,,,N,0,0,,,2017-01-24 14:42,2017-01-24 15:36,CLEMENTL,CLEMENTL
1243,49429070,751235,10651611,1227199,1,100,N,N,N,CP_Drtn,TT_Task,DT_FixedDUR2,RV_OK,TK_Complete,823A-ST-TUT-SB-1120,Clearing and inspection (Wall and roof),,,,0,0,0,16,8,8,0,0,,2014-09-29 08:00,2014-09-29 18:00,2017-06-12 18:00,2017-06-12 18:00,,2017-01-01 00:00,2017-01-01 00:00,,,2014-09-29 08:00,2014-09-29 18:00,,,,,PT_Normal,,,,,JFc/5UxxSBuEz9GcCN53sA,sBkpgGhgRnm2bmbKuCRWgA,,,N,0,0,,,2017-01-24 14:42,2017-01-24 15:36,CLEMENTL,CLEMENTL
1244,49429071,751235,10651611,1227199,1,100,N,N,N,CP_Drtn,TT_Task,DT_FixedDUR2,RV_OK,TK_Complete,823A-ST-TUT-SB-1130,Concreting (Wall and roof) (166m3),268581,,,0,0,0,112,8,16,0,0,,2014-10-25 08:00,2014-10-25 18:00,2017-06-12 18:00,2017-06-12 18:00,,2017-01-01 00:00,2017-01-01 00:00,,,2014-10-10 08:00,2014-10-10 18:00,,,,,PT_Normal,,,,,KfObMfKHT5+Q/RljBlorrQ,Hg977DMcQgu/BpluZ3Elgw,,,N,0,0,,,2017-01-24 14:42,2017-01-24 15:36,CLEMENTL,CLEMENTL
1245,49429072,751235,10651611,1227199,1,100,N,N,N,CP_Drtn,TT_Task,DT_FixedDUR2,RV_OK,TK_Complete,823A-ST-TUT-SB-1150,Removal formwork (Wall),,,,0,120,0,120,24,24,24,0,,2014-10-30 08:00,2014-11-01 18:00,2017-06-12 18:00,2017-06-12 18:00,,2017-01-01 00:00,2017-01-01 00:00,,,2014-10-14 08:00,2014-10-16 18:00,,,,,PT_Normal,,,,,Q+kszcWqSIu1ysb0c+5OIQ,KHb/iW4eRI+B8cJhD1t+gw,,,N,120,24,,,2017-01-24 14:42,2017-01-24 15:36,CLEMENTL,CLEMENTL
1246,49429073,751235,10651611,1227199,1,100,N,N,N,CP_Drtn,TT_Task,DT_FixedDUR2,RV_OK,TK_Complete,823A-ST-TUT-SB-1140,Curing (Wall and roof),,,,0,0,0,0,104,56,56,0,,2014-10-27 08:00,2014-11-07 18:00,2017-06-12 18:00,2017-06-12 18:00,,2017-01-01 00:00,2017-01-01 00:00,,,2014-10-11 08:00,2014-10-25 18:00,,,,,PT_Normal,,,,,5vdnMAggQ96aycuehItxew,ZUEVuT0VQbWqUSPGQpvSvg,,,N,0,56,,,2017-01-24 14:42,2017-01-24 15:36,CLEMENTL,CLEMENTL
1247,49429074,751235,10651611,1227199,1,100,N,N,N,CP_Drtn,TT_Task,DT_FixedDUR2,RV_OK,TK_Complete,823A-ST-TUT-SB-1170,Side walkway and cable bracket (72m3),268581,,,0,0,0,960,80,160,0,0,,2014-12-01 08:00,2014-12-11 18:00,2017-06-12 18:00,2017-06-12 18:00,,2017-01-01 00:00,2017-01-01 00:00,,,2014-12-01 08:00,2014-12-11 18:00,,,,,PT_Normal,,,,,vlquXApqSKOHe8DBNTkxgg,iYnq4Mn0TfKtYXhnZ2YI+g,,,N,0,0,,,2017-01-24 14:42,2017-01-24 15:36,CLEMENTL,CLEMENTL
1248,49429075,751235,10651611,1239098,1,100,N,N,N,CP_Drtn,TT_Task,DT_FixedDUR2,RV_OK,TK_Complete,823A-ST-TUT-SB-1160,Removal formwork (Roof),268558,,,0,0,0,72,8,8,0,0,,2014-11-08 08:00,2014-11-08 18:00,2017-06-12 18:00,2017-06-12 18:00,,2017-01-01 00:00,2017-01-01 00:00,,,2014-11-08 08:00,2014-11-08 18:00,,,,,PT_Normal,,,,,4//1dQ26ROGJ4BCDRXY13g,,,,N,0,0,,,2017-01-24 14:42,2017-01-24 15:36,CLEMENTL,CLEMENTL
1249,49429076,751235,10651614,1227199,1,100,N,N,N,CP_Drtn,TT_Task,DT_FixedDUR2,RV_OK,TK_Complete,823A-ST-SNT6-1090,Side walkway and cable bracket (204m3),,,,0,0,0,1040,40,80,0,0,,2014-03-05 08:00,2014-03-10 18:00,2017-06-12 18:00,2017-06-12 18:00,,2017-01-01 00:00,2017-01-01 00:00,,,2014-03-05 08:00,2014-03-10 18:00,,,,,PT_Normal,,,,,/lltdIuJSGOeapr0MBvzvw,vVCqRLe8QEi5cZr9IA2sFA,,,N,0,0,,,2017-01-24 14:42,2017-01-24 15:36,CLEMENTL,CLEMENTL
1250,49429077,751235,10651614,1227199,1,100,N,N,N,CP_Drtn,TT_Task,DT_FixedDUR2,RV_OK,TK_Complete,823A-ST-SNT6-1010,Erect internal formwork & Falsework for wall and roof,,,,0,624,0,624,32,48,48,0,,2013-10-24 08:00,2013-11-16 18:00,2014-07-24 08:00,2014-07-24 08:00,,2017-01-01 00:00,2017-01-01 00:00,,,2013-11-01 08:00,2013-11-05 18:00,,,,,PT_Normal,,,,,wTV5EPGeRDC+bHPaHniHuA,w8J5bHuoNkSfWNjCpnpNqA,,,Y,624,48,,,2017-01-24 14:42,2017-01-24 14:53,CLEMENTL,CLEMENTL
1251,49429078,751235,10651614,1227199,1,100,N,N,N,CP_Drtn,TT_Task,DT_FixedDUR2,RV_OK,TK_Complete,823A-ST-SNT6-1020,Rebar fixing for wall and roof,,,,0,0,0,544,24,32,0,0,,2013-11-18 08:00,2013-11-20 18:00,2014-07-24 08:00,2014-07-24 08:00,,2017-01-01 00:00,2017-01-01 00:00,,,2013-11-05 08:00,2013-11-07 18:00,,,,,PT_Normal,,,,,6JaeVG9QRRCIRrTuAJBctQ,4CZy3fjIiU+UpfmLFq8dAQ,,,Y,0,0,,,2017-01-24 14:42,2017-01-24 14:53,CLEMENTL,CLEMENTL
1252,49429079,751235,10651614,1227199,1,100,N,N,N,CP_Drtn,TT_Task,DT_FixedDUR2,RV_OK,TK_Complete,823A-ST-SNT6-1030,Erect external formwork for wall and roof,,,,0,0,0,208,16,16,0,0,,2013-11-21 08:00,2013-11-22 18:00,2014-07-24 08:00,2014-07-24 08:00,,2017-01-01 00:00,2017-01-01 00:00,,,2013-11-08 08:00,2013-11-09 18:00,,,,,PT_Normal,,,,,EFQh2Tv2Q96OwMsdApOxWQ,Wfit95I3tk2PIxdz0o+aCQ,,,Y,0,0,,,2017-01-24 14:43,2017-01-24 14:53,CLEMENTL,CLEMENTL
1253,49429080,751235,10651614,1227199,1,100,N,N,N,CP_Drtn,TT_Task,DT_FixedDUR2,RV_OK,TK_Complete,823A-ST-SNT6-1040,Concreting for wall and roof (215m3),,,,0,0,0,208,8,16,0,0,,2013-11-23 08:00,2013-11-23 18:00,2014-07-24 08:00,2014-07-24 08:00,,2017-01-01 00:00,2017-01-01 00:00,,,2013-11-11 08:00,2013-11-11 18:00,,,,,PT_Normal,,,,,OcWCgzG4Soq0aVGUsmzctg,ypbKOqEkNE+yvWUCI8Idsw,,,Y,0,0,,,2017-01-24 14:43,2017-01-24 14:53,CLEMENTL,CLEMENTL
1254,49429081,751235,10651614,1227199,1,100,N,N,N,CP_Drtn,TT_Task,DT_FixedDUR2,RV_OK,TK_Complete,823A-ST-SNT6-1070,Removal external and internal formwork for wall,,,,0,0,0,144,8,16,0,0,,2013-11-26 08:00,2013-11-26 18:00,2014-07-24 08:00,2014-07-24 08:00,,2017-01-01 00:00,2017-01-01 00:00,,,2013-11-13 08:00,2013-11-13 18:00,,,,,PT_Normal,,,,,QD8Y/MbZSeOBvWHFvKnSHQ,Ct+N8ZnWSUeHRy0N3RAb6Q,,,Y,0,0,,,2017-01-24 14:43,2017-01-24 14:53,CLEMENTL,CLEMENTL
1255,49429082,751235,10651614,1239099,1,100,N,N,N,CP_Drtn,TT_Task,DT_FixedDUR2,RV_OK,TK_Complete,823A-ST-SNT6-1050,Curing for wall and roof,,,,0,224,0,224,80,0,0,0,,2013-11-25 08:00,2013-12-05 18:00,2017-06-12 18:00,2017-06-12 18:00,,2017-01-01 00:00,2017-01-01 00:00,,,2013-11-12 08:00,2013-11-21 18:00,,,,,PT_Normal,,,,,mIlXTSqEQMiSaRTTTcbjqg,pXL10BWvbkmpcxlqWQVgGg,,,N,224,0,,,2017-01-24 14:43,2017-01-24 15:36,CLEMENTL,CLEMENTL
1256,49429083,751235,10651614,1227199,1,100,N,N,N,CP_Drtn,TT_Task,DT_FixedDUR2,RV_OK,TK_Complete,823A-ST-SNT6-1080,Removal internal falsework and formwork for roof,,,,0,0,0,416,16,32,0,0,,2013-12-06 08:00,2013-12-07 18:00,2017-06-12 18:00,2017-06-12 18:00,,2017-01-01 00:00,2017-01-01 00:00,,,2013-12-05 08:00,2013-12-06 18:00,,,,,PT_Normal,,,,,MbdgSpUORlKzYrbLTHi8ww,YXMHosL9L0mdRUMmJnXB2g,,,N,0,0,,,2017-01-24 14:43,2017-01-24 15:36,CLEMENTL,CLEMENTL
1257,49429084,751235,10651614,1239098,1,100,N,N,N,CP_Drtn,TT_Task,DT_FixedDUR2,RV_OK,TK_Complete,823A-ST-SNT6-1060,Preparation of construction joint for wall and roof,,,,0,0,0,0,8,0,0,0,,2013-11-25 08:00,2013-11-25 18:00,2014-07-24 08:00,2014-07-24 08:00,,2017-01-01 00:00,2017-01-01 00:00,,,2013-11-12 08:00,2013-11-12 18:00,,,,,PT_Normal,,,,,n56X4T+fT/q5wR1XWOH+cw,gTXmoGAH0Een+w11aXZ4TQ,,,Y,0,0,,,2017-01-24 14:43,2017-01-24 14:53,CLEMENTL,CLEMENTL
1258,49429085,751235,10651615,1227199,1,100,N,N,N,CP_Drtn,TT_Task,DT_FixedDUR2,RV_OK,TK_Complete,823A-ST-SNT18-1010,Placing of waterproof member T-lock & testing for base slab,,,,0,0,0,64,8,0,0,0,,2013-10-17 08:00,2013-10-21 18:00,2017-06-12 18:00,2017-06-12 18:00,,2017-01-01 00:00,2017-01-01 00:00,,,2013-11-29 08:00,2013-11-29 18:00,,,,,PT_Normal,,,,,9DqMFwtaQMO9/3IiwY45wg,yK2PwHrpbUSvcfAPOD8HkQ,,,N,0,0,,,2017-01-24 14:43,2017-01-24 15:36,CLEMENTL,CLEMENTL
1259,49429086,751235,10651615,1227199,1,100,N,N,N,CP_Drtn,TT_Task,DT_FixedDUR2,RV_OK,TK_Complete,823A-ST-SNT18-1020,Erect external formwork for base slab,,,,0,0,0,104,16,8,0,0,,2013-10-17 08:00,2013-10-21 18:00,2017-06-12 18:00,2017-06-12 18:00,,2017-01-01 00:00,2017-01-01 00:00,,,2013-11-30 08:00,2013-12-02 18:00,,,,,PT_Normal,,,,,fSx+HbgkTcCwQ/oZZ47/vQ,T4lTs/MaJkuil88ltcUQ2A,,,N,0,0,,,2017-01-24 14:43,2017-01-24 15:36,CLEMENTL,CLEMENTL
1260,49429087,751235,10651615,1227199,1,100,N,N,N,CP_Drtn,TT_Task,DT_FixedDUR2,RV_OK,TK_Complete,823A-ST-SNT18-1030,Rebar fixing for base slab,,,,0,0,0,272,16,16,0,0,,2013-10-22 08:00,2013-10-25 18:00,2017-06-12 18:00,2017-06-12 18:00,,2017-01-01 00:00,2017-01-01 00:00,,,2013-11-29 08:00,2013-11-30 18:00,,,,,PT_Normal,,,,,Vv6SzgTETauIxH+ysB4ZCQ,feLIaF0g2E+BRj3fm0vgBg,,,N,0,0,,,2017-01-24 14:43,2017-01-24 15:36,CLEMENTL,CLEMENTL
1261,49429088,751235,10651615,1227199,1,100,N,N,N,CP_Drtn,TT_Task,DT_FixedDUR2,RV_OK,TK_Complete,823A-ST-SNT18-1050,Concreting for base slab (70m3),,,,0,0,0,208,8,16,0,0,,2013-11-09 08:00,2013-11-09 18:00,2017-06-12 18:00,2017-06-12 18:00,,2017-01-01 00:00,2017-01-01 00:00,,,2013-12-02 08:00,2013-12-02 18:00,,,,,PT_Normal,,,,,FZNtblGwS4+iMuPNaDMQeQ,+yr8O2/QLkyKIN49R3ur+g,,,N,0,0,,,2017-01-24 14:43,2017-01-24 15:36,CLEMENTL,CLEMENTL
1262,49429089,751235,10651615,1239099,1,100,N,N,N,CP_Drtn,TT_Task,DT_FixedDUR2,RV_OK,TK_Complete,823A-ST-SNT18-1060,Curing for base slab,,,,0,0,0,224,56,0,0,0,,2013-11-11 08:00,2013-11-18 18:00,2017-06-12 18:00,2017-06-12 18:00,,2017-01-01 00:00,2017-01-01 00:00,,,2013-12-03 08:00,2013-12-09 18:00,,,,,PT_Normal,,,,,KXXo+7JUSqGkekpJvuDhHw,m50yJHZKpkq/LkRixIv4TA,,,N,0,0,,,2017-01-24 14:43,2017-01-24 15:36,CLEMENTL,CLEMENTL
1263,49429090,751235,10651615,1227199,1,100,N,N,N,CP_Drtn,TT_Task,DT_FixedDUR2,RV_OK,TK_Complete,823A-ST-SNT18-1080,Removal of formwork for base slab,,,,0,72,0,72,8,8,8,0,,2013-11-12 08:00,2013-11-12 18:00,2017-06-12 18:00,2017-06-12 18:00,,2017-01-01 00:00,2017-01-01 00:00,,,2013-12-04 08:00,2013-12-04 18:00,,,,,PT_Normal,,,,,keNkrAVXTfK4KX/QVesvfw,09beaPb8JkS/iPNlKlT7Vg,,,N,72,8,,,2017-01-24 14:43,2017-01-24 15:36,CLEMENTL,CLEMENTL
1264,49429091,751235,10651615,1227199,1,100,N,N,N,CP_Drtn,TT_Task,DT_FixedDUR2,RV_OK,TK_Complete,823A-ST-SNT18-1090,Infill concrete in between D-wall and base slab,,,,0,0,0,128,8,16,0,0,,2013-12-06 08:00,2013-12-06 18:00,2017-06-12 18:00,2017-06-12 18:00,,2017-01-01 00:00,2017-01-01 00:00,,,2013-12-06 08:00,2013-12-06 18:00,,,,,PT_Normal,,,,,bSeboRM/QBynlDjtFKW2+Q,tF3h32aTBk2sBJw3lVObPw,,,N,0,0,,,2017-01-24 14:43,2017-01-24 15:36,CLEMENTL,CLEMENTL
1265,49429092,751235,10651615,1227199,1,100,N,N,N,CP_Drtn,TT_Task,DT_FixedDUR2,RV_OK,TK_Complete,823A-ST-SNT18-1110,Removal strut S3,,,,0,0,0,144,32,16,0,0,,2013-12-07 08:00,2013-12-11 18:00,2017-06-12 18:00,2017-06-12 18:00,,2017-01-01 00:00,2017-01-01 00:00,,,2013-12-07 08:00,2013-12-11 18:00,,,,,PT_Normal,,,,,qMuKxEqMTcuycl7F+YnfRw,qP8qGBXd+EK1ycJRG8iM+w,,,N,0,0,,,2017-01-24 14:43,2017-01-24 15:36,CLEMENTL,CLEMENTL
1266,49429093,751235,10651615,1239098,1,100,N,N,N,CP_Drtn,TT_Task,DT_FixedDUR2,RV_OK,TK_Complete,823A-ST-SNT18-1070,Preparation of construction joint for base slab,,,,0,0,0,0,8,0,0,0,,2013-11-11 08:00,2013-11-11 18:00,2017-06-12 18:00,2017-06-12 18:00,,2017-01-01 00:00,2017-01-01 00:00,,,2013-12-03 08:00,2013-12-03 18:00,,,,,PT_Normal,,,,,Bn5BnTPgRKSgMEU+pTBH3w,56neXm5NIE6v/JEFJCvdMw,,,N,0,0,,,2017-01-24 14:43,2017-01-24 15:36,CLEMENTL,CLEMENTL
1267,49429094,751235,10651615,1239099,1,100,N,N,N,CP_Drtn,TT_Task,DT_FixedDUR2,RV_OK,TK_Complete,823A-ST-SNT18-1100,Curing,,,,0,0,0,224,8,0,0,0,,2013-11-19 08:00,2013-11-19 18:00,2017-06-12 18:00,2017-06-12 18:00,,2017-01-01 00:00,2017-01-01 00:00,,,2013-12-10 08:00,2013-12-10 18:00,,,,,PT_Normal,,,,,L8OgDPoMQ5+xPD+s1kUV6Q,uhtxMqG2W0WMaaX4EMAojg,,,N,0,0,,,2017-01-24 14:43,2017-01-24 15:36,CLEMENTL,CLEMENTL
1268,49429095,751235,10651615,1227199,1,100,N,N,N,CP_Drtn,TT_Task,DT_FixedDUR2,RV_OK,TK_Complete,823A-ST-SNT18-1200,Side walkway and cable bracket (204m3),,,,0,1040,0,1040,40,80,80,0,,2014-05-23 08:00,2014-12-02 18:00,2017-06-12 18:00,2017-06-12 18:00,,2017-01-01 00:00,2017-01-01 00:00,,,2014-05-23 08:00,2014-05-28 18:00,,,,,PT_Normal,,,,,rBauiMfWT5K1dZgXCIHwdA,mRWCP6sTKU2fF6FHMv58WA,,,N,1040,80,,,2017-01-24 14:43,2017-01-24 15:36,CLEMENTL,CLEMENTL
1269,49429096,751235,10651615,1227199,1,100,N,N,N,CP_Drtn,TT_Task,DT_FixedDUR2,RV_OK,TK_Complete,823A-ST-SNT18-1120,Erect internal formwork & Falsework for wall and roof,,,,0,0,0,624,32,48,0,0,,2013-12-16 08:00,2013-12-19 18:00,2017-06-12 18:00,2017-06-12 18:00,,2017-01-01 00:00,2017-01-01 00:00,,,2014-01-25 08:00,2014-01-29 18:00,,,,,PT_Normal,,,,,/8c6fT0ZR5uhqF5TkvHT8g,eHQ9GpX9xkG6yKmKgoL8yg,,,N,0,0,,,2017-01-24 14:43,2017-01-24 15:36,CLEMENTL,CLEMENTL
1270,49429097,751235,10651615,1227199,1,100,N,N,N,CP_Drtn,TT_Task,DT_FixedDUR2,RV_OK,TK_Complete,823A-ST-SNT18-1130,Rebar fixing for wall and roof,,,,0,544,0,544,24,32,32,0,,2013-12-20 08:00,2014-01-08 18:00,2017-06-12 18:00,2017-06-12 18:00,,2017-01-01 00:00,2017-01-01 00:00,,,2014-01-30 08:00,2014-02-05 18:00,,,,,PT_Normal,,,,,RLIF0mIXTNuLYDU5ww2i6Q,493cAAAg00GFMAqUKN3RPA,,,N,544,32,,,2017-01-24 14:43,2017-01-24 15:36,CLEMENTL,CLEMENTL
1271,49429098,751235,10651615,1227199,1,100,N,N,N,CP_Drtn,TT_Task,DT_FixedDUR2,RV_OK,TK_Complete,823A-ST-SNT18-1140,Erect external formwork for wall and roof,,,,0,0,0,208,16,16,0,0,,2014-01-09 08:00,2014-01-10 18:00,2017-06-12 18:00,2017-06-12 18:00,,2017-01-01 00:00,2017-01-01 00:00,,,2014-02-20 08:00,2014-02-21 18:00,,,,,PT_Normal,,,,,5eychkRjR1qzP9JflFtiPQ,DUdsQqgRNUa7SYbo4r09iQ,,,N,0,0,,,2017-01-24 14:43,2017-01-24 15:36,CLEMENTL,CLEMENTL
1272,49429099,751235,10651615,1227199,1,100,N,N,N,CP_Drtn,TT_Task,DT_FixedDUR2,RV_OK,TK_Complete,823A-ST-SNT18-1150,Concreting for wall and roof (200m3),,,,0,0,0,208,8,16,0,0,,2014-01-11 08:00,2014-01-11 18:00,2017-06-12 18:00,2017-06-12 18:00,,2017-01-01 00:00,2017-01-01 00:00,,,2014-02-22 08:00,2014-02-22 18:00,,,,,PT_Normal,,,,,6LXW9W44SUOnz8QrjzaQ1w,J5qihDXqBkypvgmCwI/KUg,,,N,0,0,,,2017-01-24 14:43,2017-01-24 15:36,CLEMENTL,CLEMENTL
1273,49429100,751235,10651615,1227199,1,100,N,N,N,CP_Drtn,TT_Task,DT_FixedDUR2,RV_OK,TK_Complete,823A-ST-SNT18-1180,Removal external and internal formwork for wall,,,,0,0,0,144,8,16,0,0,,2014-01-15 08:00,2014-01-15 18:00,2017-06-12 18:00,2017-06-12 18:00,,2017-01-01 00:00,2017-01-01 00:00,,,2014-02-25 08:00,2014-02-25 18:00,,,,,PT_Normal,,,,,lpthas6GTM6HAZGQ/Ct5kA,2iPFLOTCjUS11/6iwl+upw,,,N,0,0,,,2017-01-24 14:43,2017-01-24 15:36,CLEMENTL,CLEMENTL
1274,49429101,751235,10651615,1239099,1,100,N,N,N,CP_Drtn,TT_Task,DT_FixedDUR2,RV_OK,TK_Complete,823A-ST-SNT18-1160,Curing for wall and roof,,,,0,0,0,224,80,0,0,0,,2014-01-13 08:00,2014-01-23 18:00,2017-06-12 18:00,2017-06-12 18:00,,2017-01-01 00:00,2017-01-01 00:00,,,2014-02-23 08:00,2014-03-04 18:00,,,,,PT_Normal,,,,,wpgqlRDATyW0755P+p44tA,B4O1JjrBN0KuQmTcsm/dbQ,,,N,0,0,,,2017-01-24 14:43,2017-01-24 15:36,CLEMENTL,CLEMENTL
1275,49429102,751235,10651615,1227199,1,100,N,N,N,CP_Drtn,TT_Task,DT_FixedDUR2,RV_OK,TK_Complete,823A-ST-SNT18-1190,Removal internal falsework and formwork for roof,,,,0,0,0,416,16,32,0,0,,2014-01-24 08:00,2014-01-25 18:00,2017-06-12 18:00,2017-06-12 18:00,,2017-01-01 00:00,2017-01-01 00:00,,,2014-03-05 08:00,2014-03-06 18:00,,,,,PT_Normal,,,,,C8YdeJViQmGwXzr/ym/wYw,qz+3HJfgwE2GHi0IOCIjHg,,,N,0,0,,,2017-01-24 14:43,2017-01-24 15:36,CLEMENTL,CLEMENTL
1276,49429103,751235,10651615,1239098,1,100,N,N,N,CP_Drtn,TT_Task,DT_FixedDUR2,RV_OK,TK_Complete,823A-ST-SNT18-1170,Preparation of construction joint for wall and roof,,,,0,0,0,0,8,0,0,0,,2014-01-14 08:00,2014-01-14 18:00,2017-06-12 18:00,2017-06-12 18:00,,2017-01-01 00:00,2017-01-01 00:00,,,2014-02-24 08:00,2014-02-24 18:00,,,,,PT_Normal,,,,,aD19EKrKSk+XuWNZrSLkEg,XzPCKSrlrkalSkNWGPK65Q,,,N,0,0,,,2017-01-24 14:43,2017-01-24 15:36,CLEMENTL,CLEMENTL
1277,49429104,751235,10651615,1227199,1,100,N,N,N,CP_Drtn,TT_Task,DT_FixedDUR2,RV_OK,TK_Complete,823A-ST-SNT18-1040,Erect internal kicker formwork for base slab,,,,0,0,0,288,16,16,0,0,,2013-11-07 08:00,2013-11-08 18:00,2017-06-12 18:00,2017-06-12 18:00,,2017-01-01 00:00,2017-01-01 00:00,,,2013-11-29 08:00,2013-11-30 18:00,,,,,PT_Normal,,,,,f9uOG2IQQgiBS4Wei5oH8Q,uQvjViH/40KA1Xy9+SZWug,,,N,0,0,,,2017-01-24 14:43,2017-01-24 15:36,CLEMENTL,CLEMENTL
1278,49429105,751235,10651616,1227199,1,100,N,N,N,CP_Drtn,TT_Task,DT_FixedDUR2,RV_OK,TK_Complete,823A-ST-SNT11-1040,Erect internal kicker formwork for base slab,,,,0,0,0,288,16,16,0,0,,2015-07-25 08:00,2015-07-27 18:00,2014-07-24 08:00,2014-07-24 08:00,,2017-01-01 00:00,2017-01-01 00:00,,,2015-07-08 08:00,2015-07-09 18:00,,,,,PT_Normal,,,,,5D0a98UERyKGij3rxrHTkg,uQvjViH/40KA1Xy9+SZWug,,,Y,0,0,,,2017-01-24 14:43,2017-01-24 15:36,CLEMENTL,CLEMENTL
1279,49429106,751235,10651616,1227199,1,100,N,N,N,CP_Drtn,TT_Task,DT_FixedDUR2,RV_OK,TK_Complete,823A-ST-SNT11-1050,Concreting for base slab (123m3),,,,0,0,0,208,8,16,0,0,,2015-07-28 08:00,2015-07-28 18:00,2014-07-24 08:00,2014-07-24 08:00,,2017-01-01 00:00,2017-01-01 00:00,,,2015-07-10 08:00,2015-07-10 18:00,,,,,PT_Normal,,,,,GLIja0FRRlCR3cyiGPf9vw,+yr8O2/QLkyKIN49R3ur+g,,,Y,0,0,,,2017-01-24 14:43,2017-01-24 15:36,CLEMENTL,CLEMENTL
1280,49429107,751235,10651616,1239099,1,100,N,N,N,CP_Drtn,TT_Task,DT_FixedDUR2,RV_OK,TK_Complete,823A-ST-SNT11-1060,Curing for base slab,,,,0,224,0,224,56,0,0,0,,2015-07-29 08:00,2015-08-04 18:00,2014-07-24 08:00,2014-07-24 08:00,,2017-01-01 00:00,2017-01-01 00:00,,,2015-07-11 08:00,2015-07-17 18:00,,,,,PT_Normal,,,,,B9w3y+MXRlu3HW/qKGy+ag,m50yJHZKpkq/LkRixIv4TA,,,Y,224,0,,,2017-01-24 14:43,2017-01-24 15:36,CLEMENTL,CLEMENTL
1281,49429108,751235,10651616,1227199,1,100,N,N,N,CP_Drtn,TT_Task,DT_FixedDUR2,RV_OK,TK_Complete,823A-ST-SNT11-1090,Infill concrete in between D-wall and base slab,,,,0,0,0,128,8,16,0,0,,2015-08-04 08:00,2015-08-04 18:00,2014-07-24 08:00,2014-07-24 08:00,,2017-01-01 00:00,2017-01-01 00:00,,,2015-08-04 08:00,2015-08-04 18:00,,,,,PT_Normal,,,,,hv06h/WbTjeI6FKIJGGN7w,tF3h32aTBk2sBJw3lVObPw,,,Y,0,0,,,2017-01-24 14:43,2017-01-24 15:36,CLEMENTL,CLEMENTL
1282,49429109,751235,10651616,1227199,1,100,N,N,N,CP_Drtn,TT_Task,DT_FixedDUR2,RV_OK,TK_Complete,823A-ST-SNT11-1110,Removal strut S3,,,,0,0,0,144,32,16,0,0,,2015-08-06 08:00,2015-08-10 18:00,2014-07-24 08:00,2014-07-24 08:00,,2017-01-01 00:00,2017-01-01 00:00,,,2015-08-06 08:00,2015-08-10 18:00,,,,,PT_Normal,,,,,uHp7JJBeQ7C+CacaL/IsNQ,qP8qGBXd+EK1ycJRG8iM+w,,,Y,0,0,,,2017-01-24 14:43,2017-01-24 15:36,CLEMENTL,CLEMENTL
1283,49429110,751235,10651616,1239098,1,100,N,N,N,CP_Drtn,TT_Task,DT_FixedDUR2,RV_OK,TK_Complete,823A-ST-SNT11-1070,Preparation of construction joint for base slab,,,,0,0,0,0,8,0,0,0,,2015-08-01 08:00,2015-08-01 18:00,2014-07-24 08:00,2014-07-24 08:00,,2017-01-01 00:00,2017-01-01 00:00,,,2015-08-01 08:00,2015-08-01 18:00,,,,,PT_Normal,,,,,ozMdFBO/QPuI1S2VCXXdaA,56neXm5NIE6v/JEFJCvdMw,,,Y,0,0,,,2017-01-24 14:43,2017-01-24 15:36,CLEMENTL,CLEMENTL
1284,49429111,751235,10651616,1239099,1,100,N,N,N,CP_Drtn,TT_Task,DT_FixedDUR2,RV_OK,TK_Complete,823A-ST-SNT11-1100,Curing,,,,0,0,0,224,8,0,0,0,,2015-08-05 08:00,2015-08-05 18:00,2014-07-24 08:00,2014-07-24 08:00,,2017-01-01 00:00,2017-01-01 00:00,,,2015-08-05 08:00,2015-08-05 18:00,,,,,PT_Normal,,,,,hV0RK7WvTha07+BY8739Mg,uhtxMqG2W0WMaaX4EMAojg,,,Y,0,0,,,2017-01-24 14:43,2017-01-24 15:36,CLEMENTL,CLEMENTL
1285,49429112,751235,10651616,1227199,1,100,N,N,N,CP_Drtn,TT_Task,DT_FixedDUR2,RV_OK,TK_Complete,823A-ST-SNT11-1200,Side walkway and cable bracket (204m3),,,,0,0,0,1040,40,80,0,0,,2015-11-06 08:00,2015-11-11 18:00,2014-07-24 08:00,2014-07-24 08:00,,2017-01-01 00:00,2017-01-01 00:00,,,2015-11-06 08:00,2015-11-11 18:00,,,,,PT_Normal,,,,,tg2MA+7ZRPmbfuyPKLPCTA,mRWCP6sTKU2fF6FHMv58WA,,,Y,0,0,,,2017-01-24 14:43,2017-01-24 15:36,CLEMENTL,CLEMENTL
1286,49429113,751235,10651616,1227199,1,100,N,N,N,CP_Drtn,TT_Task,DT_FixedDUR2,RV_OK,TK_Complete,823A-ST-SNT11-1120,Erect internal formwork & Falsework for wall and roof,,,,0,0,0,624,32,48,0,0,,2015-09-01 08:00,2015-09-04 18:00,2014-07-24 08:00,2014-07-24 08:00,,2017-01-01 00:00,2017-01-01 00:00,,,2015-09-01 08:00,2015-09-04 18:00,,,,,PT_Normal,,,,,tN+xH98pSum46Qf2hogSSA,eHQ9GpX9xkG6yKmKgoL8yg,,,Y,0,0,,,2017-01-24 14:43,2017-01-24 15:36,CLEMENTL,CLEMENTL
1287,49429114,751235,10651616,1227199,1,100,N,N,N,CP_Drtn,TT_Task,DT_FixedDUR2,RV_OK,TK_Complete,823A-ST-SNT11-1130,Rebar fixing for wall and roof,,,,0,0,0,544,24,32,0,0,,2015-09-05 08:00,2015-09-08 18:00,2014-07-24 08:00,2014-07-24 08:00,,2017-01-01 00:00,2017-01-01 00:00,,,2015-09-05 08:00,2015-09-08 18:00,,,,,PT_Normal,,,,,8h3MKrkTRn20mdDhkZ/Ayw,493cAAAg00GFMAqUKN3RPA,,,Y,0,0,,,2017-01-24 14:43,2017-01-24 15:36,CLEMENTL,CLEMENTL
1288,49429115,751235,10651616,1227199,1,100,N,N,N,CP_Drtn,TT_Task,DT_FixedDUR2,RV_OK,TK_Complete,823A-ST-SNT11-1140,Erect external formwork for wall and roof,,,,0,0,0,208,16,16,0,0,,2015-09-09 08:00,2015-09-10 18:00,2014-07-24 08:00,2014-07-24 08:00,,2017-01-01 00:00,2017-01-01 00:00,,,2015-09-09 08:00,2015-09-10 18:00,,,,,PT_Normal,,,,,yXgVyHFmQvGIsDkubBHRtg,DUdsQqgRNUa7SYbo4r09iQ,,,Y,0,0,,,2017-01-24 14:43,2017-01-24 15:36,CLEMENTL,CLEMENTL
1289,49429116,751235,10651616,1227199,1,100,N,N,N,CP_Drtn,TT_Task,DT_FixedDUR2,RV_OK,TK_Complete,823A-ST-SNT11-1150,Concreting for wall and roof (260m3),,,,0,0,0,208,8,16,0,0,,2015-10-24 08:00,2015-10-24 18:00,2014-07-24 08:00,2014-07-24 08:00,,2017-01-01 00:00,2017-01-01 00:00,,,2015-10-02 08:00,2015-10-02 18:00,,,,,PT_Normal,,,,,SSfAWSFqTf2i3YA/pJXL0w,J5qihDXqBkypvgmCwI/KUg,,,Y,0,0,,,2017-01-24 14:43,2017-01-24 15:36,CLEMENTL,CLEMENTL
1290,49429117,751235,10651616,1227199,1,100,N,N,N,CP_Drtn,TT_Task,DT_FixedDUR2,RV_OK,TK_Complete,823A-ST-SNT11-1180,Removal external and internal formwork for wall,,,,0,0,0,144,8,16,0,0,,2015-11-03 08:00,2015-11-03 18:00,2014-07-24 08:00,2014-07-24 08:00,,2017-01-01 00:00,2017-01-01 00:00,,,2015-11-03 08:00,2015-11-03 18:00,,,,,PT_Normal,,,,,zdQpzdwBTcGu7BfJD2ko7g,2iPFLOTCjUS11/6iwl+upw,,,Y,0,0,,,2017-01-24 14:43,2017-01-24 15:36,CLEMENTL,CLEMENTL
1291,49429118,751235,10651616,1239099,1,100,N,N,N,CP_Drtn,TT_Task,DT_FixedDUR2,RV_OK,TK_Complete,823A-ST-SNT11-1160,Curing for wall and roof,,,,0,224,0,224,80,0,0,0,,2015-10-26 08:00,2015-11-03 18:00,2014-07-24 08:00,2014-07-24 08:00,,2017-01-01 00:00,2017-01-01 00:00,,,2015-10-03 08:00,2015-10-12 18:00,,,,,PT_Normal,,,,,OtOi5GMMSHu4P4cDzd3xyw,B4O1JjrBN0KuQmTcsm/dbQ,,,Y,224,0,,,2017-01-24 14:43,2017-01-24 15:36,CLEMENTL,CLEMENTL
1292,49429119,751235,10651616,1227199,1,100,N,N,N,CP_Drtn,TT_Task,DT_FixedDUR2,RV_OK,TK_Complete,823A-ST-SNT11-1190,Removal internal falsework and formwork for roof,,,,0,0,0,416,16,32,0,0,,2015-11-04 08:00,2015-11-05 18:00,2014-07-24 08:00,2014-07-24 08:00,,2017-01-01 00:00,2017-01-01 00:00,,,2015-11-04 08:00,2015-11-05 18:00,,,,,PT_Normal,,,,,apmNBQ9ORe2dGnmALHUjig,qz+3HJfgwE2GHi0IOCIjHg,,,Y,0,0,,,2017-01-24 14:43,2017-01-24 15:36,CLEMENTL,CLEMENTL
1293,49429120,751235,10651616,1239098,1,100,N,N,N,CP_Drtn,TT_Task,DT_FixedDUR2,RV_OK,TK_Complete,823A-ST-SNT11-1170,Preparation of construction joint for wall and roof,,,,0,0,0,0,8,0,0,0,,2015-11-02 08:00,2015-11-02 18:00,2014-07-24 08:00,2014-07-24 08:00,,2017-01-01 00:00,2017-01-01 00:00,,,2015-11-02 08:00,2015-11-02 18:00,,,,,PT_Normal,,,,,aIpm3NH+T0ed5JeRdZaTSw,XzPCKSrlrkalSkNWGPK65Q,,,Y,0,0,,,2017-01-24 14:43,2017-01-24 15:36,CLEMENTL,CLEMENTL
1294,49429121,751235,10651616,1227199,1,100,N,N,N,CP_Drtn,TT_Task,DT_FixedDUR2,RV_OK,TK_Complete,823A-ST-SNT11-1080,Removal of formwork for base slab,,,,0,0,0,72,8,8,0,0,,2015-08-03 08:00,2015-08-03 18:00,2014-07-24 08:00,2014-07-24 08:00,,2017-01-01 00:00,2017-01-01 00:00,,,2015-08-03 08:00,2015-08-03 18:00,,,,,PT_Normal,,,,,6CBBmB3HTbK820SGjg25+g,09beaPb8JkS/iPNlKlT7Vg,,,Y,0,0,,,2017-01-24 14:43,2017-01-24 15:36,CLEMENTL,CLEMENTL
1295,49429122,751235,10651616,1227199,1,100,N,N,N,CP_Drtn,TT_Task,DT_FixedDUR2,RV_OK,TK_Complete,823A-ST-SNT11-1010,Placing of waterproof member T-lock & testing for base slab,,,,0,0,0,64,8,0,0,0,,2015-07-20 08:00,2015-07-20 18:00,2014-07-24 08:00,2014-07-24 08:00,,2017-01-01 00:00,2017-01-01 00:00,,,2015-07-02 08:00,2015-07-02 18:00,,,,,PT_Normal,,,,,ElHjPfahSye8QPkMdRLs5g,yK2PwHrpbUSvcfAPOD8HkQ,,,Y,0,0,,,2017-01-24 14:43,2017-01-24 15:36,CLEMENTL,CLEMENTL
1296,49429123,751235,10651616,1227199,1,100,N,N,N,CP_Drtn,TT_Task,DT_FixedDUR2,RV_OK,TK_Complete,823A-ST-SNT11-1020,Erect external formwork for base slab,,,,0,0,0,104,16,8,0,0,,2015-07-21 08:00,2015-07-22 18:00,2014-07-24 08:00,2014-07-24 08:00,,2017-01-01 00:00,2017-01-01 00:00,,,2015-07-03 08:00,2015-07-04 18:00,,,,,PT_Normal,,,,,E3Uj3TQ9TASpvTKowmOwoQ,T4lTs/MaJkuil88ltcUQ2A,,,Y,0,0,,,2017-01-24 14:43,2017-01-24 15:36,CLEMENTL,CLEMENTL
1297,49429124,751235,10651616,1227199,1,100,N,N,N,CP_Drtn,TT_Task,DT_FixedDUR2,RV_OK,TK_Complete,823A-ST-SNT11-1030,Rebar fixing for base slab,,,,0,0,0,272,16,16,0,0,,2015-07-23 08:00,2015-07-24 18:00,2014-07-24 08:00,2014-07-24 08:00,,2017-01-01 00:00,2017-01-01 00:00,,,2015-07-06 08:00,2015-07-07 18:00,,,,,PT_Normal,,,,,zlvJImVCTK2pQB/PJo8NMg,feLIaF0g2E+BRj3fm0vgBg,,,Y,0,0,,,2017-01-24 14:43,2017-01-24 15:36,CLEMENTL,CLEMENTL
1298,49429125,751235,10651617,1227199,1,100,N,N,N,CP_Drtn,TT_Task,DT_FixedDUR2,RV_OK,TK_Complete,823A-ST-SNT7-1010,Erect internal formwork & Falsework for wall and roof,,,,0,624,0,624,32,48,48,0,,2013-05-23 08:00,2013-05-29 18:00,2014-01-05 18:00,2014-01-05 18:00,,2017-01-01 00:00,2017-01-01 00:00,,,2013-06-17 08:00,2013-06-20 18:00,,,,,PT_Normal,,,,,SqXdZjMUTF2By3Y+ywvP9w,w8J5bHuoNkSfWNjCpnpNqA,,,Y,624,48,,,2017-01-24 14:43,2017-01-24 14:53,CLEMENTL,CLEMENTL
1299,49429126,751235,10651617,1227199,1,100,N,N,N,CP_Drtn,TT_Task,DT_FixedDUR2,RV_OK,TK_Complete,823A-ST-SNT7-1020,Rebar fixing for wall and roof,,,,0,544,0,544,24,32,32,0,,2013-05-30 08:00,2013-06-03 18:00,2014-01-05 18:00,2014-01-05 18:00,,2017-01-01 00:00,2017-01-01 00:00,,,2013-06-21 08:00,2013-06-24 18:00,,,,,PT_Normal,,,,,ZuNus4EPTTWk8GK7wKU7jQ,4CZy3fjIiU+UpfmLFq8dAQ,,,Y,544,32,,,2017-01-24 14:43,2017-01-24 14:53,CLEMENTL,CLEMENTL
1300,49429127,751235,10651617,1227199,1,100,N,N,N,CP_Drtn,TT_Task,DT_FixedDUR2,RV_OK,TK_Complete,823A-ST-SNT7-1030,Erect external formwork for wall and roof,,,,0,0,0,208,16,16,0,0,,2013-06-04 08:00,2013-06-07 18:00,2014-01-05 18:00,2014-01-05 18:00,,2017-01-01 00:00,2017-01-01 00:00,,,2013-07-04 08:00,2013-07-05 18:00,,,,,PT_Normal,,,,,xenpdV8HQriEcVDE+/k1EQ,Wfit95I3tk2PIxdz0o+aCQ,,,Y,0,0,,,2017-01-24 14:43,2017-01-24 14:53,CLEMENTL,CLEMENTL
1301,49429128,751235,10651617,1227199,1,100,N,N,N,CP_Drtn,TT_Task,DT_FixedDUR2,RV_OK,TK_Complete,823A-ST-SNT7-1040,Concreting for wall and roof (333m3),,,,0,0,0,208,8,16,0,0,,2013-06-08 08:00,2013-06-08 18:00,2014-01-05 18:00,2014-01-05 18:00,,2017-01-01 00:00,2017-01-01 00:00,,,2013-07-06 08:00,2013-07-06 18:00,,,,,PT_Normal,,,,,C80xHMfKRqS+OLN4YNX8Xw,ypbKOqEkNE+yvWUCI8Idsw,,,Y,0,0,,,2017-01-24 14:43,2017-01-24 14:53,CLEMENTL,CLEMENTL
1302,49429129,751235,10651617,1227199,1,100,N,N,N,CP_Drtn,TT_Task,DT_FixedDUR2,RV_OK,TK_Complete,823A-ST-SNT7-1070,Removal external and internal formwork for wall,,,,0,0,0,144,8,16,0,0,,2013-06-15 08:00,2013-06-17 18:00,2014-01-05 18:00,2014-01-05 18:00,,2017-01-01 00:00,2017-01-01 00:00,,,2013-07-09 08:00,2013-07-09 18:00,,,,,PT_Normal,,,,,nNqxoSDSSwiuFJgIY9ehRg,Ct+N8ZnWSUeHRy0N3RAb6Q,,,Y,0,0,,,2017-01-24 14:43,2017-01-24 14:53,CLEMENTL,CLEMENTL
1303,49429130,751235,10651617,1239099,1,100,N,N,N,CP_Drtn,TT_Task,DT_FixedDUR2,RV_OK,TK_Complete,823A-ST-SNT7-1050,Curing for wall and roof,,,,0,0,0,224,80,0,0,0,,2013-06-10 08:00,2013-06-11 18:00,2017-06-12 18:00,2017-06-12 18:00,,2017-01-01 00:00,2017-01-01 00:00,,,2013-07-07 08:00,2013-07-16 18:00,,,,,PT_Normal,,,,,T2ZR59c5TEqAKWGdIup4TA,pXL10BWvbkmpcxlqWQVgGg,,,N,0,0,,,2017-01-24 14:43,2017-01-24 15:36,CLEMENTL,CLEMENTL
1304,49429131,751235,10651617,1227199,1,100,N,N,N,CP_Drtn,TT_Task,DT_FixedDUR2,RV_OK,TK_Complete,823A-ST-SNT7-1080,Removal internal falsework and formwork for roof,,,,0,0,0,416,16,32,0,0,,2013-06-19 08:00,2013-06-22 18:00,2017-06-12 18:00,2017-06-12 18:00,,2017-01-01 00:00,2017-01-01 00:00,,,2013-07-17 08:00,2013-07-18 18:00,,,,,PT_Normal,,,,,VHuWh/KdRN+EiRs7ZX9/Sw,YXMHosL9L0mdRUMmJnXB2g,,,N,0,0,,,2017-01-24 14:43,2017-01-24 15:36,CLEMENTL,CLEMENTL
1305,49429132,751235,10651617,1239098,1,100,N,N,N,CP_Drtn,TT_Task,DT_FixedDUR2,RV_OK,TK_Complete,823A-ST-SNT7-1060,Preparation of construction joint for wall and roof,,,,0,0,0,0,8,0,0,0,,2013-06-12 08:00,2013-06-13 18:00,2014-01-05 18:00,2014-01-05 18:00,,2017-01-01 00:00,2017-01-01 00:00,,,2013-07-08 08:00,2013-07-08 18:00,,,,,PT_Normal,,,,,Uy60aWNkQTSlQd32PLH9eg,gTXmoGAH0Een+w11aXZ4TQ,,,Y,0,0,,,2017-01-24 14:43,2017-01-24 14:53,CLEMENTL,CLEMENTL
1306,49429133,751235,10651617,1227199,1,100,N,N,N,CP_Drtn,TT_Task,DT_FixedDUR2,RV_OK,TK_Complete,823A-ST-SNT7-1090,Side walkway and cable bracket (204m3),,,,0,1040,0,1040,40,80,80,0,,2013-07-29 08:00,2014-03-04 18:00,2017-06-12 18:00,2017-06-12 18:00,,2017-01-01 00:00,2017-01-01 00:00,,,2014-02-05 08:00,2014-02-10 18:00,,,,,PT_Normal,,,,,1eyoVRq4TSatC48Sd3p2AA,vVCqRLe8QEi5cZr9IA2sFA,,,N,1040,80,,,2017-01-24 14:43,2017-01-24 15:36,CLEMENTL,CLEMENTL
1307,49429134,751235,10651618,1239098,1,100,N,N,N,CP_Drtn,TT_Task,DT_FixedDUR2,RV_OK,TK_Complete,823A-ST-SN10-1010,Excavation and saw cut D-wall,,,,0,0,0,0,272,0,0,0,,2015-02-23 08:00,2015-07-25 18:00,2014-07-24 08:00,2014-07-24 08:00,,2017-01-01 00:00,2017-01-01 00:00,,,2015-04-02 08:00,2015-05-16 18:00,,,,,PT_Normal,,,,,77egzL1iQkOij/sAykRcSg,,,,Y,0,0,,,2017-01-24 14:43,2017-01-24 15:36,CLEMENTL,CLEMENTL
1308,49429135,751235,10651618,1227199,1,100,N,N,N,CP_Drtn,TT_Task,DT_FixedDUR2,RV_OK,TK_Complete,823A-ST-SNT10-1010,Placing of waterproof member T-lock & testing for base slab,,,,0,0,0,64,8,0,0,0,,2015-07-13 08:00,2015-07-13 18:00,2014-07-24 08:00,2014-07-24 08:00,,2017-01-01 00:00,2017-01-01 00:00,,,2015-08-08 16:24,2015-08-10 16:24,,,,,PT_Normal,,,,,AlX5ji6ESYOOJzD/WwrTBg,4gt9ElNBx0SFYHVv2bDdyA,,,Y,0,0,,,2017-01-24 14:43,2017-01-24 15:36,CLEMENTL,CLEMENTL
1309,49429136,751235,10651618,1227199,1,100,N,N,N,CP_Drtn,TT_Task,DT_FixedDUR2,RV_OK,TK_Complete,823A-ST-SNT10-1020,Erect external formwork for base slab,,,,0,0,0,104,16,8,0,0,,2015-07-14 08:00,2015-07-15 18:00,2014-07-24 08:00,2014-07-24 08:00,,2017-01-01 00:00,2017-01-01 00:00,,,2015-08-10 16:24,2015-08-12 16:24,,,,,PT_Normal,,,,,DFrwJG41TnmP6/GV+AkDiw,Ccg1NRf4j0eF0XcRS/GSZw,,,Y,0,0,,,2017-01-24 14:43,2017-01-24 15:36,CLEMENTL,CLEMENTL
1310,49429137,751235,10651618,1227199,1,100,N,N,N,CP_Drtn,TT_Task,DT_FixedDUR2,RV_OK,TK_Complete,823A-ST-SNT10-1030,Rebar fixing for base slab,,,,0,272,0,272,16,16,16,0,,2015-07-15 08:00,2015-08-10 18:00,2014-07-24 08:00,2014-07-24 08:00,,2017-01-01 00:00,2017-01-01 00:00,,,2015-08-12 16:24,2015-08-14 16:24,,,,,PT_Normal,,,,,iq7i1buZTgKBHMgOQPiIRA,Jiz+C4J8G06hdyllJqvfsg,,,Y,272,16,,,2017-01-24 14:43,2017-01-24 15:36,CLEMENTL,CLEMENTL
1311,49429138,751235,10651618,1227199,1,100,N,N,N,CP_Drtn,TT_Task,DT_FixedDUR2,RV_OK,TK_Complete,823A-ST-SNT10-1040,Erect internal kicker formwork for base slab,,,,0,288,0,288,16,16,16,0,,2015-07-20 08:00,2015-08-12 18:00,2014-07-24 08:00,2014-07-24 08:00,,2017-01-01 00:00,2017-01-01 00:00,,,2015-08-14 16:24,2015-08-17 16:24,,,,,PT_Normal,,,,,uZ6aQC4OQs6Zt+5Gp04PKw,6aIwJ1HJj0aPubVYUWfSig,,,Y,288,16,,,2017-01-24 14:43,2017-01-24 15:36,CLEMENTL,CLEMENTL
1312,49429139,751235,10651618,1227199,1,100,N,N,N,CP_Drtn,TT_Task,DT_FixedDUR2,RV_OK,TK_Complete,823A-ST-SNT10-1050,Concreting for base slab (90m3),,,,0,0,0,208,8,16,0,0,,2015-08-13 08:00,2015-08-13 18:00,2014-07-24 08:00,2014-07-24 08:00,,2017-01-01 00:00,2017-01-01 00:00,,,2015-09-02 08:00,2015-09-02 18:00,,,,,PT_Normal,,,,,2ei4SwiIRZq/Ey52ignPjQ,s1gZOcI4AEGNWhpmD+ItOQ,,,Y,0,0,,,2017-01-24 14:43,2017-01-24 15:36,CLEMENTL,CLEMENTL
1313,49429140,751235,10651618,1239099,1,100,N,N,N,CP_Drtn,TT_Task,DT_FixedDUR2,RV_OK,TK_Complete,823A-ST-SNT10-1060,Curing for base slab,,,,0,0,0,224,56,0,0,0,,2015-08-14 08:00,2015-08-20 18:00,2014-07-24 08:00,2014-07-24 08:00,,2017-01-01 00:00,2017-01-01 00:00,,,2015-09-03 08:00,2015-09-09 18:00,,,,,PT_Normal,,,,,l/Sy8U+uQR2kKeUFhnEaDw,LfAje4M++EKc8wdDTuqBhg,,,Y,0,0,,,2017-01-24 14:43,2017-01-24 15:36,CLEMENTL,CLEMENTL
1314,49429141,751235,10651618,1227199,1,100,N,N,N,CP_Drtn,TT_Task,DT_FixedDUR2,RV_OK,TK_Complete,823A-ST-SNT10-1080,Removal of formwork for base slab,,,,0,0,0,72,8,8,0,0,,2015-08-22 08:00,2015-08-22 18:00,2014-07-24 08:00,2014-07-24 08:00,,2017-01-01 00:00,2017-01-01 00:00,,,2015-09-04 08:00,2015-09-04 18:00,,,,,PT_Normal,,,,,zBbzorQwQpWWTNYblpyexA,Xd2xuCE8s06hi1b6Uk2VyA,,,Y,0,0,,,2017-01-24 14:43,2017-01-24 15:36,CLEMENTL,CLEMENTL
1315,49429142,751235,10651618,1227199,1,100,N,N,N,CP_Drtn,TT_Task,DT_FixedDUR2,RV_OK,TK_Complete,823A-ST-SNT10-1090,Infill concrete in between D-wall and base slab,,,,0,0,0,128,8,16,0,0,,2015-08-24 08:00,2015-08-24 18:00,2014-07-24 08:00,2014-07-24 08:00,,2017-01-01 00:00,2017-01-01 00:00,,,2015-09-05 08:00,2015-09-05 18:00,,,,,PT_Normal,,,,,SsN8DXzkQ+SVTiQRfDAO1Q,O8+5pMIH4kKvDGUeI1Jyww,,,Y,0,0,,,2017-01-24 14:43,2017-01-24 15:36,CLEMENTL,CLEMENTL
1316,49429143,751235,10651618,1227199,1,100,N,N,N,CP_Drtn,TT_Task,DT_FixedDUR2,RV_OK,TK_Complete,823A-ST-SNT10-1110,Removal strut S3,,,,0,0,0,144,32,16,0,0,,2015-09-16 08:00,2015-09-19 18:00,2014-07-24 08:00,2014-07-24 08:00,,2017-01-01 00:00,2017-01-01 00:00,,,2015-09-19 08:00,2015-09-23 18:00,,,,,PT_Normal,,,,,23us0p6KT2WPhAFATKyuiA,5uGSRj7zwkWGBuvynSt5rw,,,Y,0,0,,,2017-01-24 14:43,2017-01-24 15:36,CLEMENTL,CLEMENTL
1317,49429144,751235,10651618,1239098,1,100,N,N,N,CP_Drtn,TT_Task,DT_FixedDUR2,RV_OK,TK_Complete,823A-ST-SNT10-1070,Preparation of construction joint for base slab,,,,0,0,0,0,8,0,0,0,,2015-08-21 08:00,2015-08-21 18:00,2014-07-24 08:00,2014-07-24 08:00,,2017-01-01 00:00,2017-01-01 00:00,,,2015-09-03 08:00,2015-09-03 18:00,,,,,PT_Normal,,,,,mi7PMCI1RVKTxtz4qJH/DA,gzkAd5VohUetB6AJCPhXMw,,,Y,0,0,,,2017-01-24 14:43,2017-01-24 15:36,CLEMENTL,CLEMENTL
1318,49429145,751235,10651618,1239099,1,100,N,N,N,CP_Drtn,TT_Task,DT_FixedDUR2,RV_OK,TK_Complete,823A-ST-SNT10-1100,Curing,,,,0,0,0,224,8,0,0,0,,2015-08-25 08:00,2015-08-25 18:00,2014-07-24 08:00,2014-07-24 08:00,,2017-01-01 00:00,2017-01-01 00:00,,,2015-09-10 08:00,2015-09-10 18:00,,,,,PT_Normal,,,,,PfgalCb/RAaPSye+NUnZuA,VI/UcVQr8kGKczrjOhHprg,,,Y,0,0,,,2017-01-24 14:43,2017-01-24 15:36,CLEMENTL,CLEMENTL
1319,49429146,751235,10651618,1227199,1,100,N,N,N,CP_Drtn,TT_Task,DT_FixedDUR2,RV_OK,TK_Complete,823A-ST-SNT10-1200,Side walkway and cable bracket (204m3),,,,0,0,0,1040,40,80,0,0,,2015-10-24 08:00,2015-10-30 18:00,2014-07-24 08:00,2014-07-24 08:00,,2017-01-01 00:00,2017-01-01 00:00,,,2015-10-30 08:00,2015-11-04 18:00,,,,,PT_Normal,,,,,DLvcxKKORTaIKJlPfgYU0Q,BxRzuGiuPEykqrdTB/LZNw,,,Y,0,0,,,2017-01-24 14:43,2017-01-24 15:36,CLEMENTL,CLEMENTL
1320,49429147,751235,10651618,1227199,1,100,N,N,N,CP_Drtn,TT_Task,DT_FixedDUR2,RV_OK,TK_Complete,823A-ST-SNT10-1120,Erect internal formwork & Falsework for wall and roof,,,,0,0,0,624,32,48,0,0,,2015-09-21 08:00,2015-09-24 18:00,2014-07-24 08:00,2014-07-24 08:00,,2017-01-01 00:00,2017-01-01 00:00,,,2015-09-24 08:00,2015-09-29 18:00,,,,,PT_Normal,,,,,pQpOi94QSJOenLKltoJJrw,sqf+/JfyrEWaX9qMhN5lVA,,,Y,0,0,,,2017-01-24 14:43,2017-01-24 15:36,CLEMENTL,CLEMENTL
1321,49429148,751235,10651618,1227199,1,100,N,N,N,CP_Drtn,TT_Task,DT_FixedDUR2,RV_OK,TK_Complete,823A-ST-SNT10-1130,Rebar fixing for wall and roof,,,,0,0,0,544,24,32,0,0,,2015-09-25 08:00,2015-09-30 18:00,2014-07-24 08:00,2014-07-24 08:00,,2017-01-01 00:00,2017-01-01 00:00,,,2015-09-30 08:00,2015-10-03 18:00,,,,,PT_Normal,,,,,w2yypV9oTIC32QDC/JpPdw,RPAMBnauGUKIM33Fpv7KPw,,,Y,0,0,,,2017-01-24 14:43,2017-01-24 15:36,CLEMENTL,CLEMENTL
1322,49429149,751235,10651618,1227199,1,100,N,N,N,CP_Drtn,TT_Task,DT_FixedDUR2,RV_OK,TK_Complete,823A-ST-SNT10-1140,Erect external formwork for wall and roof,,,,0,0,0,208,16,16,0,0,,2015-10-05 08:00,2015-10-06 18:00,2014-07-24 08:00,2014-07-24 08:00,,2017-01-01 00:00,2017-01-01 00:00,,,2015-10-15 08:00,2015-10-16 18:00,,,,,PT_Normal,,,,,A2D0A64fR/mxdq6Trr1uaw,2Y4+XqbZ0kur2nDr+d0sKA,,,Y,0,0,,,2017-01-24 14:43,2017-01-24 15:36,CLEMENTL,CLEMENTL
1323,49429150,751235,10651618,1227199,1,100,N,N,N,CP_Drtn,TT_Task,DT_FixedDUR2,RV_OK,TK_Complete,823A-ST-SNT10-1150,Concreting for wall and roof (260m3),,,,0,0,0,208,8,16,0,0,,2015-10-07 08:00,2015-10-07 18:00,2014-07-24 08:00,2014-07-24 08:00,,2017-01-01 00:00,2017-01-01 00:00,,,2015-10-17 08:00,2015-10-17 18:00,,,,,PT_Normal,,,,,1zJtRxTZRF240+VSpJh5eg,4bNtQxskgkWSPviXIo2LnQ,,,Y,0,0,,,2017-01-24 14:43,2017-01-24 15:36,CLEMENTL,CLEMENTL
1324,49429151,751235,10651618,1227199,1,100,N,N,N,CP_Drtn,TT_Task,DT_FixedDUR2,RV_OK,TK_Complete,823A-ST-SNT10-1180,Removal external and internal formwork for wall,,,,0,0,0,144,8,16,0,0,,2015-10-20 08:00,2015-10-20 18:00,2014-07-24 08:00,2014-07-24 08:00,,2017-01-01 00:00,2017-01-01 00:00,,,2015-10-20 08:00,2015-10-20 18:00,,,,,PT_Normal,,,,,9Tps2QqVT1KSFxAV06hZ7Q,pGOPlWVVo0GMw5bSPHyrAA,,,Y,0,0,,,2017-01-24 14:43,2017-01-24 15:36,CLEMENTL,CLEMENTL
1325,49429152,751235,10651618,1239099,1,100,N,N,N,CP_Drtn,TT_Task,DT_FixedDUR2,RV_OK,TK_Complete,823A-ST-SNT10-1160,Curing for wall and roof,,,,0,0,0,224,80,0,0,0,,2015-10-08 08:00,2015-10-17 18:00,2014-07-24 08:00,2014-07-24 08:00,,2017-01-01 00:00,2017-01-01 00:00,,,2015-10-18 08:00,2015-10-27 18:00,,,,,PT_Normal,,,,,RnwyBM1FRzGjghxErM4Wxg,J1AYIPTc90KcsfQ6semUSg,,,Y,0,0,,,2017-01-24 14:43,2017-01-24 15:36,CLEMENTL,CLEMENTL
1326,49429153,751235,10651618,1227199,1,100,N,N,N,CP_Drtn,TT_Task,DT_FixedDUR2,RV_OK,TK_Complete,823A-ST-SNT10-1190,Removal internal falsework and formwork for roof,,,,0,0,0,416,16,32,0,0,,2015-10-22 08:00,2015-10-23 18:00,2014-07-24 08:00,2014-07-24 08:00,,2017-01-01 00:00,2017-01-01 00:00,,,2015-10-28 08:00,2015-10-29 18:00,,,,,PT_Normal,,,,,U3oIOJCcQaSyBK4NmYhzJg,5qrwDxPP90S6I58uqu9NJw,,,Y,0,0,,,2017-01-24 14:43,2017-01-24 15:36,CLEMENTL,CLEMENTL
1327,49429154,751235,10651618,1239098,1,100,N,N,N,CP_Drtn,TT_Task,DT_FixedDUR2,RV_OK,TK_Complete,823A-ST-SNT10-1170,Preparation of construction joint for wall and roof,,,,0,0,0,0,8,0,0,0,,2015-10-19 08:00,2015-10-19 18:00,2014-07-24 08:00,2014-07-24 08:00,,2017-01-01 00:00,2017-01-01 00:00,,,2015-10-19 08:00,2015-10-19 18:00,,,,,PT_Normal,,,,,xlVC01M/Qr2E5xH45HTOIQ,qgK7oJNkjEW305U2EodvUg,,,Y,0,0,,,2017-01-24 14:43,2017-01-24 15:36,CLEMENTL,CLEMENTL
1328,49429155,751235,10651619,1227199,1,100,N,N,N,CP_Drtn,TT_Task,DT_FixedDUR2,RV_OK,TK_Complete,823A-ST-SNT16-1010,Placing of waterproof member T-lock & testing for base slab,,,,0,0,0,64,8,0,0,0,,2013-11-15 08:00,2013-11-15 18:00,2017-06-12 18:00,2017-06-12 18:00,,2017-01-01 00:00,2017-01-01 00:00,,,2013-12-11 08:00,2013-12-11 18:00,,,,,PT_Normal,,,,,F602cvbzQ0qQlSeI0OqWvA,yK2PwHrpbUSvcfAPOD8HkQ,,,N,0,0,,,2017-01-24 14:43,2017-01-24 15:36,CLEMENTL,CLEMENTL
1329,49429156,751235,10651619,1227199,1,100,N,N,N,CP_Drtn,TT_Task,DT_FixedDUR2,RV_OK,TK_Complete,823A-ST-SNT16-1020,Erect external formwork for base slab,,,,0,0,0,104,16,8,0,0,,2013-11-16 08:00,2013-11-18 18:00,2017-06-12 18:00,2017-06-12 18:00,,2017-01-01 00:00,2017-01-01 00:00,,,2013-12-12 08:00,2013-12-13 18:00,,,,,PT_Normal,,,,,PiIvuyO1QBWh4R4xxwMtDg,T4lTs/MaJkuil88ltcUQ2A,,,N,0,0,,,2017-01-24 14:43,2017-01-24 15:36,CLEMENTL,CLEMENTL
1330,49429157,751235,10651619,1227199,1,100,N,N,N,CP_Drtn,TT_Task,DT_FixedDUR2,RV_OK,TK_Complete,823A-ST-SNT16-1030,Rebar fixing for base slab,,,,0,0,0,272,16,16,0,0,,2013-11-19 08:00,2013-11-20 18:00,2017-06-12 18:00,2017-06-12 18:00,,2017-01-01 00:00,2017-01-01 00:00,,,2013-12-14 08:00,2013-12-16 18:00,,,,,PT_Normal,,,,,qfcHXXc+ScGUw/N+4abiNw,feLIaF0g2E+BRj3fm0vgBg,,,N,0,0,,,2017-01-24 14:43,2017-01-24 15:36,CLEMENTL,CLEMENTL
1331,49429158,751235,10651619,1227199,1,100,N,N,N,CP_Drtn,TT_Task,DT_FixedDUR2,RV_OK,TK_Complete,823A-ST-SNT16-1040,Erect internal kicker formwork for base slab,,,,0,0,0,288,16,16,0,0,,2013-11-21 08:00,2013-11-22 18:00,2017-06-12 18:00,2017-06-12 18:00,,2017-01-01 00:00,2017-01-01 00:00,,,2013-12-17 08:00,2013-12-18 18:00,,,,,PT_Normal,,,,,gBfmrew9TyuJxGSTdTODHg,uQvjViH/40KA1Xy9+SZWug,,,N,0,0,,,2017-01-24 14:43,2017-01-24 15:36,CLEMENTL,CLEMENTL
1332,49429159,751235,10651619,1239099,1,100,N,N,N,CP_Drtn,TT_Task,DT_FixedDUR2,RV_OK,TK_Complete,823A-ST-SNT16-1060,Curing for base slab,,,,0,224,0,224,56,0,0,0,,2013-11-25 08:00,2013-12-02 18:00,2017-06-12 18:00,2017-06-12 18:00,,2017-01-01 00:00,2017-01-01 00:00,,,2013-12-20 08:00,2013-12-26 18:00,,,,,PT_Normal,,,,,0qIkI/KRRx2e5erFgeD/tA,m50yJHZKpkq/LkRixIv4TA,,,N,224,0,,,2017-01-24 14:43,2017-01-24 15:36,CLEMENTL,CLEMENTL
1333,49429160,751235,10651619,1227199,1,100,N,N,N,CP_Drtn,TT_Task,DT_FixedDUR2,RV_OK,TK_Complete,823A-ST-SNT16-1080,Removal of formwork for base slab,,,,0,0,0,72,8,8,0,0,,2013-12-04 08:00,2013-12-04 18:00,2017-06-12 18:00,2017-06-12 18:00,,2017-01-01 00:00,2017-01-01 00:00,,,2013-12-07 08:00,2013-12-07 18:00,,,,,PT_Normal,,,,,+wCDeVOCQaqjIkCNOKeGEw,09beaPb8JkS/iPNlKlT7Vg,,,N,0,0,,,2017-01-24 14:43,2017-01-24 15:36,CLEMENTL,CLEMENTL
1334,49429161,751235,10651619,1227199,1,100,N,N,N,CP_Drtn,TT_Task,DT_FixedDUR2,RV_OK,TK_Complete,823A-ST-SNT16-1090,Infill concrete in between D-wall and base slab,,,,0,0,0,128,8,16,0,0,,2013-12-05 08:00,2013-12-05 18:00,2017-06-12 18:00,2017-06-12 18:00,,2017-01-01 00:00,2017-01-01 00:00,,,2013-12-09 08:00,2013-12-09 18:00,,,,,PT_Normal,,,,,BVO77gnER4WCve/c+A5AeQ,tF3h32aTBk2sBJw3lVObPw,,,N,0,0,,,2017-01-24 14:43,2017-01-24 15:36,CLEMENTL,CLEMENTL
1335,49429162,751235,10651619,1227199,1,100,N,N,N,CP_Drtn,TT_Task,DT_FixedDUR2,RV_OK,TK_Complete,823A-ST-SNT16-1110,Removal strut S3,,,,0,0,0,144,32,16,0,0,,2014-01-07 08:00,2014-01-10 18:00,2017-06-12 18:00,2017-06-12 18:00,,2017-01-01 00:00,2017-01-01 00:00,,,2014-01-07 08:00,2014-01-10 18:00,,,,,PT_Normal,,,,,6VW2FucuTiGq1xmNnRpcAA,qP8qGBXd+EK1ycJRG8iM+w,,,N,0,0,,,2017-01-24 14:43,2017-01-24 15:36,CLEMENTL,CLEMENTL
1336,49429163,751235,10651619,1239098,1,100,N,N,N,CP_Drtn,TT_Task,DT_FixedDUR2,RV_OK,TK_Complete,823A-ST-SNT16-1070,Preparation of construction joint for base slab,,,,0,0,0,0,8,0,0,0,,2013-12-03 08:00,2013-12-03 18:00,2017-06-12 18:00,2017-06-12 18:00,,2017-01-01 00:00,2017-01-01 00:00,,,2013-12-06 08:00,2013-12-06 18:00,,,,,PT_Normal,,,,,LyzX52INQQmi1AmhpuuUKA,56neXm5NIE6v/JEFJCvdMw,,,N,0,0,,,2017-01-24 14:43,2017-01-24 15:36,CLEMENTL,CLEMENTL
1337,49429164,751235,10651619,1239099,1,100,N,N,N,CP_Drtn,TT_Task,DT_FixedDUR2,RV_OK,TK_Complete,823A-ST-SNT16-1100,Curing,,,,0,0,0,224,8,0,0,0,,2013-12-06 08:00,2013-12-06 18:00,2017-06-12 18:00,2017-06-12 18:00,,2017-01-01 00:00,2017-01-01 00:00,,,2013-12-10 08:00,2013-12-10 18:00,,,,,PT_Normal,,,,,rNCYRocqQ22LO/fV1LS+mg,uhtxMqG2W0WMaaX4EMAojg,,,N,0,0,,,2017-01-24 14:43,2017-01-24 15:36,CLEMENTL,CLEMENTL
1338,49429165,751235,10651619,1227199,1,100,N,N,N,CP_Drtn,TT_Task,DT_FixedDUR2,RV_OK,TK_Complete,823A-ST-SNT16-1200,Side walkway and cable bracket (204m3),,,,0,1040,0,1040,40,80,80,0,,2014-05-29 08:00,2014-12-04 18:00,2017-06-12 18:00,2017-06-12 18:00,,2017-01-01 00:00,2017-01-01 00:00,,,2014-06-05 08:00,2014-06-10 18:00,,,,,PT_Normal,,,,,8qwnzW8PSwOyq6cpHq4M/g,mRWCP6sTKU2fF6FHMv58WA,,,N,1040,80,,,2017-01-24 14:43,2017-01-24 15:36,CLEMENTL,CLEMENTL
1339,49429166,751235,10651619,1227199,1,100,N,N,N,CP_Drtn,TT_Task,DT_FixedDUR2,RV_OK,TK_Complete,823A-ST-SNT16-1120,Erect internal formwork & Falsework for wall and roof,,,,0,0,0,624,32,48,0,0,,2014-04-01 08:00,2014-04-04 18:00,2017-06-12 18:00,2017-06-12 18:00,,2017-01-01 00:00,2017-01-01 00:00,,,2014-04-16 08:00,2014-04-23 18:00,,,,,PT_Normal,,,,,F/FC99jlRxmMDbcy5gPmFA,eHQ9GpX9xkG6yKmKgoL8yg,,,N,0,0,,,2017-01-24 14:43,2017-01-24 15:36,CLEMENTL,CLEMENTL
1340,49429167,751235,10651619,1227199,1,100,N,N,N,CP_Drtn,TT_Task,DT_FixedDUR2,RV_OK,TK_Complete,823A-ST-SNT16-1130,Rebar fixing for wall and roof,,,,0,0,0,544,24,32,0,0,,2014-04-07 08:00,2014-04-09 18:00,2017-06-12 18:00,2017-06-12 18:00,,2017-01-01 00:00,2017-01-01 00:00,,,2014-04-24 08:00,2014-04-26 18:00,,,,,PT_Normal,,,,,RSiP3+A0SXuyOrtjAwTMQw,493cAAAg00GFMAqUKN3RPA,,,N,0,0,,,2017-01-24 14:43,2017-01-24 15:36,CLEMENTL,CLEMENTL
1341,49429168,751235,10651619,1227199,1,100,N,N,N,CP_Drtn,TT_Task,DT_FixedDUR2,RV_OK,TK_Complete,823A-ST-SNT16-1140,Erect external formwork for wall and roof,,,,0,0,0,208,16,16,0,0,,2014-04-10 08:00,2014-04-11 18:00,2017-06-12 18:00,2017-06-12 18:00,,2017-01-01 00:00,2017-01-01 00:00,,,2014-04-28 08:00,2014-04-29 18:00,,,,,PT_Normal,,,,,RhLLylMfRwaNoKGcF220IQ,DUdsQqgRNUa7SYbo4r09iQ,,,N,0,0,,,2017-01-24 14:43,2017-01-24 15:36,CLEMENTL,CLEMENTL
1342,49429169,751235,10651619,1227199,1,100,N,N,N,CP_Drtn,TT_Task,DT_FixedDUR2,RV_OK,TK_Complete,823A-ST-SNT16-1150,Concreting for wall and roof (170m3),,,,0,0,0,208,8,16,0,0,,2014-04-12 08:00,2014-04-12 18:00,2017-06-12 18:00,2017-06-12 18:00,,2017-01-01 00:00,2017-01-01 00:00,,,2014-04-30 08:00,2014-04-30 18:00,,,,,PT_Normal,,,,,JQ7Jz4s6QaiGPzekU9IjzQ,J5qihDXqBkypvgmCwI/KUg,,,N,0,0,,,2017-01-24 14:43,2017-01-24 15:36,CLEMENTL,CLEMENTL
1343,49429170,751235,10651619,1227199,1,100,N,N,N,CP_Drtn,TT_Task,DT_FixedDUR2,RV_OK,TK_Complete,823A-ST-SNT16-1180,Removal external and internal formwork for wall,,,,0,0,0,144,8,16,0,0,,2014-04-15 08:00,2014-04-15 18:00,2017-06-12 18:00,2017-06-12 18:00,,2017-01-01 00:00,2017-01-01 00:00,,,2014-05-03 08:00,2014-05-03 18:00,,,,,PT_Normal,,,,,/F07s36aS7mncSvjT2gp+Q,2iPFLOTCjUS11/6iwl+upw,,,N,0,0,,,2017-01-24 14:43,2017-01-24 15:36,CLEMENTL,CLEMENTL
1344,49429171,751235,10651619,1239099,1,100,N,N,N,CP_Drtn,TT_Task,DT_FixedDUR2,RV_OK,TK_Complete,823A-ST-SNT16-1160,Curing for wall and roof,,,,0,0,0,224,80,0,0,0,,2014-04-14 08:00,2014-04-22 18:00,2017-06-12 18:00,2017-06-12 18:00,,2017-01-01 00:00,2017-01-01 00:00,,,2014-05-01 08:00,2014-05-10 18:00,,,,,PT_Normal,,,,,seGOhkETT827ieZfQZl+IQ,B4O1JjrBN0KuQmTcsm/dbQ,,,N,0,0,,,2017-01-24 14:43,2017-01-24 15:36,CLEMENTL,CLEMENTL
1345,49429172,751235,10651619,1227199,1,100,N,N,N,CP_Drtn,TT_Task,DT_FixedDUR2,RV_OK,TK_Complete,823A-ST-SNT16-1190,Removal internal falsework and formwork for roof,,,,0,0,0,416,16,32,0,0,,2014-04-23 08:00,2014-04-24 18:00,2017-06-12 18:00,2017-06-12 18:00,,2017-01-01 00:00,2017-01-01 00:00,,,2014-05-12 08:00,2014-05-13 18:00,,,,,PT_Normal,,,,,hNTUoWBVRwOgCEWKy9HCUw,qz+3HJfgwE2GHi0IOCIjHg,,,N,0,0,,,2017-01-24 14:43,2017-01-24 15:36,CLEMENTL,CLEMENTL
1346,49429173,751235,10651619,1227199,1,100,N,N,N,CP_Drtn,TT_Task,DT_FixedDUR2,RV_OK,TK_Complete,823A-ST-SNT16-1050,Concreting for base slab (70m3),,,,0,0,0,208,8,16,0,0,,2013-11-23 08:00,2013-11-23 18:00,2017-06-12 18:00,2017-06-12 18:00,,2017-01-01 00:00,2017-01-01 00:00,,,2013-12-19 08:00,2013-12-19 18:00,,,,,PT_Normal,,,,,Z5PGnLyvTlWtQjLs5gvpwQ,+yr8O2/QLkyKIN49R3ur+g,,,N,0,0,,,2017-01-24 14:43,2017-01-24 15:36,CLEMENTL,CLEMENTL
1347,49429174,751235,10651619,1239098,1,100,N,N,N,CP_Drtn,TT_Task,DT_FixedDUR2,RV_OK,TK_Complete,823A-ST-SNT16-1170,Preparation of construction joint for wall and roof,,,,0,0,0,0,8,0,0,0,,2014-04-14 08:00,2014-04-14 18:00,2017-06-12 18:00,2017-06-12 18:00,,2017-01-01 00:00,2017-01-01 00:00,,,2014-05-02 08:00,2014-05-02 18:00,,,,,PT_Normal,,,,,0A86WmCyRKSBv81BmI3Tkg,XzPCKSrlrkalSkNWGPK65Q,,,N,0,0,,,2017-01-24 14:43,2017-01-24 15:36,CLEMENTL,CLEMENTL
1348,49429175,751235,10651620,1227199,1,100,N,N,N,CP_Drtn,TT_Task,DT_FixedDUR2,RV_OK,TK_Complete,823A-ST-SNT4-1090,Side walkway and cable bracket (204m3),,,,0,0,0,1040,40,80,0,0,,2014-03-17 08:00,2014-03-21 18:00,2017-06-12 18:00,2017-06-12 18:00,,2017-01-01 00:00,2017-01-01 00:00,,,2014-03-17 08:00,2014-03-21 18:00,,,,,PT_Normal,,,,,VTW1Ti2iRR6PoTBomSnvlA,vVCqRLe8QEi5cZr9IA2sFA,,,N,0,0,,,2017-01-24 14:43,2017-01-24 15:36,CLEMENTL,CLEMENTL
1349,49429176,751235,10651620,1227199,1,100,N,N,N,CP_Drtn,TT_Task,DT_FixedDUR2,RV_OK,TK_Complete,823A-ST-SNT4-1010,Erect internal formwork & Falsework for wall and roof,,,,0,624,0,624,32,48,48,0,,2013-10-24 08:00,2013-11-16 18:00,2014-01-05 18:00,2014-01-05 18:00,,2017-01-01 00:00,2017-01-01 00:00,,,2013-12-13 08:00,2013-12-17 18:00,,,,,PT_Normal,,,,,8ItsaMXcT0Wg+ySKl6UM1Q,w8J5bHuoNkSfWNjCpnpNqA,,,N,624,48,,,2017-01-24 14:43,2017-01-24 14:53,CLEMENTL,CLEMENTL
1350,49429177,751235,10651620,1227199,1,100,N,N,N,CP_Drtn,TT_Task,DT_FixedDUR2,RV_OK,TK_Complete,823A-ST-SNT4-1020,Rebar fixing for wall and roof,,,,0,0,0,544,24,32,0,0,,2013-11-18 08:00,2013-11-20 18:00,2014-01-05 18:00,2014-01-05 18:00,,2017-01-01 00:00,2017-01-01 00:00,,,2013-12-14 08:00,2013-12-17 18:00,,,,,PT_Normal,,,,,CL6U68iLQPiXWAkDbjELgg,4CZy3fjIiU+UpfmLFq8dAQ,,,N,0,0,,,2017-01-24 14:43,2017-01-24 14:53,CLEMENTL,CLEMENTL
1351,49429178,751235,10651620,1227199,1,100,N,N,N,CP_Drtn,TT_Task,DT_FixedDUR2,RV_OK,TK_Complete,823A-ST-SNT4-1030,Erect external formwork for wall and roof,,,,0,0,0,208,16,16,0,0,,2013-11-21 08:00,2013-11-22 18:00,2014-01-05 18:00,2014-01-05 18:00,,2017-01-01 00:00,2017-01-01 00:00,,,2013-12-18 08:00,2013-12-19 18:00,,,,,PT_Normal,,,,,S/mcc7Q2T4qMQ/oQ97spOQ,Wfit95I3tk2PIxdz0o+aCQ,,,N,0,0,,,2017-01-24 14:43,2017-01-24 14:53,CLEMENTL,CLEMENTL
1352,49429179,751235,10651620,1227199,1,100,N,N,N,CP_Drtn,TT_Task,DT_FixedDUR2,RV_OK,TK_Complete,823A-ST-SNT4-1040,Concreting for wall and roof (215m3),,,,0,0,0,208,8,16,0,0,,2013-11-23 08:00,2013-11-23 18:00,2014-01-05 18:00,2014-01-05 18:00,,2017-01-01 00:00,2017-01-01 00:00,,,2013-12-20 08:00,2013-12-20 18:00,,,,,PT_Normal,,,,,IdaRIIXuSUGJu45PVswsQQ,ypbKOqEkNE+yvWUCI8Idsw,,,N,0,0,,,2017-01-24 14:43,2017-01-24 14:53,CLEMENTL,CLEMENTL
1353,49429180,751235,10651620,1227199,1,100,N,N,N,CP_Drtn,TT_Task,DT_FixedDUR2,RV_OK,TK_Complete,823A-ST-SNT4-1070,Removal external and internal formwork for wall,,,,0,0,0,144,8,16,0,0,,2013-11-26 08:00,2013-11-26 18:00,2014-01-05 18:00,2014-01-05 18:00,,2017-01-01 00:00,2017-01-01 00:00,,,2013-12-23 08:00,2013-12-23 18:00,,,,,PT_Normal,,,,,xhsL1VLSSbKn52px3MYZIw,Ct+N8ZnWSUeHRy0N3RAb6Q,,,N,0,0,,,2017-01-24 14:43,2017-01-24 14:53,CLEMENTL,CLEMENTL
1354,49429181,751235,10651620,1239099,1,100,N,N,N,CP_Drtn,TT_Task,DT_FixedDUR2,RV_OK,TK_Complete,823A-ST-SNT4-1050,Curing for wall and roof,,,,0,224,0,224,80,0,0,0,,2013-11-25 08:00,2013-12-05 18:00,2017-06-12 18:00,2017-06-12 18:00,,2017-01-01 00:00,2017-01-01 00:00,,,2013-12-21 08:00,2013-12-30 18:00,,,,,PT_Normal,,,,,dm7JYRO1QP6fvgq+p5X8KQ,pXL10BWvbkmpcxlqWQVgGg,,,N,224,0,,,2017-01-24 14:43,2017-01-24 15:36,CLEMENTL,CLEMENTL
1355,49429182,751235,10651620,1227199,1,100,N,N,N,CP_Drtn,TT_Task,DT_FixedDUR2,RV_OK,TK_Complete,823A-ST-SNT4-1080,Removal internal falsework and formwork for roof,,,,0,0,0,416,16,32,0,0,,2013-12-06 08:00,2013-12-07 18:00,2017-06-12 18:00,2017-06-12 18:00,,2017-01-01 00:00,2017-01-01 00:00,,,2014-01-13 08:00,2014-01-14 18:00,,,,,PT_Normal,,,,,7lZYczNGRzq27ZV2RAU9uQ,YXMHosL9L0mdRUMmJnXB2g,,,N,0,0,,,2017-01-24 14:43,2017-01-24 15:36,CLEMENTL,CLEMENTL
1356,49429183,751235,10651620,1239098,1,100,N,N,N,CP_Drtn,TT_Task,DT_FixedDUR2,RV_OK,TK_Complete,823A-ST-SNT4-1060,Preparation of construction joint for wall and roof,,,,0,0,0,0,8,0,0,0,,2013-11-25 08:00,2013-11-25 18:00,2014-01-05 18:00,2014-01-05 18:00,,2017-01-01 00:00,2017-01-01 00:00,,,2013-12-21 08:00,2013-12-21 18:00,,,,,PT_Normal,,,,,+a2oLHrdQPatICcBiC3MnQ,gTXmoGAH0Een+w11aXZ4TQ,,,N,0,0,,,2017-01-24 14:43,2017-01-24 14:53,CLEMENTL,CLEMENTL
1357,49429184,751235,10651622,1227199,1,100,N,N,N,CP_Drtn,TT_Task,DT_FixedDUR2,RV_OK,TK_Complete,823A-ST-EP-L4-1100,"Concreting (Beam, Floor Slab and Staircase) (31m3)",,,,0,56,0,56,8,8,8,0,,2014-07-11 08:00,2014-09-20 18:00,2017-06-12 18:00,2017-06-12 18:00,,2017-01-01 00:00,2017-01-01 00:00,,,2014-07-11 08:00,2014-07-11 18:00,,,,,PT_Normal,,,,,KsckUXj2RYm1bk0+pCGfqQ,oBvaBRE8SKGdkHY5rPivNA,,,N,56,8,,,2017-01-24 14:43,2017-01-24 15:36,CLEMENTL,CLEMENTL
1358,49429185,751235,10651622,1239099,1,100,N,N,N,CP_Drtn,TT_Task,DT_FixedDUR2,RV_OK,TK_Complete,823A-ST-EP-L4-1110,"Curing (Beam, Floor Slab and Staircase)",,,,0,0,0,112,56,0,0,0,,2014-09-22 08:00,2014-09-29 18:00,2017-06-12 18:00,2017-06-12 18:00,,2017-01-01 00:00,2017-01-01 00:00,,,2014-09-03 08:00,2014-09-09 18:00,,,,,PT_Normal,,,,,TfVgy+1ITX+0HoapGtzqtg,r/wqhrLMQ0OXzcupeMJ5gg,,,N,0,0,,,2017-01-24 14:43,2017-01-24 15:36,CLEMENTL,CLEMENTL
1359,49429186,751235,10651622,1239098,1,100,N,N,N,CP_Drtn,TT_Task,DT_FixedDUR2,RV_OK,TK_Complete,823A-ST-EP-L4-1005,Removal strut S1 @ SN 19,,,,0,0,0,0,32,0,0,0,,2014-06-03 08:00,2014-06-04 18:00,2017-06-12 18:00,2017-06-12 18:00,,2017-01-01 00:00,2017-01-01 00:00,,,2014-06-19 08:00,2014-06-23 18:00,,,,,PT_Normal,,,,,bXHBLLh8TnWrw7Eu9rzXSg,,,,N,0,0,,,2017-01-24 14:43,2017-01-24 15:36,CLEMENTL,CLEMENTL
1360,49429187,751235,10651622,1239098,1,100,N,N,N,CP_Drtn,TT_Task,DT_FixedDUR2,RV_OK,TK_Complete,823A-ST-EP-L4-1071,Waterproofing,,,,0,0,0,0,24,0,0,0,,2014-06-17 08:00,2014-06-19 18:00,2017-06-12 18:00,2017-06-12 18:00,,2017-01-01 00:00,2017-01-01 00:00,,,2014-07-09 08:00,2014-07-11 18:00,,,,,PT_Normal,,,,,GTHKHbsGToymTiFFVf0z2w,,,,N,0,0,,,2017-01-24 14:43,2017-01-24 15:36,CLEMENTL,CLEMENTL
1361,49429188,751235,10651622,1239098,1,100,N,N,N,CP_Drtn,TT_Task,DT_FixedDUR2,RV_OK,TK_Complete,823A-ST-EP-L4-1072,Backfilling,,,,0,0,0,0,32,0,0,0,,2014-06-20 08:00,2014-06-24 18:00,2017-06-12 18:00,2017-06-12 18:00,,2017-01-01 00:00,2017-01-01 00:00,,,2014-07-12 08:00,2014-07-16 18:00,,,,,PT_Normal,,,,,4Of51A1dSCGmOAGVrIUJGQ,,,,N,0,0,,,2017-01-24 14:43,2017-01-24 15:36,CLEMENTL,CLEMENTL
1362,49429189,751235,10651622,1227199,1,100,N,N,N,CP_Drtn,TT_Task,DT_FixedDUR2,RV_OK,TK_Complete,823A-ST-EP-L4-1020,Erect internal formwork,,,,0,0,0,56,8,8,0,0,,2014-06-04 08:00,2014-06-04 18:00,2017-06-12 18:00,2017-06-12 18:00,,2017-01-01 00:00,2017-01-01 00:00,,,2014-06-28 08:00,2014-06-28 18:00,,,,,PT_Normal,,,,,SgOcO/cYTpSPp0986dEf/g,7KIBjCogQgKPYhtDhceX5Q,,,N,0,0,,,2017-01-24 14:43,2017-01-24 15:36,CLEMENTL,CLEMENTL
1363,49429190,751235,10651622,1227199,1,100,N,N,N,CP_Drtn,TT_Task,DT_FixedDUR2,RV_OK,TK_Complete,823A-ST-EP-L4-1085,Staircase construction (+21.456mPD to +25.956mPD) (20m3),,,,0,680,0,680,32,40,40,0,,2014-06-27 08:00,2014-07-04 18:00,2017-06-12 18:00,2017-06-12 18:00,,2017-01-01 00:00,2017-01-01 00:00,,,2014-07-19 08:00,2014-07-23 18:00,,,,,PT_Normal,,,,,/f3FLqWJQ8y7gPGhPPyroQ,mAs9TsnmShGv8GQrYBvbUw,,,N,680,40,,,2017-01-24 14:43,2017-01-24 15:36,CLEMENTL,CLEMENTL
1364,49429191,751235,10651622,1227199,1,100,N,N,N,CP_Drtn,TT_Task,DT_FixedDUR2,RV_OK,TK_Complete,823A-ST-EP-L4-1086,Staircase construction (+25.956mPD to +27.606mPD) (20m3),,,,0,680,0,680,32,40,40,0,,2014-07-05 08:00,2014-08-16 18:00,2017-06-12 18:00,2017-06-12 18:00,,2017-01-01 00:00,2017-01-01 00:00,,,2014-07-05 08:00,2014-07-09 18:00,,,,,PT_Normal,,,,,EYOLH6xoRSCkOgvHhApSkQ,9iRcwYTGRhGk2fOj0CT4Ww,,,N,680,40,,,2017-01-24 14:43,2017-01-24 15:36,CLEMENTL,CLEMENTL
1365,49429192,751235,10651622,1227199,1,100,N,N,N,CP_Drtn,TT_Task,DT_FixedDUR2,RV_OK,TK_Complete,823A-ST-EP-L4-1010,Erect working platform to +30.406mPD,,,,0,0,0,80,32,16,0,0,,2014-06-03 08:00,2014-06-04 18:00,2017-06-12 18:00,2017-06-12 18:00,,2017-01-01 00:00,2017-01-01 00:00,,,2014-06-24 08:00,2014-06-27 18:00,,,,,PT_Normal,,,,,8cLWcPYjR+uViRCqUW06YA,5D0h0I7kSP+/z4vwSgAzcQ,,,N,0,0,,,2017-01-24 14:43,2017-01-24 15:36,CLEMENTL,CLEMENTL
1366,49429193,751235,10651622,1227199,1,100,N,N,N,CP_Drtn,TT_Task,DT_FixedDUR2,RV_OK,TK_Complete,823A-ST-EP-L4-1030,Rebar fixing (External Wall & Internal Wall),,,,0,0,0,112,16,16,0,0,,2014-06-05 08:00,2014-06-06 18:00,2017-06-12 18:00,2017-06-12 18:00,,2017-01-01 00:00,2017-01-01 00:00,,,2014-06-30 08:00,2014-07-02 18:00,,,,,PT_Normal,,,,,djTfR0wlT+KXtUTZT91HiQ,q1r7P03kTG+As2qyHe6mdQ,,,N,0,0,,,2017-01-24 14:43,2017-01-24 15:36,CLEMENTL,CLEMENTL
1367,49429194,751235,10651622,1227199,1,100,N,N,N,CP_Drtn,TT_Task,DT_FixedDUR2,RV_OK,TK_Complete,823A-ST-EP-L4-1040,Erect external formwork (External Wall & Internal Wall),,,,0,0,0,56,8,8,0,0,,2014-06-07 08:00,2014-06-07 18:00,2017-06-12 18:00,2017-06-12 18:00,,2017-01-01 00:00,2017-01-01 00:00,,,2014-07-03 08:00,2014-07-03 18:00,,,,,PT_Normal,,,,,PWro2GH4SyKhCRV0O+0wAQ,WLqhSy8rQ6WLDNjgtmsiKw,,,N,0,0,,,2017-01-24 14:43,2017-01-24 15:36,CLEMENTL,CLEMENTL
1368,49429195,751235,10651622,1227199,1,100,N,N,N,CP_Drtn,TT_Task,DT_FixedDUR2,RV_OK,TK_Complete,823A-ST-EP-L4-1050,Concreting (External Wall & Internal Wall) (128m3),,,,0,0,0,72,8,8,0,0,,2014-06-07 08:00,2014-06-07 18:00,2017-06-12 18:00,2017-06-12 18:00,,2017-01-01 00:00,2017-01-01 00:00,,,2014-07-04 08:00,2014-07-04 18:00,,,,,PT_Normal,,,,,0X1vrGuvSUKUNe6MRMqkvg,9mOtahLeTKKSv3WtTmn8Ag,,,N,0,0,,,2017-01-24 14:43,2017-01-24 15:36,CLEMENTL,CLEMENTL
1369,49429196,751235,10651622,1227199,1,100,N,N,N,CP_Drtn,TT_Task,DT_FixedDUR2,RV_OK,TK_Complete,823A-ST-EP-L4-1070,Removal formwork (External Wall & Internal Wall),,,,0,0,0,56,8,8,0,0,,2014-06-16 08:00,2014-06-16 18:00,2017-06-12 18:00,2017-06-12 18:00,,2017-01-01 00:00,2017-01-01 00:00,,,2014-07-08 08:00,2014-07-08 18:00,,,,,PT_Normal,,,,,QaGbwZckQ1yZuClq191tmA,VCVne3juRYiNxZUwHzFLIQ,,,N,0,0,,,2017-01-24 14:43,2017-01-24 15:36,CLEMENTL,CLEMENTL
1370,49429197,751235,10651622,1239099,1,100,N,N,N,CP_Drtn,TT_Task,DT_FixedDUR2,RV_OK,TK_Complete,823A-ST-EP-L4-1060,Curing (External Wall & Internal Wall),,,,0,0,0,112,56,0,0,0,,2014-06-09 08:00,2014-06-14 18:00,2017-06-12 18:00,2017-06-12 18:00,,2017-01-01 00:00,2017-01-01 00:00,,,2014-07-05 08:00,2014-07-11 18:00,,,,,PT_Normal,,,,,hkD3qwMlTjSsHgoLsgRtXg,Tz1HClYeSUSK63q7b5xfSw,,,N,0,0,,,2017-01-24 14:43,2017-01-24 15:36,CLEMENTL,CLEMENTL
1371,49429198,751235,10651622,1227199,1,100,N,N,N,CP_Drtn,TT_Task,DT_FixedDUR2,RV_OK,TK_Complete,823A-ST-EP-L4-1080,Erect falsework and soffit formwork +30.206mPD,,,,0,0,0,80,16,16,0,0,,2014-06-25 08:00,2014-06-26 18:00,2017-06-12 18:00,2017-06-12 18:00,,2017-01-01 00:00,2017-01-01 00:00,,,2014-07-17 08:00,2014-07-18 18:00,,,,,PT_Normal,,,,,wB46sct8Q02VtdckZrgjlQ,jxxCLnvdRvST6UB+RZumjg,,,N,0,0,,,2017-01-24 14:43,2017-01-24 15:36,CLEMENTL,CLEMENTL
1372,49429199,751235,10651622,1227199,1,100,N,N,N,CP_Drtn,TT_Task,DT_FixedDUR2,RV_OK,TK_Complete,823A-ST-EP-L4-1090,"Rebar fixing (Beam, Floor Slab and Staircase)",,,,0,56,0,56,8,8,8,0,,2014-07-10 08:00,2014-09-01 18:00,2017-06-12 18:00,2017-06-12 18:00,,2017-01-01 00:00,2017-01-01 00:00,,,2014-07-10 08:00,2014-07-10 18:00,,,,,PT_Normal,,,,,7Z1Aqor1T96tPeQHVrtJzA,JINf0DiPTOaiu5qYtp6jRQ,,,N,56,8,,,2017-01-24 14:43,2017-01-24 15:36,CLEMENTL,CLEMENTL
1373,49429200,751235,10651623,1227199,1,100,N,N,N,CP_Drtn,TT_Task,DT_FixedDUR2,RV_OK,TK_Complete,823A-ST-EP-L1-1010,Placing of waterproof member T-lock & testing for base slab,,,,0,64,0,64,8,0,0,0,,2013-09-19 08:00,2013-09-21 18:00,2017-06-12 18:00,2017-06-12 18:00,,2017-01-01 00:00,2017-01-01 00:00,,,2013-11-09 08:00,2013-11-09 18:00,,,,,PT_Normal,,,,,TqtfQTTzTXykEDlG/dGYLg,yK2PwHrpbUSvcfAPOD8HkQ,,,N,64,0,,,2017-01-24 14:43,2017-01-24 15:36,CLEMENTL,CLEMENTL
1374,49429201,751235,10651623,1227199,1,100,N,N,N,CP_Drtn,TT_Task,DT_FixedDUR2,RV_OK,TK_Complete,823A-ST-EP-L1-1020,Erect external formwork for base slab,,,,0,104,0,104,16,8,8,0,,2013-09-21 08:00,2013-09-24 18:00,2017-06-12 18:00,2017-06-12 18:00,,2017-01-01 00:00,2017-01-01 00:00,,,2013-11-11 08:00,2013-11-12 18:00,,,,,PT_Normal,,,,,HNDBImGzTXSKioK5yO8ShA,T4lTs/MaJkuil88ltcUQ2A,,,N,104,8,,,2017-01-24 14:43,2017-01-24 15:36,CLEMENTL,CLEMENTL
1375,49429202,751235,10651623,1227199,1,100,N,N,N,CP_Drtn,TT_Task,DT_FixedDUR2,RV_OK,TK_Complete,823A-ST-EP-L1-1030,Rebar fixing for base slab,,,,0,0,0,272,16,16,0,0,,2013-10-02 08:00,2013-10-05 18:00,2017-06-12 18:00,2017-06-12 18:00,,2017-01-01 00:00,2017-01-01 00:00,,,2013-12-09 08:00,2013-12-10 18:00,,,,,PT_Normal,,,,,Q/nodvbPTL6uOddKIvQqMg,feLIaF0g2E+BRj3fm0vgBg,,,N,0,0,,,2017-01-24 14:43,2017-01-24 15:36,CLEMENTL,CLEMENTL
1376,49429203,751235,10651623,1227199,1,100,N,N,N,CP_Drtn,TT_Task,DT_FixedDUR2,RV_OK,TK_Complete,823A-ST-EP-L1-1040,Erect internal kicker formwork for base slab,,,,0,0,0,288,16,16,0,0,,2013-10-07 08:00,2013-10-10 18:00,2017-06-12 18:00,2017-06-12 18:00,,2017-01-01 00:00,2017-01-01 00:00,,,2013-12-11 08:00,2013-12-12 18:00,,,,,PT_Normal,,,,,sqjZa3g9THyW4MfEPz5fLg,uQvjViH/40KA1Xy9+SZWug,,,N,0,0,,,2017-01-24 14:43,2017-01-24 15:36,CLEMENTL,CLEMENTL
1377,49429204,751235,10651623,1227199,1,100,N,N,N,CP_Drtn,TT_Task,DT_FixedDUR2,RV_OK,TK_Complete,823A-ST-EP-L1-1050,Concreting for base slab (30m3),,,,0,0,0,208,8,16,0,0,,2013-10-11 08:00,2013-10-11 18:00,2017-06-12 18:00,2017-06-12 18:00,,2017-01-01 00:00,2017-01-01 00:00,,,2013-12-18 08:00,2013-12-18 18:00,,,,,PT_Normal,,,,,t9xgMZPzSciAI4Do6RMLQw,+yr8O2/QLkyKIN49R3ur+g,,,N,0,0,,,2017-01-24 14:43,2017-01-24 15:36,CLEMENTL,CLEMENTL
1378,49429205,751235,10651623,1239099,1,100,N,N,N,CP_Drtn,TT_Task,DT_FixedDUR2,RV_OK,TK_Complete,823A-ST-EP-L1-1060,Curing for base slab,,,,0,0,0,224,56,0,0,0,,2013-10-12 08:00,2013-10-19 18:00,2017-06-12 18:00,2017-06-12 18:00,,2017-01-01 00:00,2017-01-01 00:00,,,2013-12-13 08:00,2013-12-19 18:00,,,,,PT_Normal,,,,,yQHZtRIFQ9mxtu309EMDqQ,m50yJHZKpkq/LkRixIv4TA,,,N,0,0,,,2017-01-24 14:43,2017-01-24 15:36,CLEMENTL,CLEMENTL
1379,49429206,751235,10651623,1227199,1,100,N,N,N,CP_Drtn,TT_Task,DT_FixedDUR2,RV_OK,TK_Complete,823A-ST-EP-L1-1080,Removal of formwork for base slab,,,,0,0,0,72,8,8,0,0,,2013-10-15 08:00,2013-10-15 18:00,2017-06-12 18:00,2017-06-12 18:00,,2017-01-01 00:00,2017-01-01 00:00,,,2013-12-14 08:00,2013-12-14 18:00,,,,,PT_Normal,,,,,MaLuK5pnQjqq9HKEgr36Nw,09beaPb8JkS/iPNlKlT7Vg,,,N,0,0,,,2017-01-24 14:43,2017-01-24 15:36,CLEMENTL,CLEMENTL
1380,49429207,751235,10651623,1227199,1,100,N,N,N,CP_Drtn,TT_Task,DT_FixedDUR2,RV_OK,TK_Complete,823A-ST-EP-L1-1110,Removal strut S3,,,,0,0,0,144,32,16,0,0,,2013-12-11 08:00,2013-12-14 18:00,2017-06-12 18:00,2017-06-12 18:00,,2017-01-01 00:00,2017-01-01 00:00,,,2013-12-11 08:00,2013-12-14 18:00,,,,,PT_Normal,,,,,oh9+3HxfR3uzwRHydzFJ7g,qP8qGBXd+EK1ycJRG8iM+w,,,N,0,0,,,2017-01-24 14:43,2017-01-24 15:36,CLEMENTL,CLEMENTL
1381,49429208,751235,10651623,1239098,1,100,N,N,N,CP_Drtn,TT_Task,DT_FixedDUR2,RV_OK,TK_Complete,823A-ST-EP-L1-1070,Preparation of construction joint for base slab,,,,0,0,0,0,8,0,0,0,,2013-10-12 08:00,2013-10-12 18:00,2017-06-12 18:00,2017-06-12 18:00,,2017-01-01 00:00,2017-01-01 00:00,,,2013-12-13 08:00,2013-12-13 18:00,,,,,PT_Normal,,,,,gVTsvVJpSeO//54RsRTIZg,56neXm5NIE6v/JEFJCvdMw,,,N,0,0,,,2017-01-24 14:43,2017-01-24 15:36,CLEMENTL,CLEMENTL
1382,49429209,751235,10651623,1239099,1,100,N,N,N,CP_Drtn,TT_Task,DT_FixedDUR2,RV_OK,TK_Complete,823A-ST-EP-L1-1100,Curing,,,,0,0,0,224,8,0,0,0,,2013-12-10 08:00,2013-12-10 18:00,2017-06-12 18:00,2017-06-12 18:00,,2017-01-01 00:00,2017-01-01 00:00,,,2013-12-10 08:00,2013-12-10 18:00,,,,,PT_Normal,,,,,aDxz9GDBRXu6lxrjz5n09Q,uhtxMqG2W0WMaaX4EMAojg,,,N,0,0,,,2017-01-24 14:43,2017-01-24 15:36,CLEMENTL,CLEMENTL
1383,49429210,751235,10651623,1227199,1,100,N,N,N,CP_Drtn,TT_Task,DT_FixedDUR2,RV_OK,TK_Complete,823A-ST-EP-L1-1120,Side walkway and cable bracket (204m3),,,,0,1040,0,1040,40,80,80,0,,2014-05-17 08:00,2014-12-01 18:00,2017-06-12 18:00,2017-06-12 18:00,,2017-01-01 00:00,2017-01-01 00:00,,,2014-05-17 08:00,2014-05-22 18:00,,,,,PT_Normal,,,,,KLVIeytTTeSfEYBUAp2BnQ,mRWCP6sTKU2fF6FHMv58WA,,,N,1040,80,,,2017-01-24 14:43,2017-01-24 15:36,CLEMENTL,CLEMENTL
1384,49429211,751235,10651623,1227199,1,100,N,N,N,CP_Drtn,TT_Task,DT_FixedDUR2,RV_OK,TK_Complete,823A-ST-EP-L1-1045,Staircase construction (+12.0mPD to +14.706mPD),,,,0,0,0,680,32,40,0,0,,2014-01-02 08:00,2014-01-06 18:00,2017-06-12 18:00,2017-06-12 18:00,,2017-01-01 00:00,2017-01-01 00:00,,,2014-02-04 08:00,2014-02-07 18:00,,,,,PT_Normal,,,,,C1r9pXgHQx2BUqpGU9yIOw,PV4tGjCLRtifj4ouoduiqQ,,,N,0,0,,,2017-01-24 14:43,2017-01-24 15:36,CLEMENTL,CLEMENTL
1385,49429212,751235,10651623,1227199,1,100,N,N,N,CP_Drtn,TT_Task,DT_FixedDUR2,RV_OK,TK_Complete,823A-ST-EP-L1-1095,Mass concrete at level +12.0mPD,,,,0,0,0,504,16,56,0,0,,2013-12-07 08:00,2013-12-09 18:00,2017-06-12 18:00,2017-06-12 18:00,,2017-01-01 00:00,2017-01-01 00:00,,,2013-12-07 08:00,2013-12-09 18:00,,,,,PT_Normal,,,,,yjxTf1dhRT2dw45oGt2ppw,RaGN+v6YSSqojhsgW5Z9DA,,,N,0,0,,,2017-01-24 14:43,2017-01-24 15:36,CLEMENTL,CLEMENTL
1386,49429213,751235,10651623,1227199,1,100,N,N,N,CP_Drtn,TT_Task,DT_FixedDUR2,RV_OK,TK_Complete,823A-ST-EP-L1-1090,Infill concrete in between D-wall and base slab,,,,0,0,0,128,8,16,0,0,,2013-12-06 08:00,2013-12-06 18:00,2017-06-12 18:00,2017-06-12 18:00,,2017-01-01 00:00,2017-01-01 00:00,,,2013-12-06 08:00,2013-12-06 18:00,,,,,PT_Normal,,,,,eeOUZitpQlSEOzAD1LZuXg,tF3h32aTBk2sBJw3lVObPw,,,N,0,0,,,2017-01-24 14:43,2017-01-24 15:36,CLEMENTL,CLEMENTL
1387,49429214,751235,10651624,1227199,1,100,N,N,N,CP_Drtn,TT_Task,DT_FixedDUR2,RV_OK,TK_Complete,823A-ST-EP-L3-1010,Erect working platform to +24.0mPD,,,,0,0,0,160,32,32,0,0,,2014-03-07 08:00,2014-03-11 18:00,2017-06-12 18:00,2017-06-12 18:00,,2017-01-01 00:00,2017-01-01 00:00,,,2014-04-08 08:00,2014-04-11 18:00,,,,,PT_Normal,,,,,1frKtUNsT4q97L8w9zPE2A,xN/h9AkST+GEPmiRyk1PMg,,,N,0,0,,,2017-01-24 14:43,2017-01-24 15:36,CLEMENTL,CLEMENTL
1388,49429215,751235,10651624,1227199,1,100,N,N,N,CP_Drtn,TT_Task,DT_FixedDUR2,RV_OK,TK_Complete,823A-ST-EP-L3-1020,Erect internal formwork below strut S1,,,,0,0,0,112,16,16,0,0,,2014-03-12 08:00,2014-03-13 18:00,2017-06-12 18:00,2017-06-12 18:00,,2017-01-01 00:00,2017-01-01 00:00,,,2014-04-12 08:00,2014-04-14 18:00,,,,,PT_Normal,,,,,GKeO/YTmRMWR6fLoClyqJA,DtYeN1HCQa+eypjNe6vARQ,,,N,0,0,,,2017-01-24 14:43,2017-01-24 15:36,CLEMENTL,CLEMENTL
1389,49429216,751235,10651624,1227199,1,100,N,N,N,CP_Drtn,TT_Task,DT_FixedDUR2,RV_OK,TK_Complete,823A-ST-EP-L3-1040,Erect external wall & internal wall formwork,,,,0,0,0,176,16,16,0,0,,2014-04-02 08:00,2014-04-03 18:00,2017-06-12 18:00,2017-06-12 18:00,,2017-01-01 00:00,2017-01-01 00:00,,,2014-05-13 08:00,2014-05-14 18:00,,,,,PT_Normal,,,,,1i3SHKwlQLSmLzOgHjsIqQ,habKnq0ITF6ycDYRCF9b2Q,,,N,0,0,,,2017-01-24 14:43,2017-01-24 15:36,CLEMENTL,CLEMENTL
1390,49429217,751235,10651624,1227199,1,100,N,N,N,CP_Drtn,TT_Task,DT_FixedDUR2,RV_OK,TK_Complete,823A-ST-EP-L3-1050,Concreting (External Wall & Internal Wall) (264m3),,,,0,0,0,208,8,16,0,0,,2014-04-04 08:00,2014-04-04 18:00,2017-06-12 18:00,2017-06-12 18:00,,2017-01-01 00:00,2017-01-01 00:00,,,2014-05-15 08:00,2014-05-15 18:00,,,,,PT_Normal,,,,,npYvqszyR1iUWD5DHwuOOg,pCTudZOkS82NUnsAGcht9Q,,,N,0,0,,,2017-01-24 14:43,2017-01-24 15:36,CLEMENTL,CLEMENTL
1391,49429218,751235,10651624,1239098,1,100,N,N,N,CP_Drtn,TT_Task,DT_FixedDUR2,RV_OK,TK_Complete,823A-ST-EP-L3-1005,Removal strut S2 @ SN 19,,,,0,0,0,0,32,0,0,0,,2014-03-03 08:00,2014-03-06 18:00,2017-06-12 18:00,2017-06-12 18:00,,2017-01-01 00:00,2017-01-01 00:00,,,2014-04-02 08:00,2014-04-07 18:00,,,,,PT_Normal,,,,,uQfWoaaMRVGvIK/Vq8LIDQ,,,,N,0,0,,,2017-01-24 14:43,2017-01-24 15:36,CLEMENTL,CLEMENTL
1392,49429219,751235,10651624,1239098,1,100,N,N,N,CP_Drtn,TT_Task,DT_FixedDUR2,RV_OK,TK_Complete,823A-ST-EP-L3-1080,Waterproofing,,,,0,0,0,0,24,0,0,0,,2014-06-19 08:00,2014-06-21 18:00,2017-06-12 18:00,2017-06-12 18:00,,2017-01-01 00:00,2017-01-01 00:00,,,2014-06-19 08:00,2014-06-21 18:00,,,,,PT_Normal,,,,,K40gAUdUQpi7BjLHXl7TcA,,,,N,0,0,,,2017-01-24 14:43,2017-01-24 15:36,CLEMENTL,CLEMENTL
1393,49429220,751235,10651624,1239098,1,100,N,N,N,CP_Drtn,TT_Task,DT_FixedDUR2,RV_OK,TK_Complete,823A-ST-EP-L3-1090,Backfilling,,,,0,0,0,0,32,0,0,0,,2014-06-23 08:00,2014-06-26 18:00,2017-06-12 18:00,2017-06-12 18:00,,2017-01-01 00:00,2017-01-01 00:00,,,2014-06-23 08:00,2014-06-26 18:00,,,,,PT_Normal,,,,,okdtuYRpSbetYXLE9la49w,,,,N,0,0,,,2017-01-24 14:43,2017-01-24 15:36,CLEMENTL,CLEMENTL
1394,49429221,751235,10651624,1227199,1,100,N,N,N,CP_Drtn,TT_Task,DT_FixedDUR2,RV_OK,TK_Complete,823A-ST-EP-L3-1030,Rebar fixing (External Wall & Internal Wall),,,,0,112,0,112,16,16,16,0,,2014-03-14 08:00,2014-04-01 18:00,2017-06-12 18:00,2017-06-12 18:00,,2017-01-01 00:00,2017-01-01 00:00,,,2014-04-23 08:00,2014-04-24 18:00,,,,,PT_Normal,,,,,4lgMpiaESHaOYYdfcTPUAA,8eZgUa9JQkqX5x5HIHA5/A,,,N,112,16,,,2017-01-24 14:43,2017-01-24 15:36,CLEMENTL,CLEMENTL
1395,49429222,751235,10651624,1227199,1,100,N,N,N,CP_Drtn,TT_Task,DT_FixedDUR2,RV_OK,TK_Complete,823A-ST-EP-L3-1025,Staircase construction (+21.456mPD to +23.706mPD) (20m3),,,,0,680,0,680,32,40,40,0,,2014-06-16 08:00,2014-07-03 18:00,2017-06-12 18:00,2017-06-12 18:00,,2017-01-01 00:00,2017-01-01 00:00,,,2014-06-14 08:00,2014-06-18 18:00,,,,,PT_Normal,,,,,VN+ENgTMRPqve/L6clDhpA,XjYinAkfTYyYHAShzN4qDw,,,N,680,40,,,2017-01-24 14:43,2017-01-24 15:36,CLEMENTL,CLEMENTL
1396,49429223,751235,10651624,1227199,1,100,N,N,N,CP_Drtn,TT_Task,DT_FixedDUR2,RV_OK,TK_Complete,823A-ST-EP-L3-1070,Removal formwork (External Wall & Internal Wall),,,,0,0,0,112,16,16,0,0,,2014-04-09 08:00,2014-04-10 18:00,2017-06-12 18:00,2017-06-12 18:00,,2017-01-01 00:00,2017-01-01 00:00,,,2014-05-19 08:00,2014-05-20 18:00,,,,,PT_Normal,,,,,ReLCK4saR7eNwTguNRIfpA,WQDuMpKBQUSZaikBtQ+/kg,,,N,0,0,,,2017-01-24 14:43,2017-01-24 15:36,CLEMENTL,CLEMENTL
1397,49429224,751235,10651624,1239099,1,100,N,N,N,CP_Drtn,TT_Task,DT_FixedDUR2,RV_OK,TK_Complete,823A-ST-EP-L3-1060,Curing (External Wall & Internal Wall),,,,0,0,0,112,56,56,0,0,,2014-04-07 08:00,2014-04-11 18:00,2017-06-12 18:00,2017-06-12 18:00,,2017-01-01 00:00,2017-01-01 00:00,,,2014-05-16 08:00,2014-05-22 18:00,,,,,PT_Normal,,,,,tjI2P+FORh2mb2daLFcTiA,XnnfBpeTTSaDUr2SY0r1BQ,,,N,0,0,,,2017-01-24 14:43,2017-01-24 15:36,CLEMENTL,CLEMENTL
1398,49429225,751235,10651625,1227199,1,100,N,N,N,CP_Drtn,TT_Task,DT_FixedDUR2,RV_OK,TK_Complete,823A-ST-EP-L6-1010,Erect external formwork (Roof Parapet Wall),,,,0,0,0,80,16,16,0,0,,2014-10-16 08:00,2014-10-17 18:00,2017-06-12 18:00,2017-06-12 18:00,,2017-01-01 00:00,2017-01-01 00:00,,,2014-10-16 08:00,2014-10-17 18:00,,,,,PT_Normal,,,,,w/3YEuL+SmykmNuIikg4ZQ,MR6aMjt5QOSTuFwYhoYPNw,,,N,0,0,,,2017-01-24 14:43,2017-01-24 15:36,CLEMENTL,CLEMENTL
1399,49429226,751235,10651625,1227199,1,100,N,N,N,CP_Drtn,TT_Task,DT_FixedDUR2,RV_OK,TK_Complete,823A-ST-EP-L6-1020,Rebar fixing (Roof Parapet Wall),,,,0,0,0,112,16,16,0,0,,2014-10-18 08:00,2014-10-20 18:00,2017-06-12 18:00,2017-06-12 18:00,,2017-01-01 00:00,2017-01-01 00:00,,,2014-10-18 08:00,2014-10-20 18:00,,,,,PT_Normal,,,,,ucD7b8W5S/+vaJMk8XZNnQ,Zb8ZCtBIQ2SbVNd5QWcYDw,,,N,0,0,,,2017-01-24 14:43,2017-01-24 15:36,CLEMENTL,CLEMENTL
1400,49429227,751235,10651625,1227199,1,100,N,N,N,CP_Drtn,TT_Task,DT_FixedDUR2,RV_OK,TK_Complete,823A-ST-EP-L6-1030,Erect external formwork (Roof Parapet Wall),,,,0,0,0,112,16,16,0,0,,2014-10-21 08:00,2014-10-22 18:00,2017-06-12 18:00,2017-06-12 18:00,,2017-01-01 00:00,2017-01-01 00:00,,,2014-10-21 08:00,2014-10-22 18:00,,,,,PT_Normal,,,,,2IuRtoIIRkyL8PGKm7sc5g,nkgF9ykUTqmbVFfKvB2D5Q,,,N,0,0,,,2017-01-24 14:43,2017-01-24 15:36,CLEMENTL,CLEMENTL
1401,49429228,751235,10651625,1227199,1,100,N,N,N,CP_Drtn,TT_Task,DT_FixedDUR2,RV_OK,TK_Complete,823A-ST-EP-L6-1040,Concreting (Roof Parapet Wall) (30m3),,,,0,0,0,40,8,8,0,0,,2014-10-23 08:00,2014-10-23 18:00,2017-06-12 18:00,2017-06-12 18:00,,2017-01-01 00:00,2017-01-01 00:00,,,2014-10-23 08:00,2014-10-23 18:00,,,,,PT_Normal,,,,,oqTPIKZ6RAaxmnFSlOj0fg,ACESCgIYThyGv0NYSSKUYQ,,,N,0,0,,,2017-01-24 14:43,2017-01-24 15:36,CLEMENTL,CLEMENTL
1402,49429229,751235,10651625,1227199,1,100,N,N,N,CP_Drtn,TT_Task,DT_FixedDUR2,RV_OK,TK_Complete,823A-ST-EP-L6-1060,Removal formwork (Roof Parapet Wall),,,,0,0,0,40,8,8,0,0,,2014-10-27 08:00,2014-10-27 18:00,2017-06-12 18:00,2017-06-12 18:00,,2017-01-01 00:00,2017-01-01 00:00,,,2014-10-27 08:00,2014-10-27 18:00,,,,,PT_Normal,,,,,hmy0Lnp0SySUWn+WnBJcQg,rYLqARQlQZaTAoD1oatdUw,,,N,0,0,,,2017-01-24 14:43,2017-01-24 15:36,CLEMENTL,CLEMENTL
1403,49429230,751235,10651625,1239099,1,100,N,N,N,CP_Drtn,TT_Task,DT_FixedDUR2,RV_OK,TK_Complete,823A-ST-EP-L6-1050,Curing (Roof Parapet Wall),,,,0,0,0,112,56,0,0,0,,2014-10-24 08:00,2014-10-30 18:00,2017-06-12 18:00,2017-06-12 18:00,,2017-01-01 00:00,2017-01-01 00:00,,,2014-10-24 08:00,2014-10-30 18:00,,,,,PT_Normal,,,,,sU4wzPZPS7GjLMEG3tcuxA,Zb7ZUrFRQfOb6LMZQoCpxg,,,N,0,0,,,2017-01-24 14:43,2017-01-24 15:36,CLEMENTL,CLEMENTL
1404,49429231,751235,10651625,1227199,1,100,N,N,N,CP_Drtn,TT_Task,DT_FixedDUR2,RV_OK,TK_Complete,823A-ST-EP-L6-1070,Removal of falsework and soffit formwork,,,,0,504,0,504,32,56,56,0,,2014-10-31 08:00,2014-11-04 18:00,2017-06-12 18:00,2017-06-12 18:00,,2017-01-01 00:00,2017-01-01 00:00,,,2014-10-31 08:00,2014-11-04 18:00,,,,,PT_Normal,,,,,oHc1/HAbRo6SxVaHn05v4g,H0yCXTxJTaOJ7sdVnSEgOQ,,,N,504,56,,,2017-01-24 14:43,2017-01-24 15:36,CLEMENTL,CLEMENTL
1405,49429232,751235,10651626,1227199,1,100,N,N,N,CP_Drtn,TT_Task,DT_FixedDUR2,RV_OK,TK_Complete,823A-ST-EP-ABWF-1010,Wet trade work,,,,0,0,0,3840,152,0,0,0,,2014-11-05 08:00,2014-11-26 18:00,2017-06-12 18:00,2017-06-12 18:00,,2017-01-01 00:00,2017-01-01 00:00,,,2014-11-05 08:00,2014-11-26 18:00,,,,,PT_Normal,,,,,wIJVCGxXS6W+gM88G44vhg,BOzNkoxOSY+f7p+bcXS2XA,,,N,0,0,,,2017-01-24 14:43,2017-01-24 15:36,CLEMENTL,CLEMENTL
1406,49429233,751235,10651626,1227199,1,100,N,N,N,CP_Drtn,TT_Task,DT_FixedDUR2,RV_OK,TK_Complete,823A-ST-EP-ABWF-1020,"Metal works (Louver, Door, Cat-ladder, Architectural Fins, Handrail, Roof Sliding Hatch and Balustrade, etc)",,,,0,840,0,840,112,168,168,0,,2014-11-27 08:00,2015-03-05 18:00,2017-06-12 18:00,2017-06-12 18:00,,2017-01-01 00:00,2017-01-01 00:00,,,2014-11-27 08:00,2014-12-12 18:00,,,,,PT_Normal,,,,,57RjSOSjQD6ZWJE1+cCEcw,8ZiHOX7+TcCYSuPAtLgq7w,,,N,840,168,,,2017-01-24 14:43,2017-01-24 15:36,CLEMENTL,CLEMENTL
1407,49429234,751235,10651626,1227199,1,100,N,N,N,CP_Drtn,TT_Task,DT_FixedDUR2,RV_OK,TK_Complete,823A-ST-EP-ABWF-1030,Coat works,,,,0,0,0,240,96,0,0,0,,2015-03-06 08:00,2015-03-19 18:00,2017-06-12 18:00,2017-06-12 18:00,,2017-01-01 00:00,2017-01-01 00:00,,,2015-03-06 08:00,2015-03-19 18:00,,,,,PT_Normal,,,,,Vp2VclaxQNmqO5V5CQdX6Q,ciT2uhJfQqWltWL5ws3LEg,,,N,0,0,,,2017-01-24 14:43,2017-01-24 15:36,CLEMENTL,CLEMENTL
1408,49429235,751235,10651627,1227199,1,100,N,N,N,CP_Drtn,TT_Task,DT_FixedDUR2,RV_OK,TK_Complete,823A-ST-EP-L2-1025,Staircase construction (+14.706mPD to +16.956mPD) (20m3),,,,0,680,0,680,32,40,40,0,,2014-05-02 08:00,2014-06-04 18:00,2017-06-12 18:00,2017-06-12 18:00,,2017-01-01 00:00,2017-01-01 00:00,,,2014-05-02 08:00,2014-05-07 18:00,,,,,PT_Normal,,,,,RXKGXB1zTC2vmUczcOaGxA,LupAFzZQSLS5Kru0Gmb0cg,,,N,680,40,,,2017-01-24 14:43,2017-01-24 15:36,CLEMENTL,CLEMENTL
1409,49429236,751235,10651627,1227199,1,100,N,N,N,CP_Drtn,TT_Task,DT_FixedDUR2,RV_OK,TK_Complete,823A-ST-EP-L2-1026,Staircase construction (+16.956mPD to +19.206mPD) (20m3),,,,0,0,0,680,32,40,0,0,,2014-06-12 08:00,2014-06-16 18:00,2017-06-12 18:00,2017-06-12 18:00,,2017-01-01 00:00,2017-01-01 00:00,,,2014-06-05 08:00,2014-06-09 18:00,,,,,PT_Normal,,,,,EnbzfelOReqRVdxW8sgVkg,zJBbwjDlQnuq85rlKvW2xA,,,N,0,0,,,2017-01-24 14:43,2017-01-24 15:36,CLEMENTL,CLEMENTL
1410,49429237,751235,10651627,1227199,1,100,N,N,N,CP_Drtn,TT_Task,DT_FixedDUR2,RV_OK,TK_Complete,823A-ST-EP-L2-1027,Staircase construction (+19.206mPD to +21.456mPD) (20m3),,,,0,0,0,680,32,40,0,0,,2014-06-17 08:00,2014-06-20 18:00,2017-06-12 18:00,2017-06-12 18:00,,2017-01-01 00:00,2017-01-01 00:00,,,2014-06-10 08:00,2014-06-13 18:00,,,,,PT_Normal,,,,,YeTcwOb9R4OHwuLt8W2Ceg,M3tEB/qLSEi112i7LffMJw,,,N,0,0,,,2017-01-24 14:43,2017-01-24 15:36,CLEMENTL,CLEMENTL
1411,49429238,751235,10651627,1227199,1,100,N,N,N,CP_Drtn,TT_Task,DT_FixedDUR2,RV_OK,TK_Complete,823A-ST-EP-L2-1010,Erect working platform to +21.0mPD,,,,0,0,0,624,32,48,0,0,,2014-01-02 08:00,2014-01-06 18:00,2017-06-12 18:00,2017-06-12 18:00,,2017-01-01 00:00,2017-01-01 00:00,,,2014-01-07 08:00,2014-01-10 18:00,,,,,PT_Normal,,,,,uqWrIK7OQreik4ti/86UaA,eHQ9GpX9xkG6yKmKgoL8yg,,,N,0,0,,,2017-01-24 14:43,2017-01-24 15:36,CLEMENTL,CLEMENTL
1412,49429239,751235,10651627,1227199,1,100,N,N,N,CP_Drtn,TT_Task,DT_FixedDUR2,RV_OK,TK_Complete,823A-ST-EP-L2-1020,Rebar fixing for wall and roof,,,,0,0,0,544,24,32,0,0,,2014-01-07 08:00,2014-01-09 18:00,2017-06-12 18:00,2017-06-12 18:00,,2017-01-01 00:00,2017-01-01 00:00,,,2014-01-11 08:00,2014-01-14 18:00,,,,,PT_Normal,,,,,r8psR8rhSL6aNzP2wAW+8w,493cAAAg00GFMAqUKN3RPA,,,N,0,0,,,2017-01-24 14:43,2017-01-24 15:36,CLEMENTL,CLEMENTL
1413,49429240,751235,10651627,1227199,1,100,N,N,N,CP_Drtn,TT_Task,DT_FixedDUR2,RV_OK,TK_Complete,823A-ST-EP-L2-1030,Erect external formwork for wall and roof,,,,0,0,0,208,16,16,0,0,,2014-01-08 08:00,2014-01-09 18:00,2017-06-12 18:00,2017-06-12 18:00,,2017-01-01 00:00,2017-01-01 00:00,,,2014-03-15 08:00,2014-03-17 18:00,,,,,PT_Normal,,,,,Dn8a+yS/Sge4Zt5GTd6GEw,DUdsQqgRNUa7SYbo4r09iQ,,,N,0,0,,,2017-01-24 14:43,2017-01-24 15:36,CLEMENTL,CLEMENTL
1414,49429241,751235,10651627,1227199,1,100,N,N,N,CP_Drtn,TT_Task,DT_FixedDUR2,RV_OK,TK_Complete,823A-ST-EP-L2-1040,Concreting for wall and roof (31m3),,,,0,0,0,208,8,16,0,0,,2014-01-10 08:00,2014-01-10 18:00,2017-06-12 18:00,2017-06-12 18:00,,2017-01-01 00:00,2017-01-01 00:00,,,2014-02-04 08:00,2014-02-04 18:00,,,,,PT_Normal,,,,,QyyaTR9XS3Ov1wZDzfdqYA,J5qihDXqBkypvgmCwI/KUg,,,N,0,0,,,2017-01-24 14:43,2017-01-24 15:36,CLEMENTL,CLEMENTL
1415,49429242,751235,10651627,1227199,1,100,N,N,N,CP_Drtn,TT_Task,DT_FixedDUR2,RV_OK,TK_Complete,823A-ST-EP-L2-1070,Removal external and internal formwork for wall,,,,0,0,0,144,16,16,0,0,,2014-01-13 08:00,2014-01-14 18:00,2017-06-12 18:00,2017-06-12 18:00,,2017-01-01 00:00,2017-01-01 00:00,,,2014-02-06 08:00,2014-02-07 18:00,,,,,PT_Normal,,,,,s1fON2cCTqOib0V9mcHV9A,2iPFLOTCjUS11/6iwl+upw,,,N,0,0,,,2017-01-24 14:43,2017-01-24 15:36,CLEMENTL,CLEMENTL
1416,49429243,751235,10651627,1239099,1,100,N,N,N,CP_Drtn,TT_Task,DT_FixedDUR2,RV_OK,TK_Complete,823A-ST-EP-L2-1050,Curing for wall and roof,,,,0,0,0,224,80,0,0,0,,2014-01-11 08:00,2014-01-22 18:00,2017-06-12 18:00,2017-06-12 18:00,,2017-01-01 00:00,2017-01-01 00:00,,,2014-02-05 08:00,2014-02-14 18:00,,,,,PT_Normal,,,,,kBZ6RN9QRUSPz1JODteeVA,B4O1JjrBN0KuQmTcsm/dbQ,,,N,0,0,,,2017-01-24 14:43,2017-01-24 15:36,CLEMENTL,CLEMENTL
1417,49429244,751235,10651627,1227199,1,100,N,N,N,CP_Drtn,TT_Task,DT_FixedDUR2,RV_OK,TK_Complete,823A-ST-EP-L2-1080,Removal internal falsework and formwork for roof,,,,0,0,0,416,8,32,0,0,,2014-01-23 08:00,2014-01-23 18:00,2017-06-12 18:00,2017-06-12 18:00,,2017-01-01 00:00,2017-01-01 00:00,,,2014-02-15 08:00,2014-02-15 18:00,,,,,PT_Normal,,,,,8lC7QbGaRWmqCZNcJxTuZA,qz+3HJfgwE2GHi0IOCIjHg,,,N,0,0,,,2017-01-24 14:43,2017-01-24 15:36,CLEMENTL,CLEMENTL
1418,49429245,751235,10651627,1239098,1,100,N,N,N,CP_Drtn,TT_Task,DT_FixedDUR2,RV_OK,TK_Complete,823A-ST-EP-L2-1060,Preparation of construction joint for wall and roof,,,,0,0,0,0,8,0,0,0,,2014-01-11 08:00,2014-01-11 18:00,2017-06-12 18:00,2017-06-12 18:00,,2017-01-01 00:00,2017-01-01 00:00,,,2014-02-05 08:00,2014-02-05 18:00,,,,,PT_Normal,,,,,9VW0fTV0Qca2fJ8FZr8Anw,XzPCKSrlrkalSkNWGPK65Q,,,N,0,0,,,2017-01-24 14:43,2017-01-24 15:36,CLEMENTL,CLEMENTL
1419,49429246,751235,10651628,1239099,1,100,N,N,N,CP_Drtn,TT_Task,DT_FixedDUR2,RV_OK,TK_Complete,823A-ST-EP-L5-1110,Curing (Beam & Floor Slab),,,,0,0,0,112,56,0,0,0,,2014-10-16 08:00,2014-10-22 18:00,2017-06-12 18:00,2017-06-12 18:00,,2017-01-01 00:00,2017-01-01 00:00,,,2014-10-16 08:00,2014-10-22 18:00,,,,,PT_Normal,,,,,n+qyPDbCRKmXNy12H27t3A,dB9xyRs6RY6X9FozNAHhJA,,,N,0,0,,,2017-01-24 14:43,2017-01-24 15:36,CLEMENTL,CLEMENTL
1420,49429247,751235,10651628,1227199,1,100,N,N,N,CP_Drtn,TT_Task,DT_FixedDUR2,RV_OK,TK_Complete,823A-ST-EP-L5-1010,Erect working platform to +33.576mPD,,,,0,0,0,40,32,8,0,0,,2014-09-22 08:00,2014-09-25 18:00,2017-06-12 18:00,2017-06-12 18:00,,2017-01-01 00:00,2017-01-01 00:00,,,2014-09-03 08:00,2014-09-06 18:00,,,,,PT_Normal,,,,,JyJNd6diQMmT4XGBZFUhJw,AJ8GLJB/QhS43gCpid+kqw,,,N,0,0,,,2017-01-24 14:43,2017-01-24 15:36,CLEMENTL,CLEMENTL
1421,49429248,751235,10651628,1227199,1,100,N,N,N,CP_Drtn,TT_Task,DT_FixedDUR2,RV_OK,TK_Complete,823A-ST-EP-L5-1020,Erect external formwork (External Wall),,,,0,0,0,56,16,8,0,0,,2014-09-26 08:00,2014-09-27 18:00,2017-06-12 18:00,2017-06-12 18:00,,2017-01-01 00:00,2017-01-01 00:00,,,2014-09-08 08:00,2014-09-10 18:00,,,,,PT_Normal,,,,,MO2HHp5WRkGrOaXjspiKJA,EMW6MrrmTfuJAtQ78tfY1Q,,,N,0,0,,,2017-01-24 14:43,2017-01-24 15:36,CLEMENTL,CLEMENTL
1422,49429249,751235,10651628,1227199,1,100,N,N,N,CP_Drtn,TT_Task,DT_FixedDUR2,RV_OK,TK_Complete,823A-ST-EP-L5-1030,Rebar fixing (External Wall),,,,0,56,0,56,16,8,8,0,,2014-09-29 08:00,2014-10-03 18:00,2017-06-12 18:00,2017-06-12 18:00,,2017-01-01 00:00,2017-01-01 00:00,,,2014-09-11 08:00,2014-09-12 18:00,,,,,PT_Normal,,,,,lb7kJmufRtC8hlHpu6HtFQ,A8B9wnqhTPWgG4bSjFjU0w,,,N,56,8,,,2017-01-24 14:43,2017-01-24 15:36,CLEMENTL,CLEMENTL
1423,49429250,751235,10651628,1227199,1,100,N,N,N,CP_Drtn,TT_Task,DT_FixedDUR2,RV_OK,TK_Complete,823A-ST-EP-L5-1040,Erect internal formwork (External Wall),,,,0,0,0,56,8,8,0,0,,2014-10-04 08:00,2014-10-04 18:00,2017-06-12 18:00,2017-06-12 18:00,,2017-01-01 00:00,2017-01-01 00:00,,,2014-10-04 08:00,2014-10-04 18:00,,,,,PT_Normal,,,,,mVlZcZNgSuCsx2SRSgOAdQ,9KpzM/dORk69c7eEyX39Lw,,,N,0,0,,,2017-01-24 14:43,2017-01-24 15:36,CLEMENTL,CLEMENTL
1424,49429251,751235,10651628,1227199,1,100,N,N,N,CP_Drtn,TT_Task,DT_FixedDUR2,RV_OK,TK_Complete,823A-ST-EP-L5-1050,Concreting (External Wall) (49m3),,,,0,0,0,72,8,8,0,0,,2014-10-06 08:00,2014-10-06 18:00,2017-06-12 18:00,2017-06-12 18:00,,2017-01-01 00:00,2017-01-01 00:00,,,2014-10-06 08:00,2014-10-06 18:00,,,,,PT_Normal,,,,,0cm+89GIS/24QsAldI+olg,E2T62ZOBSdGSv8smSN7oiQ,,,N,0,0,,,2017-01-24 14:43,2017-01-24 15:36,CLEMENTL,CLEMENTL
1425,49429252,751235,10651628,1227199,1,100,N,N,N,CP_Drtn,TT_Task,DT_FixedDUR2,RV_OK,TK_Complete,823A-ST-EP-L5-1070,Removal formwork (External Wall),,,,0,0,0,56,8,8,0,0,,2014-10-09 08:00,2014-10-09 18:00,2017-06-12 18:00,2017-06-12 18:00,,2017-01-01 00:00,2017-01-01 00:00,,,2014-10-09 08:00,2014-10-09 18:00,,,,,PT_Normal,,,,,jSZfhAnyTV6FSgIyVXdpYQ,FAh+cCCLSXmG6fojfyMLtw,,,N,0,0,,,2017-01-24 14:43,2017-01-24 15:36,CLEMENTL,CLEMENTL
1426,49429253,751235,10651628,1239099,1,100,N,N,N,CP_Drtn,TT_Task,DT_FixedDUR2,RV_OK,TK_Complete,823A-ST-EP-L5-1060,Curing (External Wall),,,,0,0,0,112,56,0,0,0,,2014-10-07 08:00,2014-10-13 18:00,2017-06-12 18:00,2017-06-12 18:00,,2017-01-01 00:00,2017-01-01 00:00,,,2014-10-07 08:00,2014-10-13 18:00,,,,,PT_Normal,,,,,h9CZmpEhQa2+3YlZBDy2Xg,FNxVjSXWQVGiekPUrMUsYA,,,N,0,0,,,2017-01-24 14:43,2017-01-24 15:36,CLEMENTL,CLEMENTL
1427,49429254,751235,10651628,1227199,1,100,N,N,N,CP_Drtn,TT_Task,DT_FixedDUR2,RV_OK,TK_Complete,823A-ST-EP-L5-1080,Erect falsework and soffit formwork +32.656,,,,0,0,0,80,16,16,0,0,,2014-10-10 08:00,2014-10-11 18:00,2017-06-12 18:00,2017-06-12 18:00,,2017-01-01 00:00,2017-01-01 00:00,,,2014-10-10 08:00,2014-10-11 18:00,,,,,PT_Normal,,,,,IUqaP1ZKSHG+9lDzYpBbqw,GQG6yD5lT2CRsIjLAhaphQ,,,N,0,0,,,2017-01-24 14:43,2017-01-24 15:36,CLEMENTL,CLEMENTL
1428,49429255,751235,10651628,1227199,1,100,N,N,N,CP_Drtn,TT_Task,DT_FixedDUR2,RV_OK,TK_Complete,823A-ST-EP-L5-1090,Rebar fixing (Beam & Floor Slab),,,,0,0,0,112,16,16,0,0,,2014-10-13 08:00,2014-10-14 18:00,2017-06-12 18:00,2017-06-12 18:00,,2017-01-01 00:00,2017-01-01 00:00,,,2014-10-13 08:00,2014-10-14 18:00,,,,,PT_Normal,,,,,jZ7HBGlRRqC6ZEsk4TBmxg,/tTIlYMZQsu3fs5E/uhLVA,,,N,0,0,,,2017-01-24 14:43,2017-01-24 15:36,CLEMENTL,CLEMENTL
1429,49429256,751235,10651628,1227199,1,100,N,N,N,CP_Drtn,TT_Task,DT_FixedDUR2,RV_OK,TK_Complete,823A-ST-EP-L5-1100,Concreting (Beam & Floor Slab) (31m3),,,,0,0,0,56,8,8,0,0,,2014-10-15 08:00,2014-10-15 18:00,2017-06-12 18:00,2017-06-12 18:00,,2017-01-01 00:00,2017-01-01 00:00,,,2014-10-15 08:00,2014-10-15 18:00,,,,,PT_Normal,,,,,9rsgS/q3Q/mNtIPPQSjCFA,QrWHVkOiQXG/pDhmhNJ64Q,,,N,0,0,,,2017-01-24 14:43,2017-01-24 15:36,CLEMENTL,CLEMENTL
1430,49429257,751235,10651629,1227199,1,100,N,N,N,CP_Drtn,TT_Task,DT_FixedDUR2,RV_OK,TK_Complete,823A-ST-SNT9-1090,Side walkway and cable bracket (204m3),,,,0,1040,0,1040,40,80,80,0,,2013-07-29 08:00,2014-03-01 18:00,2017-06-12 18:00,2017-06-12 18:00,,2017-01-01 00:00,2017-01-01 00:00,,,2014-01-21 08:00,2014-01-25 18:00,,,,,PT_Normal,,,,,rkQ1Kh5oRmK6n9o3B8+1dg,vVCqRLe8QEi5cZr9IA2sFA,,,N,1040,80,,,2017-01-24 14:43,2017-01-24 15:36,CLEMENTL,CLEMENTL
1431,49429258,751235,10651629,1227199,1,100,N,N,N,CP_Drtn,TT_Task,DT_FixedDUR2,RV_OK,TK_Complete,823A-ST-SNT9-1010,Erect internal formwork & Falsework for wall and roof,,,,0,0,0,624,32,48,0,0,,2013-02-22 08:00,2013-02-26 18:00,2014-07-24 08:00,2014-07-24 08:00,,2017-01-01 00:00,2017-01-01 00:00,,,2013-06-01 08:00,2013-06-05 18:00,,,,,PT_Normal,,,,,0RPebEeIR/CbS06KkB7osQ,w8J5bHuoNkSfWNjCpnpNqA,,,Y,0,0,,,2017-01-24 14:43,2017-01-24 14:53,CLEMENTL,CLEMENTL
1432,49429259,751235,10651629,1227199,1,100,N,N,N,CP_Drtn,TT_Task,DT_FixedDUR2,RV_OK,TK_Complete,823A-ST-SNT9-1020,Rebar fixing for wall and roof,,,,0,0,0,544,16,32,0,0,,2013-03-23 08:00,2013-03-28 18:00,2014-07-24 08:00,2014-07-24 08:00,,2017-01-01 00:00,2017-01-01 00:00,,,2013-06-06 08:00,2013-06-07 18:00,,,,,PT_Normal,,,,,fvykEzW0Rx+5+U/KFFzGqg,4CZy3fjIiU+UpfmLFq8dAQ,,,Y,0,0,,,2017-01-24 14:43,2017-01-24 14:53,CLEMENTL,CLEMENTL
1433,49429260,751235,10651629,1227199,1,100,N,N,N,CP_Drtn,TT_Task,DT_FixedDUR2,RV_OK,TK_Complete,823A-ST-SNT9-1030,Erect external formwork for wall and roof,,,,0,0,0,208,8,16,0,0,,2013-04-01 08:00,2013-04-02 18:00,2014-07-24 08:00,2014-07-24 08:00,,2017-01-01 00:00,2017-01-01 00:00,,,2013-06-08 08:00,2013-06-08 18:00,,,,,PT_Normal,,,,,MMMEbqCbQICvqQHfo2VKEA,Wfit95I3tk2PIxdz0o+aCQ,,,Y,0,0,,,2017-01-24 14:43,2017-01-24 14:53,CLEMENTL,CLEMENTL
1434,49429261,751235,10651629,1227199,1,100,N,N,N,CP_Drtn,TT_Task,DT_FixedDUR2,RV_OK,TK_Complete,823A-ST-SNT9-1040,Concreting for wall and roof (320m3),,,,0,0,0,208,8,16,0,0,,2013-04-05 08:00,2013-04-05 18:00,2014-07-24 08:00,2014-07-24 08:00,,2017-01-01 00:00,2017-01-01 00:00,,,2013-06-10 08:00,2013-06-10 18:00,,,,,PT_Normal,,,,,0FxT68TQSr+zyMjVG0w9DA,ypbKOqEkNE+yvWUCI8Idsw,,,Y,0,0,,,2017-01-24 14:43,2017-01-24 14:53,CLEMENTL,CLEMENTL
1435,49429262,751235,10651629,1227199,1,100,N,N,N,CP_Drtn,TT_Task,DT_FixedDUR2,RV_OK,TK_Complete,823A-ST-SNT9-1070,Removal external and internal formwork for wall,,,,0,0,0,144,8,16,0,0,,2013-04-10 08:00,2013-04-10 18:00,2014-07-24 08:00,2014-07-24 08:00,,2017-01-01 00:00,2017-01-01 00:00,,,2013-06-13 08:00,2013-06-13 18:00,,,,,PT_Normal,,,,,5fkQQp5eQDKeG0On9ssr/Q,Ct+N8ZnWSUeHRy0N3RAb6Q,,,Y,0,0,,,2017-01-24 14:43,2017-01-24 14:53,CLEMENTL,CLEMENTL
1436,49429263,751235,10651629,1239099,1,100,N,N,N,CP_Drtn,TT_Task,DT_FixedDUR2,RV_OK,TK_Complete,823A-ST-SNT9-1050,Curing for wall and roof,,,,0,0,0,224,80,0,0,0,,2013-04-06 08:00,2013-04-06 18:00,2017-06-12 18:00,2017-06-12 18:00,,2017-01-01 00:00,2017-01-01 00:00,,,2013-06-11 08:00,2013-06-20 18:00,,,,,PT_Normal,,,,,Rr/KBgUhQ7Sp9759YmdDcw,pXL10BWvbkmpcxlqWQVgGg,,,N,0,0,,,2017-01-24 14:43,2017-01-24 15:36,CLEMENTL,CLEMENTL
1437,49429264,751235,10651629,1227199,1,100,N,N,N,CP_Drtn,TT_Task,DT_FixedDUR2,RV_OK,TK_Complete,823A-ST-SNT9-1080,Removal internal falsework and formwork for roof,,,,0,0,0,416,16,32,0,0,,2013-04-10 08:00,2013-04-10 18:00,2017-06-12 18:00,2017-06-12 18:00,,2017-01-01 00:00,2017-01-01 00:00,,,2013-06-21 08:00,2013-06-22 18:00,,,,,PT_Normal,,,,,5CqC9yElQYyGfiNCimtwwg,YXMHosL9L0mdRUMmJnXB2g,,,N,0,0,,,2017-01-24 14:43,2017-01-24 15:36,CLEMENTL,CLEMENTL
1438,49429265,751235,10651629,1239098,1,100,N,N,N,CP_Drtn,TT_Task,DT_FixedDUR2,RV_OK,TK_Complete,823A-ST-SNT9-1060,Preparation of construction joint for wall and roof,,,,0,0,0,0,8,0,0,0,,2013-04-08 08:00,2013-04-08 18:00,2014-07-24 08:00,2014-07-24 08:00,,2017-01-01 00:00,2017-01-01 00:00,,,2013-06-11 08:00,2013-06-11 18:00,,,,,PT_Normal,,,,,Y5XgLvKQQd2pOT8hToj4eQ,gTXmoGAH0Een+w11aXZ4TQ,,,Y,0,0,,,2017-01-24 14:43,2017-01-24 14:53,CLEMENTL,CLEMENTL
1439,49429266,751235,10651630,1227199,1,100,N,N,N,CP_Drtn,TT_Task,DT_FixedDUR2,RV_OK,TK_Complete,823A-ST-SNT14-1090,Infill concrete in between D-wall and base slab,,,,0,0,0,128,8,16,0,0,,2015-04-25 08:00,2015-04-27 18:00,2017-06-12 18:00,2017-06-12 18:00,,2017-01-01 00:00,2017-01-01 00:00,,,2015-06-02 08:00,2015-06-02 18:00,,,,,PT_Normal,,,,,rBUNEVBHQi29uFm67u67Zg,tF3h32aTBk2sBJw3lVObPw,,,N,0,0,,,2017-01-24 14:43,2017-01-24 15:36,CLEMENTL,CLEMENTL
1440,49429267,751235,10651630,1227199,1,100,N,N,N,CP_Drtn,TT_Task,DT_FixedDUR2,RV_OK,TK_Complete,823A-ST-SNT14-1110,Removal strut S3,,,,0,0,0,144,32,16,0,0,,2015-04-30 08:00,2015-05-05 18:00,2017-06-12 18:00,2017-06-12 18:00,,2017-01-01 00:00,2017-01-01 00:00,,,2015-06-08 08:00,2015-06-11 18:00,,,,,PT_Normal,,,,,qISOW8UhRLaVSb2XhsgoKA,qP8qGBXd+EK1ycJRG8iM+w,,,N,0,0,,,2017-01-24 14:43,2017-01-24 15:36,CLEMENTL,CLEMENTL
1441,49429268,751235,10651630,1239098,1,100,N,N,N,CP_Drtn,TT_Task,DT_FixedDUR2,RV_OK,TK_Complete,823A-ST-SNT14-1070,Preparation of construction joint for base slab,,,,0,0,0,0,8,0,0,0,,2015-04-20 08:00,2015-04-22 18:00,2014-07-24 08:00,2014-07-24 08:00,,2017-01-01 00:00,2017-01-01 00:00,,,2015-05-30 08:00,2015-05-30 18:00,,,,,PT_Normal,,,,,12E+W56vQl2PwA6bYVR18Q,56neXm5NIE6v/JEFJCvdMw,,,Y,0,0,,,2017-01-24 14:43,2017-01-24 15:36,CLEMENTL,CLEMENTL
1442,49429269,751235,10651630,1239099,1,100,N,N,N,CP_Drtn,TT_Task,DT_FixedDUR2,RV_OK,TK_Complete,823A-ST-SNT14-1100,Curing,,,,0,0,0,224,8,0,0,0,,2015-04-28 08:00,2015-04-29 18:00,2017-06-12 18:00,2017-06-12 18:00,,2017-01-01 00:00,2017-01-01 00:00,,,2015-06-06 08:00,2015-06-06 18:00,,,,,PT_Normal,,,,,7jsrvL9FTiCtZ7bApQxBuw,uhtxMqG2W0WMaaX4EMAojg,,,N,0,0,,,2017-01-24 14:43,2017-01-24 15:36,CLEMENTL,CLEMENTL
1443,49429270,751235,10651630,1227199,1,100,N,N,N,CP_Drtn,TT_Task,DT_FixedDUR2,RV_OK,TK_Complete,823A-ST-SNT14-1200,Side walkway and cable bracket (204m3),,,,0,1040,0,1040,40,80,80,0,,2015-06-04 08:00,2015-10-03 18:00,2017-06-12 18:00,2017-06-12 18:00,,2017-01-01 00:00,2017-01-01 00:00,,,2015-06-29 08:00,2015-07-04 18:00,,,,,PT_Normal,,,,,EJxEqq2fR/aawMe9N5KTjg,mRWCP6sTKU2fF6FHMv58WA,,,N,1040,80,,,2017-01-24 14:43,2017-01-24 15:36,CLEMENTL,CLEMENTL
1444,49429271,751235,10651630,1227199,1,100,N,N,N,CP_Drtn,TT_Task,DT_FixedDUR2,RV_OK,TK_Complete,823A-ST-SNT14-1120,Erect internal formwork & Falsework for wall and roof,,,,0,0,0,624,32,48,0,0,,2015-05-06 08:00,2015-05-09 18:00,2017-06-12 18:00,2017-06-12 18:00,,2017-01-01 00:00,2017-01-01 00:00,,,2015-05-23 08:00,2015-05-28 18:00,,,,,PT_Normal,,,,,AscQodytQQKa8elGNunhug,eHQ9GpX9xkG6yKmKgoL8yg,,,N,0,0,,,2017-01-24 14:43,2017-01-24 15:36,CLEMENTL,CLEMENTL
1445,49429272,751235,10651630,1227199,1,100,N,N,N,CP_Drtn,TT_Task,DT_FixedDUR2,RV_OK,TK_Complete,823A-ST-SNT14-1130,Rebar fixing for wall and roof,,,,0,0,0,544,24,32,0,0,,2015-05-11 08:00,2015-05-13 18:00,2017-06-12 18:00,2017-06-12 18:00,,2017-01-01 00:00,2017-01-01 00:00,,,2015-05-29 08:00,2015-06-01 18:00,,,,,PT_Normal,,,,,jmrtpdL+TCeGMGH9yY96UQ,493cAAAg00GFMAqUKN3RPA,,,N,0,0,,,2017-01-24 14:43,2017-01-24 15:36,CLEMENTL,CLEMENTL
1446,49429273,751235,10651630,1227199,1,100,N,N,N,CP_Drtn,TT_Task,DT_FixedDUR2,RV_OK,TK_Complete,823A-ST-SNT14-1140,Erect external formwork for wall and roof,,,,0,0,0,208,16,16,0,0,,2015-05-14 08:00,2015-05-15 18:00,2017-06-12 18:00,2017-06-12 18:00,,2017-01-01 00:00,2017-01-01 00:00,,,2015-06-02 08:00,2015-06-03 18:00,,,,,PT_Normal,,,,,eO3OhcluSY2fGWTsGLaS/Q,DUdsQqgRNUa7SYbo4r09iQ,,,N,0,0,,,2017-01-24 14:43,2017-01-24 15:36,CLEMENTL,CLEMENTL
1447,49429274,751235,10651630,1227199,1,100,N,N,N,CP_Drtn,TT_Task,DT_FixedDUR2,RV_OK,TK_Complete,823A-ST-SNT14-1150,Concreting for wall and roof (175m3),,,,0,0,0,208,8,16,0,0,,2015-05-16 08:00,2015-05-16 18:00,2017-06-12 18:00,2017-06-12 18:00,,2017-01-01 00:00,2017-01-01 00:00,,,2015-06-04 08:00,2015-06-04 18:00,,,,,PT_Normal,,,,,OJkimFVYQb2Jf1rgK/8YAQ,J5qihDXqBkypvgmCwI/KUg,,,N,0,0,,,2017-01-24 14:43,2017-01-24 15:36,CLEMENTL,CLEMENTL
1448,49429275,751235,10651630,1227199,1,100,N,N,N,CP_Drtn,TT_Task,DT_FixedDUR2,RV_OK,TK_Complete,823A-ST-SNT14-1180,Removal external and internal formwork for wall,,,,0,0,0,144,8,16,0,0,,2015-06-01 08:00,2015-06-01 18:00,2017-06-12 18:00,2017-06-12 18:00,,2017-01-01 00:00,2017-01-01 00:00,,,2015-06-03 08:00,2015-06-03 18:00,,,,,PT_Normal,,,,,+3/LAuLnTB2sNDzPhxNcfA,2iPFLOTCjUS11/6iwl+upw,,,N,0,0,,,2017-01-24 14:43,2017-01-24 15:36,CLEMENTL,CLEMENTL
1449,49429276,751235,10651630,1239099,1,100,N,N,N,CP_Drtn,TT_Task,DT_FixedDUR2,RV_OK,TK_Complete,823A-ST-SNT14-1160,Curing for wall and roof,,,,0,224,0,224,80,0,0,0,,2015-05-18 08:00,2015-05-29 18:00,2017-06-12 18:00,2017-06-12 18:00,,2017-01-01 00:00,2017-01-01 00:00,,,2015-06-05 08:00,2015-06-14 18:00,,,,,PT_Normal,,,,,s7RjE7p9QlKpwNo/W5zYVw,B4O1JjrBN0KuQmTcsm/dbQ,,,N,224,0,,,2017-01-24 14:43,2017-01-24 15:36,CLEMENTL,CLEMENTL
1450,49429277,751235,10651630,1227199,1,100,N,N,N,CP_Drtn,TT_Task,DT_FixedDUR2,RV_OK,TK_Complete,823A-ST-SNT14-1190,Removal internal falsework and formwork for roof,,,,0,0,0,416,16,32,0,0,,2015-06-02 08:00,2015-06-03 18:00,2017-06-12 18:00,2017-06-12 18:00,,2017-01-01 00:00,2017-01-01 00:00,,,2015-06-04 08:00,2015-06-05 18:00,,,,,PT_Normal,,,,,KZH78C2vS8uGCRvWgFt4gw,qz+3HJfgwE2GHi0IOCIjHg,,,N,0,0,,,2017-01-24 14:43,2017-01-24 15:36,CLEMENTL,CLEMENTL
1451,49429278,751235,10651630,1239098,1,100,N,N,N,CP_Drtn,TT_Task,DT_FixedDUR2,RV_OK,TK_Complete,823A-ST-SNT14-1170,Preparation of construction joint for wall and roof,,,,0,0,0,0,8,0,0,0,,2015-05-30 08:00,2015-05-30 18:00,2017-06-12 18:00,2017-06-12 18:00,,2017-01-01 00:00,2017-01-01 00:00,,,2015-06-05 08:00,2015-06-05 18:00,,,,,PT_Normal,,,,,hDvj+CBSR1aZqg7rGqD99w,XzPCKSrlrkalSkNWGPK65Q,,,N,0,0,,,2017-01-24 14:43,2017-01-24 15:36,CLEMENTL,CLEMENTL
1452,49429279,751235,10651630,1227199,1,100,N,N,N,CP_Drtn,TT_Task,DT_FixedDUR2,RV_OK,TK_Complete,823A-ST-SNT14-1010,Placing of waterproof member T-lock & testing for base slab,,,,0,0,0,64,8,0,0,0,,2015-03-16 08:00,2015-03-16 18:00,2014-07-24 08:00,2014-07-24 08:00,,2017-01-01 00:00,2017-01-01 00:00,,,2015-05-20 08:00,2015-05-20 18:00,,,,,PT_Normal,,,,,BGq8YADXQL+3k1ByPtZM7A,yK2PwHrpbUSvcfAPOD8HkQ,,,Y,0,0,,,2017-01-24 14:43,2017-01-24 15:36,CLEMENTL,CLEMENTL
1453,49429280,751235,10651630,1227199,1,100,N,N,N,CP_Drtn,TT_Task,DT_FixedDUR2,RV_OK,TK_Complete,823A-ST-SNT14-1020,Erect external formwork for base slab,,,,0,0,0,104,16,8,0,0,,2015-03-17 08:00,2015-03-19 18:00,2014-07-24 08:00,2014-07-24 08:00,,2017-01-01 00:00,2017-01-01 00:00,,,2015-05-21 08:00,2015-05-22 18:00,,,,,PT_Normal,,,,,FtC2+Cd/R1GfCZfz4z3XWQ,T4lTs/MaJkuil88ltcUQ2A,,,Y,0,0,,,2017-01-24 14:43,2017-01-24 15:36,CLEMENTL,CLEMENTL
1454,49429281,751235,10651630,1227199,1,100,N,N,N,CP_Drtn,TT_Task,DT_FixedDUR2,RV_OK,TK_Complete,823A-ST-SNT14-1030,Rebar fixing for base slab,,,,0,0,0,272,16,16,0,0,,2015-03-20 08:00,2015-03-28 18:00,2014-07-24 08:00,2014-07-24 08:00,,2017-01-01 00:00,2017-01-01 00:00,,,2015-05-23 08:00,2015-05-26 18:00,,,,,PT_Normal,,,,,HQMR/ka5Qe2B24YVWcQYyg,feLIaF0g2E+BRj3fm0vgBg,,,Y,0,0,,,2017-01-24 14:43,2017-01-24 15:36,CLEMENTL,CLEMENTL
1455,49429282,751235,10651630,1227199,1,100,N,N,N,CP_Drtn,TT_Task,DT_FixedDUR2,RV_OK,TK_Complete,823A-ST-SNT14-1040,Erect internal kicker formwork for base slab,,,,0,0,0,288,16,16,0,0,,2015-03-30 08:00,2015-04-01 18:00,2014-07-24 08:00,2014-07-24 08:00,,2017-01-01 00:00,2017-01-01 00:00,,,2015-05-27 08:00,2015-05-28 18:00,,,,,PT_Normal,,,,,tRpBHZ7wSe6D7KuQBzNq9Q,uQvjViH/40KA1Xy9+SZWug,,,Y,0,0,,,2017-01-24 14:43,2017-01-24 15:36,CLEMENTL,CLEMENTL
1456,49429283,751235,10651630,1227199,1,100,N,N,N,CP_Drtn,TT_Task,DT_FixedDUR2,RV_OK,TK_Complete,823A-ST-SNT14-1050,Concreting for base slab (70m3),,,,0,0,0,208,8,16,0,0,,2015-04-02 08:00,2015-04-02 18:00,2014-07-24 08:00,2014-07-24 08:00,,2017-01-01 00:00,2017-01-01 00:00,,,2015-05-29 08:00,2015-05-29 18:00,,,,,PT_Normal,,,,,l1/kj0G1TamD9qgrJaNo8w,+yr8O2/QLkyKIN49R3ur+g,,,Y,0,0,,,2017-01-24 14:43,2017-01-24 15:36,CLEMENTL,CLEMENTL
1457,49429284,751235,10651630,1239099,1,100,N,N,N,CP_Drtn,TT_Task,DT_FixedDUR2,RV_OK,TK_Complete,823A-ST-SNT14-1060,Curing for base slab,,,,0,0,0,224,56,0,0,0,,2015-04-08 08:00,2015-04-18 18:00,2017-06-12 18:00,2017-06-12 18:00,,2017-01-01 00:00,2017-01-01 00:00,,,2015-05-30 08:00,2015-06-05 18:00,,,,,PT_Normal,,,,,KnqTNq+fQ3KyDhjxNLw/xg,m50yJHZKpkq/LkRixIv4TA,,,N,0,0,,,2017-01-24 14:43,2017-01-24 15:36,CLEMENTL,CLEMENTL
1458,49429285,751235,10651630,1227199,1,100,N,N,N,CP_Drtn,TT_Task,DT_FixedDUR2,RV_OK,TK_Complete,823A-ST-SNT14-1080,Removal of formwork for base slab,,,,0,0,0,72,8,8,0,0,,2015-04-23 08:00,2015-04-24 18:00,2014-07-24 08:00,2014-07-24 08:00,,2017-01-01 00:00,2017-01-01 00:00,,,2015-06-01 08:00,2015-06-01 18:00,,,,,PT_Normal,,,,,kwFaXiO+Q5Gz/8KqG3+ZMw,09beaPb8JkS/iPNlKlT7Vg,,,Y,0,0,,,2017-01-24 14:43,2017-01-24 15:36,CLEMENTL,CLEMENTL
1459,49429286,751235,10651631,1227199,1,100,N,N,N,CP_Drtn,TT_Task,DT_FixedDUR2,RV_OK,TK_Complete,823A-ST-SNT3-1090,Side walkway and cable bracket (204m3),,,,0,0,0,1040,40,80,0,0,,2014-03-22 08:00,2014-03-27 18:00,2017-06-12 18:00,2017-06-12 18:00,,2017-01-01 00:00,2017-01-01 00:00,,,2014-03-22 08:00,2014-03-27 18:00,,,,,PT_Normal,,,,,d57ckv7PRg6szrCWircFGA,vVCqRLe8QEi5cZr9IA2sFA,,,N,0,0,,,2017-01-24 14:43,2017-01-24 15:36,CLEMENTL,CLEMENTL
1460,49429287,751235,10651631,1227199,1,100,N,N,N,CP_Drtn,TT_Task,DT_FixedDUR2,RV_OK,TK_Complete,823A-ST-SNT3-1010,Erect internal formwork & Falsework for wall and roof,,,,0,624,0,624,32,48,48,0,,2013-11-28 08:00,2013-12-11 18:00,2014-01-05 18:00,2014-01-05 18:00,,2017-01-01 00:00,2017-01-01 00:00,,,2013-11-28 08:00,2013-12-02 18:00,,,,,PT_Normal,,,,,qPazJHlWTdGjvda/6utk0Q,w8J5bHuoNkSfWNjCpnpNqA,,,N,624,48,,,2017-01-24 14:43,2017-01-24 14:53,CLEMENTL,CLEMENTL
1461,49429288,751235,10651631,1227199,1,100,N,N,N,CP_Drtn,TT_Task,DT_FixedDUR2,RV_OK,TK_Complete,823A-ST-SNT3-1020,Rebar fixing for wall and roof,,,,0,0,0,544,24,32,0,0,,2013-12-12 08:00,2013-12-21 18:00,2014-01-05 18:00,2014-01-05 18:00,,2017-01-01 00:00,2017-01-01 00:00,,,2013-12-28 08:00,2013-12-31 18:00,,,,,PT_Normal,,,,,051geVuyRCWEOyAiiHH2zg,4CZy3fjIiU+UpfmLFq8dAQ,,,N,0,0,,,2017-01-24 14:43,2017-01-24 14:53,CLEMENTL,CLEMENTL
1462,49429289,751235,10651631,1227199,1,100,N,N,N,CP_Drtn,TT_Task,DT_FixedDUR2,RV_OK,TK_Complete,823A-ST-SNT3-1030,Erect external formwork for wall and roof,,,,0,0,0,208,16,16,0,0,,2013-12-23 08:00,2013-12-30 18:00,2014-01-05 18:00,2014-01-05 18:00,,2017-01-01 00:00,2017-01-01 00:00,,,2014-01-02 08:00,2014-01-03 18:00,,,,,PT_Normal,,,,,pHh8AawLSZSVb5ofMXvamA,Wfit95I3tk2PIxdz0o+aCQ,,,N,0,0,,,2017-01-24 14:43,2017-01-24 14:53,CLEMENTL,CLEMENTL
1463,49429290,751235,10651631,1227199,1,100,N,N,N,CP_Drtn,TT_Task,DT_FixedDUR2,RV_OK,TK_Complete,823A-ST-SNT3-1040,Concreting for wall and roof (215m3),,,,0,208,0,208,8,16,16,0,,2013-12-31 08:00,2013-12-31 18:00,2014-01-05 18:00,2014-01-05 18:00,,2017-01-01 00:00,2017-01-01 00:00,,,2014-01-04 08:00,2014-01-04 18:00,,,,,PT_Normal,,,,,zNu9bUFCR82v4KSZz9VLmw,ypbKOqEkNE+yvWUCI8Idsw,,,N,208,16,,,2017-01-24 14:43,2017-01-24 14:53,CLEMENTL,CLEMENTL
1464,49429291,751235,10651631,1227199,1,100,N,N,N,CP_Drtn,TT_Task,DT_FixedDUR2,RV_OK,TK_Complete,823A-ST-SNT3-1070,Removal external and internal formwork for wall,,,,0,0,0,144,8,16,0,0,,2014-01-03 08:00,2014-01-03 18:00,2014-01-05 18:00,2014-01-05 18:00,,2017-01-01 00:00,2017-01-01 00:00,,,2014-01-03 08:00,2014-01-03 18:00,,,,,PT_Normal,,,,,jV+HPi2iTLSpKaaadp7T/g,Ct+N8ZnWSUeHRy0N3RAb6Q,,,N,0,0,,,2017-01-24 14:43,2017-01-24 14:53,CLEMENTL,CLEMENTL
1465,49429292,751235,10651631,1239099,1,100,N,N,N,CP_Drtn,TT_Task,DT_FixedDUR2,RV_OK,TK_Complete,823A-ST-SNT3-1050,Curing for wall and roof,,,,0,0,0,224,80,0,0,0,,2014-01-02 08:00,2014-01-10 18:00,2017-06-12 18:00,2017-06-12 18:00,,2017-01-01 00:00,2017-01-01 00:00,,,2014-01-01 08:00,2014-01-10 18:00,,,,,PT_Normal,,,,,Uz0Dji1ETS2d73eo/qcE8w,pXL10BWvbkmpcxlqWQVgGg,,,N,0,0,,,2017-01-24 14:43,2017-01-24 15:36,CLEMENTL,CLEMENTL
1466,49429293,751235,10651631,1227199,1,100,N,N,N,CP_Drtn,TT_Task,DT_FixedDUR2,RV_OK,TK_Complete,823A-ST-SNT3-1080,Removal internal falsework and formwork for roof,,,,0,0,0,416,16,32,0,0,,2014-01-11 08:00,2014-01-13 18:00,2017-06-12 18:00,2017-06-12 18:00,,2017-01-01 00:00,2017-01-01 00:00,,,2014-01-11 08:00,2014-01-13 18:00,,,,,PT_Normal,,,,,KJSA3oe0R8SEgOEG29KGVA,YXMHosL9L0mdRUMmJnXB2g,,,N,0,0,,,2017-01-24 14:43,2017-01-24 15:36,CLEMENTL,CLEMENTL
1467,49429294,751235,10651631,1239098,1,100,N,N,N,CP_Drtn,TT_Task,DT_FixedDUR2,RV_OK,TK_Complete,823A-ST-SNT3-1060,Preparation of construction joint for wall and roof,,,,0,0,0,0,8,0,0,0,,2014-01-02 08:00,2014-01-02 18:00,2014-01-05 18:00,2014-01-05 18:00,,2017-01-01 00:00,2017-01-01 00:00,,,2014-01-02 08:00,2014-01-02 18:00,,,,,PT_Normal,,,,,cr7L+P7wTXCPynpHhQLDPg,gTXmoGAH0Een+w11aXZ4TQ,,,N,0,0,,,2017-01-24 14:43,2017-01-24 14:53,CLEMENTL,CLEMENTL
1468,49429295,751235,10651632,1227199,1,100,N,N,N,CP_Drtn,TT_Task,DT_FixedDUR2,RV_OK,TK_Complete,823A-ST-SNT1-1020,Rebar fixing for wall and roof,,,,0,544,0,544,24,32,32,0,,2013-11-05 08:00,2013-12-07 18:00,2014-01-05 18:00,2014-01-05 18:00,,2017-01-01 00:00,2017-01-01 00:00,,,2013-11-05 08:00,2013-11-07 18:00,,,,,PT_Normal,,,,,a5gcz3GKTzyLmG+J5wvDzA,4CZy3fjIiU+UpfmLFq8dAQ,,,N,544,32,,,2017-01-24 14:43,2017-01-24 14:53,CLEMENTL,CLEMENTL
1469,49429296,751235,10651632,1227199,1,100,N,N,N,CP_Drtn,TT_Task,DT_FixedDUR2,RV_OK,TK_Complete,823A-ST-SNT1-1030,Erect external formwork for wall and roof,,,,0,0,0,208,16,16,0,0,,2013-12-09 08:00,2013-12-11 18:00,2014-01-05 18:00,2014-01-05 18:00,,2017-01-01 00:00,2017-01-01 00:00,,,2013-12-05 08:00,2013-12-06 18:00,,,,,PT_Normal,,,,,k3JFGwO8Slekp4e6Hm+qmg,Wfit95I3tk2PIxdz0o+aCQ,,,N,0,0,,,2017-01-24 14:43,2017-01-24 14:53,CLEMENTL,CLEMENTL
1470,49429297,751235,10651632,1227199,1,100,N,N,N,CP_Drtn,TT_Task,DT_FixedDUR2,RV_OK,TK_Complete,823A-ST-SNT1-1040,Concreting for wall and roof (215m3),,,,0,0,0,208,8,16,0,0,,2013-12-12 08:00,2013-12-12 18:00,2014-01-05 18:00,2014-01-05 18:00,,2017-01-01 00:00,2017-01-01 00:00,,,2013-12-07 08:00,2013-12-07 18:00,,,,,PT_Normal,,,,,1oeLtdZBRbaO+8CekYeH+Q,ypbKOqEkNE+yvWUCI8Idsw,,,N,0,0,,,2017-01-24 14:43,2017-01-24 14:53,CLEMENTL,CLEMENTL
1471,49429298,751235,10651632,1227199,1,100,N,N,N,CP_Drtn,TT_Task,DT_FixedDUR2,RV_OK,TK_Complete,823A-ST-SNT1-1070,Removal external and internal formwork for wall,,,,0,0,0,144,8,16,0,0,,2013-12-14 08:00,2013-12-14 18:00,2014-01-05 18:00,2014-01-05 18:00,,2017-01-01 00:00,2017-01-01 00:00,,,2013-12-10 08:00,2013-12-10 18:00,,,,,PT_Normal,,,,,II4EBoh2R32UirQKZN5rXw,Ct+N8ZnWSUeHRy0N3RAb6Q,,,N,0,0,,,2017-01-24 14:43,2017-01-24 14:53,CLEMENTL,CLEMENTL
1472,49429299,751235,10651632,1239099,1,100,N,N,N,CP_Drtn,TT_Task,DT_FixedDUR2,RV_OK,TK_Complete,823A-ST-SNT1-1050,Curing for wall and roof,,,,0,0,0,224,80,0,0,0,,2013-12-13 08:00,2013-12-24 18:00,2017-06-12 18:00,2017-06-12 18:00,,2017-01-01 00:00,2017-01-01 00:00,,,2013-12-08 08:00,2013-12-17 18:00,,,,,PT_Normal,,,,,rYBEukTGTY20ows6Kwy6mw,pXL10BWvbkmpcxlqWQVgGg,,,N,0,0,,,2017-01-24 14:43,2017-01-24 15:36,CLEMENTL,CLEMENTL
1473,49429300,751235,10651632,1227199,1,100,N,N,N,CP_Drtn,TT_Task,DT_FixedDUR2,RV_OK,TK_Complete,823A-ST-SNT1-1080,Removal internal falsework and formwork for roof,,,,0,0,0,416,16,32,0,0,,2013-12-27 08:00,2013-12-28 18:00,2017-06-12 18:00,2017-06-12 18:00,,2017-01-01 00:00,2017-01-01 00:00,,,2013-12-18 08:00,2013-12-19 18:00,,,,,PT_Normal,,,,,8S1qCcgYToOj8I9cKLycBg,YXMHosL9L0mdRUMmJnXB2g,,,N,0,0,,,2017-01-24 14:43,2017-01-24 15:36,CLEMENTL,CLEMENTL
1474,49429301,751235,10651632,1239098,1,100,N,N,N,CP_Drtn,TT_Task,DT_FixedDUR2,RV_OK,TK_Complete,823A-ST-SNT1-1060,Preparation of construction joint for wall and roof,,,,0,0,0,0,8,0,0,0,,2013-12-13 08:00,2013-12-13 18:00,2014-01-05 18:00,2014-01-05 18:00,,2017-01-01 00:00,2017-01-01 00:00,,,2013-12-09 08:00,2013-12-09 18:00,,,,,PT_Normal,,,,,QbIDyiJ8Q1qTpQqFtYNR9w,gTXmoGAH0Een+w11aXZ4TQ,,,N,0,0,,,2017-01-24 14:43,2017-01-24 14:53,CLEMENTL,CLEMENTL
1475,49429302,751235,10651632,1227199,1,100,N,N,N,CP_Drtn,TT_Task,DT_FixedDUR2,RV_OK,TK_Complete,823A-ST-SNT1-1090,Side walkway and cable bracket (204m3),,,,0,0,0,1040,40,80,0,0,,2014-03-24 08:00,2014-03-28 18:00,2017-06-12 18:00,2017-06-12 18:00,,2017-01-01 00:00,2017-01-01 00:00,,,2014-04-03 08:00,2014-04-09 18:00,,,,,PT_Normal,,,,,P6JYWwulS7i1dLLczZarZA,vVCqRLe8QEi5cZr9IA2sFA,,,N,0,0,,,2017-01-24 14:43,2017-01-24 15:36,CLEMENTL,CLEMENTL
1476,49429303,751235,10651632,1227199,1,100,N,N,N,CP_Drtn,TT_Task,DT_FixedDUR2,RV_OK,TK_Complete,823A-ST-SNT1-1010,Erect internal formwork & Falsework for wall and roof,,,,0,624,0,624,32,48,48,0,,2013-10-26 08:00,2013-11-04 18:00,2014-01-05 18:00,2014-01-05 18:00,,2017-01-01 00:00,2017-01-01 00:00,,,2013-11-01 08:00,2013-11-05 18:00,,,,,PT_Normal,,,,,Vo5cwZrTQG6rkBb+PYkTcA,w8J5bHuoNkSfWNjCpnpNqA,,,N,624,48,,,2017-01-24 14:43,2017-01-24 14:53,CLEMENTL,CLEMENTL
1477,49429304,751235,10651633,1227199,1,100,N,N,N,CP_Drtn,TT_Task,DT_FixedDUR2,RV_OK,TK_Complete,823A-ST-SNT2-1090,Side walkway and cable bracket (204m3),,,,0,0,0,1040,40,80,0,0,,2015-06-01 08:00,2015-06-05 18:00,2017-06-12 18:00,2017-06-12 18:00,,2017-01-01 00:00,2017-01-01 00:00,,,2015-06-01 08:00,2015-06-05 18:00,,,,,PT_Normal,,,,,BvvRYAIPTpG5wiada76q+w,vVCqRLe8QEi5cZr9IA2sFA,,,N,0,0,,,2017-01-24 14:43,2017-01-24 15:36,CLEMENTL,CLEMENTL
1478,49429305,751235,10651633,1227199,1,100,N,N,N,CP_Drtn,TT_Task,DT_FixedDUR2,RV_OK,TK_Complete,823A-ST-SNT2-1010,Erect internal formwork & Falsework for wall and roof,,,,0,624,0,624,32,48,48,0,,2013-11-14 08:00,2013-12-02 18:00,2014-01-05 18:00,2014-01-05 18:00,,2017-01-01 00:00,2017-01-01 00:00,,,2013-11-14 08:00,2013-11-18 18:00,,,,,PT_Normal,,,,,KriiG5XuSqWFqUkAXb8rJw,w8J5bHuoNkSfWNjCpnpNqA,,,N,624,48,,,2017-01-24 14:43,2017-01-24 14:53,CLEMENTL,CLEMENTL
1479,49429306,751235,10651633,1227199,1,100,N,N,N,CP_Drtn,TT_Task,DT_FixedDUR2,RV_OK,TK_Complete,823A-ST-SNT2-1030,Erect external formwork for wall and roof,,,,0,0,0,208,16,16,0,0,,2013-12-09 08:00,2013-12-13 18:00,2014-01-05 18:00,2014-01-05 18:00,,2017-01-01 00:00,2017-01-01 00:00,,,2013-12-17 08:00,2013-12-18 18:00,,,,,PT_Normal,,,,,NdLLq0ooTSubXZwSsbFaUQ,Wfit95I3tk2PIxdz0o+aCQ,,,N,0,0,,,2017-01-24 14:43,2017-01-24 14:53,CLEMENTL,CLEMENTL
1480,49429307,751235,10651633,1227199,1,100,N,N,N,CP_Drtn,TT_Task,DT_FixedDUR2,RV_OK,TK_Complete,823A-ST-SNT2-1040,Concreting for wall and roof (215m3),,,,0,0,0,208,8,16,0,0,,2013-12-14 08:00,2013-12-14 18:00,2014-01-05 18:00,2014-01-05 18:00,,2017-01-01 00:00,2017-01-01 00:00,,,2013-12-19 08:00,2013-12-19 18:00,,,,,PT_Normal,,,,,o0dWSkE+TsafOyPz7GDDfQ,ypbKOqEkNE+yvWUCI8Idsw,,,N,0,0,,,2017-01-24 14:43,2017-01-24 14:53,CLEMENTL,CLEMENTL
1481,49429308,751235,10651633,1227199,1,100,N,N,N,CP_Drtn,TT_Task,DT_FixedDUR2,RV_OK,TK_Complete,823A-ST-SNT2-1070,Removal external and internal formwork for wall,,,,0,0,0,144,8,16,0,0,,2013-12-17 08:00,2013-12-17 18:00,2014-01-05 18:00,2014-01-05 18:00,,2017-01-01 00:00,2017-01-01 00:00,,,2013-12-21 08:00,2013-12-21 18:00,,,,,PT_Normal,,,,,AoZ1scL5ToyI92Yuc74I7g,Ct+N8ZnWSUeHRy0N3RAb6Q,,,N,0,0,,,2017-01-24 14:43,2017-01-24 14:53,CLEMENTL,CLEMENTL
1482,49429309,751235,10651633,1239099,1,100,N,N,N,CP_Drtn,TT_Task,DT_FixedDUR2,RV_OK,TK_Complete,823A-ST-SNT2-1050,Curing for wall and roof,,,,0,0,0,224,80,0,0,0,,2013-12-16 08:00,2013-12-28 18:00,2017-06-12 18:00,2017-06-12 18:00,,2017-01-01 00:00,2017-01-01 00:00,,,2013-12-20 08:00,2013-12-29 18:00,,,,,PT_Normal,,,,,LLcljyD9TJCIMdRfLdftGQ,pXL10BWvbkmpcxlqWQVgGg,,,N,0,0,,,2017-01-24 14:43,2017-01-24 15:36,CLEMENTL,CLEMENTL
1483,49429310,751235,10651633,1227199,1,100,N,N,N,CP_Drtn,TT_Task,DT_FixedDUR2,RV_OK,TK_Complete,823A-ST-SNT2-1080,Removal internal falsework and formwork for roof,,,,0,0,0,416,16,32,0,0,,2013-12-30 08:00,2013-12-31 18:00,2017-06-12 18:00,2017-06-12 18:00,,2017-01-01 00:00,2017-01-01 00:00,,,2013-12-30 08:00,2013-12-31 18:00,,,,,PT_Normal,,,,,ki5iZ3x6QG6J37+15k6emA,YXMHosL9L0mdRUMmJnXB2g,,,N,0,0,,,2017-01-24 14:43,2017-01-24 15:36,CLEMENTL,CLEMENTL
1484,49429311,751235,10651633,1239098,1,100,N,N,N,CP_Drtn,TT_Task,DT_FixedDUR2,RV_OK,TK_Complete,823A-ST-SNT2-1060,Preparation of construction joint for wall and roof,,,,0,0,0,0,8,0,0,0,,2013-12-16 08:00,2013-12-16 18:00,2014-01-05 18:00,2014-01-05 18:00,,2017-01-01 00:00,2017-01-01 00:00,,,2013-12-20 08:00,2013-12-20 18:00,,,,,PT_Normal,,,,,2F1D8TqkSo+0W7oTm1EqEw,gTXmoGAH0Een+w11aXZ4TQ,,,N,0,0,,,2017-01-24 14:43,2017-01-24 14:53,CLEMENTL,CLEMENTL
1485,49429312,751235,10651633,1227199,1,100,N,N,N,CP_Drtn,TT_Task,DT_FixedDUR2,RV_OK,TK_Complete,823A-ST-SNT2-1020,Rebar fixing for wall and roof,,,,0,0,0,544,24,32,0,0,,2013-12-03 08:00,2013-12-07 18:00,2014-01-05 18:00,2014-01-05 18:00,,2017-01-01 00:00,2017-01-01 00:00,,,2013-12-13 08:00,2013-12-16 18:00,,,,,PT_Normal,,,,,GIHycbRsRU+6SKKakkqCRQ,4CZy3fjIiU+UpfmLFq8dAQ,,,N,0,0,,,2017-01-24 14:43,2017-01-24 14:53,CLEMENTL,CLEMENTL
1486,49429313,751235,10651634,1227199,1,100,N,N,N,CP_Drtn,TT_Task,DT_FixedDUR2,RV_OK,TK_Complete,823A-ST-SNT15-1010,Placing of waterproof member T-lock & testing for base slab,,,,0,0,0,64,8,0,0,0,,2015-03-16 08:00,2015-03-16 18:00,2014-07-24 08:00,2014-07-24 08:00,,2017-01-01 00:00,2017-01-01 00:00,,,2015-04-13 08:00,2015-04-13 18:00,,,,,PT_Normal,,,,,B7WaFQmySsa5i1WcbYTBBw,yK2PwHrpbUSvcfAPOD8HkQ,,,Y,0,0,,,2017-01-24 14:43,2017-01-24 15:36,CLEMENTL,CLEMENTL
1487,49429314,751235,10651634,1227199,1,100,N,N,N,CP_Drtn,TT_Task,DT_FixedDUR2,RV_OK,TK_Complete,823A-ST-SNT15-1020,Erect external formwork for base slab,,,,0,0,0,104,16,8,0,0,,2015-03-17 08:00,2015-03-19 18:00,2014-07-24 08:00,2014-07-24 08:00,,2017-01-01 00:00,2017-01-01 00:00,,,2015-04-14 08:00,2015-04-15 18:00,,,,,PT_Normal,,,,,t/ZLW7ktQJKVuFYMSPXdgQ,T4lTs/MaJkuil88ltcUQ2A,,,Y,0,0,,,2017-01-24 14:43,2017-01-24 15:36,CLEMENTL,CLEMENTL
1488,49429315,751235,10651634,1227199,1,100,N,N,N,CP_Drtn,TT_Task,DT_FixedDUR2,RV_OK,TK_Complete,823A-ST-SNT15-1030,Rebar fixing for base slab,,,,0,0,0,272,16,16,0,0,,2015-03-20 08:00,2015-03-28 18:00,2014-07-24 08:00,2014-07-24 08:00,,2017-01-01 00:00,2017-01-01 00:00,,,2015-04-16 08:00,2015-04-17 18:00,,,,,PT_Normal,,,,,8VoWS3LwTu+P+5dl2IcmbA,feLIaF0g2E+BRj3fm0vgBg,,,Y,0,0,,,2017-01-24 14:43,2017-01-24 15:36,CLEMENTL,CLEMENTL
1489,49429316,751235,10651634,1227199,1,100,N,N,N,CP_Drtn,TT_Task,DT_FixedDUR2,RV_OK,TK_Complete,823A-ST-SNT15-1040,Erect internal kicker formwork for base slab,,,,0,0,0,288,16,16,0,0,,2015-03-30 08:00,2015-04-01 18:00,2014-07-24 08:00,2014-07-24 08:00,,2017-01-01 00:00,2017-01-01 00:00,,,2015-04-18 08:00,2015-04-20 18:00,,,,,PT_Normal,,,,,DpepHLzwQ/egYC4fbO7GmQ,uQvjViH/40KA1Xy9+SZWug,,,Y,0,0,,,2017-01-24 14:43,2017-01-24 15:36,CLEMENTL,CLEMENTL
1490,49429317,751235,10651634,1227199,1,100,N,N,N,CP_Drtn,TT_Task,DT_FixedDUR2,RV_OK,TK_Complete,823A-ST-SNT15-1050,Concreting for base slab (70m3),,,,0,0,0,208,8,16,0,0,,2015-04-02 08:00,2015-04-02 18:00,2014-07-24 08:00,2014-07-24 08:00,,2017-01-01 00:00,2017-01-01 00:00,,,2015-04-21 08:00,2015-04-21 18:00,,,,,PT_Normal,,,,,U21tcOMgQ8uy2c6ihhXBiA,+yr8O2/QLkyKIN49R3ur+g,,,Y,0,0,,,2017-01-24 14:43,2017-01-24 15:36,CLEMENTL,CLEMENTL
1491,49429318,751235,10651634,1239099,1,100,N,N,N,CP_Drtn,TT_Task,DT_FixedDUR2,RV_OK,TK_Complete,823A-ST-SNT15-1060,Curing for base slab,,,,0,0,0,224,56,0,0,0,,2015-04-08 08:00,2015-04-18 18:00,2014-07-24 08:00,2014-07-24 08:00,,2017-01-01 00:00,2017-01-01 00:00,,,2015-04-22 08:00,2015-04-28 18:00,,,,,PT_Normal,,,,,QqgQooaxTwOOw3j20OyX4g,m50yJHZKpkq/LkRixIv4TA,,,Y,0,0,,,2017-01-24 14:43,2017-01-24 15:36,CLEMENTL,CLEMENTL
1492,49429319,751235,10651634,1227199,1,100,N,N,N,CP_Drtn,TT_Task,DT_FixedDUR2,RV_OK,TK_Complete,823A-ST-SNT15-1080,Removal of formwork for base slab,,,,0,0,0,72,8,8,0,0,,2015-04-23 08:00,2015-04-24 18:00,2014-07-24 08:00,2014-07-24 08:00,,2017-01-01 00:00,2017-01-01 00:00,,,2015-04-23 08:00,2015-04-23 18:00,,,,,PT_Normal,,,,,S8Oyq5ZLR8a5Fql2AgVGeg,09beaPb8JkS/iPNlKlT7Vg,,,Y,0,0,,,2017-01-24 14:43,2017-01-24 15:36,CLEMENTL,CLEMENTL
1493,49429320,751235,10651634,1227199,1,100,N,N,N,CP_Drtn,TT_Task,DT_FixedDUR2,RV_OK,TK_Complete,823A-ST-SNT15-1090,Infill concrete in between D-wall and base slab,,,,0,0,0,128,8,16,0,0,,2015-04-25 08:00,2015-04-27 18:00,2014-07-24 08:00,2014-07-24 08:00,,2017-01-01 00:00,2017-01-01 00:00,,,2015-04-24 08:00,2015-04-24 18:00,,,,,PT_Normal,,,,,tewMc5E4QoKSYX0ilaHJiA,tF3h32aTBk2sBJw3lVObPw,,,Y,0,0,,,2017-01-24 14:43,2017-01-24 15:36,CLEMENTL,CLEMENTL
1494,49429321,751235,10651634,1227199,1,100,N,N,N,CP_Drtn,TT_Task,DT_FixedDUR2,RV_OK,TK_Complete,823A-ST-SNT15-1110,Removal strut S3,,,,0,0,0,144,32,16,0,0,,2015-04-30 08:00,2015-05-05 18:00,2014-07-24 08:00,2014-07-24 08:00,,2017-01-01 00:00,2017-01-01 00:00,,,2015-04-30 08:00,2015-05-05 18:00,,,,,PT_Normal,,,,,pzZ83vv/SNS1Wm4oO3cDjg,qP8qGBXd+EK1ycJRG8iM+w,,,Y,0,0,,,2017-01-24 14:43,2017-01-24 15:36,CLEMENTL,CLEMENTL
1495,49429322,751235,10651634,1239098,1,100,N,N,N,CP_Drtn,TT_Task,DT_FixedDUR2,RV_OK,TK_Complete,823A-ST-SNT15-1070,Preparation of construction joint for base slab,,,,0,0,0,0,8,0,0,0,,2015-04-20 08:00,2015-04-22 18:00,2014-07-24 08:00,2014-07-24 08:00,,2017-01-01 00:00,2017-01-01 00:00,,,2015-04-22 08:00,2015-04-22 18:00,,,,,PT_Normal,,,,,eY1Mw7HgS4G1uBkhHUWq1Q,56neXm5NIE6v/JEFJCvdMw,,,Y,0,0,,,2017-01-24 14:43,2017-01-24 15:36,CLEMENTL,CLEMENTL
1496,49429323,751235,10651634,1239099,1,100,N,N,N,CP_Drtn,TT_Task,DT_FixedDUR2,RV_OK,TK_Complete,823A-ST-SNT15-1100,Curing,,,,0,0,0,224,8,0,0,0,,2015-04-28 08:00,2015-04-29 18:00,2014-07-24 08:00,2014-07-24 08:00,,2017-01-01 00:00,2017-01-01 00:00,,,2015-04-29 08:00,2015-04-29 18:00,,,,,PT_Normal,,,,,dyrvKhtKSKWKD0ztIsKi3A,uhtxMqG2W0WMaaX4EMAojg,,,Y,0,0,,,2017-01-24 14:43,2017-01-24 15:36,CLEMENTL,CLEMENTL
1497,49429324,751235,10651634,1227199,1,100,N,N,N,CP_Drtn,TT_Task,DT_FixedDUR2,RV_OK,TK_Complete,823A-ST-SNT15-1200,Side walkway and cable bracket (204m3),,,,0,1040,0,1040,40,80,80,0,,2015-06-04 08:00,2015-10-02 18:00,2017-06-12 18:00,2017-06-12 18:00,,2017-01-01 00:00,2017-01-01 00:00,,,2015-06-23 08:00,2015-06-27 18:00,,,,,PT_Normal,,,,,mflpaIviQ6isCp6ElfsQcw,mRWCP6sTKU2fF6FHMv58WA,,,N,1040,80,,,2017-01-24 14:43,2017-01-24 15:36,CLEMENTL,CLEMENTL
1498,49429325,751235,10651634,1227199,1,100,N,N,N,CP_Drtn,TT_Task,DT_FixedDUR2,RV_OK,TK_Complete,823A-ST-SNT15-1120,Erect internal formwork & Falsework for wall and roof,,,,0,0,0,624,8,48,0,0,,2015-05-06 08:00,2015-05-09 18:00,2014-07-24 08:00,2014-07-24 08:00,,2017-01-01 00:00,2017-01-01 00:00,,,2015-05-06 08:00,2015-05-06 18:00,,,,,PT_Normal,,,,,v19dZzA1RRivkoybhUI4IQ,eHQ9GpX9xkG6yKmKgoL8yg,,,Y,0,0,,,2017-01-24 14:43,2017-01-24 15:36,CLEMENTL,CLEMENTL
1499,49429326,751235,10651634,1227199,1,100,N,N,N,CP_Drtn,TT_Task,DT_FixedDUR2,RV_OK,TK_Complete,823A-ST-SNT15-1130,Rebar fixing for wall and roof,,,,0,0,0,544,24,32,0,0,,2015-05-11 08:00,2015-05-13 18:00,2014-07-24 08:00,2014-07-24 08:00,,2017-01-01 00:00,2017-01-01 00:00,,,2015-05-14 08:00,2015-05-16 18:00,,,,,PT_Normal,,,,,m75gD+RJRZqIGE38r3hhjg,493cAAAg00GFMAqUKN3RPA,,,Y,0,0,,,2017-01-24 14:43,2017-01-24 15:36,CLEMENTL,CLEMENTL
1500,49429327,751235,10651634,1227199,1,100,N,N,N,CP_Drtn,TT_Task,DT_FixedDUR2,RV_OK,TK_Complete,823A-ST-SNT15-1140,Erect external formwork for wall and roof,,,,0,0,0,208,16,16,0,0,,2015-05-14 08:00,2015-05-15 18:00,2014-07-24 08:00,2014-07-24 08:00,,2017-01-01 00:00,2017-01-01 00:00,,,2015-05-18 08:00,2015-05-19 18:00,,,,,PT_Normal,,,,,Cr4HQXdfQYSIFTFycK0Tog,DUdsQqgRNUa7SYbo4r09iQ,,,Y,0,0,,,2017-01-24 14:43,2017-01-24 15:36,CLEMENTL,CLEMENTL
1501,49429328,751235,10651634,1227199,1,100,N,N,N,CP_Drtn,TT_Task,DT_FixedDUR2,RV_OK,TK_Complete,823A-ST-SNT15-1150,Concreting for wall and roof (175m3),,,,0,0,0,208,8,16,0,0,,2015-05-16 08:00,2015-05-16 18:00,2014-07-24 08:00,2014-07-24 08:00,,2017-01-01 00:00,2017-01-01 00:00,,,2015-05-20 08:00,2015-05-20 18:00,,,,,PT_Normal,,,,,zvtLciSUTrqkiX7mJ9Yl7A,J5qihDXqBkypvgmCwI/KUg,,,Y,0,0,,,2017-01-24 14:43,2017-01-24 15:36,CLEMENTL,CLEMENTL
1502,49429329,751235,10651634,1227199,1,100,N,N,N,CP_Drtn,TT_Task,DT_FixedDUR2,RV_OK,TK_Complete,823A-ST-SNT15-1180,Removal external and internal formwork for wall,,,,0,0,0,144,8,16,0,0,,2015-06-01 08:00,2015-06-01 18:00,2014-07-24 08:00,2014-07-24 08:00,,2017-01-01 00:00,2017-01-01 00:00,,,2015-06-02 08:00,2015-06-02 18:00,,,,,PT_Normal,,,,,uYQIXkd1RCKfX35aF9iDwg,2iPFLOTCjUS11/6iwl+upw,,,Y,0,0,,,2017-01-24 14:43,2017-01-24 15:36,CLEMENTL,CLEMENTL
1503,49429330,751235,10651634,1239099,1,100,N,N,N,CP_Drtn,TT_Task,DT_FixedDUR2,RV_OK,TK_Complete,823A-ST-SNT15-1160,Curing for wall and roof,,,,0,0,0,224,80,0,0,0,,2015-05-18 08:00,2015-05-29 18:00,2017-06-12 18:00,2017-06-12 18:00,,2017-01-01 00:00,2017-01-01 00:00,,,2015-05-21 08:00,2015-05-30 18:00,,,,,PT_Normal,,,,,WDF0l3WySiWTHp1KP0p0Kg,B4O1JjrBN0KuQmTcsm/dbQ,,,N,0,0,,,2017-01-24 14:43,2017-01-24 15:36,CLEMENTL,CLEMENTL
1504,49429331,751235,10651634,1227199,1,100,N,N,N,CP_Drtn,TT_Task,DT_FixedDUR2,RV_OK,TK_Complete,823A-ST-SNT15-1190,Removal internal falsework and formwork for roof,,,,0,0,0,416,16,32,0,0,,2015-06-02 08:00,2015-06-03 18:00,2017-06-12 18:00,2017-06-12 18:00,,2017-01-01 00:00,2017-01-01 00:00,,,2015-06-03 08:00,2015-06-04 18:00,,,,,PT_Normal,,,,,Ly44IqMXS/qf+yd3Yb9dbg,qz+3HJfgwE2GHi0IOCIjHg,,,N,0,0,,,2017-01-24 14:43,2017-01-24 15:36,CLEMENTL,CLEMENTL
1505,49429332,751235,10651634,1239098,1,100,N,N,N,CP_Drtn,TT_Task,DT_FixedDUR2,RV_OK,TK_Complete,823A-ST-SNT15-1170,Preparation of construction joint for wall and roof,,,,0,0,0,0,8,0,0,0,,2015-05-30 08:00,2015-05-30 18:00,2014-07-24 08:00,2014-07-24 08:00,,2017-01-01 00:00,2017-01-01 00:00,,,2015-05-21 08:00,2015-05-21 18:00,,,,,PT_Normal,,,,,NO1RhV0HRFuhHGU6LOuRZA,XzPCKSrlrkalSkNWGPK65Q,,,Y,0,0,,,2017-01-24 14:43,2017-01-24 15:36,CLEMENTL,CLEMENTL
1506,49429333,751235,10651635,1227199,1,100,N,N,N,CP_Drtn,TT_Task,DT_FixedDUR2,RV_OK,TK_Complete,823A-ST-SNT13-1010,Placing of waterproof member T-lock & testing for base slab,,,,0,0,0,64,8,0,0,0,,2015-04-13 08:00,2015-04-13 18:00,2014-07-24 08:00,2014-07-24 08:00,,2017-01-01 00:00,2017-01-01 00:00,,,2015-06-02 08:00,2015-06-02 18:00,,,,,PT_Normal,,,,,mocfGDsoSCuAsNauaXdtVQ,yK2PwHrpbUSvcfAPOD8HkQ,,,Y,0,0,,,2017-01-24 14:43,2017-01-24 15:36,CLEMENTL,CLEMENTL
1507,49429334,751235,10651635,1227199,1,100,N,N,N,CP_Drtn,TT_Task,DT_FixedDUR2,RV_OK,TK_Complete,823A-ST-SNT13-1020,Erect external formwork for base slab,,,,0,0,0,104,16,8,0,0,,2015-04-14 08:00,2015-04-15 18:00,2014-07-24 08:00,2014-07-24 08:00,,2017-01-01 00:00,2017-01-01 00:00,,,2015-06-03 08:00,2015-06-04 18:00,,,,,PT_Normal,,,,,hyB9Mxf0SkCPoFBc5mq3dA,T4lTs/MaJkuil88ltcUQ2A,,,Y,0,0,,,2017-01-24 14:43,2017-01-24 15:36,CLEMENTL,CLEMENTL
1508,49429335,751235,10651635,1227199,1,100,N,N,N,CP_Drtn,TT_Task,DT_FixedDUR2,RV_OK,TK_Complete,823A-ST-SNT13-1030,Rebar fixing for base slab,,,,0,0,0,272,16,16,0,0,,2015-04-16 08:00,2015-04-17 18:00,2014-07-24 08:00,2014-07-24 08:00,,2017-01-01 00:00,2017-01-01 00:00,,,2015-06-05 08:00,2015-06-06 18:00,,,,,PT_Normal,,,,,WpmCZZ9xQVqai5t7L8S6XQ,feLIaF0g2E+BRj3fm0vgBg,,,Y,0,0,,,2017-01-24 14:43,2017-01-24 15:36,CLEMENTL,CLEMENTL
1509,49429336,751235,10651635,1227199,1,100,N,N,N,CP_Drtn,TT_Task,DT_FixedDUR2,RV_OK,TK_Complete,823A-ST-SNT13-1040,Erect internal kicker formwork for base slab,,,,0,0,0,288,16,16,0,0,,2015-04-18 08:00,2015-04-20 18:00,2014-07-24 08:00,2014-07-24 08:00,,2017-01-01 00:00,2017-01-01 00:00,,,2015-06-08 08:00,2015-06-09 18:00,,,,,PT_Normal,,,,,kstW+2EVT9KiUwtk9X2scw,uQvjViH/40KA1Xy9+SZWug,,,Y,0,0,,,2017-01-24 14:43,2017-01-24 15:36,CLEMENTL,CLEMENTL
1510,49429337,751235,10651635,1227199,1,100,N,N,N,CP_Drtn,TT_Task,DT_FixedDUR2,RV_OK,TK_Complete,823A-ST-SNT13-1050,Concreting for base slab (127m3),,,,0,0,0,208,8,16,0,0,,2015-04-21 08:00,2015-04-21 18:00,2014-07-24 08:00,2014-07-24 08:00,,2017-01-01 00:00,2017-01-01 00:00,,,2015-06-10 08:00,2015-06-10 18:00,,,,,PT_Normal,,,,,WXEzoKq9TNiloTFDuZrjHg,+yr8O2/QLkyKIN49R3ur+g,,,Y,0,0,,,2017-01-24 14:43,2017-01-24 15:36,CLEMENTL,CLEMENTL
1511,49429338,751235,10651635,1239099,1,100,N,N,N,CP_Drtn,TT_Task,DT_FixedDUR2,RV_OK,TK_Complete,823A-ST-SNT13-1060,Curing for base slab,,,,0,0,0,224,56,0,0,0,,2015-04-22 08:00,2015-04-29 18:00,2017-06-12 18:00,2017-06-12 18:00,,2017-01-01 00:00,2017-01-01 00:00,,,2015-06-11 08:00,2015-06-17 18:00,,,,,PT_Normal,,,,,RFfLpE3bTimAOqi9bnfqAQ,m50yJHZKpkq/LkRixIv4TA,,,N,0,0,,,2017-01-24 14:43,2017-01-24 15:36,CLEMENTL,CLEMENTL
1512,49429339,751235,10651635,1227199,1,100,N,N,N,CP_Drtn,TT_Task,DT_FixedDUR2,RV_OK,TK_Complete,823A-ST-SNT13-1080,Removal of formwork for base slab,,,,0,0,0,72,8,8,0,0,,2015-05-11 08:00,2015-05-11 18:00,2014-07-24 08:00,2014-07-24 08:00,,2017-01-01 00:00,2017-01-01 00:00,,,2015-05-23 08:00,2015-05-23 18:00,,,,,PT_Normal,,,,,sD0a5KUrSra7hbat/nO3Xg,09beaPb8JkS/iPNlKlT7Vg,,,Y,0,0,,,2017-01-24 14:43,2017-01-24 15:36,CLEMENTL,CLEMENTL
1513,49429340,751235,10651635,1227199,1,100,N,N,N,CP_Drtn,TT_Task,DT_FixedDUR2,RV_OK,TK_Complete,823A-ST-SNT13-1090,Infill concrete in between D-wall and base slab,,,,0,0,0,128,8,16,0,0,,2015-05-12 08:00,2015-05-12 18:00,2017-06-12 18:00,2017-06-12 18:00,,2017-01-01 00:00,2017-01-01 00:00,,,2015-05-26 08:00,2015-05-26 18:00,,,,,PT_Normal,,,,,4tiLjv/cTo6DOyJ5Xr5rWw,tF3h32aTBk2sBJw3lVObPw,,,N,0,0,,,2017-01-24 14:43,2017-01-24 15:36,CLEMENTL,CLEMENTL
1514,49429341,751235,10651635,1227199,1,100,N,N,N,CP_Drtn,TT_Task,DT_FixedDUR2,RV_OK,TK_Complete,823A-ST-SNT13-1110,Removal strut S3,,,,0,0,0,144,32,16,0,0,,2015-05-14 08:00,2015-05-18 18:00,2017-06-12 18:00,2017-06-12 18:00,,2017-01-01 00:00,2017-01-01 00:00,,,2015-05-28 08:00,2015-06-01 18:00,,,,,PT_Normal,,,,,SQdAikjcSSW4Y6gDDux0ng,qP8qGBXd+EK1ycJRG8iM+w,,,N,0,0,,,2017-01-24 14:43,2017-01-24 15:36,CLEMENTL,CLEMENTL
1515,49429342,751235,10651635,1239098,1,100,N,N,N,CP_Drtn,TT_Task,DT_FixedDUR2,RV_OK,TK_Complete,823A-ST-SNT13-1070,Preparation of construction joint for base slab,,,,0,0,0,0,8,0,0,0,,2015-04-30 08:00,2015-04-30 18:00,2014-07-24 08:00,2014-07-24 08:00,,2017-01-01 00:00,2017-01-01 00:00,,,2015-06-11 08:00,2015-06-11 18:00,,,,,PT_Normal,,,,,3Nb8ZdX4QeG10kuoA3JY4Q,56neXm5NIE6v/JEFJCvdMw,,,Y,0,0,,,2017-01-24 14:43,2017-01-24 15:36,CLEMENTL,CLEMENTL
1516,49429343,751235,10651635,1239099,1,100,N,N,N,CP_Drtn,TT_Task,DT_FixedDUR2,RV_OK,TK_Complete,823A-ST-SNT13-1100,Curing,,,,0,0,0,224,8,0,0,0,,2015-05-13 08:00,2015-05-13 18:00,2017-06-12 18:00,2017-06-12 18:00,,2017-01-01 00:00,2017-01-01 00:00,,,2015-05-27 08:00,2015-05-27 18:00,,,,,PT_Normal,,,,,uLH56NasSw6gpaO+N9eCww,uhtxMqG2W0WMaaX4EMAojg,,,N,0,0,,,2017-01-24 14:43,2017-01-24 15:36,CLEMENTL,CLEMENTL
1517,49429344,751235,10651635,1227199,1,100,N,N,N,CP_Drtn,TT_Task,DT_FixedDUR2,RV_OK,TK_Complete,823A-ST-SNT13-1200,Side walkway and cable bracket (204m3),,,,0,1040,0,1040,40,80,80,0,,2015-06-30 08:00,2015-10-05 18:00,2017-06-12 18:00,2017-06-12 18:00,,2017-01-01 00:00,2017-01-01 00:00,,,2015-07-06 08:00,2015-07-10 18:00,,,,,PT_Normal,,,,,chaZYSPTTUK/7YGVns23YA,mRWCP6sTKU2fF6FHMv58WA,,,N,1040,80,,,2017-01-24 14:43,2017-01-24 15:36,CLEMENTL,CLEMENTL
1518,49429345,751235,10651635,1227199,1,100,N,N,N,CP_Drtn,TT_Task,DT_FixedDUR2,RV_OK,TK_Complete,823A-ST-SNT13-1120,Erect internal formwork & Falsework for wall and roof,,,,0,0,0,624,32,48,0,0,,2015-05-19 08:00,2015-05-22 18:00,2017-06-12 18:00,2017-06-12 18:00,,2017-01-01 00:00,2017-01-01 00:00,,,2015-06-02 08:00,2015-06-05 18:00,,,,,PT_Normal,,,,,dyXkBX1SSfa8vOr3+BdoIg,eHQ9GpX9xkG6yKmKgoL8yg,,,N,0,0,,,2017-01-24 14:43,2017-01-24 15:36,CLEMENTL,CLEMENTL
1519,49429346,751235,10651635,1227199,1,100,N,N,N,CP_Drtn,TT_Task,DT_FixedDUR2,RV_OK,TK_Complete,823A-ST-SNT13-1130,Rebar fixing for wall and roof,,,,0,544,0,544,24,32,32,0,,2015-05-23 08:00,2015-06-10 18:00,2017-06-12 18:00,2017-06-12 18:00,,2017-01-01 00:00,2017-01-01 00:00,,,2015-06-06 08:00,2015-06-09 18:00,,,,,PT_Normal,,,,,t/J2z6vyRxmlw6qltK2mDg,493cAAAg00GFMAqUKN3RPA,,,N,544,32,,,2017-01-24 14:43,2017-01-24 15:36,CLEMENTL,CLEMENTL
1520,49429347,751235,10651635,1227199,1,100,N,N,N,CP_Drtn,TT_Task,DT_FixedDUR2,RV_OK,TK_Complete,823A-ST-SNT13-1140,Erect external formwork for wall and roof,,,,0,0,0,208,16,16,0,0,,2015-06-11 08:00,2015-06-12 18:00,2017-06-12 18:00,2017-06-12 18:00,,2017-01-01 00:00,2017-01-01 00:00,,,2015-06-05 08:00,2015-06-06 18:00,,,,,PT_Normal,,,,,+qvgLnhiSByZmmMmkGZtNA,DUdsQqgRNUa7SYbo4r09iQ,,,N,0,0,,,2017-01-24 14:43,2017-01-24 15:36,CLEMENTL,CLEMENTL
1521,49429348,751235,10651635,1227199,1,100,N,N,N,CP_Drtn,TT_Task,DT_FixedDUR2,RV_OK,TK_Complete,823A-ST-SNT13-1150,Concreting for wall and roof (150m3),,,,0,0,0,208,8,16,0,0,,2015-06-13 08:00,2015-06-13 18:00,2017-06-12 18:00,2017-06-12 18:00,,2017-01-01 00:00,2017-01-01 00:00,,,2015-06-08 08:00,2015-06-08 18:00,,,,,PT_Normal,,,,,IfLuHg37S2SJsna4Z//VCQ,J5qihDXqBkypvgmCwI/KUg,,,N,0,0,,,2017-01-24 14:43,2017-01-24 15:36,CLEMENTL,CLEMENTL
1522,49429349,751235,10651635,1239099,1,100,N,N,N,CP_Drtn,TT_Task,DT_FixedDUR2,RV_OK,TK_Complete,823A-ST-SNT13-1160,Curing for wall and roof,,,,0,0,0,224,80,0,0,0,,2015-06-15 08:00,2015-06-25 18:00,2017-06-12 18:00,2017-06-12 18:00,,2017-01-01 00:00,2017-01-01 00:00,,,2015-06-09 08:00,2015-06-18 18:00,,,,,PT_Normal,,,,,U+rZxwn7QwGgl3jvuYadxQ,B4O1JjrBN0KuQmTcsm/dbQ,,,N,0,0,,,2017-01-24 14:43,2017-01-24 15:36,CLEMENTL,CLEMENTL
1523,49429350,751235,10651635,1227199,1,100,N,N,N,CP_Drtn,TT_Task,DT_FixedDUR2,RV_OK,TK_Complete,823A-ST-SNT13-1190,Removal internal falsework and formwork for roof,,,,0,0,0,416,16,32,0,0,,2015-06-29 08:00,2015-06-30 18:00,2017-06-12 18:00,2017-06-12 18:00,,2017-01-01 00:00,2017-01-01 00:00,,,2015-06-19 08:00,2015-06-22 18:00,,,,,PT_Normal,,,,,pXs6lWOQQNWVLmx7rn8YwQ,qz+3HJfgwE2GHi0IOCIjHg,,,N,0,0,,,2017-01-24 14:43,2017-01-24 15:36,CLEMENTL,CLEMENTL
1524,49429351,751235,10651635,1239098,1,100,N,N,N,CP_Drtn,TT_Task,DT_FixedDUR2,RV_OK,TK_Complete,823A-ST-SNT13-1170,Preparation of construction joint for wall and roof,,,,0,0,0,0,8,0,0,0,,2015-06-26 08:00,2015-06-26 18:00,2017-06-12 18:00,2017-06-12 18:00,,2017-01-01 00:00,2017-01-01 00:00,,,2015-06-09 08:00,2015-06-09 18:00,,,,,PT_Normal,,,,,5z83hei1S9ejpNhYV08n6A,XzPCKSrlrkalSkNWGPK65Q,,,N,0,0,,,2017-01-24 14:43,2017-01-24 15:36,CLEMENTL,CLEMENTL
1525,49429352,751235,10651635,1227199,1,100,N,N,N,CP_Drtn,TT_Task,DT_FixedDUR2,RV_OK,TK_Complete,823A-ST-SNT13-1180,Removal external and internal formwork for wall,,,,0,0,0,144,8,16,0,0,,2015-06-27 08:00,2015-06-27 18:00,2017-06-12 18:00,2017-06-12 18:00,,2017-01-01 00:00,2017-01-01 00:00,,,2015-06-10 08:00,2015-06-10 18:00,,,,,PT_Normal,,,,,zP1JvUQ7RRyeeME2dWMZTA,2iPFLOTCjUS11/6iwl+upw,,,N,0,0,,,2017-01-24 14:43,2017-01-24 15:36,CLEMENTL,CLEMENTL
1526,49429353,751235,10651636,1227199,1,100,N,N,N,CP_Drtn,TT_Task,DT_FixedDUR2,RV_OK,TK_Complete,823A-ST-SNT12-1050,Concreting for base slab (127m3),,,,0,0,0,208,8,16,0,0,,2015-04-21 08:00,2015-04-21 18:00,2014-07-24 08:00,2014-07-24 08:00,,2017-01-01 00:00,2017-01-01 00:00,,,2015-06-23 08:00,2015-06-23 18:00,,,,,PT_Normal,,,,,/cgNJ7LcSOWt0AmNRd/Bhg,+yr8O2/QLkyKIN49R3ur+g,,,Y,0,0,,,2017-01-24 14:43,2017-01-24 15:36,CLEMENTL,CLEMENTL
1527,49429354,751235,10651636,1227199,1,100,N,N,N,CP_Drtn,TT_Task,DT_FixedDUR2,RV_OK,TK_Complete,823A-ST-SNT12-1080,Removal of formwork for base slab,,,,0,0,0,72,8,8,0,0,,2015-05-11 08:00,2015-05-11 18:00,2014-07-24 08:00,2014-07-24 08:00,,2017-01-01 00:00,2017-01-01 00:00,,,2015-05-26 08:00,2015-05-26 18:00,,,,,PT_Normal,,,,,wvW10SjgRLKkqev8XBfmgA,09beaPb8JkS/iPNlKlT7Vg,,,Y,0,0,,,2017-01-24 14:43,2017-01-24 15:36,CLEMENTL,CLEMENTL
1528,49429355,751235,10651636,1227199,1,100,N,N,N,CP_Drtn,TT_Task,DT_FixedDUR2,RV_OK,TK_Complete,823A-ST-SNT12-1090,Infill concrete in between D-wall and base slab,,,,0,0,0,128,8,16,0,0,,2015-05-12 08:00,2015-05-12 18:00,2017-06-12 18:00,2017-06-12 18:00,,2017-01-01 00:00,2017-01-01 00:00,,,2015-05-27 08:00,2015-05-27 18:00,,,,,PT_Normal,,,,,LEuSEBdGTXCif8AaC+9awA,tF3h32aTBk2sBJw3lVObPw,,,N,0,0,,,2017-01-24 14:43,2017-01-24 15:36,CLEMENTL,CLEMENTL
1529,49429356,751235,10651636,1227199,1,100,N,N,N,CP_Drtn,TT_Task,DT_FixedDUR2,RV_OK,TK_Complete,823A-ST-SNT12-1110,Removal strut S3,,,,0,0,0,144,32,16,0,0,,2015-05-14 08:00,2015-05-18 18:00,2017-06-12 18:00,2017-06-12 18:00,,2017-01-01 00:00,2017-01-01 00:00,,,2015-05-29 08:00,2015-06-02 18:00,,,,,PT_Normal,,,,,KwC7JEisSFagh4vlwObdWA,qP8qGBXd+EK1ycJRG8iM+w,,,N,0,0,,,2017-01-24 14:43,2017-01-24 15:36,CLEMENTL,CLEMENTL
1530,49429357,751235,10651636,1239098,1,100,N,N,N,CP_Drtn,TT_Task,DT_FixedDUR2,RV_OK,TK_Complete,823A-ST-SNT12-1070,Preparation of construction joint for base slab,,,,0,0,0,0,8,0,0,0,,2015-04-30 08:00,2015-04-30 18:00,2014-07-24 08:00,2014-07-24 08:00,,2017-01-01 00:00,2017-01-01 00:00,,,2015-06-24 08:00,2015-06-24 18:00,,,,,PT_Normal,,,,,sI5z86NBTzaxkKDi+lU2KQ,56neXm5NIE6v/JEFJCvdMw,,,Y,0,0,,,2017-01-24 14:43,2017-01-24 15:36,CLEMENTL,CLEMENTL
1531,49429358,751235,10651636,1239099,1,100,N,N,N,CP_Drtn,TT_Task,DT_FixedDUR2,RV_OK,TK_Complete,823A-ST-SNT12-1100,Curing,,,,0,0,0,224,8,0,0,0,,2015-05-13 08:00,2015-05-13 18:00,2017-06-12 18:00,2017-06-12 18:00,,2017-01-01 00:00,2017-01-01 00:00,,,2015-05-28 08:00,2015-05-28 18:00,,,,,PT_Normal,,,,,Y+uOMgduQ/yLXcSYKYBF/A,uhtxMqG2W0WMaaX4EMAojg,,,N,0,0,,,2017-01-24 14:43,2017-01-24 15:36,CLEMENTL,CLEMENTL
1532,49429359,751235,10651636,1227199,1,100,N,N,N,CP_Drtn,TT_Task,DT_FixedDUR2,RV_OK,TK_Complete,823A-ST-SNT12-1200,Side walkway and cable bracket (204m3),,,,0,1040,0,1040,40,80,80,0,,2015-06-30 08:00,2015-10-06 18:00,2017-06-12 18:00,2017-06-12 18:00,,2017-01-01 00:00,2017-01-01 00:00,,,2015-07-11 08:00,2015-07-16 18:00,,,,,PT_Normal,,,,,/GIM3jSLSHmzQ8Kh9IXfQw,mRWCP6sTKU2fF6FHMv58WA,,,N,1040,80,,,2017-01-24 14:43,2017-01-24 15:36,CLEMENTL,CLEMENTL
1533,49429360,751235,10651636,1227199,1,100,N,N,N,CP_Drtn,TT_Task,DT_FixedDUR2,RV_OK,TK_Complete,823A-ST-SNT12-1120,Erect internal formwork & Falsework for wall and roof,,,,0,0,0,624,32,48,0,0,,2015-05-19 08:00,2015-05-22 18:00,2017-06-12 18:00,2017-06-12 18:00,,2017-01-01 00:00,2017-01-01 00:00,,,2015-06-03 08:00,2015-06-06 18:00,,,,,PT_Normal,,,,,zmWfhCtAQ2ijeVGmrdTE8A,eHQ9GpX9xkG6yKmKgoL8yg,,,N,0,0,,,2017-01-24 14:43,2017-01-24 15:36,CLEMENTL,CLEMENTL
1534,49429361,751235,10651636,1227199,1,100,N,N,N,CP_Drtn,TT_Task,DT_FixedDUR2,RV_OK,TK_Complete,823A-ST-SNT12-1130,Rebar fixing for wall and roof,,,,0,544,0,544,24,32,32,0,,2015-05-23 08:00,2015-06-10 18:00,2017-06-12 18:00,2017-06-12 18:00,,2017-01-01 00:00,2017-01-01 00:00,,,2015-06-08 08:00,2015-06-10 18:00,,,,,PT_Normal,,,,,nW+83T2WR32gGcNQxQEJ0Q,493cAAAg00GFMAqUKN3RPA,,,N,544,32,,,2017-01-24 14:43,2017-01-24 15:36,CLEMENTL,CLEMENTL
1535,49429362,751235,10651636,1227199,1,100,N,N,N,CP_Drtn,TT_Task,DT_FixedDUR2,RV_OK,TK_Complete,823A-ST-SNT12-1140,Erect external formwork for wall and roof,,,,0,0,0,208,16,16,0,0,,2015-06-11 08:00,2015-06-12 18:00,2017-06-12 18:00,2017-06-12 18:00,,2017-01-01 00:00,2017-01-01 00:00,,,2015-06-05 08:00,2015-06-06 18:00,,,,,PT_Normal,,,,,Ag7h2hM8RjulF/UDQ5YUuA,DUdsQqgRNUa7SYbo4r09iQ,,,N,0,0,,,2017-01-24 14:43,2017-01-24 15:36,CLEMENTL,CLEMENTL
1536,49429363,751235,10651636,1227199,1,100,N,N,N,CP_Drtn,TT_Task,DT_FixedDUR2,RV_OK,TK_Complete,823A-ST-SNT12-1150,Concreting for wall and roof (260m3),,,,0,0,0,208,8,16,0,0,,2015-06-13 08:00,2015-06-13 18:00,2017-06-12 18:00,2017-06-12 18:00,,2017-01-01 00:00,2017-01-01 00:00,,,2015-06-08 08:00,2015-06-08 18:00,,,,,PT_Normal,,,,,9m2mPxj3QR6OWbjNrwvaVA,J5qihDXqBkypvgmCwI/KUg,,,N,0,0,,,2017-01-24 14:43,2017-01-24 15:36,CLEMENTL,CLEMENTL
1537,49429364,751235,10651636,1227199,1,100,N,N,N,CP_Drtn,TT_Task,DT_FixedDUR2,RV_OK,TK_Complete,823A-ST-SNT12-1180,Removal external and internal formwork for wall,,,,0,0,0,144,8,16,0,0,,2015-06-27 08:00,2015-06-27 18:00,2017-06-12 18:00,2017-06-12 18:00,,2017-01-01 00:00,2017-01-01 00:00,,,2015-06-10 08:00,2015-06-10 18:00,,,,,PT_Normal,,,,,34RpBdCURoeyI7ORQB+BMg,2iPFLOTCjUS11/6iwl+upw,,,N,0,0,,,2017-01-24 14:43,2017-01-24 15:36,CLEMENTL,CLEMENTL
1538,49429365,751235,10651636,1239099,1,100,N,N,N,CP_Drtn,TT_Task,DT_FixedDUR2,RV_OK,TK_Complete,823A-ST-SNT12-1060,Curing for base slab,,,,0,0,0,224,56,0,0,0,,2015-04-22 08:00,2015-04-29 18:00,2017-06-12 18:00,2017-06-12 18:00,,2017-01-01 00:00,2017-01-01 00:00,,,2015-06-24 08:00,2015-06-30 18:00,,,,,PT_Normal,,,,,iVmXDMWtS6G9lXmlxIgZMw,m50yJHZKpkq/LkRixIv4TA,,,N,0,0,,,2017-01-24 14:43,2017-01-24 15:36,CLEMENTL,CLEMENTL
1539,49429366,751235,10651636,1239099,1,100,N,N,N,CP_Drtn,TT_Task,DT_FixedDUR2,RV_OK,TK_Complete,823A-ST-SNT12-1160,Curing for wall and roof,,,,0,0,0,224,80,0,0,0,,2015-06-15 08:00,2015-06-25 18:00,2017-06-12 18:00,2017-06-12 18:00,,2017-01-01 00:00,2017-01-01 00:00,,,2015-06-09 08:00,2015-06-18 18:00,,,,,PT_Normal,,,,,T9/EqO3pSMKIqlP+5gRRRQ,B4O1JjrBN0KuQmTcsm/dbQ,,,N,0,0,,,2017-01-24 14:43,2017-01-24 15:36,CLEMENTL,CLEMENTL
1540,49429367,751235,10651636,1227199,1,100,N,N,N,CP_Drtn,TT_Task,DT_FixedDUR2,RV_OK,TK_Complete,823A-ST-SNT12-1190,Removal internal falsework and formwork for roof,,,,0,0,0,416,16,32,0,0,,2015-06-29 08:00,2015-06-30 18:00,2017-06-12 18:00,2017-06-12 18:00,,2017-01-01 00:00,2017-01-01 00:00,,,2015-06-19 08:00,2015-06-22 18:00,,,,,PT_Normal,,,,,TUipwKplRt6HM5XOPIx3vA,qz+3HJfgwE2GHi0IOCIjHg,,,N,0,0,,,2017-01-24 14:43,2017-01-24 15:36,CLEMENTL,CLEMENTL
1541,49429368,751235,10651636,1239098,1,100,N,N,N,CP_Drtn,TT_Task,DT_FixedDUR2,RV_OK,TK_Complete,823A-ST-SNT12-1170,Preparation of construction joint for wall and roof,,,,0,0,0,0,8,0,0,0,,2015-06-26 08:00,2015-06-26 18:00,2017-06-12 18:00,2017-06-12 18:00,,2017-01-01 00:00,2017-01-01 00:00,,,2015-06-09 08:00,2015-06-09 18:00,,,,,PT_Normal,,,,,XtQb2Eh6QC60Vob4yUCb7A,XzPCKSrlrkalSkNWGPK65Q,,,N,0,0,,,2017-01-24 14:43,2017-01-24 15:36,CLEMENTL,CLEMENTL
1542,49429369,751235,10651636,1227199,1,100,N,N,N,CP_Drtn,TT_Task,DT_FixedDUR2,RV_OK,TK_Complete,823A-ST-SNT12-1010,Placing of waterproof member T-lock & testing for base slab,,,,0,0,0,64,8,0,0,0,,2015-04-13 08:00,2015-04-13 18:00,2014-07-24 08:00,2014-07-24 08:00,,2017-01-01 00:00,2017-01-01 00:00,,,2015-06-13 08:00,2015-06-13 18:00,,,,,PT_Normal,,,,,AbEjoOweQWinxBvLTqcf3w,yK2PwHrpbUSvcfAPOD8HkQ,,,Y,0,0,,,2017-01-24 14:43,2017-01-24 15:36,CLEMENTL,CLEMENTL
1543,49429370,751235,10651636,1227199,1,100,N,N,N,CP_Drtn,TT_Task,DT_FixedDUR2,RV_OK,TK_Complete,823A-ST-SNT12-1020,Erect external formwork for base slab,,,,0,0,0,104,16,8,0,0,,2015-04-14 08:00,2015-04-15 18:00,2014-07-24 08:00,2014-07-24 08:00,,2017-01-01 00:00,2017-01-01 00:00,,,2015-06-15 08:00,2015-06-16 18:00,,,,,PT_Normal,,,,,V+bnT7fpT4ysXv9CjchnZw,T4lTs/MaJkuil88ltcUQ2A,,,Y,0,0,,,2017-01-24 14:43,2017-01-24 15:36,CLEMENTL,CLEMENTL
1544,49429371,751235,10651636,1227199,1,100,N,N,N,CP_Drtn,TT_Task,DT_FixedDUR2,RV_OK,TK_Complete,823A-ST-SNT12-1040,Erect internal kicker formwork for base slab,,,,0,0,0,288,16,16,0,0,,2015-04-18 08:00,2015-04-20 18:00,2014-07-24 08:00,2014-07-24 08:00,,2017-01-01 00:00,2017-01-01 00:00,,,2015-06-19 08:00,2015-06-22 18:00,,,,,PT_Normal,,,,,PGxlOgBXTdeFh4GMvwOmfw,uQvjViH/40KA1Xy9+SZWug,,,Y,0,0,,,2017-01-24 14:43,2017-01-24 15:36,CLEMENTL,CLEMENTL
1545,49429372,751235,10651636,1227199,1,100,N,N,N,CP_Drtn,TT_Task,DT_FixedDUR2,RV_OK,TK_Complete,823A-ST-SNT12-1030,Rebar fixing for base slab,,,,0,0,0,272,16,16,0,0,,2015-04-16 08:00,2015-04-17 18:00,2014-07-24 08:00,2014-07-24 08:00,,2017-01-01 00:00,2017-01-01 00:00,,,2015-06-17 08:00,2015-06-18 18:00,,,,,PT_Normal,,,,,cytCp0USSG2GPyYeRGZazw,feLIaF0g2E+BRj3fm0vgBg,,,Y,0,0,,,2017-01-24 14:43,2017-01-24 15:36,CLEMENTL,CLEMENTL
1546,49429373,751235,10651637,1227199,1,100,N,N,N,CP_Drtn,TT_Task,DT_FixedDUR2,RV_OK,TK_Complete,823A-ST-SNT8-1010,Erect internal formwork & Falsework for wall and roof,,,,0,0,0,624,32,48,0,0,,2013-02-15 08:00,2013-02-19 18:00,2014-01-05 18:00,2014-01-05 18:00,,2017-01-01 00:00,2017-01-01 00:00,,,2013-06-01 08:00,2013-06-05 18:00,,,,,PT_Normal,,,,,XP01KvstTrO+n+K86T5HiQ,sqf+/JfyrEWaX9qMhN5lVA,,,Y,0,0,,,2017-01-24 14:43,2017-01-24 14:53,CLEMENTL,CLEMENTL
1547,49429374,751235,10651637,1227199,1,100,N,N,N,CP_Drtn,TT_Task,DT_FixedDUR2,RV_OK,TK_Complete,823A-ST-SNT8-1020,Rebar fixing for wall and roof,,,,0,0,0,544,24,32,0,0,,2013-03-11 08:00,2013-03-15 18:00,2014-01-05 18:00,2014-01-05 18:00,,2017-01-01 00:00,2017-01-01 00:00,,,2013-06-06 08:00,2013-06-08 18:00,,,,,PT_Normal,,,,,nzzZrrvoQUSS8Zk/XNOVhQ,RPAMBnauGUKIM33Fpv7KPw,,,Y,0,0,,,2017-01-24 14:43,2017-01-24 14:53,CLEMENTL,CLEMENTL
1548,49429375,751235,10651637,1227199,1,100,N,N,N,CP_Drtn,TT_Task,DT_FixedDUR2,RV_OK,TK_Complete,823A-ST-SNT8-1030,Erect external formwork for wall and roof,,,,0,0,0,208,16,16,0,0,,2013-03-16 08:00,2013-03-21 18:00,2014-01-05 18:00,2014-01-05 18:00,,2017-01-01 00:00,2017-01-01 00:00,,,2013-06-10 08:00,2013-06-11 18:00,,,,,PT_Normal,,,,,2K30uwRaTfGh5VHyXZEJiA,2Y4+XqbZ0kur2nDr+d0sKA,,,Y,0,0,,,2017-01-24 14:43,2017-01-24 14:53,CLEMENTL,CLEMENTL
1549,49429376,751235,10651637,1227199,1,100,N,N,N,CP_Drtn,TT_Task,DT_FixedDUR2,RV_OK,TK_Complete,823A-ST-SNT8-1040,Concreting for wall and roof (412m3),,,,0,0,0,208,8,16,0,0,,2013-03-22 08:00,2013-03-22 18:00,2014-01-05 18:00,2014-01-05 18:00,,2017-01-01 00:00,2017-01-01 00:00,,,2013-06-13 08:00,2013-06-13 18:00,,,,,PT_Normal,,,,,IvmY9/1IR0Wj8ZMQ/NPv8Q,4bNtQxskgkWSPviXIo2LnQ,,,Y,0,0,,,2017-01-24 14:43,2017-01-24 14:53,CLEMENTL,CLEMENTL
1550,49429377,751235,10651637,1227199,1,100,N,N,N,CP_Drtn,TT_Task,DT_FixedDUR2,RV_OK,TK_Complete,823A-ST-SNT8-1070,Removal external and internal formwork for wall,,,,0,0,0,144,8,16,0,0,,2013-03-26 08:00,2013-03-26 18:00,2014-01-05 18:00,2014-01-05 18:00,,2017-01-01 00:00,2017-01-01 00:00,,,2013-06-15 08:00,2013-06-15 18:00,,,,,PT_Normal,,,,,QPVBtL5cTGKsyi+mSCaZKw,pGOPlWVVo0GMw5bSPHyrAA,,,Y,0,0,,,2017-01-24 14:43,2017-01-24 14:53,CLEMENTL,CLEMENTL
1551,49429378,751235,10651637,1239099,1,100,N,N,N,CP_Drtn,TT_Task,DT_FixedDUR2,RV_OK,TK_Complete,823A-ST-SNT8-1050,Curing for wall and roof,,,,0,0,0,224,80,0,0,0,,2013-03-23 08:00,2013-03-23 18:00,2017-06-12 18:00,2017-06-12 18:00,,2017-01-01 00:00,2017-01-01 00:00,,,2013-06-14 08:00,2013-06-23 18:00,,,,,PT_Normal,,,,,mQ0KHkYASTuc5JbuDWEGQQ,J1AYIPTc90KcsfQ6semUSg,,,N,0,0,,,2017-01-24 14:43,2017-01-24 15:36,CLEMENTL,CLEMENTL
1552,49429379,751235,10651637,1227199,1,100,N,N,N,CP_Drtn,TT_Task,DT_FixedDUR2,RV_OK,TK_Complete,823A-ST-SNT8-1080,Removal internal falsework and formwork for roof,,,,0,0,0,416,16,32,0,0,,2013-03-27 08:00,2013-03-28 18:00,2017-06-12 18:00,2017-06-12 18:00,,2017-01-01 00:00,2017-01-01 00:00,,,2013-06-24 08:00,2013-06-25 18:00,,,,,PT_Normal,,,,,EQmZ2TohRGGYl27HtQnlSQ,5qrwDxPP90S6I58uqu9NJw,,,N,0,0,,,2017-01-24 14:43,2017-01-24 15:36,CLEMENTL,CLEMENTL
1553,49429380,751235,10651637,1239098,1,100,N,N,N,CP_Drtn,TT_Task,DT_FixedDUR2,RV_OK,TK_Complete,823A-ST-SNT8-1060,Preparation of construction joint for wall and roof,,,,0,0,0,0,8,0,0,0,,2013-03-25 08:00,2013-03-25 18:00,2014-01-05 18:00,2014-01-05 18:00,,2017-01-01 00:00,2017-01-01 00:00,,,2013-06-14 08:00,2013-06-14 18:00,,,,,PT_Normal,,,,,mfPs6AjcRH2fQyjG5Es60w,qgK7oJNkjEW305U2EodvUg,,,Y,0,0,,,2017-01-24 14:43,2017-01-24 14:53,CLEMENTL,CLEMENTL
1554,49429381,751235,10651637,1227199,1,100,N,N,N,CP_Drtn,TT_Task,DT_FixedDUR2,RV_OK,TK_Complete,823A-ST-SNT8-1090,Side walkway and cable bracket (204m3),,,,0,1040,0,1040,40,80,80,0,,2013-07-29 08:00,2014-03-03 18:00,2017-06-12 18:00,2017-06-12 18:00,,2017-01-01 00:00,2017-01-01 00:00,,,2014-01-27 08:00,2014-02-04 18:00,,,,,PT_Normal,,,,,vgVzPRAfQ0y75N+elNVPkQ,BxRzuGiuPEykqrdTB/LZNw,,,N,1040,80,,,2017-01-24 14:43,2017-01-24 15:36,CLEMENTL,CLEMENTL
1555,49429382,751235,10651638,1227199,1,100,N,N,N,CP_Drtn,TT_Task,DT_FixedDUR2,RV_OK,TK_Complete,823A-ST-SNT17-1020,Erect external formwork for base slab,,,,0,0,0,104,16,8,0,0,,2013-10-17 08:00,2013-10-21 18:00,2017-06-12 18:00,2017-06-12 18:00,,2017-01-01 00:00,2017-01-01 00:00,,,2013-12-12 08:00,2013-12-13 18:00,,,,,PT_Normal,,,,,InRq+c3tRES5gfVbvtMjEg,T4lTs/MaJkuil88ltcUQ2A,,,N,0,0,,,2017-01-24 14:43,2017-01-24 15:36,CLEMENTL,CLEMENTL
1556,49429383,751235,10651638,1227199,1,100,N,N,N,CP_Drtn,TT_Task,DT_FixedDUR2,RV_OK,TK_Complete,823A-ST-SNT17-1030,Rebar fixing for base slab,,,,0,0,0,272,16,16,0,0,,2013-10-22 08:00,2013-10-25 18:00,2017-06-12 18:00,2017-06-12 18:00,,2017-01-01 00:00,2017-01-01 00:00,,,2013-12-07 08:00,2013-12-09 18:00,,,,,PT_Normal,,,,,zwzbGqVqQ3WN7LwBHyGIag,feLIaF0g2E+BRj3fm0vgBg,,,N,0,0,,,2017-01-24 14:43,2017-01-24 15:36,CLEMENTL,CLEMENTL
1557,49429384,751235,10651638,1227199,1,100,N,N,N,CP_Drtn,TT_Task,DT_FixedDUR2,RV_OK,TK_Complete,823A-ST-SNT17-1040,Erect internal kicker formwork for base slab,,,,0,0,0,288,16,16,0,0,,2013-11-07 08:00,2013-11-08 18:00,2017-06-12 18:00,2017-06-12 18:00,,2017-01-01 00:00,2017-01-01 00:00,,,2013-12-05 08:00,2013-12-06 18:00,,,,,PT_Normal,,,,,7xm22lUlQdu03qkvVIBVgQ,uQvjViH/40KA1Xy9+SZWug,,,N,0,0,,,2017-01-24 14:43,2017-01-24 15:36,CLEMENTL,CLEMENTL
1558,49429385,751235,10651638,1227199,1,100,N,N,N,CP_Drtn,TT_Task,DT_FixedDUR2,RV_OK,TK_Complete,823A-ST-SNT17-1050,Concreting for base slab (70m3),,,,0,0,0,208,8,16,0,0,,2013-11-09 08:00,2013-11-09 18:00,2017-06-12 18:00,2017-06-12 18:00,,2017-01-01 00:00,2017-01-01 00:00,,,2013-12-07 08:00,2013-12-07 18:00,,,,,PT_Normal,,,,,Rv3jk0s4SMeSdA+EQmp9LQ,+yr8O2/QLkyKIN49R3ur+g,,,N,0,0,,,2017-01-24 14:43,2017-01-24 15:36,CLEMENTL,CLEMENTL
1559,49429386,751235,10651638,1239099,1,100,N,N,N,CP_Drtn,TT_Task,DT_FixedDUR2,RV_OK,TK_Complete,823A-ST-SNT17-1060,Curing for base slab,,,,0,0,0,224,56,0,0,0,,2013-11-11 08:00,2013-11-18 18:00,2017-06-12 18:00,2017-06-12 18:00,,2017-01-01 00:00,2017-01-01 00:00,,,2013-12-08 08:00,2013-12-14 18:00,,,,,PT_Normal,,,,,aOifwOZPQCiQmuljV9brsA,m50yJHZKpkq/LkRixIv4TA,,,N,0,0,,,2017-01-24 14:43,2017-01-24 15:36,CLEMENTL,CLEMENTL
1560,49429387,751235,10651638,1227199,1,100,N,N,N,CP_Drtn,TT_Task,DT_FixedDUR2,RV_OK,TK_Complete,823A-ST-SNT17-1080,Removal of formwork for base slab,,,,0,0,0,72,8,8,0,0,,2013-11-13 08:00,2013-11-13 18:00,2017-06-12 18:00,2017-06-12 18:00,,2017-01-01 00:00,2017-01-01 00:00,,,2013-12-10 08:00,2013-12-10 18:00,,,,,PT_Normal,,,,,ghiMssT9STSsaxZf4C4sTA,09beaPb8JkS/iPNlKlT7Vg,,,N,0,0,,,2017-01-24 14:43,2017-01-24 15:36,CLEMENTL,CLEMENTL
1561,49429388,751235,10651638,1227199,1,100,N,N,N,CP_Drtn,TT_Task,DT_FixedDUR2,RV_OK,TK_Complete,823A-ST-SNT17-1090,Infill concrete in between D-wall and base slab,,,,0,0,0,128,8,16,0,0,,2013-11-14 08:00,2013-11-14 18:00,2017-06-12 18:00,2017-06-12 18:00,,2017-01-01 00:00,2017-01-01 00:00,,,2013-12-11 08:00,2013-12-11 18:00,,,,,PT_Normal,,,,,PL5JJjgcTSC/0vrpN/3AlQ,tF3h32aTBk2sBJw3lVObPw,,,N,0,0,,,2017-01-24 14:43,2017-01-24 15:36,CLEMENTL,CLEMENTL
1562,49429389,751235,10651638,1227199,1,100,N,N,N,CP_Drtn,TT_Task,DT_FixedDUR2,RV_OK,TK_Complete,823A-ST-SNT17-1110,Removal strut S3,,,,0,0,0,144,32,16,0,0,,2013-12-06 08:00,2013-12-10 18:00,2017-06-12 18:00,2017-06-12 18:00,,2017-01-01 00:00,2017-01-01 00:00,,,2013-12-06 08:00,2013-12-10 18:00,,,,,PT_Normal,,,,,O7TxA9BrS6OzUssBho973A,qP8qGBXd+EK1ycJRG8iM+w,,,N,0,0,,,2017-01-24 14:43,2017-01-24 15:36,CLEMENTL,CLEMENTL
1563,49429390,751235,10651638,1239098,1,100,N,N,N,CP_Drtn,TT_Task,DT_FixedDUR2,RV_OK,TK_Complete,823A-ST-SNT17-1070,Preparation of construction joint for base slab,,,,0,0,0,0,8,0,0,0,,2013-11-12 08:00,2013-11-12 18:00,2017-06-12 18:00,2017-06-12 18:00,,2017-01-01 00:00,2017-01-01 00:00,,,2013-12-09 08:00,2013-12-09 18:00,,,,,PT_Normal,,,,,LmTC24TwSKix1cxeh18+fg,56neXm5NIE6v/JEFJCvdMw,,,N,0,0,,,2017-01-24 14:43,2017-01-24 15:36,CLEMENTL,CLEMENTL
1564,49429391,751235,10651638,1239099,1,100,N,N,N,CP_Drtn,TT_Task,DT_FixedDUR2,RV_OK,TK_Complete,823A-ST-SNT17-1100,Curing,,,,0,0,0,224,8,0,0,0,,2013-11-19 08:00,2013-11-19 18:00,2017-06-12 18:00,2017-06-12 18:00,,2017-01-01 00:00,2017-01-01 00:00,,,2013-12-15 08:00,2013-12-15 18:00,,,,,PT_Normal,,,,,kWlL+X/UTWGbsUt/yai0Ig,uhtxMqG2W0WMaaX4EMAojg,,,N,0,0,,,2017-01-24 14:43,2017-01-24 15:36,CLEMENTL,CLEMENTL
1565,49429392,751235,10651638,1227199,1,100,N,N,N,CP_Drtn,TT_Task,DT_FixedDUR2,RV_OK,TK_Complete,823A-ST-SNT17-1200,Side walkway and cable bracket (204m3),,,,0,1040,0,1040,40,80,80,0,,2014-05-23 08:00,2014-12-03 18:00,2017-06-12 18:00,2017-06-12 18:00,,2017-01-01 00:00,2017-01-01 00:00,,,2014-05-29 08:00,2014-06-04 18:00,,,,,PT_Normal,,,,,KofVShn/TweBQjUiHfSqDQ,mRWCP6sTKU2fF6FHMv58WA,,,N,1040,80,,,2017-01-24 14:43,2017-01-24 15:36,CLEMENTL,CLEMENTL
1566,49429393,751235,10651638,1227199,1,100,N,N,N,CP_Drtn,TT_Task,DT_FixedDUR2,RV_OK,TK_Complete,823A-ST-SNT17-1120,Erect internal formwork & Falsework for wall and roof,,,,0,0,0,624,32,48,0,0,,2013-12-11 08:00,2013-12-14 18:00,2017-06-12 18:00,2017-06-12 18:00,,2017-01-01 00:00,2017-01-01 00:00,,,2014-02-12 08:00,2014-02-15 18:00,,,,,PT_Normal,,,,,avDOnRAQR/O+oMov15BX8w,eHQ9GpX9xkG6yKmKgoL8yg,,,N,0,0,,,2017-01-24 14:43,2017-01-24 15:36,CLEMENTL,CLEMENTL
1567,49429394,751235,10651638,1227199,1,100,N,N,N,CP_Drtn,TT_Task,DT_FixedDUR2,RV_OK,TK_Complete,823A-ST-SNT17-1130,Rebar fixing for wall and roof,,,,0,544,0,544,24,32,32,0,,2013-12-16 08:00,2014-01-02 18:00,2017-06-12 18:00,2017-06-12 18:00,,2017-01-01 00:00,2017-01-01 00:00,,,2014-02-17 08:00,2014-02-19 18:00,,,,,PT_Normal,,,,,FSRhleATRVGolvVya271TQ,493cAAAg00GFMAqUKN3RPA,,,N,544,32,,,2017-01-24 14:43,2017-01-24 15:36,CLEMENTL,CLEMENTL
1568,49429395,751235,10651638,1227199,1,100,N,N,N,CP_Drtn,TT_Task,DT_FixedDUR2,RV_OK,TK_Complete,823A-ST-SNT17-1010,Placing of waterproof member T-lock & testing for base slab,,,,0,0,0,64,8,0,0,0,,2013-10-17 08:00,2013-10-21 18:00,2017-06-12 18:00,2017-06-12 18:00,,2017-01-01 00:00,2017-01-01 00:00,,,2013-12-11 08:00,2013-12-11 18:00,,,,,PT_Normal,,,,,V01Q/NDMSkCnVMtTnDiAKg,yK2PwHrpbUSvcfAPOD8HkQ,,,N,0,0,,,2017-01-24 14:43,2017-01-24 15:36,CLEMENTL,CLEMENTL
1569,49429396,751235,10651638,1227199,1,100,N,N,N,CP_Drtn,TT_Task,DT_FixedDUR2,RV_OK,TK_Complete,823A-ST-SNT17-1140,Erect external formwork for wall and roof,,,,0,0,0,208,16,16,0,0,,2014-01-03 08:00,2014-01-10 18:00,2017-06-12 18:00,2017-06-12 18:00,,2017-01-01 00:00,2017-01-01 00:00,,,2014-02-28 13:48,2014-03-03 13:48,,,,,PT_Normal,,,,,VGVrzRa1Sr2BVybFz6WiNw,DUdsQqgRNUa7SYbo4r09iQ,,,N,0,0,,,2017-01-24 14:43,2017-01-24 15:36,CLEMENTL,CLEMENTL
1570,49429397,751235,10651638,1227199,1,100,N,N,N,CP_Drtn,TT_Task,DT_FixedDUR2,RV_OK,TK_Complete,823A-ST-SNT17-1180,Removal external and internal formwork for wall,,,,0,0,0,144,8,16,0,0,,2014-01-13 08:00,2014-01-13 18:00,2017-06-12 18:00,2017-06-12 18:00,,2017-01-01 00:00,2017-01-01 00:00,,,2014-03-05 13:48,2014-03-06 13:48,,,,,PT_Normal,,,,,hfyd4hi2T2CLTHwmwYb+SA,2iPFLOTCjUS11/6iwl+upw,,,N,0,0,,,2017-01-24 14:43,2017-01-24 15:36,CLEMENTL,CLEMENTL
1571,49429398,751235,10651638,1239099,1,100,N,N,N,CP_Drtn,TT_Task,DT_FixedDUR2,RV_OK,TK_Complete,823A-ST-SNT17-1160,Curing for wall and roof,,,,0,0,0,224,80,0,0,0,,2014-01-13 08:00,2014-01-23 18:00,2017-06-12 18:00,2017-06-12 18:00,,2017-01-01 00:00,2017-01-01 00:00,,,2014-03-04 13:48,2014-03-14 13:48,,,,,PT_Normal,,,,,GqZiXwwDRhuq8nZrmUocFw,B4O1JjrBN0KuQmTcsm/dbQ,,,N,0,0,,,2017-01-24 14:43,2017-01-24 15:36,CLEMENTL,CLEMENTL
1572,49429399,751235,10651638,1227199,1,100,N,N,N,CP_Drtn,TT_Task,DT_FixedDUR2,RV_OK,TK_Complete,823A-ST-SNT17-1190,Removal internal falsework and formwork for roof,,,,0,0,0,416,16,32,0,0,,2014-01-24 08:00,2014-01-25 18:00,2017-06-12 18:00,2017-06-12 18:00,,2017-01-01 00:00,2017-01-01 00:00,,,2014-03-14 13:48,2014-03-17 13:48,,,,,PT_Normal,,,,,4CA9S9TOSsis1hbbAW1XqQ,qz+3HJfgwE2GHi0IOCIjHg,,,N,0,0,,,2017-01-24 14:43,2017-01-24 15:36,CLEMENTL,CLEMENTL
1573,49429400,751235,10651638,1239098,1,100,N,N,N,CP_Drtn,TT_Task,DT_FixedDUR2,RV_OK,TK_Complete,823A-ST-SNT17-1170,Preparation of construction joint for wall and roof,,,,0,0,0,0,8,0,0,0,,2014-01-11 08:00,2014-01-11 18:00,2017-06-12 18:00,2017-06-12 18:00,,2017-01-01 00:00,2017-01-01 00:00,,,2014-03-04 13:48,2014-03-05 13:48,,,,,PT_Normal,,,,,CaO83lpWRh2ijo1DX859YA,XzPCKSrlrkalSkNWGPK65Q,,,N,0,0,,,2017-01-24 14:43,2017-01-24 15:36,CLEMENTL,CLEMENTL
1574,49429401,751235,10651638,1227199,1,100,N,N,N,CP_Drtn,TT_Task,DT_FixedDUR2,RV_OK,TK_Complete,823A-ST-SNT17-1150,Concreting for wall and roof (200m3),,,,0,0,0,208,8,16,0,0,,2014-01-11 08:00,2014-01-11 18:00,2017-06-12 18:00,2017-06-12 18:00,,2017-01-01 00:00,2017-01-01 00:00,,,2014-03-03 13:48,2014-03-04 13:48,,,,,PT_Normal,,,,,zr/J7xtSSBCjMAdB7NpZiw,J5qihDXqBkypvgmCwI/KUg,,,N,0,0,,,2017-01-24 14:43,2017-01-24 15:36,CLEMENTL,CLEMENTL
1575,49429402,751235,10651639,1227199,1,100,N,N,N,CP_Drtn,TT_Task,DT_FixedDUR2,RV_OK,TK_Complete,823A-ST-SNT5-1090,Side walkway and cable bracket (204m3),,,,0,0,0,1040,40,80,0,0,,2014-03-11 08:00,2014-03-15 18:00,2017-06-12 18:00,2017-06-12 18:00,,2017-01-01 00:00,2017-01-01 00:00,,,2014-03-11 08:00,2014-03-15 18:00,,,,,PT_Normal,,,,,HGNPvFymQj+cYW1t3x5A3g,vVCqRLe8QEi5cZr9IA2sFA,,,N,0,0,,,2017-01-24 14:43,2017-01-24 15:36,CLEMENTL,CLEMENTL
1576,49429403,751235,10651639,1227199,1,100,N,N,N,CP_Drtn,TT_Task,DT_FixedDUR2,RV_OK,TK_Complete,823A-ST-SNT5-1010,Erect internal formwork & Falsework for wall and roof,,,,0,624,0,624,32,48,48,0,,2013-10-24 08:00,2013-11-16 08:00,2014-01-05 18:00,2014-01-05 18:00,,2017-01-01 00:00,2017-01-01 00:00,,,2013-12-30 08:00,2014-01-03 18:00,,,,,PT_Normal,,,,,ObBIYX/TRCO5nMS3JwPB3Q,w8J5bHuoNkSfWNjCpnpNqA,,,N,624,48,,,2017-01-24 14:43,2017-01-24 14:53,CLEMENTL,CLEMENTL
1577,49429404,751235,10651639,1227199,1,100,N,N,N,CP_Drtn,TT_Task,DT_FixedDUR2,RV_OK,TK_Complete,823A-ST-SNT5-1020,Rebar fixing for wall and roof,,,,0,0,0,544,24,32,0,0,,2013-11-18 08:00,2013-11-20 18:00,2014-01-05 18:00,2014-01-05 18:00,,2017-01-01 00:00,2017-01-01 00:00,,,2013-12-30 08:00,2014-01-02 18:00,,,,,PT_Normal,,,,,oC7qaw5aQEOw30m/SRgk/g,4CZy3fjIiU+UpfmLFq8dAQ,,,N,0,0,,,2017-01-24 14:43,2017-01-24 14:53,CLEMENTL,CLEMENTL
1578,49429405,751235,10651639,1227199,1,100,N,N,N,CP_Drtn,TT_Task,DT_FixedDUR2,RV_OK,TK_Complete,823A-ST-SNT5-1030,Erect external formwork for wall and roof,,,,0,0,0,208,16,16,0,0,,2013-11-21 08:00,2013-11-22 18:00,2014-01-05 18:00,2014-01-05 18:00,,2017-01-01 00:00,2017-01-01 00:00,,,2014-01-03 08:00,2014-01-04 18:00,,,,,PT_Normal,,,,,iab3bAl+SleBZ84MxxpoZQ,Wfit95I3tk2PIxdz0o+aCQ,,,N,0,0,,,2017-01-24 14:43,2017-01-24 14:53,CLEMENTL,CLEMENTL
1579,49429406,751235,10651639,1227199,1,100,N,N,N,CP_Drtn,TT_Task,DT_FixedDUR2,RV_OK,TK_Complete,823A-ST-SNT5-1040,Concreting for wall and roof (215m3),,,,0,0,0,208,8,16,0,0,,2013-11-23 08:00,2013-11-23 18:00,2014-01-05 18:00,2014-01-05 18:00,,2017-01-01 00:00,2017-01-01 00:00,,,2014-01-06 08:00,2014-01-06 18:00,,,,,PT_Normal,,,,,KC/NFH/PR+eT9sQjS2RTEA,ypbKOqEkNE+yvWUCI8Idsw,,,N,0,0,,,2017-01-24 14:43,2017-01-24 14:53,CLEMENTL,CLEMENTL
1580,49429407,751235,10651639,1227199,1,100,N,N,N,CP_Drtn,TT_Task,DT_FixedDUR2,RV_OK,TK_Complete,823A-ST-SNT5-1070,Removal external and internal formwork for wall,,,,0,0,0,144,8,16,0,0,,2013-11-26 08:00,2013-11-26 18:00,2014-01-05 18:00,2014-01-05 18:00,,2017-01-01 00:00,2017-01-01 00:00,,,2014-01-08 08:00,2014-01-08 18:00,,,,,PT_Normal,,,,,sVmlWHSmTm29vy2SjwTSMA,Ct+N8ZnWSUeHRy0N3RAb6Q,,,N,0,0,,,2017-01-24 14:43,2017-01-24 14:53,CLEMENTL,CLEMENTL
1581,49429408,751235,10651639,1239099,1,100,N,N,N,CP_Drtn,TT_Task,DT_FixedDUR2,RV_OK,TK_Complete,823A-ST-SNT5-1050,Curing for wall and roof,,,,0,224,0,224,80,0,0,0,,2013-11-25 08:00,2013-12-05 18:00,2017-06-12 18:00,2017-06-12 18:00,,2017-01-01 00:00,2017-01-01 00:00,,,2014-01-07 08:00,2014-01-16 18:00,,,,,PT_Normal,,,,,hIJVJBxBRKe4CHNu800tmg,pXL10BWvbkmpcxlqWQVgGg,,,N,224,0,,,2017-01-24 14:43,2017-01-24 15:36,CLEMENTL,CLEMENTL
1582,49429409,751235,10651639,1227199,1,100,N,N,N,CP_Drtn,TT_Task,DT_FixedDUR2,RV_OK,TK_Complete,823A-ST-SNT5-1080,Removal internal falsework and formwork for roof,,,,0,0,0,416,16,32,0,0,,2013-12-06 08:00,2013-12-07 18:00,2017-06-12 18:00,2017-06-12 18:00,,2017-01-01 00:00,2017-01-01 00:00,,,2014-01-13 08:00,2014-01-14 18:00,,,,,PT_Normal,,,,,+oj32v3+S6Oz209alyQ7Pg,YXMHosL9L0mdRUMmJnXB2g,,,N,0,0,,,2017-01-24 14:43,2017-01-24 15:36,CLEMENTL,CLEMENTL
1583,49429410,751235,10651639,1239098,1,100,N,N,N,CP_Drtn,TT_Task,DT_FixedDUR2,RV_OK,TK_Complete,823A-ST-SNT5-1060,Preparation of construction joint for wall and roof,,,,0,0,0,0,8,0,0,0,,2013-11-25 08:00,2013-11-25 18:00,2014-01-05 18:00,2014-01-05 18:00,,2017-01-01 00:00,2017-01-01 00:00,,,2014-01-07 08:00,2014-01-07 18:00,,,,,PT_Normal,,,,,nuQQhJrBRo2CCM+m8cRQ1Q,gTXmoGAH0Een+w11aXZ4TQ,,,N,0,0,,,2017-01-24 14:43,2017-01-24 14:53,CLEMENTL,CLEMENTL
1584,49429411,751235,10651640,1227199,1,100,N,N,N,CP_Drtn,TT_Task,DT_FixedDUR2,RV_OK,TK_Complete,823A-ST-SN-DW-1030,D-wall construction (4741m3),,,,0,20384,0,20384,784,3136,3136,0,,2012-02-16 08:00,2012-06-15 18:00,2014-07-24 08:00,2014-07-24 08:00,,2017-01-01 00:00,2017-01-01 00:00,,,2012-02-16 08:00,2012-06-15 18:00,,,,,PT_Normal,,,,,a1NxZK7cS3m1NTMMygEP6w,hM/CBWxDXEOirdzZNSpBng,,,Y,20384,3136,,,2017-01-24 14:43,2017-01-24 15:36,CLEMENTL,CLEMENTL
1585,49429412,751235,10651640,1227199,1,100,N,N,N,CP_Drtn,TT_Task,DT_FixedDUR2,RV_OK,TK_Complete,823A-ST-SN-DW-1040,Shear pin and pumping test,,,,0,3200,0,3200,1216,2400,2400,0,,2012-06-16 08:00,2012-12-08 18:00,2014-07-24 08:00,2014-07-24 08:00,,2017-01-01 00:00,2017-01-01 00:00,,,2012-06-16 08:00,2012-12-15 18:00,,,,,PT_Normal,,,,,JoQAarhzTWiZFAvV+OeDCw,Gv8wBVUJn0SwRXpg2zrJ1Q,,,Y,3200,2400,,,2017-01-24 14:43,2017-01-24 15:36,CLEMENTL,CLEMENTL
1586,49429413,751235,10651640,1239098,1,100,N,N,N,CP_Drtn,TT_Task,DT_FixedDUR2,RV_OK,TK_Complete,823A-ST-SN-DW-1020,D-wall design review,,,,0,0,0,0,104,0,0,0,,2012-02-01 08:00,2012-02-15 18:00,2014-07-24 08:00,2014-07-24 08:00,,2017-01-01 00:00,2017-01-01 00:00,,,2012-02-01 08:00,2012-02-15 18:00,,,,,PT_Normal,,,,,9R5rZKTxQm+dL42RhXmSfg,,,,Y,0,0,,,2017-01-24 14:43,2017-01-24 15:36,CLEMENTL,CLEMENTL
1587,49429414,751235,10651640,1227199,1,100,N,N,N,CP_Drtn,TT_Task,DT_FixedDUR2,RV_OK,TK_Complete,823A-ST-SN-DW-1010,Pre-drilling and guidewall,,,,0,5936,0,5936,424,1272,1272,0,,2011-11-24 08:00,2012-01-31 18:00,2014-07-24 08:00,2014-07-24 08:00,,2017-01-01 00:00,2017-01-01 00:00,,,2011-11-24 08:00,2012-01-31 18:00,,,,,PT_Normal,,,,,9+G/CwSeTVmGldFJMFsiGA,hjDlH9mjk0m0hJ3PzNTC3A,,,Y,5936,1272,,,2017-01-24 14:43,2017-01-24 15:36,CLEMENTL,CLEMENTL
1588,49429415,751235,10651641,1227199,1,100,N,N,N,CP_Drtn,TT_Task,DT_FixedDUR2,RV_OK,TK_Complete,823A-ST-SN-ELS-1020,Design temporary bridge and approval,,,,0,0,0,0,480,0,0,0,,2014-08-01 08:00,2014-09-01 18:00,2014-07-24 08:00,2014-07-24 08:00,,2017-01-01 00:00,2017-01-01 00:00,,,2014-09-01 08:00,2014-11-12 18:00,,,,,PT_Normal,,,,,rCBdDROFSDqdCvwoRP8xrA,,,,Y,0,0,,,2017-01-24 14:43,2017-01-24 15:36,CLEMENTL,CLEMENTL
1589,49429416,751235,10651641,1227199,1,100,N,N,N,CP_Drtn,TT_Task,DT_FixedDUR2,RV_OK,TK_Complete,823A-ST-SN-ELS-1030,Application of tree transplant,,,,0,0,0,0,952,0,0,0,,2013-01-03 08:00,2014-09-01 18:00,2014-07-24 08:00,2014-07-24 08:00,,2017-01-01 00:00,2017-01-01 00:00,,,2013-06-01 08:00,2013-10-23 18:00,,,,,PT_Normal,,,,,VsmP1PUTSA+EIAccVZDwlA,,,,Y,0,0,,,2017-01-24 14:43,2017-01-24 15:36,CLEMENTL,CLEMENTL
1590,49429417,751235,10651641,1227199,1,100,N,N,N,CP_Drtn,TT_Task,DT_FixedDUR2,RV_OK,TK_Complete,823A-ST-SN-ELS-1040,Tree transplant,,,,0,0,0,0,192,0,0,0,,2014-09-02 08:00,2014-09-30 18:00,2014-07-24 08:00,2014-07-24 08:00,,2017-01-01 00:00,2017-01-01 00:00,,,2014-10-14 08:00,2014-11-10 18:00,,,,,PT_Normal,,,,,QDcE6HeLRM+dS+qnB0iwDA,,,,Y,0,0,,,2017-01-24 14:43,2017-01-24 15:36,CLEMENTL,CLEMENTL
1591,49429418,751235,10651641,1227199,1,100,N,N,N,CP_Drtn,TT_Task,DT_FixedDUR2,RV_OK,TK_Complete,823A-ST-SN-ELS-1010,"ELS works to formation level from SN16 to SN19 (soil: 8,700m3 @350m3/day, Install S1 to S3 strut 5 days/layer)",268571,,,0,3280,0,3280,328,5248,5248,0,,2013-05-08 08:00,2013-10-18 18:00,2017-06-12 18:00,2017-06-12 18:00,,2017-01-01 00:00,2017-01-01 00:00,,,2013-09-25 08:00,2013-11-13 18:00,,,,,PT_Normal,,,,,kLY6uNhGSweqWQy1tA6bmA,LUUML3wBsE22m3H8DBvctg,,,N,3280,5248,,,2017-01-24 14:43,2017-01-24 15:36,CLEMENTL,CLEMENTL
1592,49429419,751235,10651641,1227199,1,100,N,N,N,CP_Drtn,TT_Task,DT_FixedDUR2,RV_OK,TK_Complete,823A-ST-SN-ELS-1060,"ELS works to formation level from SN10 to SN15 (soil: 9,455m3 @330m3/day, install S1 to S3 strut 5 days/layer)",268562,,,0,3600,0,3600,360,5760,5760,0,,2014-11-24 08:00,2015-06-23 18:00,2014-07-24 08:00,2014-07-24 08:00,,2017-01-01 00:00,2017-01-01 00:00,,,2014-11-24 08:00,2015-01-17 18:00,,,,,PT_Normal,,,,,arh1He36QfWYRrzS0ADJog,Wu4ch3sMdEOYoiSCLLGwYg,,,Y,3600,5760,,,2017-01-24 14:43,2017-01-24 15:36,CLEMENTL,CLEMENTL
1593,49429420,751235,10651641,1227199,1,100,N,N,N,CP_Drtn,TT_Task,DT_FixedDUR2,RV_OK,TK_Complete,823A-ST-SN-ELS-1050,Erection temporary bridge deck,,,,0,0,0,0,440,0,0,0,,2014-10-03 08:00,2014-10-31 18:00,2014-07-24 08:00,2014-07-24 08:00,,2017-01-01 00:00,2017-01-01 00:00,,,2014-10-03 08:00,2014-12-05 18:00,,,,,PT_Normal,,,,,ptUpU9IiTxySKaJ9j68G+g,,,,Y,0,0,,,2017-01-24 14:43,2017-01-24 15:36,CLEMENTL,CLEMENTL
1594,49429421,751235,10651643,1227199,1,100,N,N,N,CP_Drtn,TT_Task,DT_FixedDUR2,RV_OK,TK_Complete,823A-ST-SNT-BF3-1020,Backfilling between D-wall and 0.5m below S2 (180m3),,,,0,160,0,160,32,64,64,0,,2015-07-02 08:00,2015-12-24 18:00,2014-11-11 08:00,2014-11-11 08:00,,2017-01-01 00:00,2017-01-01 00:00,,,2015-08-14 08:00,2015-08-18 18:00,,,,,PT_Normal,,,,,5f78pTxwTXu9eZ1kFsSKig,hO3szKCXGkOfF+uuJRHQmQ,,,N,160,64,,,2017-01-24 14:43,2017-01-24 15:36,CLEMENTL,CLEMENTL
1595,49429422,751235,10651643,1227199,1,100,N,N,N,CP_Drtn,TT_Task,DT_FixedDUR2,RV_OK,TK_Complete,823A-ST-SNT-BF3-1010,Spray waterproofing member & testing (Wall & Roof),,,,0,80,0,80,48,0,0,0,,2015-07-02 08:00,2015-10-06 18:00,2014-11-11 08:00,2014-11-11 08:00,,2017-01-01 00:00,2017-01-01 00:00,,,2015-08-07 08:00,2015-08-13 18:00,,,,,PT_Normal,,,,,Z61JwfX7RVyJeN+FlbB0Gg,tHxYALgn0EOWU1Xq1YFfZA,,,N,80,0,,,2017-01-24 14:43,2017-01-24 15:36,CLEMENTL,CLEMENTL
1596,49429423,751235,10651643,1227199,1,100,N,N,N,CP_Drtn,TT_Task,DT_FixedDUR2,RV_OK,TK_Complete,823A-ST-SNT-BF3-1040,Removal of S2,,,,0,224,0,224,32,32,32,0,,2015-12-28 08:00,2016-01-04 18:00,2014-11-11 08:00,2014-11-11 08:00,,2017-01-01 00:00,2017-01-01 00:00,,,2015-12-07 08:00,2015-12-10 18:00,,,,,PT_Normal,,,,,S6gDDWrnRf+S16nFZSdDhA,JJrmS1U9pUCrziis0OHJXg,,,N,224,32,,,2017-01-24 14:43,2017-01-24 15:36,CLEMENTL,CLEMENTL
1597,49429424,751235,10651643,1227199,1,100,N,N,N,CP_Drtn,TT_Task,DT_FixedDUR2,RV_OK,TK_Complete,823A-ST-SNT-BF3-1060,Backfilling to 0.5m below S1 (+24.0mPD) (2480m3 of soil),268571,,,0,0,0,960,40,384,0,0,,2016-01-09 08:00,2016-01-14 18:00,2014-11-11 08:00,2014-11-11 08:00,,2017-01-01 00:00,2017-01-01 00:00,,,2016-01-09 08:00,2016-01-14 18:00,,,,,PT_Normal,,,,,Gz+KGW8TRXyWlI+tE/vuQA,M/XPsaXlDEWTnCpbujxM8g,,,N,0,0,,,2017-01-24 14:43,2017-01-24 15:36,CLEMENTL,CLEMENTL
1598,49429425,751235,10651643,1227199,1,100,N,N,N,CP_Drtn,TT_Task,DT_FixedDUR2,RV_OK,TK_Complete,823A-ST-SNT-BF3-1090,Backfilling to original ground level (approx. +27.0mPD) (1488 m3 of soil),,,,0,576,0,576,40,192,192,0,,2016-01-25 08:00,2016-04-01 18:00,2014-11-11 08:00,2014-11-11 08:00,,2017-01-01 00:00,2017-01-01 00:00,,,2016-01-25 08:00,2016-01-29 18:00,,,,,PT_Normal,,,,,QBgIAhGDT/CofwmfH3HQow,yqDBWOnaakm8voc7enKpww,,,N,576,192,,,2017-01-24 14:43,2017-01-24 15:36,CLEMENTL,CLEMENTL
1599,49429426,751235,10651643,1227199,1,100,N,N,N,CP_Drtn,TT_Task,DT_FixedDUR2,RV_OK,TK_Complete,823A-ST-SNT-BF3-1070,Removal strut S1,,,,0,0,0,112,32,16,0,0,,2016-01-15 08:00,2016-01-19 18:00,2014-11-11 08:00,2014-11-11 08:00,,2017-01-01 00:00,2017-01-01 00:00,,,2016-01-15 08:00,2016-01-19 18:00,,,,,PT_Normal,,,,,aHfoIEWLRk6SpE0oBG3NEw,8Dhgln1v8EuufiSZjeN/3Q,,,N,0,0,,,2017-01-24 14:43,2017-01-24 15:36,CLEMENTL,CLEMENTL
1600,49429427,751235,10651643,1227199,1,100,N,N,N,CP_Drtn,TT_Task,DT_FixedDUR2,RV_OK,TK_Complete,823A-ST-SNT-BF3-1050,Spray waterproofing member & testing (Wall & Roof),,,,0,0,0,64,32,0,0,0,,2016-01-05 08:00,2016-01-08 18:00,2014-11-11 08:00,2014-11-11 08:00,,2017-01-01 00:00,2017-01-01 00:00,,,2016-01-05 08:00,2016-01-08 18:00,,,,,PT_Normal,,,,,i6Hx7GWcS1ytmX4kLE3RdA,rRYX0Dvj3ECYVdOlccKFwg,,,N,0,0,,,2017-01-24 14:43,2017-01-24 15:36,CLEMENTL,CLEMENTL
1601,49429428,751235,10651643,1227199,1,100,N,N,N,CP_Drtn,TT_Task,DT_FixedDUR2,RV_OK,TK_Complete,823A-ST-SNT-BF3-1080,Spray waterproofing member & testing (Wall & Roof),,,,0,0,0,64,32,0,0,0,,2016-01-20 08:00,2016-01-23 18:00,2014-11-11 08:00,2014-11-11 08:00,,2017-01-01 00:00,2017-01-01 00:00,,,2016-01-20 08:00,2016-01-23 18:00,,,,,PT_Normal,,,,,xbekEUMzSbKXNbLSLI11kw,KK9bM3UTDUi2cdxsQ4KCIg,,,N,0,0,,,2017-01-24 14:43,2017-01-24 15:36,CLEMENTL,CLEMENTL
1602,49429429,751235,10651643,1227199,1,100,N,N,N,CP_Drtn,TT_Task,DT_FixedDUR2,RV_OK,TK_Complete,823A-ST-SNT-BF3-1030,Placing mass concrete infill between tunnel and D-wall,,,,0,0,0,88,8,8,0,0,,2015-12-24 08:00,2015-12-24 18:00,2014-11-11 08:00,2014-11-11 08:00,,2017-01-01 00:00,2017-01-01 00:00,,,2015-12-02 08:00,2015-12-02 18:00,,,,,PT_Normal,,,,,COzFNU4GQ/ez7UsvpBbz5g,6OTofKV1VUe1EKhP1BgWJQ,,,N,0,0,,,2017-01-24 14:43,2017-01-24 15:36,CLEMENTL,CLEMENTL
1603,49429430,751235,10651644,1227199,1,100,N,N,N,CP_Drtn,TT_Task,DT_FixedDUR2,RV_OK,TK_Complete,823A-ST-SNT-BF4-1020,Backfilling between D-wall and 0.5m below S2 (180m3) (SN18-19),,,,0,160,0,160,48,64,64,0,,2014-04-26 08:00,2014-05-15 18:00,2017-06-12 18:00,2017-06-12 18:00,,2017-01-01 00:00,2017-01-01 00:00,,,2014-04-26 08:00,2014-05-03 18:00,,,,,PT_Normal,,,,,Ql9/7dLIR+GW4kLlR3VeUg,Xnk1cz9dTVuPPqhIXKjFxA,,,N,160,64,,,2017-01-24 14:43,2017-01-24 15:36,CLEMENTL,CLEMENTL
1604,49429431,751235,10651644,1227199,1,100,N,N,N,CP_Drtn,TT_Task,DT_FixedDUR2,RV_OK,TK_Complete,823A-ST-SNT-BF4-1030,Placing mass concrete infill between tunnel and D-wall (SN18-19),,,,0,0,0,88,8,8,0,0,,2014-05-16 08:00,2014-05-16 18:00,2017-06-12 18:00,2017-06-12 18:00,,2017-01-01 00:00,2017-01-01 00:00,,,2014-05-20 08:00,2014-05-20 18:00,,,,,PT_Normal,,,,,7LTnvJvbR/S38nskMMLdpg,LY5PK7X1QEetiuee6mgtRA,,,N,0,0,,,2017-01-24 14:43,2017-01-24 15:36,CLEMENTL,CLEMENTL
1605,49429432,751235,10651644,1227199,1,100,N,N,N,CP_Drtn,TT_Task,DT_FixedDUR2,RV_OK,TK_Complete,823A-ST-SNT-BF4-1010,Spray waterproofing member & testing (Wall & Roof) (SN18-19),,,,0,0,0,80,48,0,0,0,,2014-04-16 08:00,2014-04-25 18:00,2017-06-12 18:00,2017-06-12 18:00,,2017-01-01 00:00,2017-01-01 00:00,,,2014-04-16 08:00,2014-04-25 18:00,,,,,PT_Normal,,,,,rwOIGVcSR8KLsI+pEtRNSg,LbpZMk71QkiCZfbnQHDH7Q,,,N,0,0,,,2017-01-24 14:43,2017-01-24 15:36,CLEMENTL,CLEMENTL
1606,49429433,751235,10651644,1227199,1,100,N,N,N,CP_Drtn,TT_Task,DT_FixedDUR2,RV_OK,TK_Complete,823A-ST-SNT-BF4-1040,Removal of S2 (SN16-18),,,,0,0,0,224,32,32,0,0,,2014-05-17 08:00,2014-05-21 18:00,2017-06-12 18:00,2017-06-12 18:00,,2017-01-01 00:00,2017-01-01 00:00,,,2014-06-04 08:00,2014-06-07 18:00,,,,,PT_Normal,,,,,T/VhlReSSq2Tlh70jjhcyA,DoEmX1ADSwSWF0/oDhxBaQ,,,N,0,0,,,2017-01-24 14:43,2017-01-24 15:36,CLEMENTL,CLEMENTL
1607,49429434,751235,10651644,1227199,1,100,N,N,N,CP_Drtn,TT_Task,DT_FixedDUR2,RV_OK,TK_Complete,823A-ST-SNT-BF4-1070,Backfilling to 0.5m below S1 (+24.0mPD) (2480m3 of soil) (SN16-18),268571,,,0,0,0,960,40,384,0,0,,2014-05-22 08:00,2014-05-27 18:00,2017-06-12 18:00,2017-06-12 18:00,,2017-01-01 00:00,2017-01-01 00:00,,,2014-06-09 08:00,2014-06-13 18:00,,,,,PT_Normal,,,,,1CgZeTs/QOmfHZBVDtBsxA,pP9EQnkpQKWcL3/fLnChug,,,N,0,0,,,2017-01-24 14:43,2017-01-24 15:36,CLEMENTL,CLEMENTL
1608,49429435,751235,10651644,1227199,1,100,N,N,N,CP_Drtn,TT_Task,DT_FixedDUR2,RV_OK,TK_Complete,823A-ST-SNT-BF4-1100,Backfilling to original ground level (approx. +27.0mPD) (1488m3 of soil),,,,0,0,0,576,40,192,0,0,,2014-06-23 08:00,2014-06-27 18:00,2017-06-12 18:00,2017-06-12 18:00,,2017-01-01 00:00,2017-01-01 00:00,,,2014-06-27 08:00,2014-07-03 18:00,,,,,PT_Normal,,,,,H0i+zCwEQQeI8xXkmqvWKw,BVULGNIOSUKSNkQpN2eugA,,,N,0,0,,,2017-01-24 14:43,2017-01-24 15:36,CLEMENTL,CLEMENTL
1609,49429436,751235,10651644,1227199,1,100,N,N,N,CP_Drtn,TT_Task,DT_FixedDUR2,RV_OK,TK_Complete,823A-ST-SNT-BF4-1080,Removal strut S1 (SN16-18),,,,0,0,0,112,32,16,0,0,,2014-05-28 08:00,2014-05-31 18:00,2017-06-12 18:00,2017-06-12 18:00,,2017-01-01 00:00,2017-01-01 00:00,,,2014-06-14 08:00,2014-06-18 18:00,,,,,PT_Normal,,,,,+T+QiJWoSr2nbQOKoq1VwA,Et7P485JSAWpHznjSNdbJg,,,N,0,0,,,2017-01-24 14:43,2017-01-24 15:36,CLEMENTL,CLEMENTL
1610,49429437,751235,10651645,1239098,1,100,N,N,N,CP_Drtn,TT_Task,DT_FixedDUR2,RV_OK,TK_Complete,823A-ST-SNT-BF2-3000,"Backfilling from +20mPD to ground level from SN8 to SN9  (Soil: 5,000m3 @ 500m3/day)",,,,0,0,0,0,88,0,0,0,,2013-07-02 08:00,2013-08-10 18:00,2014-07-24 08:00,2014-07-24 08:00,,2017-01-01 00:00,2017-01-01 00:00,,,2013-08-06 08:00,2013-08-17 18:00,,,,,PT_Normal,,,,,gIbsB2GIT1yqyBtNG/18jQ,,,,Y,0,0,,,2017-01-24 14:43,2017-01-24 14:53,CLEMENTL,CLEMENTL
1611,49429438,751235,10651645,1227199,1,100,N,N,N,CP_Drtn,TT_Task,DT_FixedDUR2,RV_OK,TK_Complete,823A-ST-SNT-BF2-1030,Backfilling between D-wall and 0.5m below S1 (2075m3),,,,0,0,0,800,56,320,0,0,,2014-02-06 08:00,2014-02-13 18:00,2014-07-24 08:00,2014-07-24 08:00,,2017-01-01 00:00,2017-01-01 00:00,,,2014-02-06 08:00,2014-02-13 18:00,,,,,PT_Normal,,,,,w3D20Ft8TYKD8H4cm7DRwA,bkLWFUowI0+mCWqfEKvMNA,,,Y,0,0,,,2017-01-24 14:43,2017-01-24 14:53,CLEMENTL,CLEMENTL
1612,49429439,751235,10651645,1227199,1,100,N,N,N,CP_Drtn,TT_Task,DT_FixedDUR2,RV_OK,TK_Complete,823A-ST-SNT-BF2-1020,Spray waterproofing member & testing (Wall & Roof),,,,0,0,0,80,16,0,0,0,,2014-02-04 08:00,2014-02-05 18:00,2014-07-24 08:00,2014-07-24 08:00,,2017-01-01 00:00,2017-01-01 00:00,,,2014-02-04 08:00,2014-02-05 18:00,,,,,PT_Normal,,,,,ti5GveMqSzq0PQd5zNDP8A,MYc6fRI5Hkii85G3YuqBxg,,,Y,0,0,,,2017-01-24 14:43,2017-01-24 14:53,CLEMENTL,CLEMENTL
1613,49429440,751235,10651645,1227199,1,100,N,N,N,CP_Drtn,TT_Task,DT_FixedDUR2,RV_OK,TK_Complete,823A-ST-SNT-BF2-1040,Removal of S1,,,,0,0,0,224,16,32,0,0,,2014-02-14 08:00,2014-02-15 18:00,2014-07-24 08:00,2014-07-24 08:00,,2017-01-01 00:00,2017-01-01 00:00,,,2014-02-14 08:00,2014-02-15 18:00,,,,,PT_Normal,,,,,dPj4PrPfR+Kbg2OCq+Wlig,3qUPxvETBUOxYLZjCYVkWA,,,Y,0,0,,,2017-01-24 14:43,2017-01-24 14:53,CLEMENTL,CLEMENTL
1614,49429441,751235,10651645,1227199,1,100,N,N,N,CP_Drtn,TT_Task,DT_FixedDUR2,RV_OK,TK_Complete,823A-ST-SNT-BF2-1050,"Backfilling to original ground level 3,900m3 (approx. +25.0mPD) (1353m3)",,,,0,504,0,504,40,168,168,0,,2014-03-01 08:00,2014-05-02 18:00,2014-07-24 08:00,2014-07-24 08:00,,2017-01-01 00:00,2017-01-01 00:00,,,2014-03-01 08:00,2014-03-06 18:00,,,,,PT_Normal,,,,,6ytrVti6RuK/5Fegwfde5A,cmMVjGkdOUitXMyrcUQRtA,,,Y,504,168,,,2017-01-24 14:43,2017-01-24 14:53,CLEMENTL,CLEMENTL
1615,49429442,751235,10651645,1227199,1,100,N,N,N,CP_Drtn,TT_Task,DT_FixedDUR2,RV_OK,TK_Complete,823A-ST-SNT-BF2-2020,"Backfilling backfilling to +20mPD from SN8 to SN9 (Soil: 7,050m3 @ 500m3/day)",,,,0,0,0,800,112,320,0,0,,2013-06-01 08:00,2013-06-29 18:00,2014-07-24 08:00,2014-07-24 08:00,,2017-01-01 00:00,2017-01-01 00:00,,,2013-07-02 08:00,2013-07-17 18:00,,,,,PT_Normal,,,,,gcA1Tvq/RsOQ3KGP+agSLQ,rXJBiG4tCkWMPYh8rqaFlw,,,Y,0,0,,,2017-01-24 14:43,2017-01-24 14:53,CLEMENTL,CLEMENTL
1616,49429443,751235,10651645,1227199,1,100,N,N,N,CP_Drtn,TT_Task,DT_FixedDUR2,RV_OK,TK_Complete,823A-ST-SNT-BF2-2030,Removal of S1,,,,0,0,0,224,32,32,0,0,,2013-07-13 08:00,2013-07-20 18:00,2014-07-24 08:00,2014-07-24 08:00,,2017-01-01 00:00,2017-01-01 00:00,,,2013-09-02 08:00,2013-09-05 18:00,,,,,PT_Normal,,,,,Jz+JuV3wTyyKGONz2jJ5lA,JwRfdkFXCk2HHlXJrGKWKA,,,Y,0,0,,,2017-01-24 14:43,2017-01-24 14:53,CLEMENTL,CLEMENTL
1617,49429444,751235,10651645,1239098,1,100,N,N,N,CP_Drtn,TT_Task,DT_FixedDUR2,RV_OK,TK_Complete,823A-ST-SNT-BF2-2040,Construction of mud pit,,,,0,0,0,0,88,0,0,0,,2013-05-31 08:00,2013-06-22 18:00,2014-07-24 08:00,2014-07-24 08:00,,2017-01-01 00:00,2017-01-01 00:00,,,2013-07-06 08:00,2013-07-18 18:00,,,,,PT_Normal,,,,,ubJjbbrHRAaqrhCvA/XI3g,,,,Y,0,0,,,2017-01-24 14:43,2017-01-24 14:53,CLEMENTL,CLEMENTL
1618,49429445,751235,10651645,1227199,1,100,N,N,N,CP_Drtn,TT_Task,DT_FixedDUR2,RV_OK,TK_Complete,823A-ST-SNT-BF2-2010,Spray waterproofing member & testing (Wall & Roof),,,,0,0,0,80,32,0,0,0,,2013-03-27 08:00,2013-04-23 18:00,2014-07-24 08:00,2014-07-24 08:00,,2017-01-01 00:00,2017-01-01 00:00,,,2013-07-02 08:00,2013-07-05 18:00,,,,,PT_Normal,,,,,Gc9UfbogT9OEURlA8WIJjw,kDoqRCOxpEaTL2iRQsSkbw,,,Y,0,0,,,2017-01-24 14:43,2017-01-24 14:53,CLEMENTL,CLEMENTL
1619,49429446,751235,10651646,1227199,1,100,N,N,N,CP_Drtn,TT_Task,DT_FixedDUR2,RV_OK,TK_Complete,823A-ST-SNT-BF1-1020,"Backfilling between D-wall and 0.5m below S1 14,240m3 soil",,,,0,0,0,800,232,320,0,0,,2014-02-05 08:00,2014-02-22 18:00,2014-01-05 18:00,2014-01-05 18:00,,2017-01-01 00:00,2017-01-01 00:00,,,2014-02-06 08:00,2014-03-11 18:00,,,,,PT_Normal,,,,,penl/f+iQzm5DtP2HXxIQw,OD5Za35xS2aHPYTozZV4ig,,,N,0,0,,,2017-01-24 14:43,2017-01-24 14:53,CLEMENTL,CLEMENTL
1620,49429447,751235,10651646,1227199,1,100,N,N,N,CP_Drtn,TT_Task,DT_FixedDUR2,RV_OK,TK_Complete,823A-ST-SNT-BF1-1010,Spray waterproofing member & testing (Wall & Roof),,,,0,80,0,80,48,0,0,0,,2013-06-26 08:00,2014-02-04 18:00,2014-01-05 18:00,2014-01-05 18:00,,2017-01-01 00:00,2017-01-01 00:00,,,2013-11-29 08:00,2013-12-05 18:00,,,,,PT_Normal,,,,,+rZYROYyRv6sX3eVrbWLxA,XTGXLkvtRM2r8slPWurEVw,,,N,80,0,,,2017-01-24 14:43,2017-01-24 14:53,CLEMENTL,CLEMENTL
1621,49429448,751235,10651646,1227199,1,100,N,N,N,CP_Drtn,TT_Task,DT_FixedDUR2,RV_OK,TK_Complete,823A-ST-SNT-BF1-1040,"Backfilling to original ground level 21,390m3 (approx. +25.0mPD)",,,,0,504,0,504,128,168,168,0,,2014-03-01 08:00,2014-05-03 18:00,2014-01-05 18:00,2014-01-05 18:00,,2017-01-01 00:00,2017-01-01 00:00,,,2014-03-01 08:00,2014-03-19 18:00,,,,,PT_Normal,,,,,wrsx+JfOTJeSciWiE6ptrQ,snQOtkKnSOq4rVg7Rhe/Dw,,,N,504,168,,,2017-01-24 14:43,2017-01-24 14:53,CLEMENTL,CLEMENTL
1622,49429449,751235,10651646,1227199,1,100,N,N,N,CP_Drtn,TT_Task,DT_FixedDUR2,RV_OK,TK_Complete,823A-ST-SNT-BF1-1030,Removal of S1,,,,0,0,0,224,96,32,0,0,,2014-02-24 08:00,2014-02-28 18:00,2014-01-05 18:00,2014-01-05 18:00,,2017-01-01 00:00,2017-01-01 00:00,,,2014-03-12 08:00,2014-03-25 18:00,,,,,PT_Normal,,,,,Ci2WGr4eSriiWZQkwtet4w,FJY/Z2zpTsOucDtVMjEejA,,,N,0,0,,,2017-01-24 14:43,2017-01-24 14:53,CLEMENTL,CLEMENTL
1623,49429450,751235,10651647,1239098,1,75,N,N,N,CP_Drtn,TT_Task,DT_FixedDUR2,RV_OK,TK_Active,823A-ST-SNT-RN-1030,"Reinstate Works Areas 4.9, 4.9A and 4.12A prior to handover",,-3584,0,400,0,0,0,720,0,0,0,,2016-07-02 08:00,,2015-07-03 08:00,2015-08-29 18:00,,2017-01-02 08:00,2017-02-28 18:00,2017-01-02 08:00,2017-02-28 18:00,2017-05-22 08:00,2017-09-02 18:00,,2015-07-03 08:00,2015-08-29 18:00,,PT_Normal,,,,,kp+dEsLwToynTH8KopMo7A,,,,N,0,0,,,2017-01-24 14:43,2017-01-24 15:39,CLEMENTL,CLEMENTL
1624,49429451,751235,10651647,1239098,1,40,N,N,N,CP_Drtn,TT_Task,DT_FixedDUR2,RV_OK,TK_Active,823A-ST-SNT-RN-1020,Complete all tree planting and reinstate Works Area 4.12C,,-5080,0,400,0,0,0,1736,0,0,0,,2016-10-01 08:00,,2014-11-11 08:00,2015-01-10 18:00,,2017-01-02 08:00,2017-02-28 18:00,2017-01-02 08:00,2017-02-28 18:00,2016-11-01 08:00,2017-07-13 18:00,,2014-11-11 08:00,2015-01-10 18:00,,PT_Normal,,,,,s4wtZXcoTC2auUUqaKz/hw,,,,N,0,0,,,2017-01-24 14:43,2017-01-24 15:36,CLEMENTL,CLEMENTL
1625,49429452,751235,10651647,1239098,1,100,N,N,N,CP_Drtn,TT_Task,DT_FixedDUR2,RV_OK,TK_Complete,823A-ST-SNT-RN-1005,Dismantling temporary bridge deck,,,,0,0,0,0,240,0,0,0,,2015-06-01 08:00,2015-06-30 18:00,2017-06-12 18:00,2017-06-12 18:00,,2017-01-01 00:00,2017-01-01 00:00,,,2015-06-15 08:00,2015-07-21 18:00,,,,,PT_Normal,,,,,AdkEGuJqTtCwBUOSXMUwAA,,,,N,0,0,,,2017-01-24 14:43,2017-01-24 15:36,CLEMENTL,CLEMENTL
1626,49429453,751235,10651647,1239098,1,100,N,N,N,CP_Drtn,TT_Task,DT_FixedDUR2,RV_OK,TK_Complete,823A-ST-SNT-RN-1010,Reinstatement of Works Area 4.10,,,,0,0,0,0,1488,0,0,0,,2016-05-02 08:00,2016-06-30 18:00,2017-06-12 18:00,2017-06-12 18:00,,2017-01-01 00:00,2017-01-01 00:00,,,2016-06-01 08:00,2017-01-11 18:00,,,,,PT_Normal,,,,,LZNgV3O6TL2jpa/jWwCC5w,,,,N,0,0,,,2017-01-24 14:43,2017-01-24 15:36,CLEMENTL,CLEMENTL
1627,49429454,751235,10651649,1227199,1,100,N,N,N,CP_Drtn,TT_Task,DT_FixedDUR2,RV_OK,TK_Complete,823A-ST-SLS-ELS-1110,Excavate up to formation (2294m3),,,,0,1280,0,1280,168,1024,1024,0,,2012-09-21 08:00,2012-10-17 18:00,2017-06-12 18:00,2017-06-12 18:00,,2017-01-01 00:00,2017-01-01 00:00,,,2012-09-21 08:00,2012-10-17 18:00,,,,,PT_Normal,,,,,Av5O+VpxQiigTVBuhUh6HQ,txIoG/o5rE+Ziej+XJh+rA,,,N,1280,1024,,,2017-01-24 14:43,2017-01-24 15:36,CLEMENTL,CLEMENTL
1628,49429455,751235,10651649,1227199,1,100,N,N,N,CP_Drtn,TT_Task,DT_FixedDUR2,RV_OK,TK_Complete,823A-ST-SLS-ELS-1190,Saw cut North Bound diaphragm wall,,,,0,0,0,0,208,0,0,0,,2012-12-15 08:00,2013-01-14 18:00,2014-01-05 18:00,2014-01-05 18:00,,2017-01-01 00:00,2017-01-01 00:00,,,2013-07-02 08:00,2013-07-31 18:00,,,,,PT_Normal,,,,,+/MPZbi1Qs2ah92fJ+3F6g,nXETUeagzk+BJUUzYMVqXg,,,Y,0,0,,,2017-01-24 14:43,2017-01-24 14:53,CLEMENTL,CLEMENTL
1629,49429456,751235,10651649,1227199,1,100,N,N,N,CP_Drtn,TT_Task,DT_FixedDUR2,RV_OK,TK_Complete,823A-ST-SLS-ELS-1160,Construction entrance seal for TBM at South Bound,,,,0,0,0,0,224,0,0,0,,2012-11-16 08:00,2012-12-12 18:00,2014-01-05 18:00,2014-01-05 18:00,,2017-01-01 00:00,2017-01-01 00:00,,,2012-11-12 08:00,2012-12-13 18:00,,,,,PT_Normal,,,,,Gy9z6AQDQJSXlI++3aE18g,seSyAaSOfEOeBrYfZXFtaQ,,,Y,0,0,,,2017-01-24 14:43,2017-01-24 14:53,CLEMENTL,CLEMENTL
1630,49429457,751235,10651649,1227199,1,100,N,N,N,CP_Drtn,TT_Task,DT_FixedDUR2,RV_OK,TK_Complete,823A-ST-SLS-ELS-1170,Construction entrance seal for TBM at North Bound,,,,0,0,0,0,192,0,0,0,,2013-03-14 08:00,2013-04-24 18:00,2014-07-24 08:00,2014-07-24 08:00,,2017-01-01 00:00,2017-01-01 00:00,,,2013-07-20 08:00,2013-08-16 18:00,,,,,PT_Normal,,,,,HVvuZx8qTKSacXMXqWhYqw,lZS28xoYpECg+yDu5uG1BQ,,,Y,0,0,,,2017-01-24 14:43,2017-01-24 14:53,CLEMENTL,CLEMENTL
1631,49429458,751235,10651649,1227199,1,100,N,N,N,CP_Drtn,TT_Task,DT_FixedDUR2,RV_OK,TK_Complete,823A-ST-SLS-ELS-1120,Construct temp. 500mm thick plain concrete base slab,,,,0,1456,0,1456,16,112,112,0,,2012-10-18 08:00,2012-10-20 08:00,2014-01-05 18:00,2014-01-05 18:00,,2017-01-01 00:00,2017-01-01 00:00,,,2012-10-18 08:00,2012-10-19 18:00,,,,,PT_Normal,,,,,8uVeDJ8tS7irWNlLY9BepA,D7XV5/gNf0+KVWsBCiYj0Q,,,Y,1456,112,,,2017-01-24 14:43,2017-01-24 14:53,CLEMENTL,CLEMENTL
1632,49429459,751235,10651649,1227199,0,100,N,N,N,CP_Drtn,TT_Mile,DT_FixedDrtn,RV_OK,TK_Complete,823A-ST-SLS-ELS-1200,Handover to TBM's Team,,,,0,0,0,0,0,0,0,0,2012-12-11 08:00,2012-12-11 08:00,2012-12-11 08:00,2014-01-05 18:00,2014-01-05 18:00,,2017-01-01 00:00,2017-01-01 00:00,,,2013-06-01 08:00,2013-06-01 08:00,,,,CS_MSO,PT_Normal,,,,,CB/S/owBQJiEzM5C0RYGbg,HkdtLRvb3kubyYMHZBTQzA,,,Y,0,0,,,2017-01-24 14:43,2017-01-24 14:53,CLEMENTL,CLEMENTL
1633,49429460,751235,10651649,1227199,1,100,N,N,N,CP_Drtn,TT_Task,DT_FixedDUR2,RV_OK,TK_Complete,823A-ST-SLS-ELS-1140,Removal of North Bound strut to +9.50mPD,,,,0,0,0,0,24,0,0,0,,2012-10-26 08:00,2012-10-29 18:00,2014-01-05 18:00,2014-01-05 18:00,,2017-01-01 00:00,2017-01-01 00:00,,,2012-10-26 08:00,2012-10-29 18:00,,,,,PT_Normal,,,,,r1WZhTTKQKC12yAPZgpVDw,Kvu/A9SFsEaB+pGVukSsVA,,,Y,0,0,,,2017-01-24 14:43,2017-01-24 14:53,CLEMENTL,CLEMENTL
1634,49429461,751235,10651649,1227199,1,100,N,N,N,CP_Drtn,TT_Task,DT_FixedDUR2,RV_OK,TK_Complete,823A-ST-SLS-ELS-1150,Construct temp. 500mm thick TBM concrete base slab,,,,0,0,0,0,112,0,0,0,,2012-10-26 08:00,2012-11-10 18:00,2014-01-05 18:00,2014-01-05 18:00,,2017-01-01 00:00,2017-01-01 00:00,,,2012-10-26 08:00,2012-11-10 18:00,,,,,PT_Normal,,,,,TH5tVi6uR0Cu/fcF+TMnIQ,zUv6vB73i02imPtqnS2Huw,,,Y,0,0,,,2017-01-24 14:43,2017-01-24 14:53,CLEMENTL,CLEMENTL
1635,49429462,751235,10651649,1227199,1,100,N,N,N,CP_Drtn,TT_Task,DT_FixedDUR2,RV_OK,TK_Complete,823A-ST-SLS-ELS-1130,Removal of South Bound strut to +9.50mPD,,,,0,0,0,0,24,0,0,0,,2012-10-22 08:00,2012-10-25 18:00,2014-01-05 18:00,2014-01-05 18:00,,2017-01-01 00:00,2017-01-01 00:00,,,2012-10-22 08:00,2012-10-25 18:00,,,,,PT_Normal,,,,,Ai/8LOvQTbqF/pME0EUsjg,qpLFCOtcO0uwEHT1X1hIsg,,,Y,0,0,,,2017-01-24 14:43,2017-01-24 14:53,CLEMENTL,CLEMENTL
1636,49429463,751235,10651649,1227199,1,100,N,N,N,CP_Drtn,TT_Task,DT_FixedDUR2,RV_OK,TK_Complete,823A-ST-SLS-ELS-1180,Saw cut South Bound diaphragm wall,,,,0,0,0,0,232,0,0,0,,2012-11-26 08:00,2012-12-24 18:00,2014-01-05 18:00,2014-01-05 18:00,,2017-01-01 00:00,2017-01-01 00:00,,,2012-11-26 08:00,2012-12-31 18:00,,,,,PT_Normal,,,,,fNpDjkLyS1yfFspERXTBBg,3nyJ6b0bp02wuctp+zxgOg,,,Y,0,0,,,2017-01-24 14:43,2017-01-24 14:53,CLEMENTL,CLEMENTL
1637,49429464,751235,10651649,1227199,1,100,N,N,N,CP_Drtn,TT_Task,DT_FixedDUR2,RV_OK,TK_Complete,823A-ST-SLS-ELS-1010,Excavate up to +22.0mPD (1860m3),,,,0,864,0,864,96,672,672,0,,2012-05-18 08:00,2012-05-31 18:00,2017-06-12 18:00,2017-06-12 18:00,,2017-01-01 00:00,2017-01-01 00:00,,,2012-05-18 08:00,2012-05-31 18:00,,,,,PT_Normal,,,,,XrciB5JoQ8Gbk0LsNDFLvA,6uq9KzD5W02/UFwas2kFQw,,,N,864,672,,,2017-01-24 14:43,2017-01-24 15:36,CLEMENTL,CLEMENTL
1638,49429465,751235,10651649,1227199,1,100,N,N,N,CP_Drtn,TT_Task,DT_FixedDUR2,RV_OK,TK_Complete,823A-ST-SLS-ELS-1020,Install Strut S1 +22.5mPD,,,,0,288,0,288,32,160,160,0,,2012-06-01 08:00,2012-06-05 18:00,2017-06-12 18:00,2017-06-12 18:00,,2017-01-01 00:00,2017-01-01 00:00,,,2012-06-01 08:00,2012-06-05 18:00,,,,,PT_Normal,,,,,bXdA7ZT+S0mXK4kMO/5I6Q,n/BMaaVt8kOyPsxDFk69Yw,,,N,288,160,,,2017-01-24 14:43,2017-01-24 15:36,CLEMENTL,CLEMENTL
1639,49429466,751235,10651649,1227199,1,100,N,N,N,CP_Drtn,TT_Task,DT_FixedDUR2,RV_OK,TK_Complete,823A-ST-SLS-ELS-1030,Excavate up to +16.5mPD (3410m3),,,,0,1760,0,1760,176,1408,1408,0,,2012-06-06 08:00,2012-07-03 18:00,2017-06-12 18:00,2017-06-12 18:00,,2017-01-01 00:00,2017-01-01 00:00,,,2012-06-06 08:00,2012-07-03 18:00,,,,,PT_Normal,,,,,HLuDDbhASNeOfj08ZrHlOQ,UJomaEeqnkK9yTDOUj4z/w,,,N,1760,1408,,,2017-01-24 14:43,2017-01-24 15:36,CLEMENTL,CLEMENTL
1640,49429467,751235,10651649,1227199,1,100,N,N,N,CP_Drtn,TT_Task,DT_FixedDUR2,RV_OK,TK_Complete,823A-ST-SLS-ELS-1040,Install Strut S2 +17.0mPD,,,,0,288,0,288,32,160,160,0,,2012-07-04 08:00,2012-07-07 18:00,2017-06-12 18:00,2017-06-12 18:00,,2017-01-01 00:00,2017-01-01 00:00,,,2012-07-04 08:00,2012-07-07 18:00,,,,,PT_Normal,,,,,Y4gvwlXeTJ2ub/LqxsboIw,O6FBPpHuakWurZcFa8EHeg,,,N,288,160,,,2017-01-24 14:43,2017-01-24 15:36,CLEMENTL,CLEMENTL
1641,49429468,751235,10651649,1227199,1,100,N,N,N,CP_Drtn,TT_Task,DT_FixedDUR2,RV_OK,TK_Complete,823A-ST-SLS-ELS-1050,Excavate up to +11.0mPD (3410m3),,,,0,1760,0,1760,176,1408,1408,0,,2012-07-09 08:00,2012-08-02 18:00,2017-06-12 18:00,2017-06-12 18:00,,2017-01-01 00:00,2017-01-01 00:00,,,2012-07-09 08:00,2012-08-02 18:00,,,,,PT_Normal,,,,,1x9fkBBuRJ6fyfYpuewrpg,o6BIooaWVkSz8dX8ia18pA,,,N,1760,1408,,,2017-01-24 14:43,2017-01-24 15:36,CLEMENTL,CLEMENTL
1642,49429469,751235,10651649,1227199,1,100,N,N,N,CP_Drtn,TT_Task,DT_FixedDUR2,RV_OK,TK_Complete,823A-ST-SLS-ELS-1060,Install Strut S3 +11.5mPD,,,,0,288,0,288,32,160,160,0,,2012-08-03 08:00,2012-08-07 18:00,2017-06-12 18:00,2017-06-12 18:00,,2017-01-01 00:00,2017-01-01 00:00,,,2012-08-03 08:00,2012-08-07 18:00,,,,,PT_Normal,,,,,r536GnxDQeWLyXVLKCX4dw,JBAOyrkYrkm3nHTT/nA8MA,,,N,288,160,,,2017-01-24 14:43,2017-01-24 15:36,CLEMENTL,CLEMENTL
1643,49429470,751235,10651649,1227199,1,100,N,N,N,CP_Drtn,TT_Task,DT_FixedDUR2,RV_OK,TK_Complete,823A-ST-SLS-ELS-1070,Excavate up to +7.0mPD (2480m3),,,,0,1280,0,1280,128,1024,1024,0,,2012-08-08 08:00,2012-08-25 18:00,2017-06-12 18:00,2017-06-12 18:00,,2017-01-01 00:00,2017-01-01 00:00,,,2012-08-08 08:00,2012-08-25 18:00,,,,,PT_Normal,,,,,mlORKUPJTcqD+eO4w/r9VA,I4PF7nfZvEuqmCphy2kCvQ,,,N,1280,1024,,,2017-01-24 14:43,2017-01-24 15:36,CLEMENTL,CLEMENTL
1644,49429471,751235,10651649,1227199,1,100,N,N,N,CP_Drtn,TT_Task,DT_FixedDUR2,RV_OK,TK_Complete,823A-ST-SLS-ELS-1080,Install Strut S4 +7.5mPD,,,,0,288,0,288,32,160,160,0,,2012-08-27 08:00,2012-08-30 18:00,2017-06-12 18:00,2017-06-12 18:00,,2017-01-01 00:00,2017-01-01 00:00,,,2012-08-27 08:00,2012-08-30 18:00,,,,,PT_Normal,,,,,Djl9FgdRSjqKLx0ZsSsK5Q,XYWo1b5ycUiJ7pMWCHgxTA,,,N,288,160,,,2017-01-24 14:43,2017-01-24 15:36,CLEMENTL,CLEMENTL
1645,49429472,751235,10651649,1227199,1,100,N,N,N,CP_Drtn,TT_Task,DT_FixedDUR2,RV_OK,TK_Complete,823A-ST-SLS-ELS-1090,Excavate up to +3.5mPD (2170m3),,,,0,1120,0,1120,112,896,896,0,,2012-08-31 08:00,2012-09-15 18:00,2017-06-12 18:00,2017-06-12 18:00,,2017-01-01 00:00,2017-01-01 00:00,,,2012-08-31 08:00,2012-09-15 18:00,,,,,PT_Normal,,,,,/fT6e6jlRsOf7mruxGBzCQ,TzIf4+MZakW3wdPOtKGiaw,,,N,1120,896,,,2017-01-24 14:43,2017-01-24 15:36,CLEMENTL,CLEMENTL
1646,49429473,751235,10651649,1227199,1,100,N,N,N,CP_Drtn,TT_Task,DT_FixedDUR2,RV_OK,TK_Complete,823A-ST-SLS-ELS-1100,Install Strut S5 +4.0mPD,,,,0,288,0,288,32,160,160,0,,2012-09-17 08:00,2012-09-20 18:00,2017-06-12 18:00,2017-06-12 18:00,,2017-01-01 00:00,2017-01-01 00:00,,,2012-09-17 08:00,2012-09-20 18:00,,,,,PT_Normal,,,,,ILRYKs9DRDC6/wDxveORPA,vTwTQPJGqkuKSW1Eh3vaGw,,,N,288,160,,,2017-01-24 14:43,2017-01-24 15:36,CLEMENTL,CLEMENTL
1647,49429474,751235,10651651,1227199,1,100,N,N,N,CP_Drtn,TT_Task,DT_FixedDUR2,RV_OK,TK_Complete,823A-ST-SLS-SB-1070,Curing (Base Slab),,,,0,0,0,112,56,0,0,0,,2014-08-16 08:00,2014-08-23 18:00,2017-06-12 18:00,2017-06-12 18:00,,2017-01-01 00:00,2017-01-01 00:00,,,2014-08-11 08:00,2014-08-18 18:00,,,,,PT_Normal,,,,,4J1tKZ0bQfK8K+dEvrcWGw,lxTMkQj+zEuKiY3MMTj3FQ,,,N,0,0,,,2017-01-24 14:43,2017-01-24 15:36,CLEMENTL,CLEMENTL
1648,49429475,751235,10651651,1227199,1,100,N,N,N,CP_Drtn,TT_Task,DT_FixedDUR2,RV_OK,TK_Complete,823A-ST-SLS-SB-1080,Removal of formwork (Base Slab),,,,0,0,0,56,8,8,0,0,,2014-08-25 08:00,2014-08-25 18:00,2017-06-12 18:00,2017-06-12 18:00,,2017-01-01 00:00,2017-01-01 00:00,,,2014-08-12 08:00,2014-08-12 18:00,,,,,PT_Normal,,,,,awofB1UtRFS/PX6jo91qDA,w6v3evUBXE+ZFnit/7wPtw,,,N,0,0,,,2017-01-24 14:43,2017-01-24 15:36,CLEMENTL,CLEMENTL
1649,49429476,751235,10651651,1227199,1,100,N,N,N,CP_Drtn,TT_Task,DT_FixedDUR2,RV_OK,TK_Complete,823A-ST-SLS-SB-1090,Erect internal formwork & Falsework (Wall & Roof),,,,0,728,0,728,56,56,56,0,,2014-08-26 08:00,2014-09-15 18:00,2017-06-12 18:00,2017-06-12 18:00,,2017-01-01 00:00,2017-01-01 00:00,,,2014-08-13 08:00,2014-08-20 18:00,,,,,PT_Normal,,,,,0oyO2FpaQxenLSFp9r1jug,83rUWZqnhkC1B6qSBgsF1Q,,,N,728,56,,,2017-01-24 14:43,2017-01-24 15:36,CLEMENTL,CLEMENTL
1650,49429477,751235,10651651,1227199,1,100,N,N,N,CP_Drtn,TT_Task,DT_FixedDUR2,RV_OK,TK_Complete,823A-ST-SLS-SB-1100,Rebar fixing (Wall & Roof),,,,0,0,0,288,32,32,0,0,,2014-09-16 08:00,2014-09-19 18:00,2017-06-12 18:00,2017-06-12 18:00,,2017-01-01 00:00,2017-01-01 00:00,,,2014-09-16 08:00,2014-09-19 18:00,,,,,PT_Normal,,,,,HXdUijKaTKa6RghnCNO25Q,euoRqLj48Emy19k19VvgWg,,,N,0,0,,,2017-01-24 14:43,2017-01-24 15:36,CLEMENTL,CLEMENTL
1651,49429478,751235,10651651,1227199,1,100,N,N,N,CP_Drtn,TT_Task,DT_FixedDUR2,RV_OK,TK_Complete,823A-ST-SLS-SB-1110,Erect external formwork (Wall & Roof),,,,0,0,0,312,32,24,0,0,,2014-09-20 08:00,2014-09-24 18:00,2017-06-12 18:00,2017-06-12 18:00,,2017-01-01 00:00,2017-01-01 00:00,,,2014-09-20 08:00,2014-09-24 18:00,,,,,PT_Normal,,,,,8b0bLEPqRey/83Zmg5mfqQ,UbJvnOYbZEOoozCvm3atqw,,,N,0,0,,,2017-01-24 14:43,2017-01-24 15:36,CLEMENTL,CLEMENTL
1652,49429479,751235,10651651,1227199,1,100,N,N,N,CP_Drtn,TT_Task,DT_FixedDUR2,RV_OK,TK_Complete,823A-ST-SLS-SB-1120,Clearing and inspection (Wall & Roof),,,,0,0,0,16,8,8,0,0,,2014-09-25 08:00,2014-09-25 18:00,2017-06-12 18:00,2017-06-12 18:00,,2017-01-01 00:00,2017-01-01 00:00,,,2014-09-25 08:00,2014-09-25 18:00,,,,,PT_Normal,,,,,peuaCziGTVKI5UDTip1HPg,uAcUnnhDr0+dAe9sh39xjQ,,,N,0,0,,,2017-01-24 14:43,2017-01-24 15:36,CLEMENTL,CLEMENTL
1653,49429480,751235,10651651,1227199,1,100,N,N,N,CP_Drtn,TT_Task,DT_FixedDUR2,RV_OK,TK_Complete,823A-ST-SLS-SB-1130,Concreting (Wall & Roof) (450m3),,,,0,0,0,160,8,16,0,0,,2014-10-25 08:00,2014-10-25 18:00,2017-06-12 18:00,2017-06-12 18:00,,2017-01-01 00:00,2017-01-01 00:00,,,2014-10-10 08:00,2014-10-10 18:00,,,,,PT_Normal,,,,,hY78EgZkTnmON16bVoLF6A,QjRkZZemxkGVukG44grRIA,,,N,0,0,,,2017-01-24 14:43,2017-01-24 15:36,CLEMENTL,CLEMENTL
1654,49429481,751235,10651651,1227199,1,100,N,N,N,CP_Drtn,TT_Task,DT_FixedDUR2,RV_OK,TK_Complete,823A-ST-SLS-SB-1140,Curing (Wall & Roof),,,,0,112,0,112,112,0,0,0,,2014-10-27 08:00,2014-11-07 18:00,2017-06-12 18:00,2017-06-12 18:00,,2017-01-01 00:00,2017-01-01 00:00,,,2014-10-11 08:00,2014-10-27 18:00,,,,,PT_Normal,,,,,cBKvsh1wTB+brizJMn4CRA,F2xsnwVwKEuxSBmtKEuv7Q,,,N,112,0,,,2017-01-24 14:43,2017-01-24 15:36,CLEMENTL,CLEMENTL
1655,49429482,751235,10651651,1227199,1,100,N,N,N,CP_Drtn,TT_Task,DT_FixedDUR2,RV_OK,TK_Complete,823A-ST-SLS-SB-1160,Removal internal falsework (Wall & Roof),,,,0,0,0,1848,16,168,0,0,,2014-11-08 08:00,2014-11-10 18:00,2017-06-12 18:00,2017-06-12 18:00,,2017-01-01 00:00,2017-01-01 00:00,,,2014-11-08 08:00,2014-11-10 18:00,,,,,PT_Normal,,,,,6533t128TTa+WXfkXcATig,NxKdDYvIgESS9B/mIaskkA,,,N,0,0,,,2017-01-24 14:43,2017-01-24 15:36,CLEMENTL,CLEMENTL
1656,49429483,751235,10651651,1227199,1,100,N,N,N,CP_Drtn,TT_Task,DT_FixedDUR2,RV_OK,TK_Complete,823A-ST-SLS-SB-1170,Side walkway and cable bracket (102m3),,,,0,1280,0,1280,80,160,160,0,,2014-09-01 08:00,2014-12-02 18:00,2017-06-12 18:00,2017-06-12 18:00,,2017-01-01 00:00,2017-01-01 00:00,,,2014-10-18 08:00,2014-10-29 18:00,,,,,PT_Normal,,,,,eBU8eDvhTti8oaPM0NDwew,RfCRM72c2EWxhxY9dk+FEw,,,N,1280,160,,,2017-01-24 14:43,2017-01-24 15:36,CLEMENTL,CLEMENTL
1657,49429484,751235,10651651,1227199,1,100,N,N,N,CP_Drtn,TT_Task,DT_FixedDUR2,RV_OK,TK_Complete,823A-ST-SLS-SB-1150,Removal external formwork (Wall),,,,0,0,0,112,16,16,0,0,,2014-10-30 08:00,2014-10-31 18:00,2017-06-12 18:00,2017-06-12 18:00,,2017-01-01 00:00,2017-01-01 00:00,,,2014-10-14 08:00,2014-10-15 18:00,,,,,PT_Normal,,,,,WzfsUptBQYasj4rcm1VbSw,b05+GDamw0enr5DRFBJjhw,,,N,0,0,,,2017-01-24 14:43,2017-01-24 15:36,CLEMENTL,CLEMENTL
1658,49429485,751235,10651651,1227199,1,100,N,N,N,CP_Drtn,TT_Task,DT_FixedDUR2,RV_OK,TK_Complete,823A-ST-SLS-SB-1020,Erect external formwork (Base Slab),,,,0,0,0,112,16,16,0,0,,2014-07-19 08:00,2014-07-21 18:00,2017-06-12 18:00,2017-06-12 18:00,,2017-01-01 00:00,2017-01-01 00:00,,,2014-09-06 08:00,2014-09-08 18:00,,,,,PT_Normal,,,,,9clcC+RSRk+g79TG+TQvgw,yvLqlyZJIkqkbl7kwuMeXA,,,N,0,0,,,2017-01-24 14:43,2017-01-24 15:36,CLEMENTL,CLEMENTL
1659,49429486,751235,10651651,1227199,1,100,N,N,N,CP_Drtn,TT_Task,DT_FixedDUR2,RV_OK,TK_Complete,823A-ST-SLS-SB-1030,Rebar fixing (Base Slab),,,,0,0,0,288,32,32,0,0,,2014-07-22 08:00,2014-07-26 18:00,2017-06-12 18:00,2017-06-12 18:00,,2017-01-01 00:00,2017-01-01 00:00,,,2014-09-10 08:00,2014-09-13 18:00,,,,,PT_Normal,,,,,6/5+0rZpRb6YA7HJIOJ/OQ,iOk7FmIVxEuackhlDka1JQ,,,N,0,0,,,2017-01-24 14:43,2017-01-24 15:36,CLEMENTL,CLEMENTL
1660,49429487,751235,10651651,1227199,1,100,N,N,N,CP_Drtn,TT_Task,DT_FixedDUR2,RV_OK,TK_Complete,823A-ST-SLS-SB-1040,Erect internal kicker formwork (Base Slab),,,,0,0,0,168,24,24,0,0,,2014-07-27 08:00,2014-07-31 18:00,2017-06-12 18:00,2017-06-12 18:00,,2017-01-01 00:00,2017-01-01 00:00,,,2014-09-15 08:00,2014-09-17 18:00,,,,,PT_Normal,,,,,6Xt67PFwTUW3wTTreluUnw,UH/JTDT7vEOw8tRNwZbgJg,,,N,0,0,,,2017-01-24 14:43,2017-01-24 15:36,CLEMENTL,CLEMENTL
1661,49429488,751235,10651651,1227199,1,100,N,N,N,CP_Drtn,TT_Task,DT_FixedDUR2,RV_OK,TK_Complete,823A-ST-SLS-SB-1050,Clearing and inspection (Base Slab),,,,0,0,0,16,8,8,0,0,,2014-08-14 08:00,2014-08-14 18:00,2017-06-12 18:00,2017-06-12 18:00,,2017-01-01 00:00,2017-01-01 00:00,,,2014-08-08 08:00,2014-08-08 18:00,,,,,PT_Normal,,,,,CfZPMBCIRLCkTLoyuGpTTQ,YS9lZRpyJk255iS0ZE/HZA,,,N,0,0,,,2017-01-24 14:43,2017-01-24 15:36,CLEMENTL,CLEMENTL
1662,49429489,751235,10651651,1227199,1,100,N,N,N,CP_Drtn,TT_Task,DT_FixedDUR2,RV_OK,TK_Complete,823A-ST-SLS-SB-1010,Placing of waterproof member T-lock & testing (Base Slab),,,,0,0,0,32,16,0,0,0,,2014-07-17 08:00,2014-07-18 18:00,2017-06-12 18:00,2017-06-12 18:00,,2017-01-01 00:00,2017-01-01 00:00,,,2014-09-04 08:00,2014-09-05 18:00,,,,,PT_Normal,,,,,XR/54FDESoiRS2otvAYCBQ,qRTlhZeCVkWbzpeUFgqk+A,,,N,0,0,,,2017-01-24 14:43,2017-01-24 15:36,CLEMENTL,CLEMENTL
1663,49429490,751235,10651651,1227199,1,100,N,N,N,CP_Drtn,TT_Task,DT_FixedDUR2,RV_OK,TK_Complete,823A-ST-SLS-SB-1060,Concreting (Base Slab) (225m3),,,,0,0,0,160,8,16,0,0,,2014-08-15 08:00,2014-08-15 18:00,2017-06-12 18:00,2017-06-12 18:00,,2017-01-01 00:00,2017-01-01 00:00,,,2014-08-09 08:00,2014-08-09 18:00,,,,,PT_Normal,,,,,LZmbF61bTQ2ZyOOpOI2Cow,CK0V4bj5bEGK0owKn7BYoA,,,N,0,0,,,2017-01-24 14:43,2017-01-24 15:36,CLEMENTL,CLEMENTL
1664,49429491,751235,10651652,1227199,1,100,N,N,N,CP_Drtn,TT_Task,DT_FixedDUR2,RV_OK,TK_Complete,823A-ST-SLS-NB-1010,Placing of waterproof member T-lock & testing (Base Slab),,,,0,32,0,32,16,0,0,0,,2015-10-19 08:00,2015-10-23 18:00,2017-06-12 18:00,2017-06-12 18:00,,2017-01-01 00:00,2017-01-01 00:00,,,2015-11-11 08:00,2015-11-12 18:00,,,,,PT_Normal,,,,,79+KJK7XQKSTk3crvQxXVg,5Z1tSnzk3UqT13DRyCK61A,,,N,32,0,,,2017-01-24 14:43,2017-01-24 15:36,CLEMENTL,CLEMENTL
1665,49429492,751235,10651652,1227199,1,100,N,N,N,CP_Drtn,TT_Task,DT_FixedDUR2,RV_OK,TK_Complete,823A-ST-SLS-NB-1020,Erect external formwork (Base Slab),,,,0,0,0,112,16,16,0,0,,2015-10-24 08:00,2015-10-26 18:00,2017-06-12 18:00,2017-06-12 18:00,,2017-01-01 00:00,2017-01-01 00:00,,,2015-11-13 08:00,2015-11-14 18:00,,,,,PT_Normal,,,,,8BLUNbPCSuaOMZKK29Lh5w,JfeUIgver0m/I17UUIL0+Q,,,N,0,0,,,2017-01-24 14:43,2017-01-24 15:36,CLEMENTL,CLEMENTL
1666,49429493,751235,10651652,1227199,1,100,N,N,N,CP_Drtn,TT_Task,DT_FixedDUR2,RV_OK,TK_Complete,823A-ST-SLS-NB-1030,Rebar fixing (Base Slab),,,,0,0,0,288,32,32,0,0,,2015-10-27 08:00,2015-10-30 18:00,2017-06-12 18:00,2017-06-12 18:00,,2017-01-01 00:00,2017-01-01 00:00,,,2015-11-16 08:00,2015-11-19 18:00,,,,,PT_Normal,,,,,ODm2WVeCRyS3OQMeKiQYdg,iqhVYrPF/0Wtb0iOxyin5A,,,N,0,0,,,2017-01-24 14:43,2017-01-24 15:36,CLEMENTL,CLEMENTL
1667,49429494,751235,10651652,1227199,1,100,N,N,N,CP_Drtn,TT_Task,DT_FixedDUR2,RV_OK,TK_Complete,823A-ST-SLS-NB-1040,Erect internal kicker formwork (Base Slab),,,,0,168,0,168,24,24,24,0,,2015-10-31 08:00,2015-11-09 18:00,2017-06-12 18:00,2017-06-12 18:00,,2017-01-01 00:00,2017-01-01 00:00,,,2015-11-20 08:00,2015-11-23 18:00,,,,,PT_Normal,,,,,V00iihxWRPCTBEtyCRvnRw,qi8zSPDjJE2QA8rKKh7OLA,,,N,168,24,,,2017-01-24 14:43,2017-01-24 15:36,CLEMENTL,CLEMENTL
1668,49429495,751235,10651652,1227199,1,100,N,N,N,CP_Drtn,TT_Task,DT_FixedDUR2,RV_OK,TK_Complete,823A-ST-SLS-NB-1050,Clearing and inspection (Base Slab),,,,0,0,0,16,8,8,0,0,,2015-11-10 08:00,2015-11-10 18:00,2017-06-12 18:00,2017-06-12 18:00,,2017-01-01 00:00,2017-01-01 00:00,,,2015-11-10 08:00,2015-11-10 18:00,,,,,PT_Normal,,,,,5NUrPw65SaCJqv7pAkxjkA,cCrulNgop0+QZIWGwm4e+w,,,N,0,0,,,2017-01-24 14:43,2017-01-24 15:36,CLEMENTL,CLEMENTL
1669,49429496,751235,10651652,1227199,1,100,N,N,N,CP_Drtn,TT_Task,DT_FixedDUR2,RV_OK,TK_Complete,823A-ST-SLS-NB-1060,Concreting (Base Slab) (225m3),,,,0,0,0,160,8,16,0,0,,2015-11-11 08:00,2015-11-11 18:00,2017-06-12 18:00,2017-06-12 18:00,,2017-01-01 00:00,2017-01-01 00:00,,,2015-11-11 08:00,2015-11-11 18:00,,,,,PT_Normal,,,,,Sz1nup0YS5i+Fb/ExVxpeg,DGiRSpwUcUGccGynONBCZg,,,N,0,0,,,2017-01-24 14:43,2017-01-24 15:36,CLEMENTL,CLEMENTL
1670,49429497,751235,10651652,1227199,1,100,N,N,N,CP_Drtn,TT_Task,DT_FixedDUR2,RV_OK,TK_Complete,823A-ST-SLS-NB-1070,Curing (Base Slab),,,,0,0,0,112,56,0,0,0,,2015-11-12 08:00,2015-11-19 18:00,2017-06-12 18:00,2017-06-12 18:00,,2017-01-01 00:00,2017-01-01 00:00,,,2015-11-12 08:00,2015-11-19 18:00,,,,,PT_Normal,,,,,Dj4GrSkSSAqLiirgq3mP3w,PjBnaiSjOU2/7nUo4BTzKw,,,N,0,0,,,2017-01-24 14:43,2017-01-24 15:36,CLEMENTL,CLEMENTL
1671,49429498,751235,10651652,1227199,1,100,N,N,N,CP_Drtn,TT_Task,DT_FixedDUR2,RV_OK,TK_Complete,823A-ST-SLS-NB-1080,Removal of formwork (Base Slab),,,,0,0,0,56,8,8,0,0,,2015-11-13 08:00,2015-11-13 18:00,2017-06-12 18:00,2017-06-12 18:00,,2017-01-01 00:00,2017-01-01 00:00,,,2015-11-13 08:00,2015-11-13 18:00,,,,,PT_Normal,,,,,MaWa80QnRTudzh2oZQhvZg,TgIf1Ynha0GghzrGlE7cVQ,,,N,0,0,,,2017-01-24 14:43,2017-01-24 15:36,CLEMENTL,CLEMENTL
1672,49429499,751235,10651652,1227199,1,100,N,N,N,CP_Drtn,TT_Task,DT_FixedDUR2,RV_OK,TK_Complete,823A-ST-SLS-NB-1090,Erect internal formwork & Falsework (Wall & Roof),,,,0,0,0,728,56,56,0,0,,2015-12-01 08:00,2015-12-24 18:00,2017-06-12 18:00,2017-06-12 18:00,,2017-01-01 00:00,2017-01-01 00:00,,,2015-12-01 08:00,2015-12-08 18:00,,,,,PT_Normal,,,,,EHcwk4IaRx+sH7hoCit/bw,JtFfYAP4GECHgRa/t+ESWg,,,N,0,0,,,2017-01-24 14:43,2017-01-24 15:36,CLEMENTL,CLEMENTL
1673,49429500,751235,10651652,1227199,1,100,N,N,N,CP_Drtn,TT_Task,DT_FixedDUR2,RV_OK,TK_Complete,823A-ST-SLS-NB-1100,Rebar fixing (Wall & Roof),,,,0,288,0,288,32,32,32,0,,2015-12-28 08:00,2016-01-02 18:00,2017-06-12 18:00,2017-06-12 18:00,,2017-01-01 00:00,2017-01-01 00:00,,,2015-12-09 08:00,2015-12-12 18:00,,,,,PT_Normal,,,,,liFlnFQgSn6yqQkgt7zbmg,ooBqlsyZCUCsWrVovCoc1w,,,N,288,32,,,2017-01-24 14:43,2017-01-24 15:36,CLEMENTL,CLEMENTL
1674,49429501,751235,10651652,1227199,1,100,N,N,N,CP_Drtn,TT_Task,DT_FixedDUR2,RV_OK,TK_Complete,823A-ST-SLS-NB-1110,Erect external formwork (Wall & Roof),,,,0,0,0,168,32,24,0,0,,2016-01-04 08:00,2016-01-07 18:00,2017-06-12 18:00,2017-06-12 18:00,,2017-01-01 00:00,2017-01-01 00:00,,,2016-01-05 08:00,2016-01-08 18:00,,,,,PT_Normal,,,,,pPKIap5+S6WevNo7k+ojgA,c84iP+8jqUa08FTqaWjYUw,,,N,0,0,,,2017-01-24 14:43,2017-01-24 15:36,CLEMENTL,CLEMENTL
1675,49429502,751235,10651652,1227199,1,100,N,N,N,CP_Drtn,TT_Task,DT_FixedDUR2,RV_OK,TK_Complete,823A-ST-SLS-NB-1120,Clearing and inspection (Wall & Roof),,,,0,0,0,16,8,8,0,0,,2016-01-08 08:00,2016-01-08 18:00,2017-06-12 18:00,2017-06-12 18:00,,2017-01-01 00:00,2017-01-01 00:00,,,2016-01-09 08:00,2016-01-09 18:00,,,,,PT_Normal,,,,,C8UP785MSaC3/nOkap+dYQ,u7SOAG+Vwk27uKG95I5fxA,,,N,0,0,,,2017-01-24 14:43,2017-01-24 15:36,CLEMENTL,CLEMENTL
1676,49429503,751235,10651652,1227199,1,100,N,N,N,CP_Drtn,TT_Task,DT_FixedDUR2,RV_OK,TK_Complete,823A-ST-SLS-NB-1130,Concreting (Wall & Roof) (450m3),,,,0,0,0,112,8,16,0,0,,2016-01-09 08:00,2016-01-09 18:00,2017-06-12 18:00,2017-06-12 18:00,,2017-01-01 00:00,2017-01-01 00:00,,,2016-01-11 08:00,2016-01-11 18:00,,,,,PT_Normal,,,,,YtVpjKg9Qaawa28PzHFOPA,eR3kgYEfo0aqXlETha4mDw,,,N,0,0,,,2017-01-24 14:43,2017-01-24 15:36,CLEMENTL,CLEMENTL
1677,49429504,751235,10651652,1227199,1,100,N,N,N,CP_Drtn,TT_Task,DT_FixedDUR2,RV_OK,TK_Complete,823A-ST-SLS-NB-1150,Removal external formwork (Wall ),,,,0,0,0,80,16,16,0,0,,2016-01-13 08:00,2016-01-14 18:00,2017-06-12 18:00,2017-06-12 18:00,,2017-01-01 00:00,2017-01-01 00:00,,,2016-01-14 08:00,2016-01-15 18:00,,,,,PT_Normal,,,,,ubKdodmOR0C2eXqA+sQ0XA,OeL0C6stskiOxD8fIkqWCw,,,N,0,0,,,2017-01-24 14:43,2017-01-24 15:36,CLEMENTL,CLEMENTL
1678,49429505,751235,10651652,1227199,1,100,N,N,N,CP_Drtn,TT_Task,DT_FixedDUR2,RV_OK,TK_Complete,823A-ST-SLS-NB-1140,Curing (Wall & Roof),,,,0,0,0,56,112,56,0,0,,2016-01-11 08:00,2016-01-23 18:00,2017-06-12 18:00,2017-06-12 18:00,,2017-01-01 00:00,2017-01-01 00:00,,,2016-01-12 08:00,2016-01-27 18:00,,,,,PT_Normal,,,,,kogx5BkpREWt+FGf20fIow,gjAvAnG/W0qMcIw4YhWcrg,,,N,0,0,,,2017-01-24 14:43,2017-01-24 15:36,CLEMENTL,CLEMENTL
1679,49429506,751235,10651652,1227199,1,100,N,N,N,CP_Drtn,TT_Task,DT_FixedDUR2,RV_OK,TK_Complete,823A-ST-SLS-NB-1160,"Removal internal falsework, formwork and reproping (Wall & Roof)",,,,0,0,0,840,16,168,0,0,,2016-01-25 08:00,2016-01-26 18:00,2017-06-12 18:00,2017-06-12 18:00,,2017-01-01 00:00,2017-01-01 00:00,,,2016-01-28 08:00,2016-01-29 18:00,,,,,PT_Normal,,,,,xRtKIUdcQUyHQeWFCuaCcQ,+bZFC8l1d02dN50AqzC/xA,,,N,0,0,,,2017-01-24 14:43,2017-01-24 15:36,CLEMENTL,CLEMENTL
1680,49429507,751235,10651652,1227199,1,100,N,N,N,CP_Drtn,TT_Task,DT_FixedDUR2,RV_OK,TK_Complete,823A-ST-SLS-NB-1170,Side walkway and cable bracket (102m3),,,,0,1152,0,1152,80,192,192,0,,2015-11-11 08:00,2016-02-01 18:00,2017-06-12 18:00,2017-06-12 18:00,,2017-01-01 00:00,2017-01-01 00:00,,,2015-12-23 08:00,2016-01-06 18:00,,,,,PT_Normal,,,,,FvDoot9YS1ulJbBANqVL1A,tzEz20ZohUCFFfCbSlm3lA,,,N,1152,192,,,2017-01-24 14:43,2017-01-24 15:36,CLEMENTL,CLEMENTL
1681,49429508,751235,10651653,1227199,1,100,N,N,N,CP_Drtn,TT_Task,DT_FixedDUR2,RV_OK,TK_Complete,823A-ST-SLS-DW-1050,"Construct capping beam, cobble, etc. (including bay 6 and 5)",,,,0,2016,0,2016,728,288,288,0,,2012-10-27 08:00,2013-03-21 18:00,2014-07-24 08:00,2014-07-24 08:00,,2017-01-01 00:00,2017-01-01 00:00,,,2012-10-27 08:00,2013-02-16 18:00,,,,,PT_Normal,,,,,FDnI6JUVQf+yGxFt+NcaSg,dPhJiYk7EUOI3h0f5hWnkA,,,Y,2016,288,,,2017-01-24 14:43,2017-01-24 14:53,CLEMENTL,CLEMENTL
1682,49429509,751235,10651653,1227199,1,100,N,N,N,CP_Drtn,TT_Task,DT_FixedDUR2,RV_OK,TK_Complete,823A-ST-SLS-DW-1030,D-wall construction (1192m3),,,,0,30992,0,30992,1192,4768,4768,0,,2011-09-15 08:00,2012-03-15 18:00,2014-07-24 08:00,2014-07-24 08:00,,2017-01-01 00:00,2017-01-01 00:00,,,2011-09-15 08:00,2012-03-15 18:00,,,,,PT_Normal,,,,,qPtTmAfcTOOeGrixrVaEHQ,xBv7PUv4IEmvogVyX0SYPw,,,Y,30992,4768,,,2017-01-24 14:43,2017-01-24 15:36,CLEMENTL,CLEMENTL
1683,49429510,751235,10651653,1227199,1,100,N,N,N,CP_Drtn,TT_Task,DT_FixedDUR2,RV_OK,TK_Complete,823A-ST-SLS-DW-1040,"Sonic test, shear pin, toe grout and pumping test",,,,0,2176,0,2176,384,1632,1632,0,,2012-03-16 08:00,2012-05-17 18:00,2017-06-12 18:00,2017-06-12 18:00,,2017-01-01 00:00,2017-01-01 00:00,,,2012-03-16 08:00,2012-05-17 18:00,,,,,PT_Normal,,,,,etO84DTLRU2bYA41U+Tdpw,rdTb2LD+q0KvuMQaA8/NpQ,,,N,2176,1632,,,2017-01-24 14:43,2017-01-24 15:36,CLEMENTL,CLEMENTL
1684,49429511,751235,10651653,1227199,1,100,N,N,N,CP_Drtn,TT_Task,DT_FixedDUR2,RV_OK,TK_Complete,823A-ST-SLS-DW-1020,Pre-drilling and guidewall,,,,0,6160,0,6160,440,1320,1320,0,,2011-07-12 08:00,2011-09-14 18:00,2014-07-24 08:00,2014-07-24 08:00,,2017-01-01 00:00,2017-01-01 00:00,,,2011-07-12 08:00,2011-09-14 18:00,,,,,PT_Normal,,,,,P74XcZ7VQeiOm0R5X7I7/A,FTbv2/cAdkK/OwiOTsDSvQ,,,Y,6160,1320,,,2017-01-24 14:43,2017-01-24 15:36,CLEMENTL,CLEMENTL
1685,49429512,751235,10651653,1227199,1,100,N,N,N,CP_Drtn,TT_Task,DT_FixedDUR2,RV_OK,TK_Complete,823A-ST-SLS-DW-1010,Site Possession and Site set up and Mobilization,,,,0,0,0,0,528,0,0,0,,2011-04-18 08:00,2011-07-11 18:00,2014-01-05 18:00,2014-01-05 18:00,,2017-01-01 00:00,2017-01-01 00:00,,,2011-04-18 08:00,2011-07-11 18:00,,,,,PT_Normal,,,,,J0GThWkMS2OlmmOxG7bptg,O2yftUrfR5msEK67HsOg8w,,,Y,0,0,,,2017-01-24 14:43,2017-01-24 14:53,CLEMENTL,CLEMENTL
1686,49429513,751235,10651654,1227199,1,100,N,N,N,CP_Drtn,TT_Task,DT_FixedDUR2,RV_OK,TK_Complete,823A-ST-SLS-BF-1030,Backfilling to 0.5m below S3 (+11.0mPD) (3486m3),,,,0,1440,0,1440,144,576,576,0,,2016-02-19 08:00,2016-03-10 18:00,2017-06-12 18:00,2017-06-12 18:00,,2017-01-01 00:00,2017-01-01 00:00,,,2016-02-19 08:00,2016-03-10 18:00,,,,,PT_Normal,,,,,dV8R5WBcTj+SjgDUqgNa6A,ZPbccGzBfkifWjhlHI/QpQ,,,N,1440,576,,,2017-01-24 14:43,2017-01-24 15:36,CLEMENTL,CLEMENTL
1687,49429514,751235,10651654,1227199,1,100,N,N,N,CP_Drtn,TT_Task,DT_FixedDUR2,RV_OK,TK_Complete,823A-ST-SLS-BF-1010,Spray waterproofing member & testing (Wall & Roof),,,,0,0,0,64,16,0,0,0,,2016-02-02 08:00,2016-02-03 18:00,2017-06-12 18:00,2017-06-12 18:00,,2017-01-01 00:00,2017-01-01 00:00,,,2016-02-02 08:00,2016-02-03 18:00,,,,,PT_Normal,,,,,3Gy/P/FnTU2lJsqLqip60Q,0eLWPfQ/mEK+BBQ8Csobng,,,N,0,0,,,2017-01-24 14:43,2017-01-24 15:36,CLEMENTL,CLEMENTL
1688,49429515,751235,10651654,1227199,1,100,N,N,N,CP_Drtn,TT_Task,DT_FixedDUR2,RV_OK,TK_Complete,823A-ST-SLS-BF-1020,Protection screening to waterproofing member (Wall & Roof),,,,0,0,0,1680,80,80,0,0,,2016-02-04 08:00,2016-02-18 18:00,2017-06-12 18:00,2017-06-12 18:00,,2017-01-01 00:00,2017-01-01 00:00,,,2016-02-04 08:00,2016-02-18 18:00,,,,,PT_Normal,,,,,iO74IndvTj+6pWHXidQ/MA,knjymRC9okuKnObNtSzBDg,,,N,0,0,,,2017-01-24 14:43,2017-01-24 15:36,CLEMENTL,CLEMENTL
1689,49429516,751235,10651654,1227199,1,100,N,N,N,CP_Drtn,TT_Task,DT_FixedDUR2,RV_OK,TK_Complete,823A-ST-SLS-BF-1040,Removal strut S3,,,,0,0,0,72,16,8,0,0,,2016-03-11 08:00,2016-03-12 18:00,2017-06-12 18:00,2017-06-12 18:00,,2017-01-01 00:00,2017-01-01 00:00,,,2016-03-11 08:00,2016-03-12 18:00,,,,,PT_Normal,,,,,h8ROdSG2Rq+nx+Vjuc6z/w,9pIE4dJ/r0uBgON5eOg20g,,,N,0,0,,,2017-01-24 14:43,2017-01-24 15:36,CLEMENTL,CLEMENTL
1690,49429517,751235,10651654,1227199,1,100,N,N,N,CP_Drtn,TT_Task,DT_FixedDUR2,RV_OK,TK_Complete,823A-ST-SLS-BF-1050,Backfilling to 0.5m below S2 (+16.5mPD) (3410m3),,,,0,1360,0,1360,136,544,544,0,,2016-03-16 08:00,2016-04-12 18:00,2017-06-12 18:00,2017-06-12 18:00,,2017-01-01 00:00,2017-01-01 00:00,,,2016-03-16 08:00,2016-04-08 18:00,,,,,PT_Normal,,,,,AMjEvhAoS2i0vA2g290N0Q,W5JtTGxYxEy7xSUeSTcI9Q,,,N,1360,544,,,2017-01-24 14:43,2017-01-24 15:36,CLEMENTL,CLEMENTL
1691,49429518,751235,10651654,1227199,1,100,N,N,N,CP_Drtn,TT_Task,DT_FixedDUR2,RV_OK,TK_Complete,823A-ST-SLS-BF-1060,Removal strut S2,,,,0,0,0,72,16,8,0,0,,2016-04-13 08:00,2016-04-14 18:00,2017-06-12 18:00,2017-06-12 18:00,,2017-01-01 00:00,2017-01-01 00:00,,,2016-04-13 08:00,2016-04-14 18:00,,,,,PT_Normal,,,,,x3HsupfGTZKB9Pj/K4eEsQ,deLLCGG3cUqZebo2N9ArSg,,,N,0,0,,,2017-01-24 14:43,2017-01-24 15:36,CLEMENTL,CLEMENTL
1692,49429519,751235,10651654,1227199,1,100,N,N,N,CP_Drtn,TT_Task,DT_FixedDUR2,RV_OK,TK_Complete,823A-ST-SLS-BF-1070,Backfilling to 0.5m below S1 (+22.0mPD) (3410m3),,,,0,0,0,1360,136,544,0,0,,2016-04-15 08:00,2016-04-30 18:00,2017-06-12 18:00,2017-06-12 18:00,,2017-01-01 00:00,2017-01-01 00:00,,,2016-04-15 08:00,2016-05-05 18:00,,,,,PT_Normal,,,,,ClRrt+mPRfiCE2LKTNFrJA,v8iVzUB9nUqjzYsjDFemqQ,,,N,0,0,,,2017-01-24 14:43,2017-01-24 15:36,CLEMENTL,CLEMENTL
1693,49429520,751235,10651654,1227199,1,100,N,N,N,CP_Drtn,TT_Task,DT_FixedDUR2,RV_OK,TK_Complete,823A-ST-SLS-BF-1080,Removal strut S1,,,,0,0,0,72,16,8,0,0,,2016-05-03 08:00,2016-05-04 18:00,2017-06-12 18:00,2017-06-12 18:00,,2017-01-01 00:00,2017-01-01 00:00,,,2016-05-03 08:00,2016-05-04 18:00,,,,,PT_Normal,,,,,Gcy/tdSTR/2qlj4RBrhUeg,U4JJ4Bedb0Om50vSywEtUQ,,,N,0,0,,,2017-01-24 14:43,2017-01-24 15:36,CLEMENTL,CLEMENTL
1694,49429521,751235,10651654,1227199,1,100,N,N,N,CP_Drtn,TT_Task,DT_FixedDUR2,RV_OK,TK_Complete,823A-ST-SLS-BF-1090,Backfilling to original ground level (approx. +25.0mPD) (1860m3),,,,0,720,0,720,80,240,240,0,,2016-05-05 08:00,2016-06-01 18:00,2017-06-12 18:00,2017-06-12 18:00,,2017-01-01 00:00,2017-01-01 00:00,,,2016-05-05 08:00,2016-05-17 18:00,,,,,PT_Normal,,,,,Gm4uL0BUSpmhbWXiTXSC5w,IWnE7J3qWEmLzRCtBU5wxg,,,N,720,240,,,2017-01-24 14:43,2017-01-24 15:36,CLEMENTL,CLEMENTL
1695,49429522,751235,10651657,1227199,1,100,N,N,N,CP_Drtn,TT_Task,DT_FixedDUR2,RV_OK,TK_Complete,823A-D-LS-NLS-1010,DDS Design - Prepare and Submit,,,,0,0,0,0,288,0,0,0,,2010-07-19 08:00,2010-08-28 18:00,2014-07-11 08:00,2014-07-11 08:00,,2017-01-01 00:00,2017-01-01 00:00,,,2010-07-19 08:00,2010-08-28 18:00,,,,,PT_Normal,,,,,wG2Q+CGASgChL7js/kYsKw,HM2yKAzlA0GCkuyi5VVgNg,,,N,0,0,,,2017-01-24 14:43,2017-01-24 15:40,CLEMENTL,CLEMENTL
1696,49429523,751235,10651657,1227199,1,100,N,N,N,CP_Drtn,TT_Task,DT_FixedDUR2,RV_OK,TK_Complete,823A-D-LS-NLS-1020,DDS Design - Review and Approval Period  (by MTRC),,,,0,0,0,0,208,0,0,0,,2010-08-30 08:00,2010-09-29 18:00,2014-07-11 08:00,2014-07-11 08:00,,2017-01-01 00:00,2017-01-01 00:00,,,2010-08-30 08:00,2010-09-29 18:00,,,,,PT_Normal,,,,,MY9uIdvfT4+POscDtuSvew,srrFLXlcUkeBV6ZNbq+WZg,,,N,0,0,,,2017-01-24 14:43,2017-01-24 15:40,CLEMENTL,CLEMENTL
1697,49429524,751235,10651657,1227199,1,100,N,N,N,CP_Drtn,TT_Task,DT_FixedDUR2,RV_OK,TK_Complete,823A-D-LS-NLS-1030,DDS Design - Response to comments and Resubmit,,,,0,0,0,0,32,0,0,0,,2010-09-30 08:00,2010-10-05 18:00,2014-07-11 08:00,2014-07-11 08:00,,2017-01-01 00:00,2017-01-01 00:00,,,2010-09-30 08:00,2010-10-05 18:00,,,,,PT_Normal,,,,,hGSemuGURYqMXUEijkkRZA,H0p0Hgd3eUKIBGdnTPM9Uw,,,N,0,0,,,2017-01-24 14:43,2017-01-24 15:40,CLEMENTL,CLEMENTL
1698,49429525,751235,10651657,1227199,1,100,N,N,N,CP_Drtn,TT_Task,DT_FixedDUR2,RV_OK,TK_Complete,823A-D-LS-NLS-1040,DDS Design - Review and Approval Period (for resubmission)  (by MTRC & related Government Authorities),,,,0,0,0,0,208,0,0,0,,2010-10-06 08:00,2010-11-05 18:00,2014-07-11 08:00,2014-07-11 08:00,,2017-01-01 00:00,2017-01-01 00:00,,,2010-10-06 08:00,2010-11-05 18:00,,,,,PT_Normal,,,,,d+1fbJWbR6uYeXHez8Fc1w,r8uyY1mYPkG9+ycC45a2bw,,,N,0,0,,,2017-01-24 14:43,2017-01-24 15:40,CLEMENTL,CLEMENTL
1699,49429526,751235,10651657,1227199,1,100,N,N,N,CP_Drtn,TT_Task,DT_FixedDUR2,RV_OK,TK_Complete,823A-D-LS-NLS-1050,Issue Completed Working Drawings,,,,0,0,0,0,32,0,0,0,,2010-11-06 08:00,2010-11-10 18:00,2014-07-11 08:00,2014-07-11 08:00,,2017-01-01 00:00,2017-01-01 00:00,,,2010-11-06 08:00,2010-11-10 18:00,,,,,PT_Normal,,,,,sfVndIjwTIG2bGnLdkBrGA,5EmwZ1Hr5EiSI8JMHQM6mQ,,,N,0,0,,,2017-01-24 14:43,2017-01-24 15:40,CLEMENTL,CLEMENTL
1700,49429527,751235,10651658,1227199,1,100,N,N,N,CP_Drtn,TT_Task,DT_FixedDUR2,RV_OK,TK_Complete,823A-D-LS-TUT-1010,DDS Design - Prepare and Submit,,,,0,0,0,0,288,0,0,0,,2011-03-10 08:00,2011-04-21 18:00,2014-07-11 08:00,2014-07-11 08:00,,2017-01-01 00:00,2017-01-01 00:00,,,2011-03-10 08:00,2011-04-21 18:00,,,,,PT_Normal,,,,,JmdF412sQQKN995O3uADrg,AYU+2he1QEmJ0CgfibA8BQ,,,N,0,0,,,2017-01-24 14:43,2017-01-24 15:40,CLEMENTL,CLEMENTL
1701,49429528,751235,10651658,1227199,1,100,N,N,N,CP_Drtn,TT_Task,DT_FixedDUR2,RV_OK,TK_Complete,823A-D-LS-TUT-1020,DDS Design - Review and Approval Period (by MTRC),,,,0,0,0,0,208,0,0,0,,2011-04-26 08:00,2011-05-27 18:00,2014-07-11 08:00,2014-07-11 08:00,,2017-01-01 00:00,2017-01-01 00:00,,,2011-04-26 08:00,2011-05-27 18:00,,,,,PT_Normal,,,,,+bA4x+ckQj+N/Q82bS+/6Q,90SgrcbPcUib7nCKb4zkfA,,,N,0,0,,,2017-01-24 14:43,2017-01-24 15:40,CLEMENTL,CLEMENTL
1702,49429529,751235,10651658,1227199,1,100,N,N,N,CP_Drtn,TT_Task,DT_FixedDUR2,RV_OK,TK_Complete,823A-D-LS-TUT-1030,DDS Design - Response to comments and Resubmit,,,,0,0,0,0,32,0,0,0,,2011-05-28 08:00,2011-06-01 18:00,2014-07-11 08:00,2014-07-11 08:00,,2017-01-01 00:00,2017-01-01 00:00,,,2011-05-28 08:00,2011-06-01 18:00,,,,,PT_Normal,,,,,pWnnf9zpRsqm7s5pC8PuvQ,1VUV7UoRV0K1Pq4kQgpz5g,,,N,0,0,,,2017-01-24 14:43,2017-01-24 15:40,CLEMENTL,CLEMENTL
1703,49429530,751235,10651658,1227199,1,100,N,N,N,CP_Drtn,TT_Task,DT_FixedDUR2,RV_OK,TK_Complete,823A-D-LS-TUT-1040,DDS Design - Review and Approval Period (for resubmission) (by MTRC & related Government Authorities),,,,0,0,0,0,208,0,0,0,,2011-06-02 08:00,2011-07-04 18:00,2014-07-11 08:00,2014-07-11 08:00,,2017-01-01 00:00,2017-01-01 00:00,,,2011-06-02 08:00,2011-07-04 18:00,,,,,PT_Normal,,,,,FlWZkgEKSCald513qZgbnA,x/rIhjNKv0KylG20A5ZCfQ,,,N,0,0,,,2017-01-24 14:43,2017-01-24 15:40,CLEMENTL,CLEMENTL
1704,49429531,751235,10651658,1227199,1,100,N,N,N,CP_Drtn,TT_Task,DT_FixedDUR2,RV_OK,TK_Complete,823A-D-LS-TUT-1050,Issue Completed Working Drawings,,,,0,0,0,0,32,0,0,0,,2011-07-05 08:00,2011-07-08 18:00,2014-07-11 08:00,2014-07-11 08:00,,2017-01-01 00:00,2017-01-01 00:00,,,2011-07-05 08:00,2011-07-08 18:00,,,,,PT_Normal,,,,,sJhlFJjFT6WF0zezUqzAag,GKlkYwlv+E2WFK4JjHjjZw,,,N,0,0,,,2017-01-24 14:43,2017-01-24 15:40,CLEMENTL,CLEMENTL
1705,49429532,751235,10651659,1227199,1,100,N,N,N,CP_Drtn,TT_Task,DT_FixedDUR2,RV_OK,TK_Complete,823A-D-LS-SLS-1010,DDS Design - Prepare and Submit,,,,0,0,0,0,288,0,0,0,,2010-11-11 08:00,2010-12-22 18:00,2014-07-11 08:00,2014-07-11 08:00,,2017-01-01 00:00,2017-01-01 00:00,,,2010-11-11 08:00,2010-12-22 18:00,,,,,PT_Normal,,,,,vTRjO7qDRDyuVbvwqEltJw,5L4IMa0REU+2YQ0KS7ojPA,,,N,0,0,,,2017-01-24 14:43,2017-01-24 15:40,CLEMENTL,CLEMENTL
1706,49429533,751235,10651659,1227199,1,100,N,N,N,CP_Drtn,TT_Task,DT_FixedDUR2,RV_OK,TK_Complete,823A-D-LS-SLS-1020,DDS Design - Review and Approval Period  (by MTRC),,,,0,0,0,0,208,0,0,0,,2010-12-23 08:00,2011-01-25 18:00,2014-07-11 08:00,2014-07-11 08:00,,2017-01-01 00:00,2017-01-01 00:00,,,2010-12-23 08:00,2011-01-25 18:00,,,,,PT_Normal,,,,,1EuvnQbUTRGhu6kVUjQckg,iY9MmRGIS0eTBGGSnwDHUw,,,N,0,0,,,2017-01-24 14:43,2017-01-24 15:40,CLEMENTL,CLEMENTL
1707,49429534,751235,10651659,1227199,1,100,N,N,N,CP_Drtn,TT_Task,DT_FixedDUR2,RV_OK,TK_Complete,823A-D-LS-SLS-1040,DDS Design - Review and Approval Period (for resubmission) (by MTRC & related Government Authorities),,,,0,0,0,0,208,0,0,0,,2011-01-31 08:00,2011-03-04 18:00,2014-07-11 08:00,2014-07-11 08:00,,2017-01-01 00:00,2017-01-01 00:00,,,2011-01-31 08:00,2011-03-04 18:00,,,,,PT_Normal,,,,,YbY+b+UKSCOCYq5xjPRgCg,ffTcDHJ0+k2XDMAQ/xcAWQ,,,N,0,0,,,2017-01-24 14:43,2017-01-24 15:40,CLEMENTL,CLEMENTL
1708,49429535,751235,10651659,1227199,1,100,N,N,N,CP_Drtn,TT_Task,DT_FixedDUR2,RV_OK,TK_Complete,823A-D-LS-SLS-1050,Issue Completed Working Drawings,,,,0,0,0,0,32,0,0,0,,2011-03-05 08:00,2011-03-09 18:00,2014-07-11 08:00,2014-07-11 08:00,,2017-01-01 00:00,2017-01-01 00:00,,,2011-03-05 08:00,2011-03-09 18:00,,,,,PT_Normal,,,,,VdVbJwpQSjC1hKgLvBoSsA,qhOs+wpxpUCjRVor79ltww,,,N,0,0,,,2017-01-24 14:43,2017-01-24 15:40,CLEMENTL,CLEMENTL
1709,49429536,751235,10651659,1227199,1,100,N,N,N,CP_Drtn,TT_Task,DT_FixedDUR2,RV_OK,TK_Complete,823A-D-LS-SLS-1030,DDS Design - Response to comments and Resubmit,,,,0,0,0,0,32,0,0,0,,2011-01-26 08:00,2011-01-29 18:00,2014-07-11 08:00,2014-07-11 08:00,,2017-01-01 00:00,2017-01-01 00:00,,,2011-01-26 08:00,2011-01-29 18:00,,,,,PT_Normal,,,,,leQnaCraTg+MGp39rs6Rkg,jC35DH6f3UGbHBTMoK14Bg,,,N,0,0,,,2017-01-24 14:43,2017-01-24 15:40,CLEMENTL,CLEMENTL
1710,49429537,751235,10651660,1227199,1,100,N,N,N,CP_Drtn,TT_Task,DT_FixedDUR2,RV_OK,TK_Complete,823A-D-LS-TW-1010,DDS Design - Prepare and Submit,,,,0,0,0,0,288,0,0,0,,2011-07-09 08:00,2011-08-19 18:00,2014-07-11 08:00,2014-07-11 08:00,,2017-01-01 00:00,2017-01-01 00:00,,,2011-07-09 08:00,2011-08-19 18:00,,,,,PT_Normal,,,,,oWqOQAmWTtaf5pbazGxEGw,aIAmzXdRpkW6Ug/kXVBEvg,,,N,0,0,,,2017-01-24 14:43,2017-01-24 15:40,CLEMENTL,CLEMENTL
1711,49429538,751235,10651660,1227199,1,100,N,N,N,CP_Drtn,TT_Task,DT_FixedDUR2,RV_OK,TK_Complete,823A-D-LS-TW-1020,DDS Design - Review and Approval Period (by MTRC),,,,0,0,0,0,208,0,0,0,,2011-08-20 08:00,2011-09-20 18:00,2014-07-11 08:00,2014-07-11 08:00,,2017-01-01 00:00,2017-01-01 00:00,,,2011-08-20 08:00,2011-09-20 18:00,,,,,PT_Normal,,,,,+Q7hL4YJQ467uog5kKAgAQ,86/UN1uLU0+Wan3A56oCzg,,,N,0,0,,,2017-01-24 14:43,2017-01-24 15:40,CLEMENTL,CLEMENTL
1712,49429539,751235,10651660,1227199,1,100,N,N,N,CP_Drtn,TT_Task,DT_FixedDUR2,RV_OK,TK_Complete,823A-D-LS-TW-1030,DDS Design - Response to comments and Resubmit,,,,0,0,0,0,32,0,0,0,,2011-09-21 08:00,2011-09-24 18:00,2014-07-11 08:00,2014-07-11 08:00,,2017-01-01 00:00,2017-01-01 00:00,,,2011-09-21 08:00,2011-09-24 18:00,,,,,PT_Normal,,,,,cnr37cI7Tp23NE/Jdfuk0A,J8jfBbHRhESnSYWvS9zb1Q,,,N,0,0,,,2017-01-24 14:43,2017-01-24 15:40,CLEMENTL,CLEMENTL
1713,49429540,751235,10651660,1227199,1,100,N,N,N,CP_Drtn,TT_Task,DT_FixedDUR2,RV_OK,TK_Complete,823A-D-LS-TW-1040,DDS Design - Review and Approval Period (for resubmission)  (by MTRC & related Government Authorities),,,,0,0,0,0,208,0,0,0,,2011-09-26 08:00,2011-10-27 18:00,2014-07-11 08:00,2014-07-11 08:00,,2017-01-01 00:00,2017-01-01 00:00,,,2011-09-26 08:00,2011-10-27 18:00,,,,,PT_Normal,,,,,QsqzRHd7RxeFS16NIjknqA,5JZWFHuLSkSnzDlQnxwnaw,,,N,0,0,,,2017-01-24 14:43,2017-01-24 15:40,CLEMENTL,CLEMENTL
1714,49429541,751235,10651660,1227199,1,100,N,N,N,CP_Drtn,TT_Task,DT_FixedDUR2,RV_OK,TK_Complete,823A-D-LS-TW-1050,Issue Completed Working Drawings,,,,0,0,0,0,32,0,0,0,,2011-10-28 08:00,2011-11-01 18:00,2014-07-11 08:00,2014-07-11 08:00,,2017-01-01 00:00,2017-01-01 00:00,,,2011-10-28 08:00,2011-11-01 18:00,,,,,PT_Normal,,,,,74+AHH0ZQPukClyTEl0+Tw,9FwwA65lYEqzgdCEvwHt6g,,,N,0,0,,,2017-01-24 14:43,2017-01-24 15:40,CLEMENTL,CLEMENTL
1715,49429542,751235,10651661,1227199,1,100,N,N,N,CP_Drtn,TT_Task,DT_FixedDUR2,RV_OK,TK_Complete,823A-D-LS-NE-1010,DDS Design - Prepare and Submit,,,,0,0,0,0,288,0,0,0,,2011-11-02 08:00,2011-12-13 18:00,2014-07-11 08:00,2014-07-11 08:00,,2017-01-01 00:00,2017-01-01 00:00,,,2011-11-02 08:00,2011-12-13 18:00,,,,,PT_Normal,,,,,f4x0lwdLTU+mQ+xehH/s9A,WtRNdwQIZUKOO4pQL86pRA,,,N,0,0,,,2017-01-24 14:43,2017-01-24 15:40,CLEMENTL,CLEMENTL
1716,49429543,751235,10651661,1227199,1,100,N,N,N,CP_Drtn,TT_Task,DT_FixedDUR2,RV_OK,TK_Complete,823A-D-LS-NE-1020,DDS Design - Review and Approval Period  (by MTRC),,,,0,0,0,0,208,0,0,0,,2011-12-14 08:00,2012-01-16 18:00,2014-10-11 18:00,2014-10-11 18:00,,2017-01-01 00:00,2017-01-01 00:00,,,2011-12-14 08:00,2012-01-16 18:00,,,,,PT_Normal,,,,,Y4oaL/mWTCKWKlhc/YETfQ,ceOWu8ImEEySRUqewVouCw,,,N,0,0,,,2017-01-24 14:43,2017-01-24 14:53,CLEMENTL,CLEMENTL
1717,49429544,751235,10651661,1227199,1,100,N,N,N,CP_Drtn,TT_Task,DT_FixedDUR2,RV_OK,TK_Complete,823A-D-LS-NE-1030,DDS Design - Response to comments and Resubmit,,,,0,0,0,0,32,0,0,0,,2012-01-17 08:00,2012-01-20 18:00,2014-10-11 18:00,2014-10-11 18:00,,2017-01-01 00:00,2017-01-01 00:00,,,2012-01-17 08:00,2012-01-20 18:00,,,,,PT_Normal,,,,,5NEgvACTRZCfMTNB+bOVnQ,mxv+JhZ6VEaH8ngbjMxOPw,,,N,0,0,,,2017-01-24 14:43,2017-01-24 14:53,CLEMENTL,CLEMENTL
1718,49429545,751235,10651661,1227199,1,100,N,N,N,CP_Drtn,TT_Task,DT_FixedDUR2,RV_OK,TK_Complete,823A-D-LS-NE-1040,DDS Design - Review and Approval Period (for resubmission) (by MTRC & related Government Authorities),,,,0,0,0,0,208,0,0,0,,2012-01-21 08:00,2012-02-23 18:00,2014-10-11 18:00,2014-10-11 18:00,,2017-01-01 00:00,2017-01-01 00:00,,,2012-01-21 08:00,2012-02-23 18:00,,,,,PT_Normal,,,,,+6TgrPiySYe6gAxkp5SrDg,Cl2vhr83sUmSIAAQr9FeFg,,,N,0,0,,,2017-01-24 14:43,2017-01-24 14:53,CLEMENTL,CLEMENTL
1719,49429546,751235,10651661,1227199,1,100,N,N,N,CP_Drtn,TT_Task,DT_FixedDUR2,RV_OK,TK_Complete,823A-D-LS-NE-1050,Issue Completed Working Drawings,,,,0,0,0,0,32,0,0,0,,2012-02-24 08:00,2012-02-28 18:00,2014-10-11 18:00,2014-10-11 18:00,,2017-01-01 00:00,2017-01-01 00:00,,,2012-02-24 08:00,2012-02-28 18:00,,,,,PT_Normal,,,,,AgAyHLJsTaaSHKiBWgcUQg,FzU5IvLzRkaIELzTqs0h1g,,,N,0,0,,,2017-01-24 14:43,2017-01-24 14:53,CLEMENTL,CLEMENTL
1720,49429547,751235,10651662,1239098,1,100,N,N,N,CP_Drtn,TT_Task,DT_FixedDUR2,RV_OK,TK_Complete,823A-DS-G-1010,Preliminary Design Programme - Prepare and Submit for Approval [PS7.1.8 - App. Z2.1],,,,0,0,0,0,96,0,0,0,,2010-07-19 08:00,2010-07-31 18:00,2017-06-12 18:00,2017-06-12 18:00,,2017-01-01 00:00,2017-01-01 00:00,,,2010-07-19 08:00,2010-07-31 18:00,,,,,PT_Normal,,,,,jGx87wr+ROKzl7RIehp5GQ,cWOwAfyaqkmHZf3qgVWP8A,,,N,0,0,,,2017-01-24 14:43,2017-01-24 15:36,CLEMENTL,CLEMENTL
1721,49429548,751235,10651662,1239098,1,100,N,N,N,CP_Drtn,TT_Task,DT_FixedDUR2,RV_OK,TK_Complete,823A-DS-G-1020,Preliminary Design Programme - Review and Approval Period [PS7.1.8 - App. Z2.2],,,,0,0,0,0,176,0,0,0,,2010-08-02 08:00,2010-08-26 18:00,2017-06-12 18:00,2017-06-12 18:00,,2017-01-01 00:00,2017-01-01 00:00,,,2010-08-02 08:00,2010-08-26 18:00,,,,,PT_Normal,,,,,GW4y8WIeT2eZvbCaew4BVQ,fB8I+vWEPUC70S6OC+auMA,,,N,0,0,,,2017-01-24 14:43,2017-01-24 15:36,CLEMENTL,CLEMENTL
1722,49429549,751235,10651662,1239098,1,100,N,N,N,CP_Drtn,TT_Task,DT_FixedDUR2,RV_OK,TK_Complete,823A-DS-G-1030,Preliminary Design Programme - Resubmission and Approval (if required) [PS7.1.8 - App. Z2.2],,,,0,0,0,0,240,0,0,0,,2010-08-27 08:00,2010-10-02 18:00,2017-06-12 18:00,2017-06-12 18:00,,2017-01-01 00:00,2017-01-01 00:00,,,2010-08-27 08:00,2010-10-02 18:00,,,,,PT_Normal,,,,,7sTLCMtlQeaDdirpa8OZug,MPaStHD4XUycd9TL/9x9dg,,,N,0,0,,,2017-01-24 14:43,2017-01-24 15:36,CLEMENTL,CLEMENTL
1723,49429550,751235,10651662,1239098,1,100,N,N,N,CP_Drtn,TT_Task,DT_FixedDUR2,RV_OK,TK_Complete,823A-DS-G-1040,Schedule of Designs - Prepare and Submit for Approval [PS7.1.8 - App. Z2.5],,,,0,0,0,0,96,0,0,0,,2010-07-19 08:00,2010-07-31 18:00,2014-10-11 18:00,2014-10-11 18:00,,2017-01-01 00:00,2017-01-01 00:00,,,2010-07-19 08:00,2010-07-31 18:00,,,,,PT_Normal,,,,,Dn4mAS9EQji3MwIZaXyVDg,XbN+D6RjoUKRUMC59LB87w,,,N,0,0,,,2017-01-24 14:43,2017-01-24 14:53,CLEMENTL,CLEMENTL
1724,49429551,751235,10651662,1227199,1,100,N,N,N,CP_Drtn,TT_Task,DT_FixedDUR2,RV_OK,TK_Complete,823A-DS-G-1050,Detailed Proposal for Carrying Out the Cross Passage Works [PS11.5.2],,,,0,0,0,0,240,0,0,0,,2011-10-07 08:00,2011-11-10 18:00,2017-06-12 18:00,2017-06-12 18:00,,2017-01-01 00:00,2017-01-01 00:00,,,2011-10-07 08:00,2011-11-10 18:00,,,,,PT_Normal,,,,,8ibbKRWtQzGbDQYIB6FvVQ,A8WMoTpSIk2jAI8LEwBVDA,,,N,0,0,,,2017-01-24 14:43,2017-01-24 15:36,CLEMENTL,CLEMENTL
1725,49429552,751235,10651664,1227199,1,100,N,N,N,CP_Drtn,TT_Task,DT_FixedDUR2,RV_OK,TK_Complete,823A-D-TBM-TSM-1010,Prepare and Submit,,,,0,0,0,0,96,0,0,0,,2010-11-26 08:00,2010-12-09 18:00,2014-10-11 18:00,2014-10-11 18:00,,2017-01-01 00:00,2017-01-01 00:00,,,2010-11-26 08:00,2010-12-09 18:00,,,,,PT_Normal,,,,,w9dtAviRSzmkJcQW1KFIZQ,cZIj4h8FsEGV5J620HticQ,,,N,0,0,,,2017-01-24 14:43,2017-01-24 14:53,CLEMENTL,CLEMENTL
1726,49429553,751235,10651664,1227199,1,100,N,N,N,CP_Drtn,TT_Task,DT_FixedDUR2,RV_OK,TK_Complete,823A-D-TBM-TSM-1020,Review and Approval Period,,,,0,0,0,0,192,0,0,0,,2010-12-10 08:00,2011-01-10 18:00,2014-10-11 18:00,2014-10-11 18:00,,2017-01-01 00:00,2017-01-01 00:00,,,2010-12-10 08:00,2011-01-10 18:00,,,,,PT_Normal,,,,,M1xS5JRsQ+aR2/C4K59pRg,xmkl02gW2E2fnuAbV+nUJg,,,N,0,0,,,2017-01-24 14:43,2017-01-24 14:53,CLEMENTL,CLEMENTL
1727,49429554,751235,10651664,1227199,1,100,N,N,N,CP_Drtn,TT_Task,DT_FixedDUR2,RV_OK,TK_Complete,823A-D-TBM-TSM-1030,Response to comments and Resubmit,,,,0,0,0,0,24,0,0,0,,2011-01-11 08:00,2011-01-13 18:00,2014-10-11 18:00,2014-10-11 18:00,,2017-01-01 00:00,2017-01-01 00:00,,,2011-01-11 08:00,2011-01-13 18:00,,,,,PT_Normal,,,,,KOTpHTtiQ/6gu5RujwkQ7Q,Q7rXuWBJCkaYxQB9H9a51A,,,N,0,0,,,2017-01-24 14:43,2017-01-24 14:53,CLEMENTL,CLEMENTL
1728,49429555,751235,10651664,1227199,1,100,N,N,N,CP_Drtn,TT_Task,DT_FixedDUR2,RV_OK,TK_Complete,823A-D-TBM-TSM-1040,Review and Approval Period (for resubmission),,,,0,0,0,0,192,0,0,0,,2011-01-14 08:00,2011-02-14 18:00,2014-10-11 18:00,2014-10-11 18:00,,2017-01-01 00:00,2017-01-01 00:00,,,2011-01-14 08:00,2011-02-14 18:00,,,,,PT_Normal,,,,,U3Ph/TGQTFWhhhvvybq1VQ,yzuYe3fnN0SGvQA+3cUQ2w,,,N,0,0,,,2017-01-24 14:43,2017-01-24 14:53,CLEMENTL,CLEMENTL
1729,49429556,751235,10651665,1227199,1,100,N,N,N,CP_Drtn,TT_Task,DT_FixedDUR2,RV_OK,TK_Complete,823A-D-TBM-TBM-1010,Design TBM and submit full details to the Engineer [PS7.2.1],,,,0,0,0,0,184,0,0,0,,2010-07-19 08:00,2010-08-13 18:00,2014-10-11 18:00,2014-10-11 18:00,,2017-01-01 00:00,2017-01-01 00:00,,,2010-07-19 08:00,2010-08-13 18:00,,,,,PT_Normal,,,,,QZeDgVCJQ6+yL5Ge5K2eDw,Y8AO8XqRJEuL8yMH9fT5HA,,,N,0,0,,,2017-01-24 14:43,2017-01-24 14:53,CLEMENTL,CLEMENTL
1730,49429557,751235,10651665,1227199,1,100,N,N,N,CP_Drtn,TT_Task,DT_FixedDUR2,RV_OK,TK_Complete,823A-D-TBM-TBM-1020,TBM Design - Approval period,,,,0,0,0,0,96,0,0,0,,2010-08-14 08:00,2010-08-27 18:00,2014-10-11 18:00,2014-10-11 18:00,,2017-01-01 00:00,2017-01-01 00:00,,,2010-08-14 08:00,2010-08-27 18:00,,,,,PT_Normal,,,,,kEy+gdd5RxO3u5WKsmfX7g,sbNH9a/y2USKWyxQlO9a6A,,,N,0,0,,,2017-01-24 14:43,2017-01-24 14:53,CLEMENTL,CLEMENTL
1731,49429558,751235,10651665,1227199,1,100,N,N,N,CP_Drtn,TT_Task,DT_FixedDUR2,RV_OK,TK_Complete,823A-D-TBM-TBM-1030,TBM Design - Resubmission and approval period,,,,0,0,0,0,128,0,0,0,,2010-08-28 08:00,2010-09-15 18:00,2014-10-11 18:00,2014-10-11 18:00,,2017-01-01 00:00,2017-01-01 00:00,,,2010-08-28 08:00,2010-09-15 18:00,,,,,PT_Normal,,,,,7hsB5IjuTmWURi5DGBlSrg,P/CZAKTpNk2/3NbKGGQ+AA,,,N,0,0,,,2017-01-24 14:43,2017-01-24 14:53,CLEMENTL,CLEMENTL
1732,49429559,751235,10651666,1227199,1,100,N,N,N,CP_Drtn,TT_Task,DT_FixedDUR2,RV_OK,TK_Complete,823A-D-TBM-C-1020,AIP Design - Review and Approval Period  (by MTRC),,,,0,0,0,0,192,0,0,0,,2011-10-14 08:00,2011-11-10 18:00,2017-06-12 18:00,2017-06-12 18:00,,2017-01-01 00:00,2017-01-01 00:00,,,2011-10-14 08:00,2011-11-10 18:00,,,,,PT_Normal,,,,,EB10SCWNQd+EgiMxRPzc+w,msEaE7VhYkesg0+3fayvXw,,,N,0,0,,,2017-01-24 14:43,2017-01-24 15:39,CLEMENTL,CLEMENTL
1733,49429560,751235,10651666,1227199,1,100,N,N,N,CP_Drtn,TT_Task,DT_FixedDUR2,RV_OK,TK_Complete,823A-D-TBM-C-1030,AIP Design - Response to comments and Resubmit,,,,0,0,0,0,16,0,0,0,,2011-11-11 08:00,2011-11-12 18:00,2017-06-12 18:00,2017-06-12 18:00,,2017-01-01 00:00,2017-01-01 00:00,,,2011-11-11 08:00,2011-11-12 18:00,,,,,PT_Normal,,,,,2IidnKaeRBauRC92eDnhiQ,WLttzRwjFk632YyjpckLZg,,,N,0,0,,,2017-01-24 14:43,2017-01-24 15:39,CLEMENTL,CLEMENTL
1734,49429561,751235,10651666,1227199,1,100,N,N,N,CP_Drtn,TT_Task,DT_FixedDUR2,RV_OK,TK_Complete,823A-D-TBM-C-1040,AIP Design - Review and Approval Period (for resubmission)  (by MTRC & related Government Authorities),,,,0,0,0,0,192,0,0,0,,2011-11-14 08:00,2011-12-10 18:00,2017-06-12 18:00,2017-06-12 18:00,,2017-01-01 00:00,2017-01-01 00:00,,,2011-11-14 08:00,2011-12-10 18:00,,,,,PT_Normal,,,,,sHasB8RCQxCwNfoiMJ/mbA,NiltATa+7U6TUkkQRWSgBA,,,N,0,0,,,2017-01-24 14:43,2017-01-24 15:39,CLEMENTL,CLEMENTL
1735,49429562,751235,10651666,1227199,1,100,N,N,N,CP_Drtn,TT_Task,DT_FixedDUR2,RV_OK,TK_Complete,823A-D-TBM-C-1050,DDS Design - Prepare and Submit,,,,0,0,0,0,288,0,0,0,,2011-11-14 08:00,2011-12-24 18:00,2017-06-12 18:00,2017-06-12 18:00,,2017-01-01 00:00,2017-01-01 00:00,,,2011-11-14 08:00,2011-12-24 18:00,,,,,PT_Normal,,,,,yn4UVCRWS2yu8TESzDcNgA,UQnj0crAwE6CL9OeI3IMAw,,,N,0,0,,,2017-01-24 14:43,2017-01-24 15:39,CLEMENTL,CLEMENTL
1736,49429563,751235,10651666,1227199,1,100,N,N,N,CP_Drtn,TT_Task,DT_FixedDUR2,RV_OK,TK_Complete,823A-D-TBM-C-1060,DDS Design - Review and Approval Period  (by MTRC),,,,0,0,0,0,192,0,0,0,,2011-12-28 08:00,2012-01-28 18:00,2017-06-12 18:00,2017-06-12 18:00,,2017-01-01 00:00,2017-01-01 00:00,,,2011-12-28 08:00,2012-01-28 18:00,,,,,PT_Normal,,,,,NLV/Ma+WQEqZIewZUz3igQ,12yokK/mKESlJb4HiOydag,,,N,0,0,,,2017-01-24 14:43,2017-01-24 15:39,CLEMENTL,CLEMENTL
1737,49429564,751235,10651666,1227199,1,100,N,N,N,CP_Drtn,TT_Task,DT_FixedDUR2,RV_OK,TK_Complete,823A-D-TBM-C-1070,DDS Design - Response to comments and Resubmit,,,,0,0,0,0,32,0,0,0,,2012-01-30 08:00,2012-02-02 18:00,2017-06-12 18:00,2017-06-12 18:00,,2017-01-01 00:00,2017-01-01 00:00,,,2012-01-30 08:00,2012-02-02 18:00,,,,,PT_Normal,,,,,mYZ8wCX8Ro6oYDUzPiXyIw,iGLolmvF4kWRryGapuiXew,,,N,0,0,,,2017-01-24 14:43,2017-01-24 15:39,CLEMENTL,CLEMENTL
1738,49429565,751235,10651666,1227199,1,100,N,N,N,CP_Drtn,TT_Task,DT_FixedDUR2,RV_OK,TK_Complete,823A-D-TBM-C-1080,DDS Design - Review and Approval Period (for resubmission)  (by MTRC & related Government Authorities),,,,0,0,0,0,192,0,0,0,,2012-02-03 08:00,2012-03-01 18:00,2017-06-12 18:00,2017-06-12 18:00,,2017-01-01 00:00,2017-01-01 00:00,,,2012-02-03 08:00,2012-03-01 18:00,,,,,PT_Normal,,,,,G1cMgRmIQRWFZGfP1U7nLQ,mB0Xu/2VxkKWMVyEV8FOiQ,,,N,0,0,,,2017-01-24 14:43,2017-01-24 15:39,CLEMENTL,CLEMENTL
1739,49429566,751235,10651666,1227199,1,100,N,N,N,CP_Drtn,TT_Task,DT_FixedDUR2,RV_OK,TK_Complete,823A-D-TBM-C-1090,Issue Completed Working Drawings,,,,0,0,0,0,24,0,0,0,,2012-03-02 08:00,2012-03-05 18:00,2017-06-12 18:00,2017-06-12 18:00,,2017-01-01 00:00,2017-01-01 00:00,,,2012-03-02 08:00,2012-03-05 18:00,,,,,PT_Normal,,,,,KTQ/Ct9YQi64iELbnxNR2g,GGHjaxUwCEKzVRLKwFqS6Q,,,N,0,0,,,2017-01-24 14:43,2017-01-24 15:39,CLEMENTL,CLEMENTL
1740,49429567,751235,10651666,1227199,1,100,N,N,N,CP_Drtn,TT_Task,DT_FixedDUR2,RV_OK,TK_Complete,823A-D-TBM-C-1010,AIP Design - Prepare and Submit,,,,0,0,0,0,288,0,0,0,,2011-08-30 08:00,2011-10-13 18:00,2017-06-12 18:00,2017-06-12 18:00,,2017-01-01 00:00,2017-01-01 00:00,,,2011-08-30 08:00,2011-10-13 18:00,,,,,PT_Normal,,,,,HxJ2O55TSA6T1RNXp6gVcQ,IHqifWw+Z0Ka93RfpMZqIQ,,,N,0,0,,,2017-01-24 14:43,2017-01-24 15:39,CLEMENTL,CLEMENTL
1741,49429568,751235,10651667,1227199,1,100,N,N,N,CP_Drtn,TT_Task,DT_FixedDUR2,RV_OK,TK_Complete,823A-D-TBM-ML-1020,AIP Design - Review and Approval Period (by MTRC),,,,0,0,0,0,192,0,0,0,,2010-08-14 08:00,2010-09-10 18:00,2014-10-11 18:00,2014-10-11 18:00,,2017-01-01 00:00,2017-01-01 00:00,,,2010-08-14 08:00,2010-09-10 18:00,,,,,PT_Normal,,,,,2afKouxpQ2OpJ7iT+C52dQ,qk2FEIKZu0qtn5+wfttShg,,,N,0,0,,,2017-01-24 14:43,2017-01-24 14:53,CLEMENTL,CLEMENTL
1742,49429569,751235,10651667,1227199,1,100,N,N,N,CP_Drtn,TT_Task,DT_FixedDUR2,RV_OK,TK_Complete,823A-D-TBM-ML-1030,DDS Design - Prepare and Submit,,,,0,0,0,0,304,0,0,0,,2010-09-11 08:00,2010-10-28 18:00,2014-10-11 18:00,2014-10-11 18:00,,2017-01-01 00:00,2017-01-01 00:00,,,2010-09-11 08:00,2010-10-28 18:00,,,,,PT_Normal,,,,,ik+oObMpSUm+wLXouSFWOQ,TP51IyPBd0ip7P40SH1oDA,,,N,0,0,,,2017-01-24 14:43,2017-01-24 14:53,CLEMENTL,CLEMENTL
1743,49429570,751235,10651667,1227199,1,100,N,N,N,CP_Drtn,TT_Task,DT_FixedDUR2,RV_OK,TK_Complete,823A-D-TBM-ML-1050,DDS Design - Response to comments and Resubmit,,,,0,0,0,0,48,0,0,0,,2010-11-26 08:00,2010-12-02 18:00,2014-10-11 18:00,2014-10-11 18:00,,2017-01-01 00:00,2017-01-01 00:00,,,2010-11-26 08:00,2010-12-02 18:00,,,,,PT_Normal,,,,,fMha2K/ZSOe4cqQhZSh1Dg,yXgSI1rjnU6jiBrhisyPrw,,,N,0,0,,,2017-01-24 14:43,2017-01-24 14:53,CLEMENTL,CLEMENTL
1744,49429571,751235,10651667,1227199,1,100,N,N,N,CP_Drtn,TT_Task,DT_FixedDUR2,RV_OK,TK_Complete,823A-D-TBM-ML-1060,DDS Design - Review and Approval Period (for resubmission)  (by MTRC & related Government Authorities),,,,0,0,0,0,192,0,0,0,,2010-12-03 08:00,2011-01-03 18:00,2014-10-11 18:00,2014-10-11 18:00,,2017-01-01 00:00,2017-01-01 00:00,,,2010-12-03 08:00,2011-01-03 18:00,,,,,PT_Normal,,,,,VdkhJdX1SriO3akk4FHFVw,rnUvMjOZl0mTclikIvS7mA,,,N,0,0,,,2017-01-24 14:43,2017-01-24 14:53,CLEMENTL,CLEMENTL
1745,49429572,751235,10651667,1227199,1,100,N,N,N,CP_Drtn,TT_Task,DT_FixedDUR2,RV_OK,TK_Complete,823A-D-TBM-ML-1070,Issue Completed Working Drawings,,,,0,0,0,0,32,0,0,0,,2011-01-04 08:00,2011-01-07 18:00,2014-10-11 18:00,2014-10-11 18:00,,2017-01-01 00:00,2017-01-01 00:00,,,2011-01-04 08:00,2011-01-07 18:00,,,,,PT_Normal,,,,,Yb23GvI7ROSOJ1ky+v5bTQ,EqhmV4Dzpk+XTFFHnYfPbw,,,N,0,0,,,2017-01-24 14:43,2017-01-24 14:53,CLEMENTL,CLEMENTL
1746,49429573,751235,10651667,1227199,1,100,N,N,N,CP_Drtn,TT_Task,DT_FixedDUR2,RV_OK,TK_Complete,823A-D-TBM-ML-1040,DDS Design - Review and Approval Period  (by MTRC),,,,0,0,0,0,192,0,0,0,,2010-10-29 08:00,2010-11-25 18:00,2014-10-11 18:00,2014-10-11 18:00,,2017-01-01 00:00,2017-01-01 00:00,,,2010-10-29 08:00,2010-11-25 18:00,,,,,PT_Normal,,,,,dRHn7tt5RRWbfrgxzPGsjQ,a4ueFLYN/0CIsGKmNZJWOQ,,,N,0,0,,,2017-01-24 14:43,2017-01-24 14:53,CLEMENTL,CLEMENTL
1747,49429574,751235,10651667,1227199,1,100,N,N,N,CP_Drtn,TT_Task,DT_FixedDUR2,RV_OK,TK_Complete,823A-D-TBM-ML-1010,AIP Design - Prepare and Submit,,,,0,0,0,0,184,0,0,0,,2010-07-19 08:00,2010-08-13 18:00,2014-10-11 18:00,2014-10-11 18:00,,2017-01-01 00:00,2017-01-01 00:00,,,2010-07-19 08:00,2010-08-13 18:00,,,,,PT_Normal,,,,,g2tENF8BQZyY2kToLNzvog,BmUGNbAVh0y5jp4rhHC3RQ,,,N,0,0,,,2017-01-24 14:43,2017-01-24 14:53,CLEMENTL,CLEMENTL
1748,49429575,751235,10651668,1227199,1,100,N,N,N,CP_Drtn,TT_Task,DT_FixedDUR2,RV_OK,TK_Complete,823A-D-TBM-TS-1010,DDS Design - Prepare and Submit,,,,0,0,0,0,288,0,0,0,,2011-07-19 08:00,2011-08-29 18:00,2017-06-12 18:00,2017-06-12 18:00,,2017-01-01 00:00,2017-01-01 00:00,,,2011-07-19 08:00,2011-08-29 18:00,,,,,PT_Normal,,,,,Fy4BNAe3Q1uw1sRQ3HFRSw,OfuQ4+SQnEyq7LWdzmZFnQ,,,N,0,0,,,2017-01-24 14:43,2017-01-24 15:39,CLEMENTL,CLEMENTL
1749,49429576,751235,10651668,1227199,1,100,N,N,N,CP_Drtn,TT_Task,DT_FixedDUR2,RV_OK,TK_Complete,823A-D-TBM-TS-1020,DDS Design - Review and Approval Period  (by MTRC),,,,0,0,0,0,208,0,0,0,,2011-08-30 08:00,2011-09-29 18:00,2017-06-12 18:00,2017-06-12 18:00,,2017-01-01 00:00,2017-01-01 00:00,,,2011-08-30 08:00,2011-09-29 18:00,,,,,PT_Normal,,,,,1taj9vMET0ekgaxVCUfOAQ,FK4wA/WUj02VZHqmOXtYSQ,,,N,0,0,,,2017-01-24 14:43,2017-01-24 15:36,CLEMENTL,CLEMENTL
1750,49429577,751235,10651668,1227199,1,100,N,N,N,CP_Drtn,TT_Task,DT_FixedDUR2,RV_OK,TK_Complete,823A-D-TBM-TS-1030,DDS Design - Response to comments and Resubmit,,,,0,0,0,0,32,0,0,0,,2011-09-30 08:00,2011-10-06 18:00,2017-06-12 18:00,2017-06-12 18:00,,2017-01-01 00:00,2017-01-01 00:00,,,2011-09-30 08:00,2011-10-06 18:00,,,,,PT_Normal,,,,,3hkRvl9nSH65IpL+kg3B0g,rifk9cZ1J06b0OForkEgmg,,,N,0,0,,,2017-01-24 14:43,2017-01-24 15:36,CLEMENTL,CLEMENTL
1751,49429578,751235,10651668,1227199,1,100,N,N,N,CP_Drtn,TT_Task,DT_FixedDUR2,RV_OK,TK_Complete,823A-D-TBM-TS-1040,DDS Design - Review and Approval Period (for resubmission)  (by MTRC & related Government Authorities),,,,0,0,0,0,208,0,0,0,,2011-10-07 08:00,2011-11-05 18:00,2017-06-12 18:00,2017-06-12 18:00,,2017-01-01 00:00,2017-01-01 00:00,,,2011-10-07 08:00,2011-11-05 18:00,,,,,PT_Normal,,,,,2svqjo8bSqi9/ngM0kkc6Q,tT+3Mcez4Eq1qgaP6G0WaQ,,,N,0,0,,,2017-01-24 14:43,2017-01-24 15:36,CLEMENTL,CLEMENTL
1752,49429579,751235,10651668,1227199,1,100,N,N,N,CP_Drtn,TT_Task,DT_FixedDUR2,RV_OK,TK_Complete,823A-D-TBM-TS-1050,Issue Completed Working Drawings,,,,0,0,0,0,32,0,0,0,,2011-11-07 08:00,2011-11-10 18:00,2017-06-12 18:00,2017-06-12 18:00,,2017-01-01 00:00,2017-01-01 00:00,,,2011-11-07 08:00,2011-11-10 18:00,,,,,PT_Normal,,,,,975TKh6aScKUfGridKhC2A,7HxgSh2qUUaISz+8a/Qttw,,,N,0,0,,,2017-01-24 14:43,2017-01-24 15:36,CLEMENTL,CLEMENTL
1753,49429580,751235,10651669,1227199,1,100,N,N,N,CP_Drtn,TT_Task,DT_FixedDUR2,RV_OK,TK_Complete,823A-D-TBM-CPL-1010,AIP Design - Prepare and Submit,,,,0,0,0,0,288,0,0,0,,2011-01-08 08:00,2011-02-22 18:00,2017-06-12 18:00,2017-06-12 18:00,,2017-01-01 00:00,2017-01-01 00:00,,,2011-01-08 08:00,2011-02-22 18:00,,,,,PT_Normal,,,,,CBddNqrfQVKcEGg6Z7isWA,Ywk4snNkF0igdaPI70Qkww,,,N,0,0,,,2017-01-24 14:43,2017-01-24 15:39,CLEMENTL,CLEMENTL
1754,49429581,751235,10651669,1227199,1,100,N,N,N,CP_Drtn,TT_Task,DT_FixedDUR2,RV_OK,TK_Complete,823A-D-TBM-CPL-1020,AIP Design - Review and Approval Period  (by MTRC),,,,0,0,0,0,192,0,0,0,,2011-02-23 08:00,2011-03-22 18:00,2017-06-12 18:00,2017-06-12 18:00,,2017-01-01 00:00,2017-01-01 00:00,,,2011-02-23 08:00,2011-03-22 18:00,,,,,PT_Normal,,,,,BXdxMyT7SsmFP30h+ziMKg,wlgmcjPS6UWv8dEijsESVg,,,N,0,0,,,2017-01-24 14:43,2017-01-24 15:39,CLEMENTL,CLEMENTL
1755,49429582,751235,10651669,1227199,1,100,N,N,N,CP_Drtn,TT_Task,DT_FixedDUR2,RV_OK,TK_Complete,823A-D-TBM-CPL-1030,AIP Design - Response to comments and Resubmit,,,,0,0,0,0,16,0,0,0,,2011-03-23 08:00,2011-03-24 18:00,2017-06-12 18:00,2017-06-12 18:00,,2017-01-01 00:00,2017-01-01 00:00,,,2011-03-23 08:00,2011-03-24 18:00,,,,,PT_Normal,,,,,TonnrPnJRhuSQp9F8f5M5g,OyWJQ/5twUKqC2R/dvheFA,,,N,0,0,,,2017-01-24 14:43,2017-01-24 15:39,CLEMENTL,CLEMENTL
1756,49429583,751235,10651669,1227199,1,100,N,N,N,CP_Drtn,TT_Task,DT_FixedDUR2,RV_OK,TK_Complete,823A-D-TBM-CPL-1040,AIP Design - Review and Approval Period (for resubmission)  (by MTRC & related Government Authorities),,,,0,0,0,0,192,0,0,0,,2011-03-25 08:00,2011-04-26 18:00,2017-06-12 18:00,2017-06-12 18:00,,2017-01-01 00:00,2017-01-01 00:00,,,2011-03-25 08:00,2011-04-26 18:00,,,,,PT_Normal,,,,,vFsuo0MVQ36wnkuEwlKpHw,+rmTwSqY40WOwl6pfEQ21Q,,,N,0,0,,,2017-01-24 14:43,2017-01-24 15:39,CLEMENTL,CLEMENTL
1757,49429584,751235,10651669,1227199,1,100,N,N,N,CP_Drtn,TT_Task,DT_FixedDUR2,RV_OK,TK_Complete,823A-D-TBM-CPL-1050,DDS Design - Prepare and Submit,,,,0,0,0,0,288,0,0,0,,2011-03-25 08:00,2011-05-12 18:00,2017-06-12 18:00,2017-06-12 18:00,,2017-01-01 00:00,2017-01-01 00:00,,,2011-03-25 08:00,2011-05-12 18:00,,,,,PT_Normal,,,,,SIPsHFrrStuqGRA2jLE53g,Cb1v6xKrG0uygWIMiUjTkA,,,N,0,0,,,2017-01-24 14:43,2017-01-24 15:39,CLEMENTL,CLEMENTL
1758,49429585,751235,10651669,1227199,1,100,N,N,N,CP_Drtn,TT_Task,DT_FixedDUR2,RV_OK,TK_Complete,823A-D-TBM-CPL-1060,DDS Design - Review and Approval Period  (by MTRC & related Government Authorities),,,,0,0,0,0,192,0,0,0,,2011-05-13 08:00,2011-06-10 18:00,2017-06-12 18:00,2017-06-12 18:00,,2017-01-01 00:00,2017-01-01 00:00,,,2011-05-13 08:00,2011-06-10 18:00,,,,,PT_Normal,,,,,/ALCs6tCRM6Q5LjZNnrztw,1TyQnVW2fEC5thxV+b5GuQ,,,N,0,0,,,2017-01-24 14:43,2017-01-24 15:39,CLEMENTL,CLEMENTL
1759,49429586,751235,10651669,1227199,1,100,N,N,N,CP_Drtn,TT_Task,DT_FixedDUR2,RV_OK,TK_Complete,823A-D-TBM-CPL-1070,DDS Design - Response to comments and Resubmit,,,,0,0,0,0,32,0,0,0,,2011-06-11 08:00,2011-06-15 18:00,2017-06-12 18:00,2017-06-12 18:00,,2017-01-01 00:00,2017-01-01 00:00,,,2011-06-11 08:00,2011-06-15 18:00,,,,,PT_Normal,,,,,qge3GnwCRFWIS3LHI4lNGg,N9uTjGP/G0eosQEg9E8Sdg,,,N,0,0,,,2017-01-24 14:43,2017-01-24 15:39,CLEMENTL,CLEMENTL
1760,49429587,751235,10651669,1227199,1,100,N,N,N,CP_Drtn,TT_Task,DT_FixedDUR2,RV_OK,TK_Complete,823A-D-TBM-CPL-1090,Issue Completed Working Drawings,,,,0,0,0,0,24,0,0,0,,2011-07-15 08:00,2011-07-18 18:00,2017-06-12 18:00,2017-06-12 18:00,,2017-01-01 00:00,2017-01-01 00:00,,,2011-07-15 08:00,2011-07-18 18:00,,,,,PT_Normal,,,,,9JZbjuUtSuumdlXwa/wlNA,aKn0bu9dik++um/pzzB9Hw,,,N,0,0,,,2017-01-24 14:43,2017-01-24 15:39,CLEMENTL,CLEMENTL
1761,49429588,751235,10651669,1227199,1,100,N,N,N,CP_Drtn,TT_Task,DT_FixedDUR2,RV_OK,TK_Complete,823A-D-TBM-CPL-1080,DDS Design - Review and Approval Period (for resubmission)  (by MTRC & related Government Authorities),,,,0,0,0,0,192,0,0,0,,2011-06-16 08:00,2011-07-14 18:00,2017-06-12 18:00,2017-06-12 18:00,,2017-01-01 00:00,2017-01-01 00:00,,,2011-06-16 08:00,2011-07-14 18:00,,,,,PT_Normal,,,,,b19fHCCgTriAVX/ZAFFVmw,HH9nKMPPVUuiK0Y5AXqMjg,,,N,0,0,,,2017-01-24 14:43,2017-01-24 15:39,CLEMENTL,CLEMENTL
1762,49429589,751235,10651671,1227199,1,100,N,N,N,CP_Drtn,TT_Task,DT_FixedDUR2,RV_OK,TK_Complete,823A-D-MIS-RW-1010,AIP Design - Prepare & Submit,,,,0,0,0,0,128,0,0,0,,2015-06-01 08:00,2015-06-06 18:00,2014-10-11 18:00,2014-10-11 18:00,,2017-01-01 00:00,2017-01-01 00:00,,,2015-09-23 08:00,2015-10-13 18:00,,,,,PT_Normal,,,,,KIVJtgn1TKOVdwxswjoyfw,QfUyLDH7WUyI3IHPwf5h7A,,,N,0,0,,,2017-01-24 14:43,2017-01-24 14:53,CLEMENTL,CLEMENTL
1763,49429590,751235,10651671,1227199,1,100,N,N,N,CP_Drtn,TT_Task,DT_FixedDUR2,RV_OK,TK_Complete,823A-D-MIS-RW-1020,AIP Design - Review & Approval Period (by MTR),,,,0,0,0,0,192,0,0,0,,2015-06-08 08:00,2015-06-13 18:00,2014-10-11 18:00,2014-10-11 18:00,,2017-01-01 00:00,2017-01-01 00:00,,,2015-10-14 08:00,2015-11-11 18:00,,,,,PT_Normal,,,,,1GHLynP2TDaI65Se5wxwKA,/arLlmT4Ckyt2WBfk7PYoA,,,N,0,0,,,2017-01-24 14:43,2017-01-24 14:53,CLEMENTL,CLEMENTL
1764,49429591,751235,10651671,1227199,1,100,N,N,N,CP_Drtn,TT_Task,DT_FixedDUR2,RV_OK,TK_Complete,823A-D-MIS-RW-1030,AIP Design - Response to comments and Resubmit,,,,0,0,0,0,24,0,0,0,,2015-06-15 01:00,2015-06-19 18:00,2014-10-11 18:00,2014-10-11 18:00,,2017-01-01 00:00,2017-01-01 00:00,,,2015-11-12 08:00,2015-11-14 18:00,,,,,PT_Normal,,,,,kvTJvNmUTPWa9lQpF+C4xw,9h7a/KnU4020YkfyT9WTnQ,,,N,0,0,,,2017-01-24 14:43,2017-01-24 14:53,CLEMENTL,CLEMENTL
1765,49429592,751235,10651671,1227199,1,100,N,N,N,CP_Drtn,TT_Task,DT_FixedDUR2,RV_OK,TK_Complete,823A-D-MIS-RW-1040,AIP Design - Review & Approval Period (for resubmission) (by MTRC & related Government Authorities),,,,0,0,0,0,192,0,0,0,,2015-06-22 08:00,2015-06-30 18:00,2014-10-11 18:00,2014-10-11 18:00,,2017-01-01 00:00,2017-01-01 00:00,,,2015-11-16 08:00,2015-12-12 18:00,,,,,PT_Normal,,,,,/Iz3fSYmRfqbo+I5oslv4g,Paar4iS6TEOCOcjSK2BAgg,,,N,0,0,,,2017-01-24 14:43,2017-01-24 14:53,CLEMENTL,CLEMENTL
1766,49429593,751235,10651671,1227199,1,100,N,N,N,CP_Drtn,TT_Task,DT_FixedDUR2,RV_OK,TK_Complete,823A-D-MIS-RW-1050,DDS Design - Prepare & Submit,,,,0,0,0,0,280,0,0,0,,2015-09-01 08:00,2015-09-05 18:00,2014-10-11 18:00,2014-10-11 18:00,,2017-01-01 00:00,2017-01-01 00:00,,,2016-01-13 08:00,2016-02-25 18:00,,,,,PT_Normal,,,,,alPhpfMbQdaOFDPv0Z+fbA,eNUr2CCpjEKsinw53VtyhA,,,N,0,0,,,2017-01-24 14:43,2017-01-24 14:53,CLEMENTL,CLEMENTL
1767,49429594,751235,10651671,1227199,1,100,N,N,N,CP_Drtn,TT_Task,DT_FixedDUR2,RV_OK,TK_Complete,823A-D-MIS-RW-1060,DDS Design - Review & Approval Period  (by MTRC),,,,0,0,0,0,192,0,0,0,,2015-09-07 08:00,2015-09-12 18:00,2014-10-11 18:00,2014-10-11 18:00,,2017-01-01 00:00,2017-01-01 00:00,,,2016-02-26 08:00,2016-03-24 18:00,,,,,PT_Normal,,,,,ncgBy8c7RKilxGO1pah8fQ,1BA5VRE0SUOkNKhVSHc6tA,,,N,0,0,,,2017-01-24 14:43,2017-01-24 14:53,CLEMENTL,CLEMENTL
1768,49429595,751235,10651671,1227199,1,100,N,N,N,CP_Drtn,TT_Task,DT_FixedDUR2,RV_OK,TK_Complete,823A-D-MIS-RW-1080,DDS Design - Review & Approval Period (for resubmission) (by MTRC & related Government Authorities),,,,0,0,0,0,192,0,0,0,,2015-09-21 08:00,2015-10-20 18:00,2014-10-11 18:00,2014-10-11 18:00,,2017-01-01 00:00,2017-01-01 00:00,,,2016-04-02 08:00,2016-04-30 18:00,,,,,PT_Normal,,,,,6XiBErpmQwqgEjq/rUa7EQ,GkBGN0O2jkeHABJTc/RZyA,,,N,0,0,,,2017-01-24 14:43,2017-01-24 14:53,CLEMENTL,CLEMENTL
1769,49429596,751235,10651671,1227199,1,100,N,N,N,CP_Drtn,TT_Task,DT_FixedDUR2,RV_OK,TK_Complete,823A-D-MIS-RW-1090,Issue Completed Working Drawings,,,,0,0,0,0,24,0,0,0,,2015-10-22 08:00,2015-10-24 18:00,2014-10-11 18:00,2014-10-11 18:00,,2017-01-01 00:00,2017-01-01 00:00,,,2016-01-27 08:00,2016-01-29 18:00,,,,,PT_Normal,,,,,r64ARobUSa60NkMw/0MQiQ,JrsWFeMM+UKjEglxVzKjLQ,,,N,0,0,,,2017-01-24 14:43,2017-01-24 14:53,CLEMENTL,CLEMENTL
1770,49429597,751235,10651671,1227199,1,100,N,N,N,CP_Drtn,TT_Task,DT_FixedDUR2,RV_OK,TK_Complete,823A-D-MIS-RW-1070,DDS Design - Response to comments & Resubmit,,,,0,0,0,0,32,0,0,0,,2015-09-14 08:00,2015-09-19 18:00,2014-10-11 18:00,2014-10-11 18:00,,2017-01-01 00:00,2017-01-01 00:00,,,2016-03-29 08:00,2016-04-01 18:00,,,,,PT_Normal,,,,,gAYd378YRwSyg7CEeYATRA,osL60ortpUeVgWtU6LLO4A,,,N,0,0,,,2017-01-24 14:43,2017-01-24 14:53,CLEMENTL,CLEMENTL
1771,49429598,751235,10651672,1227199,1,100,N,N,N,CP_Drtn,TT_Task,DT_FixedDUR2,RV_OK,TK_Complete,823A-D-MIS-EA-1010,Layout of Engineer's Accommodation - Prepare and Submit,,,,0,0,0,0,96,0,0,0,,2010-10-13 08:00,2010-10-27 18:00,2014-10-11 18:00,2014-10-11 18:00,,2017-01-01 00:00,2017-01-01 00:00,,,2010-10-13 08:00,2010-10-27 18:00,,,,,PT_Normal,,,,,0DswTOHBQyODntg8c4lHyA,t3KrK9TMkk+ZPzGbVhu/oQ,,,N,0,0,,,2017-01-24 14:43,2017-01-24 14:53,CLEMENTL,CLEMENTL
1772,49429599,751235,10651672,1227199,1,100,N,N,N,CP_Drtn,TT_Task,DT_FixedDUR2,RV_OK,TK_Complete,823A-D-MIS-EA-1020,Layout of Engineer's Accommodation - Review and Approval Period (by MTRC),,,,0,0,0,0,192,0,0,0,,2010-10-28 08:00,2010-11-24 18:00,2014-10-11 18:00,2014-10-11 18:00,,2017-01-01 00:00,2017-01-01 00:00,,,2010-10-28 08:00,2010-11-24 18:00,,,,,PT_Normal,,,,,kE9oHrrSTXS5xKIU+mMEKg,fnDH4MDtvUeI6j7gZj7twg,,,N,0,0,,,2017-01-24 14:43,2017-01-24 14:53,CLEMENTL,CLEMENTL
1773,49429600,751235,10651672,1227199,1,100,N,N,N,CP_Drtn,TT_Task,DT_FixedDUR2,RV_OK,TK_Complete,823A-D-MIS-EA-1030,Layout of Engineer's Accommodation - Response to comments and Resubmit,,,,0,0,0,0,96,0,0,0,,2010-11-25 08:00,2010-12-08 18:00,2014-10-11 18:00,2014-10-11 18:00,,2017-01-01 00:00,2017-01-01 00:00,,,2010-11-25 08:00,2010-12-08 18:00,,,,,PT_Normal,,,,,NG3tIKXLRk6qdassZn6CXA,S/4+/sSLm0SN9VD5W7g2hA,,,N,0,0,,,2017-01-24 14:43,2017-01-24 14:53,CLEMENTL,CLEMENTL
1774,49429601,751235,10651672,1227199,1,100,N,N,N,CP_Drtn,TT_Task,DT_FixedDUR2,RV_OK,TK_Complete,823A-D-MIS-EA-1040,Layout of Engineer's Accommodation - Review and Approval Period (for resubmit) (by MTRC & related Government Authorities,,,,0,0,0,0,192,0,0,0,,2010-12-09 08:00,2011-01-08 18:00,2014-10-11 18:00,2014-10-11 18:00,,2017-01-01 00:00,2017-01-01 00:00,,,2010-12-09 08:00,2011-01-08 18:00,,,,,PT_Normal,,,,,N3gPxgppSqqzr1UMiUX7Bg,w8FPCfo7BEOgn696Erxw5A,,,N,0,0,,,2017-01-24 14:43,2017-01-24 14:53,CLEMENTL,CLEMENTL
1775,49429602,751235,10651673,1227199,1,100,N,N,N,CP_Drtn,TT_Task,DT_FixedDUR2,RV_OK,TK_Complete,823A-D-MIS-SH-1020,Layout of Site Hoarding - Review and Approval Period (by MTRC),,,,0,0,0,0,192,0,0,0,,2010-08-02 08:00,2010-08-28 18:00,2014-10-11 18:00,2014-10-11 18:00,,2017-01-01 00:00,2017-01-01 00:00,,,2010-08-02 08:00,2010-08-28 18:00,,,,,PT_Normal,,,,,bLWcJTGORmqj6fsZ19pecA,6OOYzqNEdE+qytM22nvO4g,,,N,0,0,,,2017-01-24 14:43,2017-01-24 14:53,CLEMENTL,CLEMENTL
1776,49429603,751235,10651673,1227199,1,100,N,N,N,CP_Drtn,TT_Task,DT_FixedDUR2,RV_OK,TK_Complete,823A-D-MIS-SH-1030,Layout of Site Hoarding - Response to comments and Resubmit,,,,0,0,0,0,96,0,0,0,,2010-08-30 08:00,2010-09-11 18:00,2014-10-11 18:00,2014-10-11 18:00,,2017-01-01 00:00,2017-01-01 00:00,,,2010-08-30 08:00,2010-09-11 18:00,,,,,PT_Normal,,,,,pt6QvROAREC1UJsz47Fjsg,XTXgXfWgFEmONf6qx+RcQQ,,,N,0,0,,,2017-01-24 14:43,2017-01-24 14:53,CLEMENTL,CLEMENTL
1777,49429604,751235,10651673,1227199,1,100,N,N,N,CP_Drtn,TT_Task,DT_FixedDUR2,RV_OK,TK_Complete,823A-D-MIS-SH-1040,Layout of Site Hoarding - Review and Approval Period (for resubmission) (by MTRC & related Government Authorities),,,,0,0,0,0,192,0,0,0,,2010-09-13 08:00,2010-10-12 18:00,2014-10-11 18:00,2014-10-11 18:00,,2017-01-01 00:00,2017-01-01 00:00,,,2010-09-13 08:00,2010-10-12 18:00,,,,,PT_Normal,,,,,8rCqrAxqRFK6w61gA12pqQ,Qq4v5MxjPEeEeGLGmHwL2A,,,N,0,0,,,2017-01-24 14:43,2017-01-24 14:53,CLEMENTL,CLEMENTL
1778,49429605,751235,10651673,1227199,1,100,N,N,N,CP_Drtn,TT_Task,DT_FixedDUR2,RV_OK,TK_Complete,823A-D-MIS-SH-1010,Layout of Site Hoarding - Prepare and Submit,,,,0,0,0,0,96,0,0,0,,2010-07-19 08:00,2010-07-31 18:00,2014-10-11 18:00,2014-10-11 18:00,,2017-01-01 00:00,2017-01-01 00:00,,,2010-07-19 08:00,2010-07-31 18:00,,,,,PT_Normal,,,,,hLu1S+TKSTamZ6Qk3iThBQ,YRq5xrr46kW2cGekl/Hu8g,,,N,0,0,,,2017-01-24 14:43,2017-01-24 14:53,CLEMENTL,CLEMENTL
1779,49429606,751235,10651674,1227199,1,100,N,N,N,CP_Drtn,TT_Task,DT_FixedDUR2,RV_OK,TK_Complete,823A-D-MIS-BPF-1010,Layout of Barging Point - Prepare and Submit,,,,0,0,0,0,48,0,0,0,,2011-11-30 08:00,2011-12-06 18:00,2017-06-12 18:00,2017-06-12 18:00,,2017-01-01 00:00,2017-01-01 00:00,,,2011-11-30 08:00,2011-12-06 18:00,,,,,PT_Normal,,,,,pZJEjtIjQgqrrEHn02W0Xw,STxNwxFU7UCCxl7ww8rDlg,,,N,0,0,,,2017-01-24 14:43,2017-01-24 15:36,CLEMENTL,CLEMENTL
1780,49429607,751235,10651674,1227199,1,100,N,N,N,CP_Drtn,TT_Task,DT_FixedDUR2,RV_OK,TK_Complete,823A-D-MIS-BPF-1020,Layout of Barging Point - Review and Approval Period  (by MTRC),,,,0,0,0,0,144,0,0,0,,2011-12-07 08:00,2011-12-29 18:00,2017-06-12 18:00,2017-06-12 18:00,,2017-01-01 00:00,2017-01-01 00:00,,,2011-12-07 08:00,2011-12-29 18:00,,,,,PT_Normal,,,,,NXBBq0JmRnqFBmw3RLbb5Q,xY44uodYeUa8bvjsTZNi+Q,,,N,0,0,,,2017-01-24 14:43,2017-01-24 15:36,CLEMENTL,CLEMENTL
1781,49429608,751235,10651674,1227199,1,100,N,N,N,CP_Drtn,TT_Task,DT_FixedDUR2,RV_OK,TK_Complete,823A-D-MIS-BPF-1030,Layout of Barging Point - Response to comments and Resubmit,,,,0,0,0,0,48,0,0,0,,2011-12-30 08:00,2012-01-06 18:00,2017-06-12 18:00,2017-06-12 18:00,,2017-01-01 00:00,2017-01-01 00:00,,,2011-12-30 08:00,2012-01-06 18:00,,,,,PT_Normal,,,,,Yta51zKXS4iYWrRJrAXLRQ,M/OELtHXPUWHfqcDXtpbxw,,,N,0,0,,,2017-01-24 14:43,2017-01-24 15:36,CLEMENTL,CLEMENTL
1782,49429609,751235,10651674,1227199,1,100,N,N,N,CP_Drtn,TT_Task,DT_FixedDUR2,RV_OK,TK_Complete,823A-D-MIS-BPF-1040,Layout of Barging Point - Review and Approval Period (for resubmission) (by MTRC & related Government Authorities),,,,0,0,0,0,144,0,0,0,,2012-01-07 08:00,2012-01-31 18:00,2017-06-12 18:00,2017-06-12 18:00,,2017-01-01 00:00,2017-01-01 00:00,,,2012-01-07 08:00,2012-01-31 18:00,,,,,PT_Normal,,,,,ugC+hX/iSF2h02nA/EKCjA,KUTb5DmtakqBuk2i0+BxJA,,,N,0,0,,,2017-01-24 14:43,2017-01-24 15:36,CLEMENTL,CLEMENTL
1783,49429610,751235,10651674,1227199,1,100,N,N,N,CP_Drtn,TT_Task,DT_FixedDUR2,RV_OK,TK_Complete,823A-D-MIS-BPF-1050,Loading Ramps - Prepare and Submit,,,,0,0,0,0,48,0,0,0,,2011-11-30 08:00,2011-12-06 18:00,2017-06-12 18:00,2017-06-12 18:00,,2017-01-01 00:00,2017-01-01 00:00,,,2011-11-30 08:00,2011-12-06 18:00,,,,,PT_Normal,,,,,ypjtfw4XTwenVrdjYkNXXw,DNeRibjXY0isjUu/KiS3GA,,,N,0,0,,,2017-01-24 14:43,2017-01-24 15:36,CLEMENTL,CLEMENTL
1784,49429611,751235,10651674,1227199,1,100,N,N,N,CP_Drtn,TT_Task,DT_FixedDUR2,RV_OK,TK_Complete,823A-D-MIS-BPF-1060,Loading Ramps - Review and Approval Period  (by MTRC),,,,0,0,0,0,144,0,0,0,,2011-12-07 08:00,2011-12-29 18:00,2017-06-12 18:00,2017-06-12 18:00,,2017-01-01 00:00,2017-01-01 00:00,,,2011-12-07 08:00,2011-12-29 18:00,,,,,PT_Normal,,,,,lVamMb6oS3yfA+6gwEuG+A,0rC/4nAwKU+QMFe8qgnI3A,,,N,0,0,,,2017-01-24 14:43,2017-01-24 15:36,CLEMENTL,CLEMENTL
1785,49429612,751235,10651674,1227199,1,100,N,N,N,CP_Drtn,TT_Task,DT_FixedDUR2,RV_OK,TK_Complete,823A-D-MIS-BPF-1070,Loading Ramps - Response to comments and Resubmit,,,,0,0,0,0,48,0,0,0,,2011-12-30 08:00,2012-01-06 18:00,2017-06-12 18:00,2017-06-12 18:00,,2017-01-01 00:00,2017-01-01 00:00,,,2011-12-30 08:00,2012-01-06 18:00,,,,,PT_Normal,,,,,NzhtUU1kQ+ShkS6GPi0ELg,/SxnFTEeqE6TYIwDAbZTTA,,,N,0,0,,,2017-01-24 14:43,2017-01-24 15:36,CLEMENTL,CLEMENTL
1786,49429613,751235,10651674,1227199,1,100,N,N,N,CP_Drtn,TT_Task,DT_FixedDUR2,RV_OK,TK_Complete,823A-D-MIS-BPF-1080,Loading Ramps - Review and Approval Period (for resubmission)  (by MTRC & related Government Authorities),,,,0,0,0,0,144,0,0,0,,2012-01-07 08:00,2012-01-31 18:00,2017-06-12 18:00,2017-06-12 18:00,,2017-01-01 00:00,2017-01-01 00:00,,,2012-01-07 08:00,2012-01-31 18:00,,,,,PT_Normal,,,,,mlu+vUNkQtu2bblKh2NgnA,kMXHbpOe3UKqGbfWP0ZBPA,,,N,0,0,,,2017-01-24 14:43,2017-01-24 15:36,CLEMENTL,CLEMENTL
1787,49429614,751235,10651674,1227199,1,100,N,N,N,CP_Drtn,TT_Task,DT_FixedDUR2,RV_OK,TK_Complete,823A-D-MIS-BPF-1090,Weighbridge - Prepare and Submit,,,,0,0,0,0,48,0,0,0,,2011-11-30 08:00,2011-12-06 18:00,2017-06-12 18:00,2017-06-12 18:00,,2017-01-01 00:00,2017-01-01 00:00,,,2011-11-30 08:00,2011-12-06 18:00,,,,,PT_Normal,,,,,PJTHxQEtRB2zi8Ieb7ajDg,9FTQzXn0ZEaPVz49eyhuEg,,,N,0,0,,,2017-01-24 14:43,2017-01-24 15:36,CLEMENTL,CLEMENTL
1788,49429615,751235,10651674,1227199,1,100,N,N,N,CP_Drtn,TT_Task,DT_FixedDUR2,RV_OK,TK_Complete,823A-D-MIS-BPF-1100,Weighbridge - Review and Approval Period  (by MTRC),,,,0,0,0,0,144,0,0,0,,2011-12-07 08:00,2011-12-29 18:00,2017-06-12 18:00,2017-06-12 18:00,,2017-01-01 00:00,2017-01-01 00:00,,,2011-12-07 08:00,2011-12-29 18:00,,,,,PT_Normal,,,,,QPBKae3SQnKKCprZOL9Vug,YY3JD2wF+kysP/DIVmOK8w,,,N,0,0,,,2017-01-24 14:43,2017-01-24 15:36,CLEMENTL,CLEMENTL
1789,49429616,751235,10651674,1227199,1,100,N,N,N,CP_Drtn,TT_Task,DT_FixedDUR2,RV_OK,TK_Complete,823A-D-MIS-BPF-1110,Weighbridge - Response to comments and Resubmit,,,,0,0,0,0,48,0,0,0,,2011-12-30 08:00,2012-01-06 18:00,2017-06-12 18:00,2017-06-12 18:00,,2017-01-01 00:00,2017-01-01 00:00,,,2011-12-30 08:00,2012-01-06 18:00,,,,,PT_Normal,,,,,2fMQcMzzQTm2PpLH7APT7Q,aw9d1B/tUEKk/xU3879PDQ,,,N,0,0,,,2017-01-24 14:43,2017-01-24 15:36,CLEMENTL,CLEMENTL
1790,49429617,751235,10651674,1227199,1,100,N,N,N,CP_Drtn,TT_Task,DT_FixedDUR2,RV_OK,TK_Complete,823A-D-MIS-BPF-1120,Weighbridge - Review and Approval Period (for resubmission) (by MTRC & related Government Authorities),,,,0,0,0,0,144,0,0,0,,2012-01-07 08:00,2012-01-31 18:00,2017-06-12 18:00,2017-06-12 18:00,,2017-01-01 00:00,2017-01-01 00:00,,,2012-01-07 08:00,2012-01-31 18:00,,,,,PT_Normal,,,,,Aky1J+3TSeqQL2UQpwq0MQ,f/9Z5iWikkupL0xeveDShw,,,N,0,0,,,2017-01-24 14:43,2017-01-24 15:36,CLEMENTL,CLEMENTL
1791,49429618,751235,10651675,1227199,1,100,N,N,N,CP_Drtn,TT_Task,DT_FixedDUR2,RV_OK,TK_Complete,823A-D-MIS-TTA-1010,TTMS Assessment Report - Prepare and Submit,,,,0,0,0,0,288,0,0,0,,2011-01-10 08:00,2011-02-23 18:00,2014-10-11 18:00,2014-10-11 18:00,,2017-01-01 00:00,2017-01-01 00:00,,,2011-01-10 08:00,2011-02-23 18:00,,,,,PT_Normal,,,,,XNeF8JVETnWz3n+siM6ySA,GfM4SnFAEUKNPIRHjyJE8Q,,,N,0,0,,,2017-01-24 14:43,2017-01-24 14:53,CLEMENTL,CLEMENTL
1792,49429619,751235,10651675,1227199,1,100,N,N,N,CP_Drtn,TT_Task,DT_FixedDUR2,RV_OK,TK_Complete,823A-D-MIS-TTA-1020,TTMS Assessment Report - Review and Approval Period (by MTRC),,,,0,0,0,0,208,0,0,0,,2011-02-24 08:00,2011-03-25 18:00,2014-10-11 18:00,2014-10-11 18:00,,2017-01-01 00:00,2017-01-01 00:00,,,2011-02-24 08:00,2011-03-25 18:00,,,,,PT_Normal,,,,,FpDVCwMsSy6irJhUJdSRNQ,yXfY4mBi2021pP4vOe+ndQ,,,N,0,0,,,2017-01-24 14:43,2017-01-24 14:53,CLEMENTL,CLEMENTL
1793,49429620,751235,10651675,1227199,1,100,N,N,N,CP_Drtn,TT_Task,DT_FixedDUR2,RV_OK,TK_Complete,823A-D-MIS-TTA-1030,TTMS Assessment Report - Response to comments and Resubmit,,,,0,0,0,0,72,0,0,0,,2011-03-26 08:00,2011-04-06 18:00,2014-10-11 18:00,2014-10-11 18:00,,2017-01-01 00:00,2017-01-01 00:00,,,2011-03-26 08:00,2011-04-06 18:00,,,,,PT_Normal,,,,,zFdKfkqOQLm1uy05k8Y8Kw,t4cMtQNyn0uBqvtQ1uki1g,,,N,0,0,,,2017-01-24 14:43,2017-01-24 14:53,CLEMENTL,CLEMENTL
1794,49429621,751235,10651675,1227199,1,100,N,N,N,CP_Drtn,TT_Task,DT_FixedDUR2,RV_OK,TK_Complete,823A-D-MIS-TTA-1040,TTMS Assessment Report - Review and Approval Period (for resubmission)  (by MTRC & related Government Authorities),,,,0,0,0,0,208,0,0,0,,2011-04-07 08:00,2011-05-12 18:00,2014-10-11 18:00,2014-10-11 18:00,,2017-01-01 00:00,2017-01-01 00:00,,,2011-04-07 08:00,2011-05-12 18:00,,,,,PT_Normal,,,,,eOOlIACqSWujF6gqY1mscg,5iHLcs+bE0GgJ6L4NVCRpw,,,N,0,0,,,2017-01-24 14:43,2017-01-24 14:53,CLEMENTL,CLEMENTL
1795,49429622,751235,10651675,1227199,1,100,N,N,N,CP_Drtn,TT_Task,DT_FixedDUR2,RV_OK,TK_Complete,823A-D-MIS-TTA-1050,Issue Completed Working Drawings,,,,0,0,0,0,96,0,0,0,,2011-05-13 08:00,2011-05-26 18:00,2014-10-11 18:00,2014-10-11 18:00,,2017-01-01 00:00,2017-01-01 00:00,,,2011-05-13 08:00,2011-05-26 18:00,,,,,PT_Normal,,,,,Go1UZQYSTUOY1FglBkXWgg,UuT0mb7WaECXxTQj9xECsA,,,N,0,0,,,2017-01-24 14:43,2017-01-24 14:53,CLEMENTL,CLEMENTL
1796,49429623,751235,10651676,1227199,1,100,N,N,N,CP_Drtn,TT_Task,DT_FixedDUR2,RV_OK,TK_Complete,823A-D-MIS-KTR-1010,DIA Report - Prepare and Submit,,,,0,0,0,0,288,0,0,0,,2011-02-24 08:00,2011-04-07 18:00,2017-06-12 18:00,2017-06-12 18:00,,2017-01-01 00:00,2017-01-01 00:00,,,2011-02-24 08:00,2011-04-07 18:00,,,,,PT_Normal,,,,,RFMR542nQhWZcxfWDN4rbQ,rlC7YDmKUk6J+PbmfFwFWw,,,N,0,0,,,2017-01-24 14:43,2017-01-24 15:36,CLEMENTL,CLEMENTL
1797,49429624,751235,10651676,1227199,1,100,N,N,N,CP_Drtn,TT_Task,DT_FixedDUR2,RV_OK,TK_Complete,823A-D-MIS-KTR-1020,DIA Report - Review and Approval Period (by MTRC),,,,0,0,0,0,208,0,0,0,,2011-04-08 08:00,2011-05-13 18:00,2017-06-12 18:00,2017-06-12 18:00,,2017-01-01 00:00,2017-01-01 00:00,,,2011-04-08 08:00,2011-05-13 18:00,,,,,PT_Normal,,,,,c4qzAMI/TJymf7WZyv1tEw,iptP5UawdEGvTpuu57R2WQ,,,N,0,0,,,2017-01-24 14:43,2017-01-24 15:36,CLEMENTL,CLEMENTL
1798,49429625,751235,10651676,1227199,1,100,N,N,N,CP_Drtn,TT_Task,DT_FixedDUR2,RV_OK,TK_Complete,823A-D-MIS-KTR-1030,DIA Report - Response to comments and Resubmit,,,,0,0,0,0,32,0,0,0,,2011-05-14 08:00,2011-05-18 18:00,2017-06-12 18:00,2017-06-12 18:00,,2017-01-01 00:00,2017-01-01 00:00,,,2011-05-14 08:00,2011-05-18 18:00,,,,,PT_Normal,,,,,95xCaKEESNGILz9g2lb9dg,z0HZ4mZqgkihj0lrm6sGyw,,,N,0,0,,,2017-01-24 14:43,2017-01-24 15:36,CLEMENTL,CLEMENTL
1799,49429626,751235,10651676,1227199,1,100,N,N,N,CP_Drtn,TT_Task,DT_FixedDUR2,RV_OK,TK_Complete,823A-D-MIS-KTR-1040,DIA Report - Review and Approval Period (for resubmission) (by MTRC & related Government Authorities),,,,0,0,0,0,208,0,0,0,,2011-05-19 08:00,2011-06-18 18:00,2017-06-12 18:00,2017-06-12 18:00,,2017-01-01 00:00,2017-01-01 00:00,,,2011-05-19 08:00,2011-06-18 18:00,,,,,PT_Normal,,,,,PWyETtBnRmCpG1iRK6Zf9g,cI7tdkYAr0ONrV//foa+DA,,,N,0,0,,,2017-01-24 14:43,2017-01-24 15:36,CLEMENTL,CLEMENTL
1800,49429627,751235,10651676,1227199,1,100,N,N,N,CP_Drtn,TT_Task,DT_FixedDUR2,RV_OK,TK_Complete,823A-D-MIS-KTR-1050,Issue Completed Working Drawings,,,,0,0,0,0,32,0,0,0,,2011-06-20 08:00,2011-06-23 18:00,2017-06-12 18:00,2017-06-12 18:00,,2017-01-01 00:00,2017-01-01 00:00,,,2011-06-20 08:00,2011-06-23 18:00,,,,,PT_Normal,,,,,YgY+XET2Qh6yc0B7X5CZ7Q,jMJCY2E/402w1w1WGi6xMg,,,N,0,0,,,2017-01-24 14:43,2017-01-24 15:36,CLEMENTL,CLEMENTL
1801,49429628,751235,10651678,1227199,1,100,N,N,N,CP_Drtn,TT_Task,DT_FixedDUR2,RV_OK,TK_Complete,823A-D-CCT-FW-1010,Formworks / Falsework - Prepare & Submit,,,,0,0,0,0,288,0,0,0,,2011-12-14 08:00,2012-01-31 18:00,2014-07-11 08:00,2014-07-11 08:00,,2017-01-01 00:00,2017-01-01 00:00,,,2011-12-14 08:00,2012-01-31 18:00,,,,,PT_Normal,,,,,3Ex1X/H0T8WzN40vwkbImg,ClDULy6YmkaAsixr6RxcJQ,,,N,0,0,,,2017-01-24 14:43,2017-01-24 15:40,CLEMENTL,CLEMENTL
1802,49429629,751235,10651678,1227199,1,100,N,N,N,CP_Drtn,TT_Task,DT_FixedDUR2,RV_OK,TK_Complete,823A-D-CCT-FW-1020,Formworks / Falsework - Review & Approval Period (by MTRC),,,,0,0,0,0,192,0,0,0,,2012-02-01 08:00,2012-02-28 18:00,2014-07-11 08:00,2014-07-11 08:00,,2017-01-01 00:00,2017-01-01 00:00,,,2012-02-01 08:00,2012-02-28 18:00,,,,,PT_Normal,,,,,U1tcauyNTTKFG3N98tF43A,95IbjJcYC0WAkqi8FMPccA,,,N,0,0,,,2017-01-24 14:43,2017-01-24 15:40,CLEMENTL,CLEMENTL
1803,49429630,751235,10651678,1227199,1,100,N,N,N,CP_Drtn,TT_Task,DT_FixedDUR2,RV_OK,TK_Complete,823A-D-CCT-FW-1030,Formworks / Falsework - Response to comments and Resubmit,,,,0,0,0,0,96,0,0,0,,2012-02-29 08:00,2012-03-13 18:00,2014-07-11 08:00,2014-07-11 08:00,,2017-01-01 00:00,2017-01-01 00:00,,,2012-02-29 08:00,2012-03-13 18:00,,,,,PT_Normal,,,,,ae5CbVHqQj+9YguUHsWdrA,s8Nbk+8awES7fc3VjUSFCQ,,,N,0,0,,,2017-01-24 14:43,2017-01-24 15:40,CLEMENTL,CLEMENTL
1804,49429631,751235,10651678,1227199,1,100,N,N,N,CP_Drtn,TT_Task,DT_FixedDUR2,RV_OK,TK_Complete,823A-D-CCT-FW-1040,Formworks / Falsework - Review & Approval Period (for resubmission) (by MTRC & related Government Authorities),,,,0,0,0,0,192,0,0,0,,2012-03-14 08:00,2012-04-14 18:00,2014-07-11 08:00,2014-07-11 08:00,,2017-01-01 00:00,2017-01-01 00:00,,,2012-03-14 08:00,2012-04-14 18:00,,,,,PT_Normal,,,,,C5G3CDG2TiywJ8yPF/PNCw,SF/U9qSK8Eq20CV/smFhyQ,,,N,0,0,,,2017-01-24 14:43,2017-01-24 15:40,CLEMENTL,CLEMENTL
1805,49429632,751235,10651681,1227198,0,100,N,N,N,CP_Drtn,TT_FinMile,DT_FixedDrtn,RV_OK,TK_Complete,823A-IF823B-10,823B to complete East Culvert for 823A connection,,,,0,0,0,0,0,0,0,0,2013-03-24 18:00,2013-03-24 18:00,2013-03-24 18:00,2017-06-12 18:00,2017-06-12 18:00,,2017-01-01 00:00,2017-01-01 00:00,,,2014-01-31 18:00,2014-01-31 18:00,,,,CS_MEO,PT_Normal,,,,,rzAEo3tqRKecQI3kaWcRKQ,15fodHOsrEihNCLfVjhq1A,,,N,0,0,,,2017-01-24 14:43,2017-01-24 15:36,CLEMENTL,CLEMENTL
1806,49429633,751235,10651682,1239098,1,100,N,N,N,CP_Drtn,TT_Task,DT_FixedDUR2,RV_OK,TK_Complete,823A-COTATUTS-10,Close out the temporary access opening at Tse Uk Tsuen Shaft,,,,0,0,0,0,152,0,0,0,,2016-02-11 08:00,2016-03-16 18:00,2017-04-15 08:00,2017-04-15 08:00,,2017-01-01 00:00,2017-01-01 00:00,,,2016-03-10 08:00,2016-04-05 18:00,,,,,PT_Normal,,,,,RD5v0ziUQkuygCaEO8gIIg,HXa1QrNLB0W+WmPbH93/mg,,,N,0,0,,,2017-01-24 14:43,2017-01-24 15:39,CLEMENTL,CLEMENTL
1807,49429634,751235,10651684,1227198,0,100,N,N,N,CP_Drtn,TT_FinMile,DT_FixedDrtn,RV_OK,TK_Complete,823A-MS-E5-1010-E7,Complete excavation of the cut and cover tunnels Box 6A,,,,0,0,0,0,0,0,0,0,2014-01-05 18:00,2013-09-21 18:00,2013-09-21 18:00,2017-06-12 18:00,2017-06-12 18:00,,2017-01-01 00:00,2017-01-01 00:00,,,2013-09-30 18:00,2013-09-30 18:00,,,,CS_MEOB,PT_Normal,,,,,mUQBLecXQmu6wITcWfsXBA,ENQW3NNpP0WHSdM+/mvxaw,,,N,0,0,,,2017-01-24 14:43,2017-01-24 15:36,CLEMENTL,CLEMENTL
1808,49429635,751235,10651685,1227198,0,100,N,N,N,CP_Drtn,TT_FinMile,DT_FixedDrtn,RV_OK,TK_Complete,823A-MS-E6-1010-E4,Complete the Box 7B northern cut and cover tunnels to facilitate construction of temporary Kam Tin Nullah above,,,,0,0,0,0,0,0,0,0,2012-11-11 18:00,2012-11-06 18:00,2012-11-06 18:00,2017-06-12 18:00,2017-06-12 18:00,,2017-01-01 00:00,2017-01-01 00:00,,,2012-11-06 18:00,2012-11-06 18:00,,,,CS_MEOB,PT_Normal,,,,,VQ9OVoBQSAy4juKW7DYEkA,PhfVrT14u0q+EEd6o9Ma0g,,,N,0,0,,,2017-01-24 14:43,2017-01-24 15:36,CLEMENTL,CLEMENTL
1809,49429636,751235,10651686,1227198,0,0,N,N,N,CP_Drtn,TT_FinMile,DT_FixedDrtn,RV_OK,TK_NotStart,823A-MS-E11-1010,Complete all reinstatement works of the Works Areas,,-7208,584,0,0,0,0,0,0,0,0,2014-10-12 18:00,,,2014-10-12 18:00,2014-10-12 18:00,,2017-03-31 18:00,2017-03-31 18:00,2017-03-31 18:00,2017-03-31 18:00,2017-03-31 18:00,2017-03-31 18:00,,2014-10-12 18:00,2014-10-12 18:00,CS_MEOB,PT_Normal,,,,,O1jd9xLOTvebr6BCoGiEXg,1P/QQjtdb0mFv7jedn6x4g,,,N,0,0,,,2017-01-24 14:43,2017-01-24 15:40,CLEMENTL,CLEMENTL
1810,49429637,751235,10651687,1227198,0,100,N,N,N,CP_Drtn,TT_FinMile,DT_FixedDrtn,RV_OK,TK_Complete,823A-MS-E4-1010-E3,Complete excavation of the cut and cover tunnels Box 6B,,,,0,0,0,0,0,0,0,0,2012-12-16 18:00,2012-12-09 18:00,2012-12-09 18:00,2017-06-12 18:00,2017-06-12 18:00,,2017-01-01 00:00,2017-01-01 00:00,,,2013-05-31 18:00,2013-05-31 18:00,,,,CS_MEOB,PT_Normal,,,,,3cqgf/hKSeGUiOy2z4UI2Q,oG4bzfy9Z0WSPTmbV4+d2g,,,N,0,0,,,2017-01-24 14:43,2017-01-24 15:36,CLEMENTL,CLEMENTL
1811,49429638,751235,10651688,1227198,0,100,N,N,N,CP_Drtn,TT_FinMile,DT_FixedDrtn,RV_OK,TK_Complete,823A-MS-E9-1010,Complete backfilling of the cut & cover tunnel except Box 6A & 7A,,,,0,0,0,0,0,0,0,0,2014-05-25 18:00,2016-06-30 18:00,2016-06-30 18:00,2017-06-12 18:00,2017-06-12 18:00,,2017-01-01 00:00,2017-01-01 00:00,,,2016-10-24 18:00,2016-10-24 18:00,,,,CS_MEOB,PT_Normal,,,,,03LWRjuwSRCeMbE3he99jQ,xZ64R48hNUqDlBTLoHnWCQ,,,N,0,0,,,2017-01-24 14:43,2017-01-24 15:36,CLEMENTL,CLEMENTL
1812,49429639,751235,10651689,1227198,0,100,N,N,N,CP_Drtn,TT_FinMile,DT_FixedDrtn,RV_OK,TK_Complete,823A-MS-E10-1010,Reinstate the Kam Tin Nullah near Wang Toi Shan Shan Tsuen Road and complete gauging stations,,,,0,0,0,0,0,0,0,0,2014-04-06 18:00,2016-07-31 08:00,2016-07-31 08:00,2017-06-12 18:00,2017-06-12 18:00,,2017-01-01 00:00,2017-01-01 00:00,,,2016-07-01 08:00,2016-07-01 08:00,,,,CS_MEOB,PT_Normal,,,,,r7ye/eJOQOu15PPrMs7BYA,um6UOta6oEqYshHkbEDasA,,,N,0,0,,,2017-01-24 14:43,2017-01-24 15:36,CLEMENTL,CLEMENTL
1813,49429640,751235,10651690,1227198,0,100,N,N,N,CP_Drtn,TT_FinMile,DT_FixedDrtn,RV_OK,TK_Complete,823A-MS-E7-1010-E6,Complete the Box 6B northern cut and cover tunnels to Degree 1,,,,0,0,0,0,0,0,0,0,2013-07-14 18:00,2013-12-31 18:00,2013-12-31 18:00,2017-06-12 18:00,2017-06-12 18:00,,2017-01-01 00:00,2017-01-01 00:00,,,2014-05-09 18:00,2014-05-09 18:00,,,,CS_MEOB,PT_Normal,,,,,HKif4UF3SnaagTYxO0ZqhQ,XAE9yxKkJ02KUjXggWoJXw,,,N,0,0,,,2017-01-24 14:43,2017-01-24 15:36,CLEMENTL,CLEMENTL
1814,49429641,751235,10651691,1227198,0,100,N,N,N,CP_Drtn,TT_FinMile,DT_FixedDrtn,RV_OK,TK_Complete,823A-MS-E2-1010,Complete the temporary base slab of the northern TBM launching shaft,,,,0,0,0,0,0,0,0,0,2012-06-24 18:00,2012-05-31 18:00,2012-05-31 18:00,2017-06-12 18:00,2017-06-12 18:00,,2017-01-01 00:00,2017-01-01 00:00,,,2012-05-31 18:00,2012-05-31 18:00,,,,CS_MEOB,PT_Normal,,,,,1pwbqf99So6J7Ahzr2INdA,+TdOuH2YjE+tN87Z6QPKlQ,,,N,0,0,,,2017-01-24 14:43,2017-01-24 15:36,CLEMENTL,CLEMENTL
1815,49429642,751235,10651692,1227198,0,100,N,N,N,CP_Drtn,TT_FinMile,DT_FixedDrtn,RV_OK,TK_Complete,823A-MS-E3-1010-E5,Complete temporary diversion of Kam Tin Nullah near Wang Toi Shan Shan Tsuen Road,,,,0,0,0,0,0,0,0,0,2013-02-24 18:00,2013-01-19 18:00,2013-01-19 18:00,2017-06-12 18:00,2017-06-12 18:00,,2017-01-01 00:00,2017-01-01 00:00,,,2013-05-31 18:00,2013-05-31 18:00,,,,CS_MEOB,PT_Normal,,,,,CLQFqONARhiNNEOQ1UM1dQ,wWejR26ZE0uiQuc7eWssgg,,,N,0,0,,,2017-01-24 14:43,2017-01-24 15:36,CLEMENTL,CLEMENTL
1816,49429643,751235,10651693,1227198,0,100,N,N,N,CP_Drtn,TT_FinMile,DT_FixedDrtn,RV_OK,TK_Complete,823A-MS-E1-1010,Complete temporary diversion of Wang Toi Shan Shan Tsuen Road,,,,0,0,0,0,0,0,0,0,2011-12-25 18:00,2011-12-15 18:00,2011-12-15 18:00,2017-06-12 18:00,2017-06-12 18:00,,2017-01-01 00:00,2017-01-01 00:00,,,2011-12-15 18:00,2011-12-15 18:00,,,,CS_MEOB,PT_Normal,,,,,ESzLB6/6Sy2uaifa57xKsQ,AGH7aqjGVUu/M3fzXYKdlA,,,N,0,0,,,2017-01-24 14:43,2017-01-24 15:36,CLEMENTL,CLEMENTL
1817,49429644,751235,10651694,1227198,0,100,N,N,N,CP_Drtn,TT_FinMile,DT_FixedDrtn,RV_OK,TK_Complete,823A-MS-E8-1010,Complete the Box 6A northern cut and cover tunnels to Degree 1,,,,0,0,0,0,0,0,0,0,2014-01-05 18:00,2013-12-28 18:00,2013-12-28 18:00,2017-06-12 18:00,2017-06-12 18:00,,2017-01-01 00:00,2017-01-01 00:00,,,2014-02-08 18:00,2014-02-08 18:00,,,,CS_MEOB,PT_Normal,,,,,5dLQ0qubTJqklJTtt8biRQ,VooZdLK0Vkeb9cH1vvh2Gg,,,N,0,0,,,2017-01-24 14:43,2017-01-24 15:36,CLEMENTL,CLEMENTL
1818,49429645,751235,10651695,1239099,0,100,N,N,N,CP_Drtn,TT_FinMile,DT_FixedDrtn,RV_OK,TK_Complete,KD-2,Completion of the Whole of the Works,,,,0,0,0,0,0,0,0,0,2015-05-10 18:00,2016-12-31 18:00,2016-12-31 18:00,2017-06-12 18:00,2017-06-12 18:00,,2017-03-31 18:00,2017-03-31 18:00,,,2016-12-31 18:00,2016-12-31 18:00,,,,CS_MEOB,PT_Normal,,,,,tAkkJFFrS1mX73ifnfA4Lg,,,,N,0,0,,,2017-01-24 14:43,2017-01-24 15:40,CLEMENTL,CLEMENTL
1819,49429646,751235,10651695,1239099,0,100,N,N,N,CP_Drtn,TT_Mile,DT_FixedDrtn,RV_OK,TK_Complete,KD-1,Commencement of works,,,,0,0,0,0,0,0,0,0,2010-07-19 08:00,2010-07-19 08:00,2010-07-19 08:00,2014-01-05 18:00,2014-01-05 18:00,,2017-01-01 00:00,2017-01-01 00:00,,,2010-07-19 08:00,2010-07-19 08:00,,,,CS_MSOA,PT_Normal,,,,,R/WbUZBzRliMPjmck6sCgw,,,,Y,0,0,,,2017-01-24 14:43,2017-01-24 14:53,CLEMENTL,CLEMENTL
1820,49429647,751235,10651697,1227198,0,100,N,N,N,CP_Drtn,TT_FinMile,DT_FixedDrtn,RV_OK,TK_Complete,823A-MS-I2-1010,Complete pumping test,,,,0,0,0,0,0,0,0,0,2012-03-25 18:00,2012-02-29 18:00,2012-02-29 18:00,2017-06-12 18:00,2017-06-12 18:00,,2017-01-01 00:00,2017-01-01 00:00,,,2012-02-29 18:00,2012-02-29 18:00,,,,CS_MEOB,PT_Normal,,,,,nDFY9eL1Tkuf7+HOAXlKBg,M6L6d2FNSk+xDF/kLyraEw,,,N,0,0,,,2017-01-24 14:43,2017-01-24 15:36,CLEMENTL,CLEMENTL
1821,49429648,751235,10651698,1227198,0,100,N,N,N,CP_Drtn,TT_FinMile,DT_FixedDrtn,RV_OK,TK_Complete,823A-MS-I3-1010,Complete 30% of excavation,,,,0,0,0,0,0,0,0,0,2012-05-06 18:00,2012-05-04 18:00,2012-05-04 18:00,2017-06-12 18:00,2017-06-12 18:00,,2017-01-01 00:00,2017-01-01 00:00,,,2012-05-04 18:00,2012-05-04 18:00,,,,CS_MEOB,PT_Normal,,,,,Sc0C9pvvSnOJCJZfJb4vAg,eotvBxIqF0qS93FT5TdZ6g,,,N,0,0,,,2017-01-24 14:43,2017-01-24 15:36,CLEMENTL,CLEMENTL
1822,49429649,751235,10651699,1227198,0,100,N,N,N,CP_Drtn,TT_FinMile,DT_FixedDrtn,RV_OK,TK_Complete,823A-MS-I8-1010,Complete backfilling of the shaft,,,,0,0,0,0,0,0,0,0,2014-08-10 18:00,2016-09-18 18:00,2016-09-18 18:00,2017-06-12 18:00,2017-06-12 18:00,,2017-01-01 00:00,2017-01-01 00:00,,,2016-10-03 18:00,2016-10-03 18:00,,,,CS_MEOB,PT_Normal,,,,,7DZxOfPZTqeknDV161tcTw,Cw9wsFp5A0CxH+pueErvtg,,,N,0,0,,,2017-01-24 14:43,2017-01-24 15:36,CLEMENTL,CLEMENTL
1823,49429650,751235,10651700,1227198,0,100,N,N,N,CP_Drtn,TT_FinMile,DT_FixedDrtn,RV_OK,TK_Complete,823A-MS-I4-1010,Complete the temporary base slab for Tse Uk Tsuen Shaft,,,,0,0,0,0,0,0,0,0,2013-05-12 18:00,2013-07-14 18:00,2013-07-14 18:00,2017-06-12 18:00,2017-06-12 18:00,,2017-01-01 00:00,2017-01-01 00:00,,,2015-11-01 08:00,2015-11-01 08:00,,,,CS_MEOB,PT_Normal,,,,,JIJWGS0xSYi2ahJJJie48A,uvzQbUZPuEqqLLp6pFk76Q,,,N,0,0,,,2017-01-24 14:43,2017-01-24 15:36,CLEMENTL,CLEMENTL
1824,49429651,751235,10651701,1227198,0,100,N,N,N,CP_Drtn,TT_FinMile,DT_FixedDrtn,RV_OK,TK_Complete,823A-MS-I1-1010,Complete 100% of diaphragm wall,,,,0,0,0,0,0,0,0,0,2011-12-25 18:00,2011-11-11 18:00,2011-11-11 18:00,2017-06-12 18:00,2017-06-12 18:00,,2017-01-01 00:00,2017-01-01 00:00,,,2011-11-11 18:00,2011-11-11 18:00,,,,CS_MEOB,PT_Normal,,,,,DqAKA/R6TQ6rijaZagVBMQ,cC/y6TgWSEe5/u0yQ73tpQ,,,N,0,0,,,2017-01-24 14:43,2017-01-24 15:36,CLEMENTL,CLEMENTL
1825,49429652,751235,10651702,1227198,0,100,N,N,N,CP_Drtn,TT_FinMile,DT_FixedDrtn,RV_OK,TK_Complete,823A-MS-I6-1010,Complete the up track cut and cover tunnel to Degree 1,,,,0,0,0,0,0,0,0,0,2014-03-16 18:00,2016-01-12 18:00,2016-01-12 18:00,2017-06-12 18:00,2017-06-12 18:00,,2017-01-01 00:00,2017-01-01 00:00,,,2016-02-03 18:00,2016-02-03 18:00,,,,CS_MEOB,PT_Normal,,,,,9c7U35rqQriJzMODitUDgQ,96FppOvow0GaLeFNMMGpYw,,,N,0,0,,,2017-01-24 14:43,2017-01-24 15:36,CLEMENTL,CLEMENTL
1826,49429653,751235,10651703,1227198,0,100,N,N,N,CP_Drtn,TT_FinMile,DT_FixedDrtn,RV_OK,TK_Complete,823A-MS-I7-1010,Complete closing of the access opening,,,,0,0,0,0,0,0,0,0,2014-06-01 18:00,2016-01-12 18:00,2016-01-12 18:00,2017-06-12 18:00,2017-06-12 18:00,,2017-01-01 00:00,2017-01-01 00:00,,,2016-04-20 18:00,2016-04-20 18:00,,,,CS_MEOB,PT_Normal,,,,,eYxycLIdSZ6uFFbnu+vaJQ,PLTmr0ToykuHArYHdU677Q,,,N,0,0,,,2017-01-24 14:43,2017-01-24 15:36,CLEMENTL,CLEMENTL
1827,49429654,751235,10651704,1227198,0,100,N,N,N,CP_Drtn,TT_FinMile,DT_FixedDrtn,RV_OK,TK_Complete,823A-MS-I5-1010,Complete the down track cut and cover tunnel to Degree 1,,,,0,0,0,0,0,0,0,0,2013-10-27 18:00,2014-10-31 18:00,2014-10-31 18:00,2017-06-12 18:00,2017-06-12 18:00,,2017-01-01 00:00,2017-01-01 00:00,,,2014-11-20 18:00,2014-11-20 18:00,,,,CS_MEOB,PT_Normal,,,,,I55AXPP1T3Smc5B+K3DI9Q,FCPcsX7OT0qoW2pUpEK96g,,,N,0,0,,,2017-01-24 14:43,2017-01-24 15:36,CLEMENTL,CLEMENTL
1828,49429655,751235,10651706,1227198,0,100,N,N,N,CP_Drtn,TT_Mile,DT_FixedDrtn,RV_OK,TK_Complete,823A-AD-DC841A-1040,"ERS to Tse Uk Tsuen Tunnels, up track",,,,0,0,0,0,0,0,0,0,2014-06-09 08:00,2016-07-01 08:00,2016-07-01 08:00,2017-06-12 18:00,2017-06-12 18:00,,2017-01-01 00:00,2017-01-01 00:00,,,2016-07-01 08:00,2016-07-01 08:00,,,,CS_MSO,PT_Normal,,,,,DDrtflw3Q6itrDd3YZf4vA,SxTjtUDGAkSnGNFpaDV8ZA,,,N,0,0,,,2017-01-24 14:43,2017-01-24 15:36,CLEMENTL,CLEMENTL
1829,49429656,751235,10651706,1227198,0,100,N,N,N,CP_Drtn,TT_Mile,DT_FixedDrtn,RV_OK,TK_Complete,823A-AD-DC841A-1010,"Tai Kong Po to ERS Tunnels, down track",,,,0,0,0,0,0,0,0,0,2014-01-27 08:00,2016-01-02 08:00,2016-01-02 08:00,2017-06-12 18:00,2017-06-12 18:00,,2017-01-01 00:00,2017-01-01 00:00,,,2016-01-01 08:00,2016-01-01 08:00,,,,CS_MSO,PT_Normal,,,,,bxJyBvgOSWK1RYZ9KCuHJg,gJErB1+4W0+dRnZx0YLHQQ,,,N,0,0,,,2017-01-24 14:43,2017-01-24 15:36,CLEMENTL,CLEMENTL
1830,49429657,751235,10651706,1227198,0,100,N,N,N,CP_Drtn,TT_Mile,DT_FixedDrtn,RV_OK,TK_Complete,823A-AD-DC841A-1030,"ERS to Tse Uk Tsuen Tunnels, down track",,,,0,0,0,0,0,0,0,0,2014-02-24 08:00,2016-01-02 08:00,2016-01-02 08:00,2017-06-12 18:00,2017-06-12 18:00,,2017-01-01 00:00,2017-01-01 00:00,,,2016-01-01 08:00,2016-01-01 08:00,,,,CS_MSO,PT_Normal,,,,,VsYYVTqNS/SSDKNU8Hp7oQ,PKKIrmPC9Uqev3j2ETmvaA,,,N,0,0,,,2017-01-24 14:43,2017-01-24 15:36,CLEMENTL,CLEMENTL
1831,49429658,751235,10651706,1239098,0,0,N,N,N,CP_Drtn,TT_Mile,DT_FixedDrtn,RV_OK,TK_NotStart,823A-AD-DC841A-1020,"Tai Kong Po to ERS Tunnels, up track",,-6448,1112,0,0,0,0,0,0,0,0,2014-04-14 08:00,,,2014-04-14 08:00,2014-04-14 08:00,,2017-01-02 08:00,2017-01-02 08:00,2017-01-02 08:00,2017-01-02 08:00,2017-01-02 08:00,2017-01-02 08:00,,2014-04-14 08:00,2014-04-14 08:00,CS_MSO,PT_Normal,,,,,mP5XQHX/RqGEIVjYwRr3OQ,,,,N,0,0,,,2017-01-24 14:43,2017-01-24 15:36,CLEMENTL,CLEMENTL
1832,49429659,751235,10651707,1227198,0,100,N,N,N,CP_Drtn,TT_Mile,DT_FixedDrtn,RV_OK,TK_Complete,823A-AD-DC-8023-1020,"ERS to Tse Uk Tsuen, down track",,,,0,0,0,0,0,0,0,0,2013-09-02 08:00,2013-09-02 08:00,2013-09-02 08:00,2017-06-12 18:00,2017-06-12 18:00,,2017-01-01 00:00,2017-01-01 00:00,,,2013-12-01 08:00,2013-12-01 08:00,,,,CS_MSO,PT_Normal,,,,,8HbhrJZvTfe/yzgzfd8OGQ,3PR2wfEJw0W0nTHXdEfKSw,,,N,0,0,,,2017-01-24 14:43,2017-01-24 15:36,CLEMENTL,CLEMENTL
1833,49429660,751235,10651707,1227198,0,0,N,N,N,CP_Drtn,TT_Mile,DT_FixedDrtn,RV_OK,TK_NotStart,823A-AD-DC-8023-1030,"ERS to Tse Uk Tsuen, up track",,-8280,1304,0,0,0,0,0,0,0,0,2014-03-03 08:00,,,2014-03-03 08:00,2014-03-03 08:00,,2017-01-01 08:00,2017-01-01 08:00,2017-01-01 08:00,2017-01-01 08:00,2017-01-01 08:00,2017-01-01 08:00,,2014-03-03 08:00,2014-03-03 08:00,CS_MSO,PT_Normal,,,,,fQJRkfDeTzGloyIowpBPxQ,MRi4TyHkOU63uZo55LiFgw,,,N,0,0,,,2017-01-24 14:43,2017-01-24 15:36,CLEMENTL,CLEMENTL
1834,49429661,751235,10651707,1239099,0,100,N,N,N,CP_Drtn,TT_Mile,DT_FixedDrtn,RV_OK,TK_Complete,823A-AD-DC-8023-1010,"Tai Kong Po to ERS Tunnels, both up and down tracks",,,,0,0,0,0,0,0,0,0,2013-07-01 08:00,2013-07-01 08:00,2013-07-01 08:00,2017-06-12 18:00,2017-06-12 18:00,,2017-01-01 00:00,2017-01-01 00:00,,,2013-12-01 08:00,2013-12-01 08:00,,,,CS_MSO,PT_Normal,,,,,JLQ4HFUcQJq/zjoNxyeHFA,bYI9odhJh0izQoGrZRfkeg,,,N,0,0,,,2017-01-24 14:43,2017-01-24 15:39,CLEMENTL,CLEMENTL
1835,49429662,751235,10651708,1227198,0,0,N,N,N,CP_Drtn,TT_Mile,DT_FixedDrtn,RV_OK,TK_NotStart,823A-AD-DC-851-1040,"ERS to Tse Uk Tsuen Tunnels, up track",,-7496,1304,0,0,0,0,0,0,0,0,2014-06-09 08:00,,,2014-06-09 08:00,2014-06-09 08:00,,2017-01-01 08:00,2017-01-01 08:00,2017-01-01 08:00,2017-01-01 08:00,2017-01-01 08:00,2017-01-01 08:00,,2014-06-09 08:00,2014-06-09 08:00,CS_MSO,PT_Normal,,,,,x0ly4wTtSwyvPnAKZNLbHw,OmF2LgbGOkyuLgJD48AK1A,,,N,0,0,,,2017-01-24 14:43,2017-01-24 15:36,CLEMENTL,CLEMENTL
1836,49429663,751235,10651708,1227198,0,0,N,N,N,CP_Drtn,TT_Mile,DT_FixedDrtn,RV_OK,TK_NotStart,823A-AD-DC-851-1010,"Tai Kong Po to ERS Tunnels, down track",,-8560,1304,0,0,0,0,0,0,0,0,2014-01-27 08:00,,,2014-01-27 08:00,2014-01-27 08:00,,2017-01-01 08:00,2017-01-01 08:00,2017-01-01 08:00,2017-01-01 08:00,2017-01-01 08:00,2017-01-01 08:00,,2014-01-27 08:00,2014-01-27 08:00,CS_MSO,PT_Normal,,,,,/V58TXjRRaq18KntxIZ/gQ,vpt1cwD11EiZzIDPggJ1cQ,,,N,0,0,,,2017-01-24 14:43,2017-01-24 15:36,CLEMENTL,CLEMENTL
1837,49429664,751235,10651708,1227198,0,0,N,N,N,CP_Drtn,TT_Mile,DT_FixedDrtn,RV_OK,TK_NotStart,823A-AD-DC-851-1030,"ERS to Tse Uk Tsuen Tunnels, down track",,-8336,1304,0,0,0,0,0,0,0,0,2014-02-24 08:00,,,2014-02-24 08:00,2014-02-24 08:00,,2017-01-01 08:00,2017-01-01 08:00,2017-01-01 08:00,2017-01-01 08:00,2017-01-01 08:00,2017-01-01 08:00,,2014-02-24 08:00,2014-02-24 08:00,CS_MSO,PT_Normal,,,,,BkMBJNrJTSKlMX1CahSryQ,scxrxwuD706okvc5sfvwbQ,,,N,0,0,,,2017-01-24 14:43,2017-01-24 15:36,CLEMENTL,CLEMENTL
1838,49429665,751235,10651708,1239098,0,0,N,N,N,CP_Drtn,TT_Mile,DT_FixedDrtn,RV_OK,TK_NotStart,823A-AD-DC-851-1020,"Tai Kong Po to ERS Tunnels, up track",,-6448,1112,0,0,0,0,0,0,0,0,2014-04-14 08:00,,,2014-04-14 08:00,2014-04-14 08:00,,2017-01-02 08:00,2017-01-02 08:00,2017-01-02 08:00,2017-01-02 08:00,2017-01-02 08:00,2017-01-02 08:00,,2014-04-14 08:00,2014-04-14 08:00,CS_MSO,PT_Normal,,,,,o+nRVaY0THiPlcPxjG+DVQ,,,,N,0,0,,,2017-01-24 14:43,2017-01-24 15:36,CLEMENTL,CLEMENTL
1839,49429666,751235,10651709,1227198,0,0,N,N,N,CP_Drtn,TT_Mile,DT_FixedDrtn,RV_OK,TK_NotStart,823A-AD-DC-844-1010,"Tai Kong Po to ERS Tunnels, down track",,-8560,1304,0,0,0,0,0,0,0,0,2014-01-27 08:00,,,2014-01-27 08:00,2014-01-27 08:00,,2017-01-01 08:00,2017-01-01 08:00,2017-01-01 08:00,2017-01-01 08:00,2017-01-01 08:00,2017-01-01 08:00,,2014-01-27 08:00,2014-01-27 08:00,CS_MSO,PT_Normal,,,,,sk5Sml8mRbqOaistNE4Zkw,k7ipW55kx0GQmw8RtEKduQ,,,N,0,0,,,2017-01-24 14:43,2017-01-24 15:36,CLEMENTL,CLEMENTL
1840,49429667,751235,10651709,1227198,0,0,N,N,N,CP_Drtn,TT_Mile,DT_FixedDrtn,RV_OK,TK_NotStart,823A-AD-DC-844-1030,"ERS to Tse Uk Tsuen Tunnels, down track",,-8336,1304,0,0,0,0,0,0,0,0,2014-02-24 08:00,,,2014-02-24 08:00,2014-02-24 08:00,,2017-01-01 08:00,2017-01-01 08:00,2017-01-01 08:00,2017-01-01 08:00,2017-01-01 08:00,2017-01-01 08:00,,2014-02-24 08:00,2014-02-24 08:00,CS_MSO,PT_Normal,,,,,LPHWTj+aQcCCmqCMy5vf2g,kO/0w0D0wUaQntw6FgjTqw,,,N,0,0,,,2017-01-24 14:43,2017-01-24 15:36,CLEMENTL,CLEMENTL
1841,49429668,751235,10651709,1227198,0,0,N,N,N,CP_Drtn,TT_Mile,DT_FixedDrtn,RV_OK,TK_NotStart,823A-AD-DC-844-1040,"ERS to Tse Uk Tsuen Tunnels, up track",,-7496,1304,0,0,0,0,0,0,0,0,2014-06-09 08:00,,,2014-06-09 08:00,2014-06-09 08:00,,2017-01-01 08:00,2017-01-01 08:00,2017-01-01 08:00,2017-01-01 08:00,2017-01-01 08:00,2017-01-01 08:00,,2014-06-09 08:00,2014-06-09 08:00,CS_MSO,PT_Normal,,,,,DTFm0KgFRHCNpXm2q6St4g,R3BM0liLrUGGHNzfJkqcsQ,,,N,0,0,,,2017-01-24 14:43,2017-01-24 15:36,CLEMENTL,CLEMENTL
1842,49429669,751235,10651709,1239098,0,0,N,N,N,CP_Drtn,TT_Mile,DT_FixedDrtn,RV_OK,TK_NotStart,823A-AD-DC-844-1020,"Tai Kong Po to ERS Tunnels, up track",,-6448,1112,0,0,0,0,0,0,0,0,2014-04-14 08:00,,,2014-04-14 08:00,2014-04-14 08:00,,2017-01-02 08:00,2017-01-02 08:00,2017-01-02 08:00,2017-01-02 08:00,2017-01-02 08:00,2017-01-02 08:00,,2014-04-14 08:00,2014-04-14 08:00,CS_MSO,PT_Normal,,,,,yT+3CbcGQDmISvevN1Mi3g,,,,N,0,0,,,2017-01-24 14:43,2017-01-24 15:36,CLEMENTL,CLEMENTL
1843,49429670,751235,10651710,1227198,0,100,N,N,N,CP_Drtn,TT_Mile,DT_FixedDrtn,RV_OK,TK_Complete,823A-AD-DC827-1010,"All cross passages within Tai Kong Po to ERS Tunnels,down track for door installation",,,,0,0,0,0,0,0,0,0,2014-01-27 08:00,2016-01-02 08:00,2016-01-02 08:00,2017-06-12 18:00,2017-06-12 18:00,,2017-01-01 00:00,2017-01-01 00:00,,,2016-01-01 08:00,2016-01-01 08:00,,,,CS_MSO,PT_Normal,,,,,OYhErTnuR2ibyf1K5mxygg,QkBobF7i9E292Ok7umihkg,,,N,0,0,,,2017-01-24 14:43,2017-01-24 15:36,CLEMENTL,CLEMENTL
1844,49429671,751235,10651710,1227198,0,100,N,N,N,CP_Drtn,TT_Mile,DT_FixedDrtn,RV_OK,TK_Complete,823A-AD-DC827-1030,"All cross passages within ERS to Tse Uk Tsuen Tunnels, down track, for door frame installation",,,,0,0,0,0,0,0,0,0,2014-02-24 08:00,2016-01-02 08:00,2016-01-02 08:00,2017-06-12 18:00,2017-06-12 18:00,,2017-01-01 00:00,2017-01-01 00:00,,,2016-01-01 08:00,2016-01-01 08:00,,,,CS_MSO,PT_Normal,,,,,gHltu/I5QCaNG0JAgMYD0A,jPcGdiBjFU6QOGfdguM/jg,,,N,0,0,,,2017-01-24 14:43,2017-01-24 15:36,CLEMENTL,CLEMENTL
1845,49429672,751235,10651710,1227198,0,100,N,N,N,CP_Drtn,TT_Mile,DT_FixedDrtn,RV_OK,TK_Complete,823A-AD-DC827-1040,"All cross passages within ERS to Tse Uk Tsuen Tunnels, uptrack, for door installation",,,,0,0,0,0,0,0,0,0,2014-06-09 08:00,2016-01-02 08:00,2016-01-02 08:00,2017-06-12 18:00,2017-06-12 18:00,,2017-01-01 00:00,2017-01-01 00:00,,,2016-01-01 08:00,2016-01-01 08:00,,,,CS_MSO,PT_Normal,,,,,z5ztas8kSSqoUKmi3Pqekw,TAqW6lbpsU6pPONCTkc8wg,,,N,0,0,,,2017-01-24 14:43,2017-01-24 15:36,CLEMENTL,CLEMENTL
1846,49429673,751235,10651710,1239098,0,100,N,N,N,CP_Drtn,TT_Mile,DT_FixedDrtn,RV_OK,TK_Complete,823A-AD-DC827-1020,"All cross passages within Tai Kong Po to ERS Tunnels,up track for door installation",,,,0,0,0,0,0,0,0,0,2014-04-14 08:00,2016-01-02 08:00,2016-01-02 08:00,2017-06-12 18:00,2017-06-12 18:00,,2017-01-01 00:00,2017-01-01 00:00,,,2016-01-02 08:00,2016-01-02 08:00,,,,CS_MSO,PT_Normal,,,,,z8nRrW7WQ8GUVMIypGvWvA,,,,N,0,0,,,2017-01-24 14:43,2017-01-24 15:36,CLEMENTL,CLEMENTL
1847,49429674,751235,10651711,1227198,0,0,N,N,N,CP_Drtn,TT_Mile,DT_FixedDrtn,RV_OK,TK_NotStart,823A-AD-DC-849-1040,"ERS to Tse Uk Tsuen Tunnels, up track",,-7496,1304,0,0,0,0,0,0,0,0,2014-06-09 08:00,,,2014-06-09 08:00,2014-06-09 08:00,,2017-01-01 08:00,2017-01-01 08:00,2017-01-01 08:00,2017-01-01 08:00,2017-01-01 08:00,2017-01-01 08:00,,2014-06-09 08:00,2014-06-09 08:00,CS_MSO,PT_Normal,,,,,h/ao+50tTWC516FJFhxl5g,fyOm4TGrv02ZCvG972O+FQ,,,N,0,0,,,2017-01-24 14:43,2017-01-24 15:36,CLEMENTL,CLEMENTL
1848,49429675,751235,10651711,1227198,0,0,N,N,N,CP_Drtn,TT_Mile,DT_FixedDrtn,RV_OK,TK_NotStart,823A-AD-DC-849-1010,"Tai Kong Po to ERS Tunnels, down track",,-8560,1304,0,0,0,0,0,0,0,0,2014-01-27 08:00,,,2014-01-27 08:00,2014-01-27 08:00,,2017-01-01 08:00,2017-01-01 08:00,2017-01-01 08:00,2017-01-01 08:00,2017-01-01 08:00,2017-01-01 08:00,,2014-01-27 08:00,2014-01-27 08:00,CS_MSO,PT_Normal,,,,,IxiSYhnkRbibiafQDz/AjQ,BOKsOhUNW0GAFFKEAYoVng,,,N,0,0,,,2017-01-24 14:43,2017-01-24 15:36,CLEMENTL,CLEMENTL
1849,49429676,751235,10651711,1227198,0,0,N,N,N,CP_Drtn,TT_Mile,DT_FixedDrtn,RV_OK,TK_NotStart,823A-AD-DC-849-1030,"ERS to Tse Uk Tsuen Tunnels, down track",,-8336,1304,0,0,0,0,0,0,0,0,2014-02-24 08:00,,,2014-02-24 08:00,2014-02-24 08:00,,2017-01-01 08:00,2017-01-01 08:00,2017-01-01 08:00,2017-01-01 08:00,2017-01-01 08:00,2017-01-01 08:00,,2014-02-24 08:00,2014-02-24 08:00,CS_MSO,PT_Normal,,,,,6LYHQn91QTyLQuyu0CeBvQ,RKEQ006DA0uBaRzDFoj/kQ,,,N,0,0,,,2017-01-24 14:43,2017-01-24 15:36,CLEMENTL,CLEMENTL
1850,49429677,751235,10651711,1239098,0,0,N,N,N,CP_Drtn,TT_Mile,DT_FixedDrtn,RV_OK,TK_NotStart,823A-AD-DC-849-1020,"Tai Kong Po to ERS Tunnels, up track",,-6448,1112,0,0,0,0,0,0,0,0,2014-04-14 08:00,,,2014-04-14 08:00,2014-04-14 08:00,,2017-01-02 08:00,2017-01-02 08:00,2017-01-02 08:00,2017-01-02 08:00,2017-01-02 08:00,2017-01-02 08:00,,2014-04-14 08:00,2014-04-14 08:00,CS_MSO,PT_Normal,,,,,KE4XYfOvT6qZAbVvrZROEA,,,,N,0,0,,,2017-01-24 14:43,2017-01-24 15:36,CLEMENTL,CLEMENTL
1851,49429678,751235,10651712,1227198,0,0,N,N,N,CP_Drtn,TT_Mile,DT_FixedDrtn,RV_OK,TK_NotStart,823A-AD-DC841B-1010,"Tai Kong Po to ERS Tunnels,  down track",,-8560,1304,0,0,0,0,0,0,0,0,2014-01-27 08:00,,,2014-01-27 08:00,2014-01-27 08:00,,2017-01-01 08:00,2017-01-01 08:00,2017-01-01 08:00,2017-01-01 08:00,2017-01-01 08:00,2017-01-01 08:00,,2014-01-27 08:00,2014-01-27 08:00,CS_MSO,PT_Normal,,,,,mVKZKzlKSxGP6PNSsV19fQ,H7h1IxZL20SWgdOGgmzPFg,,,N,0,0,,,2017-01-24 14:43,2017-01-24 15:36,CLEMENTL,CLEMENTL
1852,49429679,751235,10651712,1227198,0,0,N,N,N,CP_Drtn,TT_Mile,DT_FixedDrtn,RV_OK,TK_NotStart,823A-AD-DC841B-1040,"ERS to Tse Uk Tsuen Tunnels, up track",,-7496,1304,0,0,0,0,0,0,0,0,2014-06-09 08:00,,,2014-06-09 08:00,2014-06-09 08:00,,2017-01-01 08:00,2017-01-01 08:00,2017-01-01 08:00,2017-01-01 08:00,2017-01-01 08:00,2017-01-01 08:00,,2014-06-09 08:00,2014-06-09 08:00,CS_MSO,PT_Normal,,,,,SkqQV1CuSgik8WC/20opfw,2uzoDFqUv0ygGwWnMra2bw,,,N,0,0,,,2017-01-24 14:43,2017-01-24 15:36,CLEMENTL,CLEMENTL
1853,49429680,751235,10651712,1227198,0,0,N,N,N,CP_Drtn,TT_Mile,DT_FixedDrtn,RV_OK,TK_NotStart,823A-AD-DC841B-1030,"ERS to Tse Uk Tsuen Tunnels, down track",,-8336,1304,0,0,0,0,0,0,0,0,2014-02-24 08:00,,,2014-02-24 08:00,2014-02-24 08:00,,2017-01-01 08:00,2017-01-01 08:00,2017-01-01 08:00,2017-01-01 08:00,2017-01-01 08:00,2017-01-01 08:00,,2014-02-24 08:00,2014-02-24 08:00,CS_MSO,PT_Normal,,,,,TJTAL8pXTSOQbKTDbpP7kw,nDYrKctOtUuKM6YXCRYyAg,,,N,0,0,,,2017-01-24 14:43,2017-01-24 15:36,CLEMENTL,CLEMENTL
1854,49429681,751235,10651712,1239098,0,0,N,N,N,CP_Drtn,TT_Mile,DT_FixedDrtn,RV_OK,TK_NotStart,823A-AD-DC841B-1020,"Tai Kong Po to ERS Tunnels, up  track",,-6448,1112,0,0,0,0,0,0,0,0,2014-04-14 08:00,,,2014-04-14 08:00,2014-04-14 08:00,,2017-01-02 08:00,2017-01-02 08:00,2017-01-02 08:00,2017-01-02 08:00,2017-01-02 08:00,2017-01-02 08:00,,2014-04-14 08:00,2014-04-14 08:00,CS_MSO,PT_Normal,,,,,gai0uRIMRF6mHO0qBvnYdQ,,,,N,0,0,,,2017-01-24 14:43,2017-01-24 15:36,CLEMENTL,CLEMENTL
1855,49429682,751235,10651713,1227198,0,0,N,N,N,CP_Drtn,TT_Mile,DT_FixedDrtn,RV_OK,TK_NotStart,823A-AD-DC-850-1010,"Tai Kong Po to ERS Tunnels, down track",,-8560,1304,0,0,0,0,0,0,0,0,2014-01-27 08:00,,,2014-01-27 08:00,2014-01-27 08:00,,2017-01-01 08:00,2017-01-01 08:00,2017-01-01 08:00,2017-01-01 08:00,2017-01-01 08:00,2017-01-01 08:00,,2014-01-27 08:00,2014-01-27 08:00,CS_MSO,PT_Normal,,,,,1lOOHxAjSEm7bhUktC6NrQ,ubOegiRWSU6+urKlfvttfQ,,,N,0,0,,,2017-01-24 14:43,2017-01-24 15:36,CLEMENTL,CLEMENTL
1856,49429683,751235,10651713,1227198,0,0,N,N,N,CP_Drtn,TT_Mile,DT_FixedDrtn,RV_OK,TK_NotStart,823A-AD-DC-850-1030,"ERS to Tse Uk Tsuen Tunnels, down track",,-8336,1304,0,0,0,0,0,0,0,0,2014-02-24 08:00,,,2014-02-24 08:00,2014-02-24 08:00,,2017-01-01 08:00,2017-01-01 08:00,2017-01-01 08:00,2017-01-01 08:00,2017-01-01 08:00,2017-01-01 08:00,,2014-02-24 08:00,2014-02-24 08:00,CS_MSO,PT_Normal,,,,,7SPDO81AS6WCbg2Q52SdtA,H2+rdlu8TkauAHd/wZ68JA,,,N,0,0,,,2017-01-24 14:43,2017-01-24 15:36,CLEMENTL,CLEMENTL
1857,49429684,751235,10651713,1239098,0,0,N,N,N,CP_Drtn,TT_Mile,DT_FixedDrtn,RV_OK,TK_NotStart,823A-AD-DC-850-1020,"Tai Kong Po to ERS Tunnels, up track",,-6448,1112,0,0,0,0,0,0,0,0,2014-04-14 08:00,,,2014-04-14 08:00,2014-04-14 08:00,,2017-01-02 08:00,2017-01-02 08:00,2017-01-02 08:00,2017-01-02 08:00,2017-01-02 08:00,2017-01-02 08:00,,2014-04-14 08:00,2014-04-14 08:00,CS_MSO,PT_Normal,,,,,umNz7lHwQW+mHtwPEUvQOw,,,,N,0,0,,,2017-01-24 14:43,2017-01-24 15:36,CLEMENTL,CLEMENTL
1858,49429685,751235,10651713,1227198,0,0,N,N,N,CP_Drtn,TT_Mile,DT_FixedDrtn,RV_OK,TK_NotStart,823A-AD-DC-850-1040,"ERS to Tse Uk Tsuen Tunnels, up track",,-7496,1304,0,0,0,0,0,0,0,0,2014-06-09 08:00,,,2014-06-09 08:00,2014-06-09 08:00,,2017-01-01 08:00,2017-01-01 08:00,2017-01-01 08:00,2017-01-01 08:00,2017-01-01 08:00,2017-01-01 08:00,,2014-06-09 08:00,2014-06-09 08:00,CS_MSO,PT_Normal,,,,,cQjjOcgtT6KdzPGWcJblpg,0+pYL2ZnFUSCPRkoXq18lA,,,N,0,0,,,2017-01-24 14:43,2017-01-24 15:36,CLEMENTL,CLEMENTL
1859,49429686,751235,10651714,1239098,0,100,N,N,N,CP_Drtn,TT_Mile,DT_FixedDrtn,RV_OK,TK_Complete,823A-AD-DC830-1060,"ERS to Tse Uk Tsuen Tunnels, up track including shunt neck",,,,0,0,0,0,0,0,0,0,2014-03-10 08:00,2016-02-01 08:00,2016-02-01 08:00,2017-06-12 18:00,2017-06-12 18:00,,2017-01-01 00:00,2017-01-01 00:00,,,2016-02-01 08:00,2016-02-01 08:00,,,,CS_MSO,PT_Normal,,,,,IYmNjms/Ts675EjmZw9KhQ,,,,N,0,0,,,2017-01-24 14:43,2017-01-24 15:36,CLEMENTL,CLEMENTL
1860,49429687,751235,10651714,1227198,0,100,N,N,N,CP_Drtn,TT_Mile,DT_FixedDrtn,RV_OK,TK_Complete,823A-AD-DC830-1020,"Tai Kong Po to ERS Tunnels, (Box 7B & 6B) up track",,,,0,0,0,0,0,0,0,0,2013-08-05 08:00,2016-05-31 08:00,2016-05-31 08:00,2017-06-12 18:00,2017-06-12 18:00,,2017-01-01 00:00,2017-01-01 00:00,,,2016-05-01 08:00,2016-05-01 08:00,,,,CS_MSO,PT_Normal,,,,,qJZXAUwDRiCvulK5adQ5Dw,Hbb+Dd3X+UWC1D4u3xqK3g,,,N,0,0,,,2017-01-24 14:43,2017-01-24 15:36,CLEMENTL,CLEMENTL
1861,49429688,751235,10651714,1227198,0,100,N,N,N,CP_Drtn,TT_Mile,DT_FixedDrtn,RV_OK,TK_Complete,823A-AD-DC830-1010,"Tai Kong Po to ERS Tunnels, down track, excluding Box 6A",,,,0,0,0,0,0,0,0,0,2013-08-05 08:00,2015-03-01 08:00,2015-03-01 08:00,2017-06-12 18:00,2017-06-12 18:00,,2017-01-01 00:00,2017-01-01 00:00,,,2015-03-01 08:00,2015-03-01 08:00,,,,CS_MSO,PT_Normal,,,,,WQhVg7mYQZaulgXVsYICqg,tmyzc9ctP0iCWNFXBjJqKA,,,N,0,0,,,2017-01-24 14:43,2017-01-24 15:36,CLEMENTL,CLEMENTL
1862,49429689,751235,10651714,1227198,0,100,N,N,N,CP_Drtn,TT_Mile,DT_FixedDrtn,RV_OK,TK_Complete,823A-AD-DC830-1030,"Tai Kong Po to ERS Tunnels, up track excluding Box 7A, 7B & 6B",,,,0,0,0,0,0,0,0,0,2014-01-20 08:00,2016-05-31 08:00,2016-05-31 08:00,2017-06-12 18:00,2017-06-12 18:00,,2017-01-01 00:00,2017-01-01 00:00,,,2016-05-01 08:00,2016-05-01 08:00,,,,CS_MSO,PT_Normal,,,,,M/JXBY+tT4WdhrtjTh5e+A,9LmXMDnP2E+OcBB+ERUA+g,,,N,0,0,,,2017-01-24 14:43,2017-01-24 15:36,CLEMENTL,CLEMENTL
1863,49429690,751235,10651714,1239098,0,100,N,N,N,CP_Drtn,TT_Mile,DT_FixedDrtn,RV_OK,TK_Complete,823A-AD-DC830-1040,"Tai Kong Po to ERS Tunnels, (Box 6A) both up & down tracks",,,,0,0,0,0,0,0,0,0,2013-12-30 08:00,2016-05-31 08:00,2016-05-31 08:00,2017-06-12 18:00,2017-06-12 18:00,,2017-01-01 00:00,2017-01-01 00:00,,,2016-05-03 08:00,2016-05-03 08:00,,,,CS_MSO,PT_Normal,,,,,z8gEoGCfQnWKQ1iNdNg4tQ,,,,N,0,0,,,2017-01-24 14:43,2017-01-24 15:36,CLEMENTL,CLEMENTL
1864,49429691,751235,10651714,1239098,0,100,N,N,N,CP_Drtn,TT_Mile,DT_FixedDrtn,RV_OK,TK_Complete,823A-AD-DC830-1050,"ERS to Tse Uk Tsuen Tunnels, down track",,,,0,0,0,0,0,0,0,0,2013-10-21 08:00,2015-03-01 08:00,2015-03-01 08:00,2017-06-12 18:00,2017-06-12 18:00,,2017-01-01 00:00,2017-01-01 00:00,,,2015-03-02 08:00,2015-03-02 08:00,,,,CS_MSO,PT_Normal,,,,,YokbCz87QlCnWNDsUsHWvA,,,,N,0,0,,,2017-01-24 14:43,2017-01-24 15:36,CLEMENTL,CLEMENTL
1865,49429692,751235,10651715,1227198,0,0,N,N,N,CP_Drtn,TT_Mile,DT_FixedDrtn,RV_OK,TK_NotStart,823A-AD-DC-846-1010,"Tai Kong Po to ERS Tunnels, down track",,-8560,1304,0,0,0,0,0,0,0,0,2014-01-27 08:00,,,2014-01-27 08:00,2014-01-27 08:00,,2017-01-01 08:00,2017-01-01 08:00,2017-01-01 08:00,2017-01-01 08:00,2017-01-01 08:00,2017-01-01 08:00,,2014-01-27 08:00,2014-01-27 08:00,CS_MSO,PT_Normal,,,,,ig5x/WdSSUu4mAQ+BX7LWA,+eCUDPa170SciFHmzGcYUQ,,,N,0,0,,,2017-01-24 14:43,2017-01-24 15:36,CLEMENTL,CLEMENTL
1866,49429693,751235,10651715,1227198,0,0,N,N,N,CP_Drtn,TT_Mile,DT_FixedDrtn,RV_OK,TK_NotStart,823A-AD-DC-846-1030,"ERS to Tse Uk Tsuen Tunnels, down track",,-8336,1304,0,0,0,0,0,0,0,0,2014-02-24 08:00,,,2014-02-24 08:00,2014-02-24 08:00,,2017-01-01 08:00,2017-01-01 08:00,2017-01-01 08:00,2017-01-01 08:00,2017-01-01 08:00,2017-01-01 08:00,,2014-02-24 08:00,2014-02-24 08:00,CS_MSO,PT_Normal,,,,,H96GFdNsS1GNdBUDdzOapQ,TFga7zG+Q0qFZKYua+Q7XA,,,N,0,0,,,2017-01-24 14:43,2017-01-24 15:36,CLEMENTL,CLEMENTL
1867,49429694,751235,10651715,1227198,0,0,N,N,N,CP_Drtn,TT_Mile,DT_FixedDrtn,RV_OK,TK_NotStart,823A-AD-DC-846-1040,"ERS to Tse Uk Tsuen Tunnels, up track",,-7496,1304,0,0,0,0,0,0,0,0,2014-06-09 08:00,,,2014-06-09 08:00,2014-06-09 08:00,,2017-01-01 08:00,2017-01-01 08:00,2017-01-01 08:00,2017-01-01 08:00,2017-01-01 08:00,2017-01-01 08:00,,2014-06-09 08:00,2014-06-09 08:00,CS_MSO,PT_Normal,,,,,R5/6Kst6QUSlDtQbc0YJQA,E8oM80lK60Shv3ZnZAX+zw,,,N,0,0,,,2017-01-24 14:43,2017-01-24 15:36,CLEMENTL,CLEMENTL
1868,49429695,751235,10651715,1239098,0,0,N,N,N,CP_Drtn,TT_Mile,DT_FixedDrtn,RV_OK,TK_NotStart,823A-AD-DC-846-1020,"Tai Kong Po to ERS Tunnels, up track",,-6448,1112,0,0,0,0,0,0,0,0,2014-04-14 08:00,,,2014-04-14 08:00,2014-04-14 08:00,,2017-01-02 08:00,2017-01-02 08:00,2017-01-02 08:00,2017-01-02 08:00,2017-01-02 08:00,2017-01-02 08:00,,2014-04-14 08:00,2014-04-14 08:00,CS_MSO,PT_Normal,,,,,x8OVnQAVRBuK+aGMKVUtRg,,,,N,0,0,,,2017-01-24 14:43,2017-01-24 15:36,CLEMENTL,CLEMENTL
1869,49429696,751235,10651716,1227198,0,0,N,N,N,CP_Drtn,TT_Mile,DT_FixedDrtn,RV_OK,TK_NotStart,823A-AD-DC-843-1020,"ERS to Tse Uk Tsuen Tunnels, up track",,-7496,1304,0,0,0,0,0,0,0,0,2014-06-09 08:00,,,2014-06-09 08:00,2014-06-09 08:00,,2017-01-01 08:00,2017-01-01 08:00,2017-01-01 08:00,2017-01-01 08:00,2017-01-01 08:00,2017-01-01 08:00,,2014-06-09 08:00,2014-06-09 08:00,CS_MSO,PT_Normal,,,,,QYJSgEXUQO2zSrb52Qb0DQ,D+cDkIF3hkKHvEeyKHB9mw,,,N,0,0,,,2017-01-24 14:43,2017-01-24 15:36,CLEMENTL,CLEMENTL
1870,49429697,751235,10651716,1227198,0,0,N,N,N,CP_Drtn,TT_Mile,DT_FixedDrtn,RV_OK,TK_NotStart,823A-AD-DC-843-1010,"ERS to Tse Uk Tsuen Tunnels, down track",,-8336,1304,0,0,0,0,0,0,0,0,2014-02-24 08:00,,,2014-02-24 08:00,2014-02-24 08:00,,2017-01-01 08:00,2017-01-01 08:00,2017-01-01 08:00,2017-01-01 08:00,2017-01-01 08:00,2017-01-01 08:00,,2014-02-24 08:00,2014-02-24 08:00,CS_MSO,PT_Normal,,,,,C5Pm8CIJSsmEmhf13pPa9w,P2OTIwQuNkiougGbtAIOZQ,,,N,0,0,,,2017-01-24 14:43,2017-01-24 15:36,CLEMENTL,CLEMENTL
1871,49429698,751235,10651717,1227198,0,0,N,N,N,CP_Drtn,TT_Mile,DT_FixedDrtn,RV_OK,TK_NotStart,823A-POD-10,Overhead Lines Power On - South Tunnels (by Designated C830),,-6600,1304,0,0,0,0,0,0,0,0,2014-09-29 08:00,,,2014-09-29 08:00,2014-09-29 08:00,,2017-01-01 08:00,2017-01-01 08:00,2017-01-01 08:00,2017-01-01 08:00,2017-01-01 08:00,2017-01-01 08:00,,2014-09-29 08:00,2014-09-29 08:00,CS_MSO,PT_Normal,,,,,c/tR34GsTqCQNbMqLvEveQ,6cdZVX8iKEqY2fbRSZzTww,,,N,0,0,,,2017-01-24 14:43,2017-01-24 15:36,CLEMENTL,CLEMENTL
1872,49429699,751235,10651717,1227198,0,0,N,N,N,CP_Drtn,TT_Mile,DT_FixedDrtn,RV_OK,TK_NotStart,823A-POD-20,Overhead Lines Power On - North Tunnels (by Designated C830),,-6264,1304,0,0,0,0,0,0,0,0,2014-11-10 08:00,,,2014-11-10 08:00,2014-11-10 08:00,,2017-01-01 08:00,2017-01-01 08:00,2017-01-01 08:00,2017-01-01 08:00,2017-01-01 08:00,2017-01-01 08:00,,2014-11-10 08:00,2014-11-10 08:00,CS_MSO,PT_Normal,,,,,314BPRVrS/uDMUKU2rcn/A,i4yZpQzNa0mEqCpIlCQYEQ,,,N,0,0,,,2017-01-24 14:43,2017-01-24 15:36,CLEMENTL,CLEMENTL
1873,49429700,751235,10651719,1227198,0,100,N,N,N,CP_Drtn,TT_FinMile,DT_FixedDrtn,RV_OK,TK_Complete,823A-MS-B2.4-1010,"Comp assembly, T&C of TBM & asso eqpmt (incl surface eqpmt) & start up track tunnel drive from ERS to Tse Uk Tsuen Shaft",,,,0,0,0,0,0,0,0,0,2013-08-18 18:00,2014-10-31 18:00,2014-10-31 18:00,2017-06-12 18:00,2017-06-12 18:00,,2017-01-01 00:00,2017-01-01 00:00,,,2014-10-31 18:00,2014-10-31 18:00,,,,CS_MEOB,PT_Normal,,,,,+uDNvOtxRsqN0jlFX9kSoA,E8kiuV5WKEmQV9ESHMirVg,,,N,0,0,,,2017-01-24 14:43,2017-01-24 15:36,CLEMENTL,CLEMENTL
1874,49429701,751235,10651720,1227198,0,100,N,N,N,CP_Drtn,TT_FinMile,DT_FixedDrtn,RV_OK,TK_Complete,823A-MS-B2.3-1010,"Comp assembly, T&C of TBM & asso eqpt (incl surface eqpt) & start down track tunnel drive from ERS to Tse Uk Tsuen Shaft",,,,0,0,0,0,0,0,0,0,2013-03-10 18:00,2013-02-28 18:00,2013-02-28 18:00,2017-06-12 18:00,2017-06-12 18:00,,2017-01-01 00:00,2017-01-01 00:00,,,2013-05-31 18:00,2013-05-31 18:00,,,,CS_MEOB,PT_Normal,,,,,1exW69/GQbSbj6x0CjkdeA,cJ1mnRdpmkSWr1L06bNx8w,,,N,0,0,,,2017-01-24 14:43,2017-01-24 15:36,CLEMENTL,CLEMENTL
1875,49429702,751235,10651721,1227198,0,100,N,N,N,CP_Drtn,TT_FinMile,DT_FixedDrtn,RV_OK,TK_Complete,823A-MS-B2.2-1010,Complete fabrication and factory tests of the 2nd tunnel boring machine and delivery to Hong Kong,,,,0,0,0,0,0,0,0,0,2012-08-26 18:00,2012-07-31 18:00,2012-07-31 18:00,2017-06-12 18:00,2017-06-12 18:00,,2017-01-01 00:00,2017-01-01 00:00,,,2012-07-31 18:00,2012-07-31 18:00,,,,CS_MEOB,PT_Normal,,,,,u7Bkz+VUQx+sz1NYD1zhyQ,NSfNwLRM7EC2lb5mZsyARw,,,N,0,0,,,2017-01-24 14:43,2017-01-24 15:36,CLEMENTL,CLEMENTL
1876,49429703,751235,10651722,1227198,0,100,N,N,N,CP_Drtn,TT_FinMile,DT_FixedDrtn,RV_OK,TK_Complete,823A-MS-B2.5-1010,Complete dismantling of the South tunnel boring machine,,,,0,0,0,0,0,0,0,0,2013-12-08 18:00,2015-09-24 18:00,2015-09-24 18:00,2017-06-12 18:00,2017-06-12 18:00,,2017-01-01 00:00,2017-01-01 00:00,,,2015-09-25 18:00,2015-09-25 18:00,,,,CS_MEOB,PT_Normal,,,,,22U9kMqATMSpaLRiknb50w,ZEAZccYJ4ke3eti/Gh+2cg,,,N,0,0,,,2017-01-24 14:43,2017-01-24 15:36,CLEMENTL,CLEMENTL
1877,49429704,751235,10651723,1227198,0,100,N,N,N,CP_Drtn,TT_FinMile,DT_FixedDrtn,RV_OK,TK_Complete,823A-MS-B2.1-1010,Confirmation of the order of 2nd tunnel boring machine,,,,0,0,0,0,0,0,0,0,2011-12-25 18:00,2011-12-10 18:00,2011-12-10 18:00,2017-06-12 18:00,2017-06-12 18:00,,2017-01-01 00:00,2017-01-01 00:00,,,2011-12-10 18:00,2011-12-10 18:00,,,,CS_MEOB,PT_Normal,,,,,2aaW2IqMRr+vIkRWr2rfwA,w9EC+mmIpEOJHwimd6CFPw,,,N,0,0,,,2017-01-24 14:43,2017-01-24 15:36,CLEMENTL,CLEMENTL
1878,49429705,751235,10651725,1227198,0,100,N,N,N,CP_Drtn,TT_FinMile,DT_FixedDrtn,RV_OK,TK_Complete,823A-IFC-823B-2010,Final tunnel connections by 823B at southern cut and cover tunnels,,,,0,0,0,0,0,0,0,0,2013-08-04 18:00,2013-11-27 18:00,2013-11-27 18:00,2017-06-12 18:00,2017-06-12 18:00,,2017-01-01 00:00,2017-01-01 00:00,,,2014-05-13 18:00,2014-05-13 18:00,,,,CS_MEOB,PT_Normal,,,,,MLh3y7DeRMem1/bidHIVGw,2dzhLOaODkuN4K+W6mGKgA,,,N,0,0,,,2017-01-24 14:43,2017-01-24 15:36,CLEMENTL,CLEMENTL
1879,49429706,751235,10651725,1227198,0,100,N,N,N,CP_Drtn,TT_FinMile,DT_FixedDrtn,RV_OK,TK_Complete,823A-IFC-823B-2020,Final tunnel connection to 823B northern cut and cover tunnels,,,,0,0,0,0,0,0,0,0,2013-08-04 18:00,2013-11-28 18:00,2013-11-28 18:00,2017-06-12 18:00,2017-06-12 18:00,,2017-01-01 00:00,2017-01-01 00:00,,,2014-02-28 18:00,2014-02-28 18:00,,,,CS_MEOB,PT_Normal,,,,,j7sP4rgmT+yAIAFzTb8+Dg,ICy22kiAu0+m8P/LG32KIA,,,N,0,0,,,2017-01-24 14:43,2017-01-24 15:36,CLEMENTL,CLEMENTL
1880,49429707,751235,10651726,1227198,0,100,N,N,N,CP_Drtn,TT_Mile,DT_FixedDrtn,RV_OK,TK_Complete,823A-IFC-822-3010,Ground treatment works by 822,,,,0,0,0,0,0,0,0,0,,2012-09-25 08:00,2012-09-25 08:00,2017-06-12 18:00,2017-06-12 18:00,,2017-01-01 00:00,2017-01-01 00:00,,,2012-09-25 08:00,2012-09-25 08:00,,,,,PT_Normal,,,,,u0lKe8M5SfmAih4uqeHcMw,E4N5NXhx8ECHZWQt+YtPNQ,,,N,0,0,,,2017-01-24 14:43,2017-01-24 15:36,CLEMENTL,CLEMENTL
1881,49429708,751235,10651726,1227198,0,100,N,N,N,CP_Drtn,TT_FinMile,DT_FixedDrtn,RV_OK,TK_Complete,823A-IFC-822-3020,822 to complete lining for 823A connection (Down Track),,,,0,0,0,0,0,0,0,0,2013-05-31 18:00,2014-03-31 18:00,2014-03-31 18:00,2017-06-12 18:00,2017-06-12 18:00,,2017-01-01 00:00,2017-01-01 00:00,,,2014-03-31 18:00,2014-03-31 18:00,,,,CS_MEO,PT_Normal,,,,,caeVSQgXQQSjuABx+vAkUw,NsEouybwFEmTNMFXG1o6bQ,,,N,0,0,,,2017-01-24 14:43,2017-01-24 15:36,CLEMENTL,CLEMENTL
1882,49429709,751235,10651726,1227198,0,100,N,N,N,CP_Drtn,TT_FinMile,DT_FixedDrtn,RV_OK,TK_Complete,823A-IFC-822-3030,822 to complete lining for 823A connection (Up Track),,,,0,0,0,0,0,0,0,0,2013-10-15 18:00,2014-08-31 18:00,2014-08-31 18:00,2017-06-12 18:00,2017-06-12 18:00,,2017-01-01 00:00,2017-01-01 00:00,,,2014-08-31 18:00,2014-08-31 18:00,,,,CS_MEO,PT_Normal,,,,,F3vybD+6TN6gvKdPdtSCfQ,/K+UwCAmZUq6dN94N5TQrQ,,,N,0,0,,,2017-01-24 14:43,2017-01-24 15:36,CLEMENTL,CLEMENTL
1883,49429710,751235,10651727,1239098,1,100,N,N,N,CP_Drtn,TT_Task,DT_FixedDrtn,RV_OK,TK_Complete,823A-IFC-824-1020,TBM Break-in and Retrieval (down track),,,,0,0,0,0,192,0,0,0,,2014-08-04 08:00,2014-11-04 18:00,2014-10-11 18:00,2014-10-11 18:00,,2017-01-01 00:00,2017-01-01 00:00,,,2014-08-04 08:00,2014-08-30 18:00,,,,,PT_Normal,,,,,lD0Erc+6Q5qOkxGrg/Wq2g,z8zrma00/E+zTD2CkBnCSA,,,N,0,0,,,2017-01-24 14:43,2017-01-24 14:53,CLEMENTL,CLEMENTL
1884,49429711,751235,10651727,1239098,1,100,N,N,N,CP_Drtn,TT_Task,DT_FixedDUR2,RV_OK,TK_Complete,823A-IFC-824-1040,TBM Break-in and Retrieval (up track),,,,0,0,0,0,192,0,0,0,,2015-12-09 08:00,2016-01-08 18:00,2014-10-11 18:00,2014-10-11 18:00,,2017-01-01 00:00,2017-01-01 00:00,,,2015-12-09 08:00,2016-01-08 18:00,,,,,PT_Normal,,,,,0wvEy83eSFaH7FNV+Vu3cw,unjthQNwvEGcfK2D1mHNjw,,,N,0,0,,,2017-01-24 14:43,2017-01-24 14:53,CLEMENTL,CLEMENTL
1885,49429712,751235,10651727,1239098,1,100,N,N,N,CP_Drtn,TT_Task,DT_FixedDUR2,RV_OK,TK_Complete,823A-IFC-824-1030,Position crane for TBM retrieval (up track),,,,0,0,0,0,56,0,0,0,,2015-12-01 08:00,2015-12-08 18:00,2014-10-11 18:00,2014-10-11 18:00,,2017-01-01 00:00,2017-01-01 00:00,,,2015-12-01 08:00,2015-12-08 18:00,,,,,PT_Normal,,,,,zPWSVCxTSp2nLLRh0cjPtA,bTPnOz0/SE2UY+ImJ9M4xg,,,N,0,0,,,2017-01-24 14:43,2017-01-24 14:53,CLEMENTL,CLEMENTL
1886,49429713,751235,10651727,1239098,1,100,N,N,N,CP_Drtn,TT_Task,DT_FixedDUR2,RV_OK,TK_Complete,823A-FC-824-1010,Position crane for TBM retrieval (down track),,,,0,0,0,0,56,0,0,0,,2014-07-26 08:00,2014-08-02 18:00,2014-10-11 18:00,2014-10-11 18:00,,2017-01-01 00:00,2017-01-01 00:00,,,2014-07-02 08:00,2014-07-09 18:00,,,,,PT_Normal,,,,,hKQZoxCTR72w4q/YaFLiPQ,ugmxFdgBMki/UH2uiKKWUA,,,N,0,0,,,2017-01-24 14:43,2017-01-24 14:53,CLEMENTL,CLEMENTL
1887,49429714,751235,10651728,1239099,0,100,N,N,N,CP_Drtn,TT_FinMile,DT_FixedDrtn,RV_OK,TK_Complete,KD-3D,Complete the temporary diversion of Wang Toi Shan Shan Tsuen Road,,,,0,0,0,0,0,0,0,0,2011-12-18 18:00,2011-12-18 18:00,2011-12-18 18:00,2017-06-12 18:00,2017-06-12 18:00,,2017-01-01 00:00,2017-01-01 00:00,,,2011-12-18 18:00,2011-12-18 18:00,,,,CS_MEOB,PT_Normal,,,,,d7s3pcaqThKTgM0qqscBbw,,,,N,0,0,,,2017-01-24 14:43,2017-01-24 15:36,CLEMENTL,CLEMENTL
1888,49429715,751235,10651728,1239099,0,100,N,N,N,CP_Drtn,TT_FinMile,DT_FixedDrtn,RV_OK,TK_Complete,KD-3H,Complete commissioning of the East Culvert,,,,0,0,0,0,0,0,0,0,2013-03-31 18:00,2013-03-31 00:00,2013-03-31 00:00,2017-06-12 18:00,2017-06-12 18:00,,2017-01-01 00:00,2017-01-01 00:00,,,2013-05-31 18:00,2013-05-31 18:00,,,,CS_MEOB,PT_Normal,,,,,mjCi3Pf5SuGVR+Xy0fxU4w,,,,N,0,0,,,2017-01-24 14:43,2017-01-24 15:36,CLEMENTL,CLEMENTL
1889,49429716,751235,10651728,1239099,0,100,N,N,N,CP_Drtn,TT_FinMile,DT_FixedDrtn,RV_OK,TK_Complete,KD-3B(i),Complete the down track tunnel structure at tai Kong Po Shaft for the final tunnel connections by Contract 824,,,,0,0,0,0,0,0,0,0,2013-03-03 18:00,2014-08-04 18:00,2014-08-04 18:00,2017-06-12 18:00,2017-06-12 18:00,,2017-01-01 00:00,2017-01-01 00:00,,,2015-04-01 08:00,2015-04-01 08:00,,,,CS_MEOB,PT_Normal,,,,,r0LW/XiMTZyDuZYicjCSlg,,,,N,0,0,,,2017-01-24 14:43,2017-01-24 15:36,CLEMENTL,CLEMENTL
1890,49429717,751235,10651728,1239099,0,100,N,N,N,CP_Drtn,TT_FinMile,DT_FixedDrtn,RV_OK,TK_Complete,KD-3B(ii),Complete the up track tunnel structure at tai Kong Po Shaft for the final tunnel connections by Contract 824,,,,0,0,0,0,0,0,0,0,2013-09-22 18:00,2016-05-17 18:00,2016-05-17 18:00,2017-06-12 18:00,2017-06-12 18:00,,2017-01-01 00:00,2017-01-01 00:00,,,2016-06-01 08:00,2016-06-01 08:00,,,,CS_MEOB,PT_Normal,,,,,c+GFnmzPThug8VOstHFeeA,,,,N,0,0,,,2017-01-24 14:43,2017-01-24 15:36,CLEMENTL,CLEMENTL
1891,49429718,751235,10651728,1239099,0,100,N,N,N,CP_Drtn,TT_FinMile,DT_FixedDrtn,RV_OK,TK_Complete,KD-3A,Complete TUT Shaft within Works Area 5.1 & all requirements stated in App. Y3 of PS for ground treatment works by 822,,,,0,0,0,0,0,0,0,0,2012-12-02 18:00,2012-12-02 18:00,2012-12-02 18:00,2017-06-12 18:00,2017-06-12 18:00,,2017-01-01 00:00,2017-01-01 00:00,,,2013-05-31 18:00,2013-05-31 18:00,,,,CS_MEOB,PT_Normal,,,,,BAJz/9+ARHaWJM0txFzyvw,,,,N,0,0,,,2017-01-24 14:43,2017-01-24 15:36,CLEMENTL,CLEMENTL
1892,49429719,751235,10651728,1239099,0,100,N,N,N,CP_Drtn,TT_FinMile,DT_FixedDrtn,RV_OK,TK_Complete,KD-3C,Complete the backfilling works within Works Area 4.10,,,,0,0,0,0,0,0,0,0,2014-08-17 18:00,2015-12-21 00:00,2015-12-21 00:00,2017-06-12 18:00,2017-06-12 18:00,,2017-01-01 00:00,2017-01-01 00:00,,,2016-07-01 08:00,2016-07-01 08:00,,,,CS_MEOB,PT_Normal,,,,,c3GqOHfhSbSPZ2+cPHHkXw,,,,N,0,0,,,2017-01-24 14:43,2017-01-24 15:36,CLEMENTL,CLEMENTL
1893,49429720,751235,10651730,1227198,0,0,N,N,N,CP_Drtn,TT_Mile,DT_FixedDrtn,RV_OK,TK_NotStart,823A-AD2-WA3.1,Works Area 3.1,,-4920,1304,0,0,0,0,0,0,0,0,2015-04-27 08:00,,,2015-04-27 08:00,2015-04-27 08:00,,2017-01-01 08:00,2017-01-01 08:00,2017-01-01 08:00,2017-01-01 08:00,2017-01-01 08:00,2017-01-01 08:00,,2015-04-27 08:00,2015-04-27 08:00,CS_MSO,PT_Normal,,,,,w8G7+SazQryXceJmALT1pA,rWH7sbn9jU6qWpMp+xVQIg,,,N,0,0,,,2017-01-24 14:43,2017-01-24 15:36,CLEMENTL,CLEMENTL
1894,49429721,751235,10651730,1227198,0,0,N,N,N,CP_Drtn,TT_Mile,DT_FixedDrtn,RV_OK,TK_NotStart,823A-AD2-WA3.2,Works Area 3.2,,-4920,1304,0,0,0,0,0,0,0,0,2015-04-27 08:00,,,2015-04-27 08:00,2015-04-27 08:00,,2017-01-01 08:00,2017-01-01 08:00,2017-01-01 08:00,2017-01-01 08:00,2017-01-01 08:00,2017-01-01 08:00,,2015-04-27 08:00,2015-04-27 08:00,CS_MSO,PT_Normal,,,,,RbN1X+NjQfGMQoBpubdWLQ,V37/tczCpUeSbqgujDkZ7Q,,,N,0,0,,,2017-01-24 14:43,2017-01-24 15:36,CLEMENTL,CLEMENTL
1895,49429722,751235,10651730,1227198,0,0,N,N,N,CP_Drtn,TT_Mile,DT_FixedDrtn,RV_OK,TK_NotStart,823A-AD2-WA5.3,Works Area 5.3,,-7552,1304,0,0,0,0,0,0,0,0,2014-06-02 08:00,,,2014-06-02 08:00,2014-06-02 08:00,,2017-01-01 08:00,2017-01-01 08:00,2017-01-01 08:00,2017-01-01 08:00,2017-01-01 08:00,2017-01-01 08:00,,2014-06-02 08:00,2014-06-02 08:00,CS_MSO,PT_Normal,,,,,ybDk+sMuSa+KA4ZbGgbpQA,VRflWUmSf0ic+yeVVqRnqg,,,N,0,0,,,2017-01-24 14:43,2017-01-24 15:36,CLEMENTL,CLEMENTL
1896,49429723,751235,10651730,1227198,0,0,N,N,N,CP_Drtn,TT_Mile,DT_FixedDrtn,RV_OK,TK_NotStart,823A-AD2-WA4.15B,Works Area 4.15B,,-4808,1304,0,0,0,0,0,0,0,0,2015-05-11 08:00,,,2015-05-11 08:00,2015-05-11 08:00,,2017-01-01 08:00,2017-01-01 08:00,2017-01-01 08:00,2017-01-01 08:00,2017-01-01 08:00,2017-01-01 08:00,,2015-05-11 08:00,2015-05-11 08:00,CS_MSO,PT_Normal,,,,,hFYO0wHGRfmm0iaooIO/KA,Oh0vTE8HFUeMDQc0YtXLew,,,N,0,0,,,2017-01-24 14:43,2017-01-24 15:36,CLEMENTL,CLEMENTL
1897,49429724,751235,10651731,1227198,0,100,N,N,N,CP_Drtn,TT_Mile,DT_FixedDrtn,RV_OK,TK_Complete,823A-AD1-WA4-1100,Works Area 4.1 (subject to SLG approval),,,,0,0,0,0,0,0,0,0,2011-04-07 08:00,2011-04-07 08:00,2011-04-07 08:00,2017-06-12 18:00,2017-06-12 18:00,,2017-01-01 00:00,2017-01-01 00:00,,,2011-04-07 08:00,2011-04-07 08:00,,,,CS_MSO,PT_Normal,,,,,hacQqDj7TkmWj5byBxw2vA,cC8ut4btykSs9kYAT8M/lg,,,N,0,0,,,2017-01-24 14:43,2017-01-24 15:36,CLEMENTL,CLEMENTL
1898,49429725,751235,10651731,1227198,0,100,N,N,N,CP_Drtn,TT_Mile,DT_FixedDrtn,RV_OK,TK_Complete,823A-AD1-WA4-1110,Works Area 4.2,,,,0,0,0,0,0,0,0,0,2010-12-06 08:00,2010-12-06 08:00,2010-12-06 08:00,2014-10-11 18:00,2014-10-11 18:00,,2017-01-01 00:00,2017-01-01 00:00,,,2010-12-06 08:00,2010-12-06 08:00,,,,CS_MSO,PT_Normal,,,,,PlBwmlswTumsrRHFv4mDwQ,2P5Q8eZeA0qYTGFSnZrLtA,,,N,0,0,,,2017-01-24 14:43,2017-01-24 14:53,CLEMENTL,CLEMENTL
1899,49429726,751235,10651731,1227198,0,100,N,N,N,CP_Drtn,TT_Mile,DT_FixedDrtn,RV_OK,TK_Complete,823A-AD1-WA4-1120,Works Area 4.3,,,,0,0,0,0,0,0,0,0,2010-12-06 08:00,2010-12-06 08:00,2010-12-06 08:00,2014-10-11 18:00,2014-10-11 18:00,,2017-01-01 00:00,2017-01-01 00:00,,,2010-12-06 08:00,2010-12-06 08:00,,,,CS_MSO,PT_Normal,,,,,1oF97GJJQkmJFWJeBnflKg,nWpzh7mPPkmOH8/DWuvV2Q,,,N,0,0,,,2017-01-24 14:43,2017-01-24 14:53,CLEMENTL,CLEMENTL
1900,49429727,751235,10651731,1227198,0,100,N,N,N,CP_Drtn,TT_Mile,DT_FixedDrtn,RV_OK,TK_Complete,823A-AD1-WA4-1130,Works Area 4.4,,,,0,0,0,0,0,0,0,0,2010-12-06 08:00,2010-12-06 08:00,2010-12-06 08:00,2014-07-11 08:00,2014-07-11 08:00,,2017-01-01 00:00,2017-01-01 00:00,,,2010-12-06 08:00,2010-12-06 08:00,,,,CS_MSO,PT_Normal,,,,,zRHjJXAKSBuSTcL3FurKRA,D1jA06frJESP6Y48PWmj5g,,,N,0,0,,,2017-01-24 14:43,2017-01-24 15:40,CLEMENTL,CLEMENTL
1901,49429728,751235,10651731,1227198,0,100,N,N,N,CP_Drtn,TT_Mile,DT_FixedDrtn,RV_OK,TK_Complete,823A-AD1-WA4-1140,Works Area 4.9,,,,0,0,0,0,0,0,0,0,2010-12-06 08:00,2010-12-06 08:00,2010-12-06 08:00,2014-01-05 18:00,2014-01-05 18:00,,2017-01-01 00:00,2017-01-01 00:00,,,2010-12-06 08:00,2010-12-06 08:00,,,,CS_MSO,PT_Normal,,,,,bo99wP9sSgC+vlP+VLg6Sg,xRjokYbLIUutKpXOnFTFSg,,,Y,0,0,,,2017-01-24 14:43,2017-01-24 14:53,CLEMENTL,CLEMENTL
1902,49429729,751235,10651731,1227198,0,100,N,N,N,CP_Drtn,TT_Mile,DT_FixedDrtn,RV_OK,TK_Complete,823A-AD1-WA4-1160,Works Area 4.10,,,,0,0,0,0,0,0,0,0,2010-12-06 08:00,2010-12-06 08:00,2010-12-06 08:00,2014-01-05 18:00,2014-01-05 18:00,,2017-01-01 00:00,2017-01-01 00:00,,,2010-12-06 08:00,2010-12-06 08:00,,,,CS_MSO,PT_Normal,,,,,gq5Y9d2bToqTlsusM9YFRg,8UuVjJVgE0e2mBr1/fmUjg,,,Y,0,0,,,2017-01-24 14:43,2017-01-24 14:53,CLEMENTL,CLEMENTL
1903,49429730,751235,10651731,1227198,0,100,N,N,N,CP_Drtn,TT_Mile,DT_FixedDrtn,RV_OK,TK_Complete,823A-AD1-WA4-1180,Works Area 4.11,,,,0,0,0,0,0,0,0,0,2010-12-06 08:00,2010-12-06 08:00,2010-12-06 08:00,2014-01-05 18:00,2014-01-05 18:00,,2017-01-01 00:00,2017-01-01 00:00,,,2010-12-06 08:00,2010-12-06 08:00,,,,CS_MSO,PT_Normal,,,,,6dH/cIbDTHij1Foz1uljiw,swzz/UC1X0+Z9dX5Au67cA,,,Y,0,0,,,2017-01-24 14:43,2017-01-24 14:53,CLEMENTL,CLEMENTL
1904,49429731,751235,10651731,1227198,0,100,N,N,N,CP_Drtn,TT_Mile,DT_FixedDrtn,RV_OK,TK_Complete,823A-AD1-WA4-1190,Works Area 4.12A,,,,0,0,0,0,0,0,0,0,2010-12-06 08:00,2010-12-06 08:00,2010-12-06 08:00,2014-10-11 18:00,2014-10-11 18:00,,2017-01-01 00:00,2017-01-01 00:00,,,2010-12-06 08:00,2010-12-06 08:00,,,,CS_MSO,PT_Normal,,,,,PcZgSl7aSseUzdFK5iVcpg,+gWZ/GiIhkeYQI6nsAyJBQ,,,N,0,0,,,2017-01-24 14:43,2017-01-24 14:53,CLEMENTL,CLEMENTL
1905,49429732,751235,10651731,1227198,0,100,N,N,N,CP_Drtn,TT_Mile,DT_FixedDrtn,RV_OK,TK_Complete,823A-AD1-WA4-1200,Works Area 4.12B,,,,0,0,0,0,0,0,0,0,2010-12-06 08:00,2010-12-06 08:00,2010-12-06 08:00,2014-01-05 18:00,2014-01-05 18:00,,2017-01-01 00:00,2017-01-01 00:00,,,2010-12-06 08:00,2010-12-06 08:00,,,,CS_MSO,PT_Normal,,,,,dVdDgOwsSV2xTXjgRLvQOA,7N4VHq8wb0KXZcRfqF72Ig,,,Y,0,0,,,2017-01-24 14:43,2017-01-24 14:53,CLEMENTL,CLEMENTL
1906,49429733,751235,10651731,1227198,0,100,N,N,N,CP_Drtn,TT_Mile,DT_FixedDrtn,RV_OK,TK_Complete,823A-AD1-WA4-1210,Works Area 4.12C,,,,0,0,0,0,0,0,0,0,2010-12-06 08:00,2010-12-06 08:00,2010-12-06 08:00,2014-01-05 18:00,2014-01-05 18:00,,2017-01-01 00:00,2017-01-01 00:00,,,2010-12-06 08:00,2010-12-06 08:00,,,,CS_MSO,PT_Normal,,,,,roppgx/4QeuX0plAHtiGnQ,s01e6PTh0UeT7Mc+ugmO2g,,,Y,0,0,,,2017-01-24 14:43,2017-01-24 14:53,CLEMENTL,CLEMENTL
1907,49429734,751235,10651731,1227198,0,100,N,N,N,CP_Drtn,TT_Mile,DT_FixedDrtn,RV_OK,TK_Complete,823A-AD1-WA4-1220,Works Area 4.13 (subject to SLG approval),,,,0,0,0,0,0,0,0,0,2011-03-20 08:00,2011-03-20 08:00,2011-03-20 08:00,2017-06-12 18:00,2017-06-12 18:00,,2017-01-01 00:00,2017-01-01 00:00,,,2011-03-20 08:00,2011-03-20 08:00,,,,CS_MSO,PT_Normal,,,,,r0Gx4qX2T5C/gmeq71WydA,tE4vbUDJGkCTdXMv+U3K7g,,,N,0,0,,,2017-01-24 14:43,2017-01-24 15:36,CLEMENTL,CLEMENTL
1908,49429735,751235,10651731,1227198,0,100,N,N,N,CP_Drtn,TT_Mile,DT_FixedDrtn,RV_OK,TK_Complete,823A-AD1-WA4-1230,Works Area 4.15,,,,0,0,0,0,0,0,0,0,2010-12-06 08:00,2010-12-06 08:00,2010-12-06 08:00,2014-01-05 18:00,2014-01-05 18:00,,2017-01-01 00:00,2017-01-01 00:00,,,2010-12-06 08:00,2010-12-06 08:00,,,,CS_MSO,PT_Normal,,,,,bqkWlMhFQT6fPeAMp/ph4A,8QiYp5sV0EeK0IRDNr9e3A,,,Y,0,0,,,2017-01-24 14:43,2017-01-24 14:53,CLEMENTL,CLEMENTL
1909,49429736,751235,10651731,1227198,0,100,N,N,N,CP_Drtn,TT_Mile,DT_FixedDrtn,RV_OK,TK_Complete,823A-AD1-WA4-1260,Works Area 4.16 (subject to SLG approval),,,,0,0,0,0,0,0,0,0,2011-03-20 08:00,2011-03-20 08:00,2011-03-20 08:00,2017-06-12 18:00,2017-06-12 18:00,,2017-01-01 00:00,2017-01-01 00:00,,,2011-03-20 08:00,2011-03-20 08:00,,,,CS_MSO,PT_Normal,,,,,WvQQpI+OQlSbd4d4xxVIZg,oISy3facvkWFiZWpGJBOQg,,,N,0,0,,,2017-01-24 14:43,2017-01-24 15:36,CLEMENTL,CLEMENTL
1910,49429737,751235,10651731,1227198,0,100,N,N,N,CP_Drtn,TT_Mile,DT_FixedDrtn,RV_OK,TK_Complete,823A-AD1-WA5-1270,Works Area 5.1,,,,0,0,0,0,0,0,0,0,2011-01-03 08:00,2011-01-03 08:00,2011-01-03 08:00,2014-10-11 18:00,2014-10-11 18:00,,2017-01-01 00:00,2017-01-01 00:00,,,2011-01-03 08:00,2011-01-03 08:00,,,,CS_MSO,PT_Normal,,,,,ww4s26U/QMOkag1k35QnlQ,EFRcSeAKFUuKDvy3NMyMBA,,,N,0,0,,,2017-01-24 14:43,2017-01-24 14:53,CLEMENTL,CLEMENTL
1911,49429738,751235,10651731,1227198,0,100,N,N,N,CP_Drtn,TT_Mile,DT_FixedDrtn,RV_OK,TK_Complete,823A-AD1-WA5-1280,Works Area 5.2 (subject to SLG approval),,,,0,0,0,0,0,0,0,0,2011-03-20 08:00,2011-03-20 08:00,2011-03-20 08:00,2014-07-24 08:00,2014-07-24 08:00,,2017-01-01 00:00,2017-01-01 00:00,,,2011-03-20 08:00,2011-03-20 08:00,,,,CS_MSO,PT_Normal,,,,,iue79TOkSRGq9x9pjaWaPg,eyeVZfpXh0aRRobKV9/QBw,,,Y,0,0,,,2017-01-24 14:43,2017-01-24 14:53,CLEMENTL,CLEMENTL
1912,49429739,751235,10651731,1227198,0,100,N,N,N,CP_Drtn,TT_Mile,DT_FixedDrtn,RV_OK,TK_Complete,823A-AD1-WA5-1290,Works Area 5.3,,,,0,0,0,0,0,0,0,0,2011-01-03 08:00,2011-01-03 08:00,2011-01-03 08:00,2014-10-11 18:00,2014-10-11 18:00,,2017-01-01 00:00,2017-01-01 00:00,,,2011-01-03 08:00,2011-01-03 08:00,,,,CS_MSO,PT_Normal,,,,,bGBNqcquS+69Px8blBwMKQ,3Ig04ANUokGbY/OcUtXzxA,,,N,0,0,,,2017-01-24 14:43,2017-01-24 14:53,CLEMENTL,CLEMENTL
1913,49429740,751235,10651731,1227198,0,100,N,N,N,CP_Drtn,TT_Mile,DT_FixedDrtn,RV_OK,TK_Complete,823A-AD1-WA3-1090,Works Area 3.11,,,,0,0,0,0,0,0,0,0,2010-08-16 08:00,2010-08-16 08:00,2010-08-16 08:00,2014-10-11 18:00,2014-10-11 18:00,,2017-01-01 00:00,2017-01-01 00:00,,,2010-08-16 08:00,2010-08-16 08:00,,,,CS_MSO,PT_Normal,,,,,eu0rWr6RQoG/7SX3TiD0aA,mtCzHD1RuUuhrWaLCUTGVA,,,N,0,0,,,2017-01-24 14:43,2017-01-24 14:53,CLEMENTL,CLEMENTL
1914,49429741,751235,10651731,1227198,0,100,N,N,N,CP_Drtn,TT_Mile,DT_FixedDrtn,RV_OK,TK_Complete,823A-AD1-WA4-1150,Works Area 4.9A,,,,0,0,0,0,0,0,0,0,2010-12-06 08:00,2010-12-06 08:00,2010-12-06 08:00,2014-01-05 18:00,2014-01-05 18:00,,2017-01-01 00:00,2017-01-01 00:00,,,2010-12-06 08:00,2010-12-06 08:00,,,,CS_MSO,PT_Normal,,,,,kN7ocFYRSw2RrgyGRMjH5A,g4dDYqyMyE6mzOphSakfCg,,,Y,0,0,,,2017-01-24 14:43,2017-01-24 14:53,CLEMENTL,CLEMENTL
1915,49429742,751235,10651731,1227198,0,100,N,N,N,CP_Drtn,TT_Mile,DT_FixedDrtn,RV_OK,TK_Complete,823A-AD1-WA4-1170,Works Area 4.10A,,,,0,0,0,0,0,0,0,0,2010-12-06 08:00,2010-12-06 08:00,2010-12-06 08:00,2014-01-05 18:00,2014-01-05 18:00,,2017-01-01 00:00,2017-01-01 00:00,,,2010-12-06 08:00,2010-12-06 08:00,,,,CS_MSO,PT_Normal,,,,,0hO9l44hQky8kUVOEyfoBQ,6M8wTYUWcUuEOJeJk4CbSg,,,Y,0,0,,,2017-01-24 14:43,2017-01-24 14:53,CLEMENTL,CLEMENTL
1916,49429743,751235,10651731,1227198,0,100,N,N,N,CP_Drtn,TT_Mile,DT_FixedDrtn,RV_OK,TK_Complete,823A-AD1-WA1-1020,Works Area 1.15B (Option No. 1),,,,0,0,0,0,0,0,0,0,2013-04-01 08:00,2013-04-01 08:00,2013-04-01 08:00,2017-06-12 18:00,2017-06-12 18:00,,2017-01-01 00:00,2017-01-01 00:00,,,2014-02-01 08:00,2014-02-01 08:00,,,,CS_MSO,PT_Normal,,,,,+dgmOCC/Tr2XgsujCpmQcQ,NkONNpjQYEia9q3d0AoqDQ,,,N,0,0,,,2017-01-24 14:43,2017-01-24 15:36,CLEMENTL,CLEMENTL
1917,49429744,751235,10651731,1227198,0,100,N,N,N,CP_Drtn,TT_Mile,DT_FixedDrtn,RV_OK,TK_Complete,823A-AD1-WA3-1070,Works Area 3.3B,,,,0,0,0,0,0,0,0,0,2010-12-06 08:00,2010-12-06 08:00,2010-12-06 08:00,2014-07-11 08:00,2014-07-11 08:00,,2017-01-01 00:00,2017-01-01 00:00,,,2010-12-06 08:00,2010-12-06 08:00,,,,CS_MSO,PT_Normal,,,,,txiSQgDPQ4yE1RTF/tHAuA,hMQqJRQU8kGKj6DuVn9tsg,,,N,0,0,,,2017-01-24 14:43,2017-01-24 15:40,CLEMENTL,CLEMENTL
1918,49429745,751235,10651731,1227198,0,100,N,N,N,CP_Drtn,TT_Mile,DT_FixedDrtn,RV_OK,TK_Complete,823A-AD1-WA4-1240,Works Area 4.15A,,,,0,0,0,0,0,0,0,0,2010-12-06 08:00,2010-12-06 08:00,2010-12-06 08:00,2014-01-05 18:00,2014-01-05 18:00,,2017-01-01 00:00,2017-01-01 00:00,,,2010-12-06 08:00,2010-12-06 08:00,,,,CS_MSO,PT_Normal,,,,,gS86G+VEQuOQWkqzAosV/w,ndUYW2flhkyOgGNTeQaE2A,,,Y,0,0,,,2017-01-24 14:43,2017-01-24 14:53,CLEMENTL,CLEMENTL
1919,49429746,751235,10651731,1227198,0,100,N,N,N,CP_Drtn,TT_Mile,DT_FixedDrtn,RV_OK,TK_Complete,823A-AD1-WA4-1250,Works Area 4.15B,,,,0,0,0,0,0,0,0,0,2010-12-06 08:00,2010-12-06 08:00,2010-12-06 08:00,2014-01-05 18:00,2014-01-05 18:00,,2017-01-01 00:00,2017-01-01 00:00,,,2010-12-06 08:00,2010-12-06 08:00,,,,CS_MSO,PT_Normal,,,,,J6q5N8swShO3j7McE0U31A,V/BtEZl+6kuu1TQiWr/rYA,,,Y,0,0,,,2017-01-24 14:43,2017-01-24 14:53,CLEMENTL,CLEMENTL
1920,49429747,751235,10651731,1227198,0,100,N,N,N,CP_Drtn,TT_Mile,DT_FixedDrtn,RV_OK,TK_Complete,823A-AD1-WA1-1010,Works Area 1.15A,,,,0,0,0,0,0,0,0,0,2010-07-19 08:00,2010-07-19 08:00,2010-07-19 08:00,2017-06-12 18:00,2017-06-12 18:00,,2017-01-01 00:00,2017-01-01 00:00,,,2010-07-19 08:00,2010-07-19 08:00,,,,CS_MSO,PT_Normal,,,,,sgv+MD72SMq1PvsPJ3w5nA,QwVgdZpMRk+Er00HicSr6w,,,N,0,0,,,2017-01-24 14:43,2017-01-24 15:36,CLEMENTL,CLEMENTL
1921,49429748,751235,10651731,1227198,0,100,N,N,N,CP_Drtn,TT_Mile,DT_FixedDrtn,RV_OK,TK_Complete,823A-AD1-WA3-1030,Works Area 3.1,,,,0,0,0,0,0,0,0,0,2010-12-06 08:00,2010-12-06 08:00,2010-12-06 08:00,2014-10-11 18:00,2014-10-11 18:00,,2017-01-01 00:00,2017-01-01 00:00,,,2010-12-06 08:00,2010-12-06 08:00,,,,CS_MSO,PT_Normal,,,,,USRog2k/Q66kdiF2LsvoUQ,FIAZTDJajEGchPEfn+s9cQ,,,N,0,0,,,2017-01-24 14:43,2017-01-24 14:53,CLEMENTL,CLEMENTL
1922,49429749,751235,10651731,1227198,0,100,N,N,N,CP_Drtn,TT_Mile,DT_FixedDrtn,RV_OK,TK_Complete,823A-AD1-WA3-1040,Works Area 3.2,,,,0,0,0,0,0,0,0,0,2010-12-06 08:00,2010-12-06 08:00,2010-12-06 08:00,2014-10-11 18:00,2014-10-11 18:00,,2017-01-01 00:00,2017-01-01 00:00,,,2010-12-06 08:00,2010-12-06 08:00,,,,CS_MSO,PT_Normal,,,,,1tx8CXW9RzC/nPX5Xhr2xg,D19ljMH0AkC6gfCaJbRGnA,,,N,0,0,,,2017-01-24 14:43,2017-01-24 14:53,CLEMENTL,CLEMENTL
1923,49429750,751235,10651731,1227198,0,100,N,N,N,CP_Drtn,TT_Mile,DT_FixedDrtn,RV_OK,TK_Complete,823A-AD1-WA3-1050,Works Area 3.3,,,,0,0,0,0,0,0,0,0,2010-12-06 08:00,2010-12-06 08:00,2010-12-06 08:00,2014-10-11 18:00,2014-10-11 18:00,,2017-01-01 00:00,2017-01-01 00:00,,,2010-12-06 08:00,2010-12-06 08:00,,,,CS_MSO,PT_Normal,,,,,1mq5kXNITgiJwYbCBap9DA,s5TMGqQAbEijNqnOQ+tL1Q,,,N,0,0,,,2017-01-24 14:43,2017-01-24 14:53,CLEMENTL,CLEMENTL
1924,49429751,751235,10651731,1227198,0,100,N,N,N,CP_Drtn,TT_Mile,DT_FixedDrtn,RV_OK,TK_Complete,823A-AD1-WA3-1060,Works Area 3.3A,,,,0,0,0,0,0,0,0,0,2010-12-06 08:00,2010-12-06 08:00,2010-12-06 08:00,2014-10-11 18:00,2014-10-11 18:00,,2017-01-01 00:00,2017-01-01 00:00,,,2010-12-06 08:00,2010-12-06 08:00,,,,CS_MSO,PT_Normal,,,,,VxJintQwR82gt2TlQM9LDg,KJUKf5DbLkeFI7Ny7tZM0A,,,N,0,0,,,2017-01-24 14:43,2017-01-24 14:53,CLEMENTL,CLEMENTL
1925,49429752,751235,10651731,1227198,0,100,N,N,N,CP_Drtn,TT_Mile,DT_FixedDrtn,RV_OK,TK_Complete,823A-AD1-WA3-1080,Works Area 3.4 (subject to SLG approval),,,,0,0,0,0,0,0,0,0,2011-03-20 08:00,2011-03-20 08:00,2011-03-20 08:00,2017-06-12 18:00,2017-06-12 18:00,,2017-01-01 00:00,2017-01-01 00:00,,,2011-03-20 08:00,2011-03-20 08:00,,,,CS_MSO,PT_Normal,,,,,7jZZsmSGSKGGxX9uBLGqxw,l276AJB1SU2xjYncBkudUA,,,N,0,0,,,2017-01-24 14:43,2017-01-24 15:36,CLEMENTL,CLEMENTL
1926,49429753,751235,10651732,1239099,0,100,N,N,N,CP_Drtn,TT_FinMile,DT_FixedDrtn,RV_OK,TK_Complete,KD-4A(iii),Complete up track C&C tunnel of North Tunnels at Box 7A except the roof,,,,0,0,0,0,0,0,0,0,2014-01-19 18:00,2016-05-31 00:00,2016-05-31 00:00,2017-06-12 18:00,2017-06-12 18:00,,2017-01-01 00:00,2017-01-01 00:00,,,2016-06-17 18:00,2016-06-17 18:00,,,,CS_MEOB,PT_Normal,,,,,Sy7rxjvgQBe02Idu4Emg/Q,,,,N,0,0,,,2017-01-24 14:43,2017-01-24 15:36,CLEMENTL,CLEMENTL
1927,49429754,751235,10651732,1239099,0,100,N,N,N,CP_Drtn,TT_FinMile,DT_FixedDrtn,RV_OK,TK_Complete,KD-4B,"Complete the down track tunnel of the South Tunnels, excluding cross passages and backfilling",,,,0,0,0,0,0,0,0,0,2013-10-20 18:00,2014-11-07 00:00,2014-11-07 00:00,2017-06-12 18:00,2017-06-12 18:00,,2017-01-01 00:00,2017-01-01 00:00,,,2016-05-01 08:00,2016-05-01 08:00,,,,CS_MEOB,PT_Normal,,,,,L0xZx8FtReawwLxwMOvhjw,,,,N,0,0,,,2017-01-24 14:43,2017-01-24 15:36,CLEMENTL,CLEMENTL
1928,49429755,751235,10651732,1239099,0,100,N,N,N,CP_Drtn,TT_FinMile,DT_FixedDrtn,RV_OK,TK_Complete,KD-4C,"Complete the up track tunnel of the South Tunnels and the Shunt Neck Tunnel w/ Emergency Exit Point,excl. backfilling",,,,0,0,0,0,0,0,0,0,2014-03-09 18:00,2015-11-30 00:00,2015-11-30 00:00,2017-06-12 18:00,2017-06-12 18:00,,2017-01-01 00:00,2017-01-01 00:00,,,2016-05-01 08:00,2016-05-01 08:00,,,,CS_MEOB,PT_Normal,,,,,EWX9eagNR/yg8+TwDSVJTA,,,,N,0,0,,,2017-01-24 14:43,2017-01-24 15:36,CLEMENTL,CLEMENTL
1929,49429756,751235,10651732,1239099,0,100,N,N,N,CP_Drtn,TT_FinMile,DT_FixedDrtn,RV_OK,TK_Complete,KD-4D,Complete Closing of the access opening for up track and C&C Tunnel at TUT within Works Area 5.1 & backfilling,,,,0,0,0,0,0,0,0,0,2014-08-03 18:00,2016-09-19 00:00,2016-09-19 00:00,2017-06-12 18:00,2017-06-12 18:00,,2017-01-01 00:00,2017-01-01 00:00,,,2017-01-01 08:00,2017-01-01 08:00,,,,CS_MEOB,PT_Normal,,,,,Q5XwxSr5QN2/KgBP2X2G0A,,,,N,0,0,,,2017-01-24 14:43,2017-01-24 15:36,CLEMENTL,CLEMENTL
1930,49429757,751235,10651732,1239099,0,100,N,N,N,CP_Drtn,TT_FinMile,DT_FixedDrtn,RV_OK,TK_Complete,KD-4A(i),"Complete downtrack TBM tunnel of N.Tunnels include Box 7A except the roof, and C&C tunnel at 7B&6B both up & down tracks",,,,0,0,0,0,0,0,0,0,2013-08-04 18:00,2015-01-20 18:00,2015-01-20 18:00,2017-06-12 18:00,2017-06-12 18:00,,2017-01-01 00:00,2017-01-01 00:00,,,2016-06-01 18:00,2016-06-01 18:00,,,,CS_MEOB,PT_Normal,,,,,ZGnB7SffR1+LS1f8ud+P2g,,,,N,0,0,,,2017-01-24 14:43,2017-01-24 15:36,CLEMENTL,CLEMENTL
1931,49429758,751235,10651732,1239099,0,100,N,N,N,CP_Drtn,TT_FinMile,DT_FixedDrtn,RV_OK,TK_Complete,KD-4A(iv),Remaining cut and cover tunnel (Box 6) of the North Tunnels,,,,0,0,0,0,0,0,0,0,2013-12-29 18:00,2013-12-29 00:00,2013-12-29 00:00,2017-06-12 18:00,2017-06-12 18:00,,2017-01-01 00:00,2017-01-01 00:00,,,2016-05-01 08:00,2016-05-01 08:00,,,,CS_MEOB,PT_Normal,,,,,YJm1PgQ5SIGNcLZoACw9SQ,,,,N,0,0,,,2017-01-24 14:43,2017-01-24 15:36,CLEMENTL,CLEMENTL
1932,49429759,751235,10651732,1239099,0,100,N,N,N,CP_Drtn,TT_FinMile,DT_FixedDrtn,RV_OK,TK_Complete,KD-4A(ii),Complete the up track TBM tunnel of the North Tunnels,,,,0,0,0,0,0,0,0,0,2014-01-19 18:00,2016-05-31 00:00,2016-05-31 00:00,2017-06-12 18:00,2017-06-12 18:00,,2017-01-01 00:00,2017-01-01 00:00,,,2016-06-01 08:00,2016-06-01 08:00,,,,CS_MEOB,PT_Normal,,,,,Uwe8l/IjToe1AfnSQn5vtg,,,,N,0,0,,,2017-01-24 14:43,2017-01-24 15:36,CLEMENTL,CLEMENTL
1933,49429760,751235,10651734,1227198,0,100,N,N,N,CP_Drtn,TT_FinMile,DT_FixedDrtn,RV_OK,TK_Complete,823A-MS-J3-1010,Submit instrumentation monitoring report,,,,0,0,0,0,0,0,0,0,2012-01-29 18:00,2012-01-27 18:00,2012-01-27 18:00,2017-06-12 18:00,2017-06-12 18:00,,2017-01-01 00:00,2017-01-01 00:00,,,2012-01-27 18:00,2012-01-27 18:00,,,,CS_MEOB,PT_Normal,,,,,m2pEL8oZSge0dwCl2CGkgQ,0AC+OZ8IMkaHTcvw/M8K6Q,,,N,0,0,,,2017-01-24 14:43,2017-01-24 15:36,CLEMENTL,CLEMENTL
1934,49429761,751235,10651735,1227198,0,100,N,N,N,CP_Drtn,TT_FinMile,DT_FixedDrtn,RV_OK,TK_Complete,823A-MS-J10-1010,Submit instrumentation monitoring report,,,,0,0,0,0,0,0,0,0,2014-08-03 18:00,2014-07-31 18:00,2014-07-31 18:00,2017-06-12 18:00,2017-06-12 18:00,,2017-01-01 00:00,2017-01-01 00:00,,,2014-08-31 18:00,2014-08-31 18:00,,,,CS_MEOB,PT_Normal,,,,,vSL8vgTXTEiIU6mUNN6g6g,MCDNQ6o/J0OLDrUT65XBjQ,,,N,0,0,,,2017-01-24 14:43,2017-01-24 15:36,CLEMENTL,CLEMENTL
1935,49429762,751235,10651736,1227198,0,100,N,N,N,CP_Drtn,TT_FinMile,DT_FixedDrtn,RV_OK,TK_Complete,823A-MS-J9-1010,Submit instrumentation monitoring report,,,,0,0,0,0,0,0,0,0,2014-03-02 18:00,2014-02-23 18:00,2014-02-23 18:00,2017-06-12 18:00,2017-06-12 18:00,,2017-01-01 00:00,2017-01-01 00:00,,,2014-02-28 18:00,2014-02-28 18:00,,,,CS_MEOB,PT_Normal,,,,,53Zp8YP9QqaBupYYqJc/ZA,/G0da33rAkKJQNxTkIL7Dw,,,N,0,0,,,2017-01-24 14:43,2017-01-24 15:36,CLEMENTL,CLEMENTL
1936,49429763,751235,10651737,1227198,0,100,N,N,N,CP_Drtn,TT_FinMile,DT_FixedDrtn,RV_OK,TK_Complete,823A-MS-J6-1010,Submit instrumentation monitoring report,,,,0,0,0,0,0,0,0,0,2013-03-03 18:00,2013-02-28 18:00,2013-02-28 18:00,2017-06-12 18:00,2017-06-12 18:00,,2017-01-01 00:00,2017-01-01 00:00,,,2013-10-19 18:00,2013-10-19 18:00,,,,CS_MEOB,PT_Normal,,,,,P7Gb9+z6Rm+vlXVOeYpwUw,vkxFpDzirEGTHYOlqhYZOg,,,N,0,0,,,2017-01-24 14:43,2017-01-24 15:36,CLEMENTL,CLEMENTL
1937,49429764,751235,10651738,1227198,0,100,N,N,N,CP_Drtn,TT_FinMile,DT_FixedDrtn,RV_OK,TK_Complete,823A-MS-J5-1010,Complete ground treatment works adjacent to Tse Uk Tsuen shaft,,,,0,0,0,0,0,0,0,0,2012-11-25 18:00,2012-10-31 18:00,2012-10-31 18:00,2017-06-12 18:00,2017-06-12 18:00,,2017-01-01 00:00,2017-01-01 00:00,,,2012-10-31 18:00,2012-10-31 18:00,,,,CS_MEOB,PT_Normal,,,,,zxRPNv66ReSl4stloasynQ,eiJguJ0nE0S82iL3zrAsSg,,,N,0,0,,,2017-01-24 14:43,2017-01-24 15:36,CLEMENTL,CLEMENTL
1938,49429765,751235,10651739,1227198,0,100,N,N,N,CP_Drtn,TT_FinMile,DT_FixedDrtn,RV_OK,TK_Complete,823A-MS-J4-1010,Submit instrumentation monitoring report,,,,0,0,0,0,0,0,0,0,2012-06-24 18:00,2012-06-21 18:00,2012-06-21 18:00,2017-06-12 18:00,2017-06-12 18:00,,2017-01-01 00:00,2017-01-01 00:00,,,2012-06-21 18:00,2012-06-21 18:00,,,,CS_MEOB,PT_Normal,,,,,NXNJ20ZLQ56n2qvKr7rqqA,29/L3Ro/sEqm+f7q3qEWFg,,,N,0,0,,,2017-01-24 14:43,2017-01-24 15:36,CLEMENTL,CLEMENTL
1939,49429766,751235,10651740,1227198,0,0,N,N,N,CP_Drtn,TT_FinMile,DT_FixedDrtn,RV_OK,TK_NotStart,823A-MS-J12-1010,Complete all works,,-7208,584,0,0,0,0,0,0,0,0,2014-10-12 18:00,,,2014-10-12 18:00,2014-10-12 18:00,,2017-03-31 18:00,2017-03-31 18:00,2017-03-31 18:00,2017-03-31 18:00,2017-03-31 18:00,2017-03-31 18:00,,2014-10-12 18:00,2014-10-12 18:00,CS_MEOB,PT_Normal,,,,,C87P6bNgTZqfS1WQfL6o8g,5RX8znqCC0ql+DWE5wimdw,,,N,0,0,,,2017-01-24 14:43,2017-01-24 15:40,CLEMENTL,CLEMENTL
1940,49429767,751235,10651741,1227198,0,100,N,N,N,CP_Drtn,TT_FinMile,DT_FixedDrtn,RV_OK,TK_Complete,823A-MS-J8-1010,Complete cross passages construction for Tai Kong Po to ERS Tunnels,,,,0,0,0,0,0,0,0,0,2014-01-26 18:00,2016-01-25 18:00,2016-01-25 18:00,2017-06-12 18:00,2017-06-12 18:00,,2017-01-01 00:00,2017-01-01 00:00,,,2016-01-30 18:00,2016-01-30 18:00,,,,CS_MEOB,PT_Normal,,,,,ExhPZgsqSfmxrcXALmNtlg,3sFbq6rqbk62yddxK4zQgQ,,,N,0,0,,,2017-01-24 14:43,2017-01-24 15:36,CLEMENTL,CLEMENTL
1941,49429768,751235,10651742,1227198,0,100,N,N,N,CP_Drtn,TT_FinMile,DT_FixedDrtn,RV_OK,TK_Complete,823A-MS-J1-1010,"Complete installation of ground settlement markers within Works Areas 3.1, 3.2 and 3.3",,,,0,0,0,0,0,0,0,0,2011-05-29 18:00,2011-05-21 18:00,2011-05-21 18:00,2017-06-12 18:00,2017-06-12 18:00,,2017-01-01 00:00,2017-01-01 00:00,,,2011-05-21 18:00,2011-05-21 18:00,,,,CS_MEOB,PT_Normal,,,,,hFN8b5awQ3+z6ShmdtjTEw,ctq7HDEeS0eumUMtkQsehA,,,N,0,0,,,2017-01-24 14:43,2017-01-24 15:36,CLEMENTL,CLEMENTL
1942,49429769,751235,10651743,1227198,0,100,N,N,N,CP_Drtn,TT_FinMile,DT_FixedDrtn,RV_OK,TK_Complete,823A-MS-J11-1010,Complete the East Culvert in Works Area 4.4,,,,0,0,0,0,0,0,0,0,2014-04-06 18:00,2015-01-25 18:00,2015-01-25 18:00,2017-06-12 18:00,2017-06-12 18:00,,2017-01-01 00:00,2017-01-01 00:00,,,2014-12-31 18:00,2014-12-31 18:00,,,,CS_MEOB,PT_Normal,,,,,IMGotDqJR+enjiqDD86irw,0YEGmcNh9kSWxu5B7mVQsw,,,N,0,0,,,2017-01-24 14:43,2017-01-24 15:36,CLEMENTL,CLEMENTL
1943,49429770,751235,10651744,1227198,0,100,N,N,N,CP_Drtn,TT_FinMile,DT_FixedDrtn,RV_OK,TK_Complete,823A-MS-J7-1010,Submit instrumentation monitoring report,,,,0,0,0,0,0,0,0,0,2013-08-04 18:00,2013-07-31 18:00,2013-07-31 18:00,2017-06-12 18:00,2017-06-12 18:00,,2017-01-01 00:00,2017-01-01 00:00,,,2014-03-20 18:00,2014-03-20 18:00,,,,CS_MEOB,PT_Normal,,,,,vuHPzqqdQKy9IfMwJEDeQg,VeDuoSParkqVW2Sk38Jzfw,,,N,0,0,,,2017-01-24 14:43,2017-01-24 15:36,CLEMENTL,CLEMENTL
1944,49429771,751235,10651745,1227198,0,100,N,N,N,CP_Drtn,TT_FinMile,DT_FixedDrtn,RV_OK,TK_Complete,823A-MS-J2-1010,Complete ground treatment works adjacent to cut and cover tunnels at the northern launching shaft,,,,0,0,0,0,0,0,0,0,2011-10-23 18:00,2011-10-22 18:00,2011-10-22 18:00,2017-06-12 18:00,2017-06-12 18:00,,2017-01-01 00:00,2017-01-01 00:00,,,2011-10-22 18:00,2011-10-22 18:00,,,,CS_MEOB,PT_Normal,,,,,A3+f7XLnSKyoVv1Uo7XA1Q,iAeBSccVZkS6qANbViXNhQ,,,N,0,0,,,2017-01-24 14:43,2017-01-24 15:36,CLEMENTL,CLEMENTL
1945,49429772,751235,10651747,1227198,0,100,N,N,N,CP_Drtn,TT_FinMile,DT_FixedDrtn,RV_OK,TK_Complete,823A-MS-D8-1010,Complete 100% tunnel invert & walkway and complete installation of cable brackets supplied by Contract 846,,,,0,0,0,0,0,0,0,0,2013-08-04 18:00,2015-07-17 18:00,2015-07-17 18:00,2017-06-12 18:00,2017-06-12 18:00,,2017-01-01 00:00,2017-01-01 00:00,,,2015-07-27 18:00,2015-07-27 18:00,,,,CS_MEOB,PT_Normal,,,,,UsqBKPXeS3a7jeXeKj0dSg,Ya4u6L7quU+8wKC0Z+rCEA,,,N,0,0,,,2017-01-24 14:43,2017-01-24 15:36,CLEMENTL,CLEMENTL
1946,49429773,751235,10651748,1227198,0,100,N,N,N,CP_Drtn,TT_FinMile,DT_FixedDrtn,RV_OK,TK_Complete,823A-MS-D5-1010,Complete 100% of approved pre-cast segments manufacturing,,,,0,0,0,0,0,0,0,0,2012-08-26 18:00,2012-07-31 18:00,2012-07-31 18:00,2017-06-12 18:00,2017-06-12 18:00,,2017-01-01 00:00,2017-01-01 00:00,,,2012-07-31 18:00,2012-07-31 18:00,,,,CS_MEOB,PT_Normal,,,,,YdYxb0nWSCK5UX6J7oWKPA,xys7SViGiEmbfhTUMF6XAA,,,N,0,0,,,2017-01-24 14:43,2017-01-24 15:36,CLEMENTL,CLEMENTL
1947,49429774,751235,10651749,1227198,0,100,N,N,N,CP_Drtn,TT_FinMile,DT_FixedDrtn,RV_OK,TK_Complete,823A-MS-D1-1010,Approval of tunnel lining design,,,,0,0,0,0,0,0,0,0,2010-11-28 18:00,2010-11-25 18:00,2010-11-25 18:00,2017-06-12 18:00,2017-06-12 18:00,,2017-01-01 00:00,2017-01-01 00:00,,,2010-11-25 18:00,2010-11-25 18:00,,,,CS_MEOB,PT_Normal,,,,,nPghTwgMR6iHiiRxw5BokA,jFxoetuFy0ueNk2Iipf+YQ,,,N,0,0,,,2017-01-24 14:43,2017-01-24 15:36,CLEMENTL,CLEMENTL
1948,49429775,751235,10651750,1227198,0,100,N,N,N,CP_Drtn,TT_FinMile,DT_FixedDrtn,RV_OK,TK_Complete,823A-MS-D6-1010,Complete 30% of tunnel drive,,,,0,0,0,0,0,0,0,0,2013-02-24 18:00,2013-03-31 18:00,2013-03-31 18:00,2017-06-12 18:00,2017-06-12 18:00,,2017-01-01 00:00,2017-01-01 00:00,,,2013-07-31 18:00,2013-07-31 18:00,,,,CS_MEOB,PT_Normal,,,,,jVKWtlY5SO6BwKOjDx35ww,c1iT2LXMeEWfDrLO0L7RPQ,,,N,0,0,,,2017-01-24 14:43,2017-01-24 15:36,CLEMENTL,CLEMENTL
1949,49429776,751235,10651751,1227198,0,100,N,N,N,CP_Drtn,TT_FinMile,DT_FixedDrtn,RV_OK,TK_Complete,823A-MS-D4-1010,Complete 50% of approved pre-cast segments manufacturing,,,,0,0,0,0,0,0,0,0,2012-02-26 18:00,2012-02-15 18:00,2012-02-15 18:00,2017-06-12 18:00,2017-06-12 18:00,,2017-01-01 00:00,2017-01-01 00:00,,,2012-02-15 18:00,2012-02-15 18:00,,,,CS_MEOB,PT_Normal,,,,,Q0hKovR5TdWj/gAV08zRGA,cGxXlL+KFkCbHniQTOWQ8g,,,N,0,0,,,2017-01-24 14:43,2017-01-24 15:36,CLEMENTL,CLEMENTL
1950,49429777,751235,10651752,1227198,0,100,N,N,N,CP_Drtn,TT_FinMile,DT_FixedDrtn,RV_OK,TK_Complete,823A-MS-D2-1010,Approval of tunnel segment mould design,,,,0,0,0,0,0,0,0,0,2011-02-17 18:00,2011-02-14 18:00,2011-02-14 18:00,2017-06-12 18:00,2017-06-12 18:00,,2017-01-01 00:00,2017-01-01 00:00,,,2011-02-14 18:00,2011-02-14 18:00,,,,CS_MEOB,PT_Normal,,,,,/xm853r9TR6c2QQYIeSIdg,3nUjuTgz8U+Zud4g3KLyhA,,,N,0,0,,,2017-01-24 14:43,2017-01-24 15:36,CLEMENTL,CLEMENTL
1951,49429778,751235,10651753,1227198,0,100,N,N,N,CP_Drtn,TT_FinMile,DT_FixedDrtn,RV_OK,TK_Complete,823A-MS-D7-1010,Complete 100% of tunnel drive,,,,0,0,0,0,0,0,0,0,2013-06-02 18:00,2014-07-31 18:00,2014-07-31 18:00,2017-06-12 18:00,2017-06-12 18:00,,2017-01-01 00:00,2017-01-01 00:00,,,2014-08-19 18:00,2014-08-19 18:00,,,,CS_MEOB,PT_Normal,,,,,hu4mTK2aROSil4Wti6jnFw,/qh95yNRYEqjoilT6VuV/w,,,N,0,0,,,2017-01-24 14:43,2017-01-24 15:36,CLEMENTL,CLEMENTL
1952,49429779,751235,10651754,1227198,0,100,N,N,N,CP_Drtn,TT_FinMile,DT_FixedDrtn,RV_OK,TK_Complete,823A-MS-D3-1010,Complete fabrication of tunnel segment mould,,,,0,0,0,0,0,0,0,0,2011-06-26 18:00,2011-06-18 18:00,2011-06-18 18:00,2017-06-12 18:00,2017-06-12 18:00,,2017-01-01 00:00,2017-01-01 00:00,,,2011-06-18 18:00,2011-06-18 18:00,,,,CS_MEOB,PT_Normal,,,,,nPwRoXqnTnS8BCR44nvT1w,UDbNKYwxykSiRpmPsq1Olw,,,N,0,0,,,2017-01-24 14:43,2017-01-24 15:36,CLEMENTL,CLEMENTL
1953,49429780,751235,10651756,1227198,0,100,N,N,N,CP_Drtn,TT_FinMile,DT_FixedDrtn,RV_OK,TK_Complete,823A-MS-F4-1010,Complete installation of cable brackets supplied by Contract 846,,,,0,0,0,0,0,0,0,0,2014-02-02 18:00,2016-01-30 18:00,2016-01-30 18:00,2017-06-12 18:00,2017-06-12 18:00,,2017-01-01 00:00,2017-01-01 00:00,,,2014-10-10 18:00,2014-10-10 18:00,,,,CS_MEOB,PT_Normal,,,,,6RfdUv4FTxGQR/GKmXJfwA,B3Aar9jJB0SQp2a0U7eDpg,,,N,0,0,,,2017-01-24 14:43,2017-01-24 15:36,CLEMENTL,CLEMENTL
1954,49429781,751235,10651757,1227198,0,100,N,N,N,CP_Drtn,TT_FinMile,DT_FixedDrtn,RV_OK,TK_Complete,823A-MS-F3-1010,Complete 100% of tunnel drive,,,,0,0,0,0,0,0,0,0,2013-11-03 18:00,2015-08-29 18:00,2015-08-29 18:00,2017-06-12 18:00,2017-06-12 18:00,,2017-01-01 00:00,2017-01-01 00:00,,,2015-08-03 18:00,2015-08-03 18:00,,,,CS_MEOB,PT_Normal,,,,,HT6FUPFVRbapqNVoRPzyyw,qSrs8oE/OEiGn4W9VARs0w,,,N,0,0,,,2017-01-24 14:43,2017-01-24 15:36,CLEMENTL,CLEMENTL
1955,49429782,751235,10651758,1227198,0,100,N,N,N,CP_Drtn,TT_FinMile,DT_FixedDrtn,RV_OK,TK_Complete,823A-MS-F1-1010,Complete 50% of approved pre-cast segments manufacturing,,,,0,0,0,0,0,0,0,0,2013-03-03 18:00,2013-02-28 18:00,2013-02-28 18:00,2017-06-12 18:00,2017-06-12 18:00,,2017-01-01 00:00,2017-01-01 00:00,,,2013-05-31 18:00,2013-05-31 18:00,,,,CS_MEOB,PT_Normal,,,,,DlnoNnz7Sy+09tQMTJrVAg,PyMnWMCm1UKCkrufBun5Lg,,,N,0,0,,,2017-01-24 14:43,2017-01-24 15:36,CLEMENTL,CLEMENTL
1956,49429783,751235,10651759,1227198,0,100,N,N,N,CP_Drtn,TT_FinMile,DT_FixedDrtn,RV_OK,TK_Complete,823A-MS-F2-1010,Complete 100% of approved pre-cast segments manufacturing,,,,0,0,0,0,0,0,0,0,2013-08-04 18:00,2013-05-29 18:00,2013-05-29 18:00,2017-06-12 18:00,2017-06-12 18:00,,2017-01-01 00:00,2017-01-01 00:00,,,2013-05-31 18:00,2013-05-31 18:00,,,,CS_MEOB,PT_Normal,,,,,qo0jl5qKQaOOZDPr9T5I9g,p0gzzuuEa0KvVYPxtPgu8w,,,N,0,0,,,2017-01-24 14:43,2017-01-24 15:36,CLEMENTL,CLEMENTL
1957,49429784,751235,10651761,1227198,0,100,N,N,N,CP_Drtn,TT_FinMile,DT_FixedDrtn,RV_OK,TK_Complete,823A-MS-C2-1010,Complete 60% of approved pre-cast segments manufacturing,,,,0,0,0,0,0,0,0,0,2013-03-03 18:00,2012-12-03 18:00,2012-12-03 18:00,2017-06-12 18:00,2017-06-12 18:00,,2017-01-01 00:00,2017-01-01 00:00,,,2013-05-31 18:00,2013-05-31 18:00,,,,CS_MEOB,PT_Normal,,,,,sw7mj6InRo2uYDqlTUIF4A,KWqSAH+lj02znkRmFwC0Wg,,,N,0,0,,,2017-01-24 14:43,2017-01-24 15:36,CLEMENTL,CLEMENTL
1958,49429785,751235,10651762,1227198,0,100,N,N,N,CP_Drtn,TT_FinMile,DT_FixedDrtn,RV_OK,TK_Complete,823A-MS-C1-1010,Complete 30% of approved pre-cast segments manufacturing,,,,0,0,0,0,0,0,0,0,2012-12-09 18:00,2012-10-17 18:00,2012-10-17 18:00,2017-06-12 18:00,2017-06-12 18:00,,2017-01-01 00:00,2017-01-01 00:00,,,2013-05-31 18:00,2013-05-31 18:00,,,,CS_MEOB,PT_Normal,,,,,2Xe81LjAQwyThfY+I7nsrQ,F74s6dvMQU2488h2ODxG7A,,,N,0,0,,,2017-01-24 14:43,2017-01-24 15:36,CLEMENTL,CLEMENTL
1959,49429786,751235,10651763,1227198,0,100,N,N,N,CP_Drtn,TT_FinMile,DT_FixedDrtn,RV_OK,TK_Complete,823A-MS-C5-1010,"Complete tunnel invert, walkway and installation of cable brackets supplied by Contract 846",,,,0,0,0,0,0,0,0,0,2014-01-26 18:00,2016-06-01 18:00,2016-06-01 18:00,2017-06-12 18:00,2017-06-12 18:00,,2017-01-01 00:00,2017-01-01 00:00,,,2016-06-01 08:00,2016-06-01 08:00,,,,CS_MEOB,PT_Normal,,,,,K+QUTqKrR9CHWmi6SNjPsw,CSwiZPimt0Oz9EO2eJ6S4g,,,N,0,0,,,2017-01-24 14:43,2017-01-24 15:36,CLEMENTL,CLEMENTL
1960,49429787,751235,10651764,1227198,0,100,N,N,N,CP_Drtn,TT_FinMile,DT_FixedDrtn,RV_OK,TK_Complete,823A-MS-C3-1010,Complete 20% of tunnel drive,,,,0,0,0,0,0,0,0,0,2013-08-11 18:00,2015-01-31 18:00,2015-01-31 18:00,2017-06-12 18:00,2017-06-12 18:00,,2017-01-01 00:00,2017-01-01 00:00,,,2015-01-28 18:00,2015-01-28 18:00,,,,CS_MEOB,PT_Normal,,,,,q+Wq6A/7TA2jAURnMn7dxQ,3z0tETszMES6ibJeET2ZRw,,,N,0,0,,,2017-01-24 14:43,2017-01-24 15:36,CLEMENTL,CLEMENTL
1961,49429788,751235,10651765,1227198,0,100,N,N,N,CP_Drtn,TT_FinMile,DT_FixedDrtn,RV_OK,TK_Complete,823A-MS-C4-1010,Complete 80% of tunnel drive,,,,0,0,0,0,0,0,0,0,2013-09-29 18:00,2015-07-17 18:00,2015-07-17 18:00,2017-06-12 18:00,2017-06-12 18:00,,2017-01-01 00:00,2017-01-01 00:00,,,2015-07-17 18:00,2015-07-17 18:00,,,,CS_MEOB,PT_Normal,,,,,QEANSw/6QYih2gWSmcUNaw,JyLD3UInw0muEai+EzneZw,,,N,0,0,,,2017-01-24 14:43,2017-01-24 15:36,CLEMENTL,CLEMENTL
1962,49429789,751235,10651767,1227198,0,100,N,N,N,CP_Drtn,TT_FinMile,DT_FixedDrtn,RV_OK,TK_Complete,823A-MS-A8-1010,Engineer's confirmation of satisfactory implementation of Specified Plans and Programming Management System,,,,0,0,0,0,0,0,0,0,2013-07-28 18:00,2013-07-31 18:00,2013-07-31 18:00,2017-06-12 18:00,2017-06-12 18:00,,2017-01-01 00:00,2017-01-01 00:00,,,2013-07-26 18:00,2013-07-26 18:00,,,,CS_MEOB,PT_Normal,,,,,ytCZyex8RRubGGuo6Eycrw,oUZCh2TpK0CdPXVhJrxHlQ,,,N,0,0,,,2017-01-24 14:43,2017-01-24 15:36,CLEMENTL,CLEMENTL
1963,49429790,751235,10651768,1227198,0,0,N,N,N,CP_Drtn,TT_FinMile,DT_FixedDrtn,RV_OK,TK_NotStart,823A-MS-A14-1010,Approval of Operating and Maintenance Manuals and as-built drawings for the Whole of the Works,,-6840,0,0,0,0,0,0,0,0,0,2015-02-08 18:00,,,2015-02-08 18:00,2015-02-08 18:00,,2017-06-12 18:00,2017-06-12 18:00,2017-06-12 18:00,2017-06-12 18:00,2017-06-12 18:00,2017-06-12 18:00,,2015-02-08 18:00,2015-02-08 18:00,CS_MEOB,PT_Normal,,,,,gDZlDEvfS7uyTRNQrLRhbw,yNM02dbUT0yUHPd5b6sa9A,,,Y,0,0,,,2017-01-24 14:43,2017-01-24 15:36,CLEMENTL,CLEMENTL
1964,49429791,751235,10651769,1227198,0,100,N,N,N,CP_Drtn,TT_FinMile,DT_FixedDrtn,RV_OK,TK_Complete,823A-MS-A6-1020,Engineer's confirmation of Satisfactory implementation of Specified Plans and Programming Management System,,,,0,0,0,0,0,0,0,0,2012-07-29 18:00,2012-07-27 18:00,2012-07-27 18:00,2017-06-12 18:00,2017-06-12 18:00,,2017-01-01 00:00,2017-01-01 00:00,,,2012-07-27 18:00,2012-07-27 18:00,,,,CS_MEOB,PT_Normal,,,,,dIJQlut/SwOv3evKJ5rmIw,kyCt2vfuvEOecdrGOmNbhw,,,N,0,0,,,2017-01-24 14:43,2017-01-24 15:36,CLEMENTL,CLEMENTL
1965,49429792,751235,10651769,1227198,0,100,N,N,N,CP_Drtn,TT_FinMile,DT_FixedDrtn,RV_OK,TK_Complete,823A-MS-A6-1010,Approval of detailed Interface Requirements Specifications with the Designated Contractors (Appendix W of the PS),,,,0,0,0,0,0,0,0,0,2012-07-29 18:00,2012-07-28 18:00,2012-07-28 18:00,2017-06-12 18:00,2017-06-12 18:00,,2017-01-01 00:00,2017-01-01 00:00,,,2012-07-28 18:00,2012-07-28 18:00,,,,CS_MEOB,PT_Normal,,,,,2KgMbJVJQQasXlvjp57oCg,jm+f7kcnDUaAOBx0j+XRaA,,,N,0,0,,,2017-01-24 14:43,2017-01-24 15:36,CLEMENTL,CLEMENTL
1966,49429793,751235,10651770,1227198,0,100,N,N,N,CP_Drtn,TT_FinMile,DT_FixedDrtn,RV_OK,TK_Complete,823A-MS-A2-1010,Engineer's confirmation of satisfactory implementation of Specified Plans,,,,0,0,0,0,0,0,0,0,2011-01-29 18:00,2011-01-28 18:00,2011-01-28 18:00,2017-06-12 18:00,2017-06-12 18:00,,2017-01-01 00:00,2017-01-01 00:00,,,2011-01-28 18:00,2011-01-28 18:00,,,,CS_MEOB,PT_Normal,,,,,p1c6Y35iRRuoM5lin+UqeQ,ar11SaPAhUK/H6lr7EMm9Q,,,N,0,0,,,2017-01-24 14:43,2017-01-24 15:36,CLEMENTL,CLEMENTL
1967,49429794,751235,10651771,1227198,0,0,N,N,N,CP_Drtn,TT_FinMile,DT_FixedDrtn,RV_OK,TK_NotStart,823A-MS-A13-1010,Approval of draft Operating and Maintenance Manuals and draft as-built drawings for Whole of the Works,,-7136,1160,0,0,0,0,0,0,0,0,2014-08-10 18:00,,,2014-08-10 18:00,2014-08-10 18:00,,2017-01-18 18:00,2017-01-18 18:00,2017-01-18 18:00,2017-01-18 18:00,2017-01-18 18:00,2017-01-18 18:00,,2014-08-10 18:00,2014-08-10 18:00,CS_MEOB,PT_Normal,,,,,jyxZscyFQ9+uOtTd4MeGuA,9f3rLzRcWUCM/8rCTe7B0Q,,,N,0,0,,,2017-01-24 14:43,2017-01-24 15:36,CLEMENTL,CLEMENTL
1968,49429795,751235,10651772,1227198,0,100,N,N,N,CP_Drtn,TT_FinMile,DT_FixedDrtn,RV_OK,TK_Complete,823A-MS-A5-1020,Engineer's confirmation of satisfactory of implementation of Specified Plans,,,,0,0,0,0,0,0,0,0,2012-01-29 18:00,2012-01-27 18:00,2012-01-27 18:00,2017-06-12 18:00,2017-06-12 18:00,,2017-01-01 00:00,2017-01-01 00:00,,,2012-01-27 18:00,2012-01-27 18:00,,,,CS_MEOB,PT_Normal,,,,,Lqon+EFuRTul+Eg3+wOKaA,gN3ou4WSdESiJQcQdzlEkA,,,N,0,0,,,2017-01-24 14:43,2017-01-24 15:36,CLEMENTL,CLEMENTL
1969,49429796,751235,10651772,1227198,0,100,N,N,N,CP_Drtn,TT_FinMile,DT_FixedDrtn,RV_OK,TK_Complete,823A-MS-A5-1010,Approval of detailed Interface Requirements Specifications with the Designated Contractors (Appendix W of the PS),,,,0,0,0,0,0,0,0,0,2012-01-29 18:00,2012-01-27 18:00,2012-01-27 18:00,2017-06-12 18:00,2017-06-12 18:00,,2017-01-01 00:00,2017-01-01 00:00,,,2012-01-27 18:00,2012-01-27 18:00,,,,CS_MEOB,PT_Normal,,,,,LPHve6dpTCql/QkANkNMPw,JXgi1RfTMUC66GVHDrLUJw,,,N,0,0,,,2017-01-24 14:43,2017-01-24 15:36,CLEMENTL,CLEMENTL
1970,49429797,751235,10651773,1227198,0,100,N,N,N,CP_Drtn,TT_FinMile,DT_FixedDrtn,RV_OK,TK_Complete,823A-MS-A3-1010,"Prepare and submit Contamination Assessment Report (CAR) & Remediation Action Plan (RAP) for WAs 3.1, 3.2, 3.3 & 3.3A",,,,0,0,0,0,0,0,0,0,2011-03-27 18:00,2011-02-26 18:00,2011-02-26 18:00,2017-06-12 18:00,2017-06-12 18:00,,2017-01-01 00:00,2017-01-01 00:00,,,2011-02-26 18:00,2011-02-26 18:00,,,,CS_MEOB,PT_Normal,,,,,AIPn2/KtQ2W/uw8+zOBHNg,9Y5R42/q8UOpxQ6o3EtEtg,,,N,0,0,,,2017-01-24 14:43,2017-01-24 15:36,CLEMENTL,CLEMENTL
1971,49429798,751235,10651774,1227198,0,100,N,N,N,CP_Drtn,TT_FinMile,DT_FixedDrtn,RV_OK,TK_Complete,823A-MS-A7-1010,Engineer's confirmation of satisfactory implementation of Specified Plans,,,,0,0,0,0,0,0,0,0,2013-01-27 18:00,2013-01-31 18:00,2013-01-31 18:00,2017-06-12 18:00,2017-06-12 18:00,,2017-01-01 00:00,2017-01-01 00:00,,,2013-07-31 18:00,2013-07-31 18:00,,,,CS_MEOB,PT_Normal,,,,,I7mj/bprSCiFLSmia3u7Mw,NRV2QSXrrEGceJslXO/dmA,,,N,0,0,,,2017-01-24 14:43,2017-01-24 15:36,CLEMENTL,CLEMENTL
1972,49429799,751235,10651775,1227198,0,100,N,N,N,CP_Drtn,TT_FinMile,DT_FixedDrtn,RV_OK,TK_Complete,823A-MS-A11-1010,Engineer's confirmation of satisfactory implementation of Specified Plans,,,,0,0,0,0,0,0,0,0,2014-01-26 18:00,2014-01-31 18:00,2014-01-31 18:00,2017-06-12 18:00,2017-06-12 18:00,,2017-01-01 00:00,2017-01-01 00:00,,,2014-01-31 18:00,2014-01-31 18:00,,,,CS_MEOB,PT_Normal,,,,,YINJaDd+SGmP0+jpiywDuw,Vz+CAIqjqk6EvkI4UwDW8Q,,,N,0,0,,,2017-01-24 14:43,2017-01-24 15:36,CLEMENTL,CLEMENTL
1973,49429800,751235,10651776,1227198,0,100,N,N,N,CP_Drtn,TT_FinMile,DT_FixedDrtn,RV_OK,TK_Complete,823A-MS-A10-1010,Complete cross passage construction for ERS to Tse Uk Tsuen,,,,0,0,0,0,0,0,0,0,2014-03-16 18:00,2016-03-01 18:00,2016-03-01 18:00,2017-06-12 18:00,2017-06-12 18:00,,2017-01-01 00:00,2017-01-01 00:00,,,2016-03-01 18:00,2016-03-01 18:00,,,,CS_MEOB,PT_Normal,,,,,gjqU+XDkTTWGRlJBajdYKQ,tmVPnufQ10esJhqhs2IZ/A,,,N,0,0,,,2017-01-24 14:43,2017-01-24 15:36,CLEMENTL,CLEMENTL
1974,49429801,751235,10651777,1227198,0,100,N,N,N,CP_Drtn,TT_FinMile,DT_FixedDrtn,RV_OK,TK_Complete,823A-MS-A12-1010,Complete installation of all cable brackets supplied by Contract 846 inside all the tunnels,,,,0,0,0,0,0,0,0,0,2014-03-16 18:00,2016-06-30 08:00,2016-06-30 08:00,2017-06-12 18:00,2017-06-12 18:00,,2017-01-01 00:00,2017-01-01 00:00,,,2016-09-01 08:00,2016-09-01 08:00,,,,CS_MEOB,PT_Normal,,,,,aBy/11ynRLGvHdz6EHoD/w,751OmT0tJ0+1dflBNhg8Fw,,,N,0,0,,,2017-01-24 14:43,2017-01-24 15:36,CLEMENTL,CLEMENTL
1975,49429802,751235,10651778,1227198,0,100,N,N,N,CP_Drtn,TT_FinMile,DT_FixedDrtn,RV_OK,TK_Complete,823A-MS-A4-1010,Engineer's confirmation of satisfactory implementation of Specified Plans and Programming Management System,,,,0,0,0,0,0,0,0,0,2011-07-31 18:00,2011-07-29 18:00,2011-07-29 18:00,2017-06-12 18:00,2017-06-12 18:00,,2017-01-01 00:00,2017-01-01 00:00,,,2011-07-29 18:00,2011-07-29 18:00,,,,CS_MEOB,PT_Normal,,,,,6BrpWdNWRNexyxo7j1bWIw,/JMywoiYOkuB/2sW4/7V2Q,,,N,0,0,,,2017-01-24 14:43,2017-01-24 15:36,CLEMENTL,CLEMENTL
1976,49429803,751235,10651779,1227198,0,100,N,N,N,CP_Drtn,TT_FinMile,DT_FixedDrtn,RV_OK,TK_Complete,823A-MS-A9-1010,"Complete removal of TBM, all equipment, plant, materials and temp. works, and reinstate the areas at Tai Kong Po Shaft",,,,0,0,0,0,0,0,0,0,2013-12-01 18:00,2014-10-17 18:00,2014-10-17 18:00,2017-06-12 18:00,2017-06-12 18:00,,2017-01-01 00:00,2017-01-01 00:00,,,2015-05-06 18:00,2015-05-06 18:00,,,,CS_MEOB,PT_Normal,,,,,mlkpzHdkRLC44VxK10f+9w,7iM4TADxH0OpWv2n4wVBYw,,,N,0,0,,,2017-01-24 14:43,2017-01-24 15:36,CLEMENTL,CLEMENTL
1977,49429804,751235,10651780,1227198,0,100,N,N,N,CP_Drtn,TT_FinMile,DT_FixedDrtn,RV_OK,TK_Complete,823A-MS-A1-1020,Approval of Contractor's Submission - Time Chainage Programme (G4.11.1),,,,0,0,0,0,0,0,0,0,2010-10-10 18:00,2010-10-04 18:00,2010-10-04 18:00,2017-06-12 18:00,2017-06-12 18:00,,2017-01-01 00:00,2017-01-01 00:00,,,2010-10-04 18:00,2010-10-04 18:00,,,,CS_MEOB,PT_Normal,,,,,xGE3OlP9QI6VovdUmFsyZg,zHOKIxTK90OxUhTeYxeu/A,,,N,0,0,,,2017-01-24 14:43,2017-01-24 15:36,CLEMENTL,CLEMENTL
1978,49429805,751235,10651780,1227198,0,100,N,N,N,CP_Drtn,TT_FinMile,DT_FixedDrtn,RV_OK,TK_Complete,823A-MS-A1-1030,Approval of Contractor's Submission - Environmental Management Plan (G5.1.10),,,,0,0,0,0,0,0,0,0,2010-10-10 18:00,2010-10-04 18:00,2010-10-04 18:00,2017-06-12 18:00,2017-06-12 18:00,,2017-01-01 00:00,2017-01-01 00:00,,,2010-10-04 18:00,2010-10-04 18:00,,,,CS_MEOB,PT_Normal,,,,,AZ8+A5EXTeSLMoih6KikHw,dk9t/sUxCU+NJbgVEYebtQ,,,N,0,0,,,2017-01-24 14:43,2017-01-24 15:36,CLEMENTL,CLEMENTL
1979,49429806,751235,10651780,1227198,0,100,N,N,N,CP_Drtn,TT_FinMile,DT_FixedDrtn,RV_OK,TK_Complete,823A-MS-A1-1040,Approval of Contractor's Submission - Quality Plan (G9.2.1),,,,0,0,0,0,0,0,0,0,2010-10-10 18:00,2010-10-04 18:00,2010-10-04 18:00,2017-06-12 18:00,2017-06-12 18:00,,2017-01-01 00:00,2017-01-01 00:00,,,2010-10-04 18:00,2010-10-04 18:00,,,,CS_MEOB,PT_Normal,,,,,kzAAYFiBRty58V0KzSDSqQ,RdKHadm2Ik2VKyq/Bsy+mQ,,,N,0,0,,,2017-01-24 14:43,2017-01-24 15:36,CLEMENTL,CLEMENTL
1980,49429807,751235,10651780,1227198,0,100,N,N,N,CP_Drtn,TT_FinMile,DT_FixedDrtn,RV_OK,TK_Complete,823A-MS-A1-1050,Approval of Contractor's Submission - Method of Construction (G12.1.1),,,,0,0,0,0,0,0,0,0,2010-10-10 18:00,2010-10-04 18:00,2010-10-04 18:00,2017-06-12 18:00,2017-06-12 18:00,,2017-01-01 00:00,2017-01-01 00:00,,,2010-10-04 18:00,2010-10-04 18:00,,,,CS_MEOB,PT_Normal,,,,,AL6StreFSdi6TN8CMdD0FA,D+LxS7zS7UaugMxN5nivWw,,,N,0,0,,,2017-01-24 14:43,2017-01-24 15:36,CLEMENTL,CLEMENTL
1981,49429808,751235,10651780,1227198,0,100,N,N,N,CP_Drtn,TT_FinMile,DT_FixedDrtn,RV_OK,TK_Complete,823A-MS-A1-1060,Approval of Contractor's Submission - Submission Schedule (G12.11.1),,,,0,0,0,0,0,0,0,0,2010-10-10 18:00,2010-10-04 18:00,2010-10-04 18:00,2017-06-12 18:00,2017-06-12 18:00,,2017-01-01 00:00,2017-01-01 00:00,,,2010-10-04 18:00,2010-10-04 18:00,,,,CS_MEOB,PT_Normal,,,,,rTtCyp/9RP2ndRcEptFyaA,WkbkSEoxcEORTI+xBwUevw,,,N,0,0,,,2017-01-24 14:43,2017-01-24 15:36,CLEMENTL,CLEMENTL
1982,49429809,751235,10651780,1227198,0,100,N,N,N,CP_Drtn,TT_FinMile,DT_FixedDrtn,RV_OK,TK_Complete,823A-MS-A1-1010,Approval of Contractor's Submission - Preliminary Master Programme (G4.6.1),,,,0,0,0,0,0,0,0,0,2010-10-10 18:00,2010-10-04 18:00,2010-10-04 18:00,2017-06-12 18:00,2017-06-12 18:00,,2017-01-01 00:00,2017-01-01 00:00,,,2010-10-04 18:00,2010-10-04 18:00,,,,CS_MEOB,PT_Normal,,,,,gEoQAKRdSjy7RyWTj/1Yeg,ASuC2+srYEG6lNl2Nj0IXg,,,N,0,0,,,2017-01-24 14:43,2017-01-24 15:36,CLEMENTL,CLEMENTL
1983,49429810,751235,10651782,1227198,0,100,N,N,N,CP_Drtn,TT_FinMile,DT_FixedDrtn,RV_OK,TK_Complete,823A-MS-H3-1010,Complete diaphragm wall construction for the shunt neck,,,,0,0,0,0,0,0,0,0,2012-06-17 18:00,2012-06-15 18:00,2012-06-15 18:00,2017-06-12 18:00,2017-06-12 18:00,,2017-01-01 00:00,2017-01-01 00:00,,,2012-06-15 18:00,2012-06-15 18:00,,,,CS_MEOB,PT_Normal,,,,,S7HMSjtfQbCjvU+T8s41Pw,DOtQZb5f50utbOSdKUAviw,,,N,0,0,,,2017-01-24 14:43,2017-01-24 15:36,CLEMENTL,CLEMENTL
1984,49429811,751235,10651783,1227198,0,0,N,N,N,CP_Drtn,TT_FinMile,DT_FixedDrtn,RV_OK,TK_NotStart,823A-MS-H10-1010,Complete all reinstatement works within the Works Areas except Works Area 4.9 and 4.12C,,-8728,1304,0,0,0,0,0,0,0,0,2014-01-05 18:00,,,2014-01-05 18:00,2014-01-05 18:00,,2017-01-01 08:00,2017-01-01 08:00,2017-01-01 08:00,2017-01-01 08:00,2017-01-01 08:00,2017-01-01 08:00,,2014-01-05 18:00,2014-01-05 18:00,CS_MEOB,PT_Normal,,,,,6xyxi+fSTAyWzkHB96Op3g,nQyitk3zPEqfjPVGCbCGMw,,,N,0,0,,,2017-01-24 14:43,2017-01-24 15:36,CLEMENTL,CLEMENTL
1985,49429812,751235,10651784,1227198,0,100,N,N,N,CP_Drtn,TT_FinMile,DT_FixedDrtn,RV_OK,TK_Complete,823A-MS-H7-1010,Complete the shunt neck tunnel above south Tunnel,,,,0,0,0,0,0,0,0,0,2013-10-13 18:00,2013-12-31 18:00,2013-12-31 18:00,2017-06-12 18:00,2017-06-12 18:00,,2017-01-01 00:00,2017-01-01 00:00,,,2014-01-03 18:00,2014-01-03 18:00,,,,CS_MEOB,PT_Normal,,,,,z8M+afv/QwS/rEt1bg4fbQ,xm/UIF9QoU279BbkwnVZcA,,,N,0,0,,,2017-01-24 14:43,2017-01-24 15:36,CLEMENTL,CLEMENTL
1986,49429813,751235,10651785,1227198,0,0,N,N,N,CP_Drtn,TT_FinMile,DT_FixedDrtn,RV_OK,TK_NotStart,823A-MS-H11-1010,Complete all tree planting and reinstate Works Area 4.12C,,-6232,832,0,0,0,0,0,0,0,0,2015-01-11 18:00,,,2015-01-11 18:00,2015-01-11 18:00,,2017-02-28 18:00,2017-02-28 18:00,2017-02-28 18:00,2017-02-28 18:00,2017-02-28 18:00,2017-02-28 18:00,,2015-01-11 18:00,2015-01-11 18:00,CS_MEOB,PT_Normal,,,,,mNf4hSgHRmyqAdkCrgwWVw,1kbn0W2/Tki71zNj0oFEFA,,,N,0,0,,,2017-01-24 14:43,2017-01-24 15:36,CLEMENTL,CLEMENTL
1987,49429814,751235,10651786,1227198,0,100,N,N,N,CP_Drtn,TT_FinMile,DT_FixedDrtn,RV_OK,TK_Complete,823A-MS-H6-1010,Complete 60% of the cut and cover tunnels,,,,0,0,0,0,0,0,0,0,2013-05-19 18:00,2013-05-31 18:00,2013-05-31 18:00,2017-06-12 18:00,2017-06-12 18:00,,2017-01-01 00:00,2017-01-01 00:00,,,2013-08-09 18:00,2013-08-09 18:00,,,,CS_MEOB,PT_Normal,,,,,tQ/YrFZNRyOBYpFxq8uPxA,QLCXQnFdZUK9U0mYYpRexg,,,N,0,0,,,2017-01-24 14:43,2017-01-24 15:36,CLEMENTL,CLEMENTL
1988,49429815,751235,10651787,1227198,0,100,N,N,N,CP_Drtn,TT_FinMile,DT_FixedDrtn,RV_OK,TK_Complete,823A-MS-H8-1010,Complete the remaining down track cut and cover tunnel to Degree 1,,,,0,0,0,0,0,0,0,0,2013-10-27 18:00,2015-02-28 18:00,2015-02-28 18:00,2017-06-12 18:00,2017-06-12 18:00,,2017-01-01 00:00,2017-01-01 00:00,,,2015-01-31 18:00,2015-01-31 18:00,,,,CS_MEOB,PT_Normal,,,,,Caf5+HojRDWgZ0VmK8RWQg,+A7Z28rLq02vczO20lOFvg,,,N,0,0,,,2017-01-24 14:43,2017-01-24 15:36,CLEMENTL,CLEMENTL
1989,49429816,751235,10651788,1227198,0,100,N,N,N,CP_Drtn,TT_FinMile,DT_FixedDrtn,RV_OK,TK_Complete,823A-MS-H1-1010,Removal of contamination,,,,0,0,0,0,0,0,0,0,2011-04-24 18:00,2011-04-16 18:00,2011-04-16 18:00,2017-06-12 18:00,2017-06-12 18:00,,2017-01-01 00:00,2017-01-01 00:00,,,2011-04-16 18:00,2011-04-16 18:00,,,,CS_MEOB,PT_Normal,,,,,FToZsNbIS+CEw/5D4x7qNg,NIIqdkdlDk+/hH1p0Jr50g,,,N,0,0,,,2017-01-24 14:43,2017-01-24 15:36,CLEMENTL,CLEMENTL
1990,49429817,751235,10651789,1227198,0,100,N,N,N,CP_Drtn,TT_FinMile,DT_FixedDrtn,RV_OK,TK_Complete,823A-MS-H4-1010,Complete excavation for the launching shaft,,,,0,0,0,0,0,0,0,0,2012-10-21 18:00,2012-10-17 18:00,2012-10-17 18:00,2017-06-12 18:00,2017-06-12 18:00,,2017-01-01 00:00,2017-01-01 00:00,,,2012-10-17 18:00,2012-10-17 18:00,,,,CS_MEOB,PT_Normal,,,,,bhwSaq4sTdyc0jIpoinlSw,WPHNcrnuxkGMIJcAY2vqqA,,,N,0,0,,,2017-01-24 14:43,2017-01-24 15:36,CLEMENTL,CLEMENTL
1991,49429818,751235,10651790,1227198,0,100,N,N,N,CP_Drtn,TT_FinMile,DT_FixedDrtn,RV_OK,TK_Complete,823A-MS-H2-1010,Complete diaphragm wall construction for the launching shaft,,,,0,0,0,0,0,0,0,0,2012-03-25 18:00,2012-03-15 18:00,2012-03-15 18:00,2017-06-12 18:00,2017-06-12 18:00,,2017-01-01 00:00,2017-01-01 00:00,,,2012-03-15 18:00,2012-03-15 18:00,,,,CS_MEOB,PT_Normal,,,,,volCO3M8TgmVqL5MbmzW2g,Lvnb9cW2AUe8yWXODL8VEQ,,,N,0,0,,,2017-01-24 14:43,2017-01-24 15:36,CLEMENTL,CLEMENTL
1992,49429819,751235,10651791,1227198,0,100,N,N,N,CP_Drtn,TT_FinMile,DT_FixedDrtn,RV_OK,TK_Complete,823A-MS-H5-1010,Complete 30% of the cut and cover tunnels,,,,0,0,0,0,0,0,0,0,2013-01-27 18:00,2013-01-21 18:00,2013-01-21 18:00,2017-06-12 18:00,2017-06-12 18:00,,2017-01-01 00:00,2017-01-01 00:00,,,2013-05-31 18:00,2013-05-31 18:00,,,,CS_MEOB,PT_Normal,,,,,k9xaoQPsT4iHw8U6OnWEPQ,fWHmVgTUiE+ovGnV676HKw,,,N,0,0,,,2017-01-24 14:43,2017-01-24 15:36,CLEMENTL,CLEMENTL
1993,49429820,751235,10651792,1227198,0,100,N,N,N,CP_Drtn,TT_FinMile,DT_FixedDrtn,RV_OK,TK_Complete,823A-MS-H9-1010,Complete the remaining up track cut and cover tunnel and the shunt neck to Degree 1,,,,0,0,0,0,0,0,0,0,2014-03-16 18:00,2015-12-22 18:00,2015-12-22 18:00,2017-06-12 18:00,2017-06-12 18:00,,2017-01-01 00:00,2017-01-01 00:00,,,2016-01-13 18:00,2016-01-13 18:00,,,,CS_MEOB,PT_Normal,,,,,RHNBzE9ITMi32juirvy8eQ,qheNOtk9/kOjtPzUd2HSyQ,,,N,0,0,,,2017-01-24 14:43,2017-01-24 15:36,CLEMENTL,CLEMENTL
1994,49429821,751235,10651794,1227198,0,100,N,N,N,CP_Drtn,TT_FinMile,DT_FixedDrtn,RV_OK,TK_Complete,823A-MS-G4-1010,"Complete tunnel invert, walkway and installation of cable brackets supplied by Contract 846",,,,0,0,0,0,0,0,0,0,2013-10-06 18:00,2014-10-31 18:00,2014-10-31 18:00,2017-06-12 18:00,2017-06-12 18:00,,2017-01-01 00:00,2017-01-01 00:00,,,2014-10-31 18:00,2014-10-31 18:00,,,,CS_MEOB,PT_Normal,,,,,RD3tlwM6SJyv5vn4MPZtiw,rny/rBAD70ylfqLMnn4Lbg,,,N,0,0,,,2017-01-24 14:43,2017-01-24 15:36,CLEMENTL,CLEMENTL
1995,49429822,751235,10651795,1227198,0,100,N,N,N,CP_Drtn,TT_FinMile,DT_FixedDrtn,RV_OK,TK_Complete,823A-MS-G1-1010,Complete 50% of approved pre-cast segments manufacturing,,,,0,0,0,0,0,0,0,0,2012-09-02 18:00,2012-08-30 18:00,2012-08-30 18:00,2017-06-12 18:00,2017-06-12 18:00,,2017-01-01 00:00,2017-01-01 00:00,,,2012-08-30 18:00,2012-08-30 18:00,,,,CS_MEOB,PT_Normal,,,,,GRJxdECuRrK2+TFgYFp6IQ,4cE2xnsR60erWk7abzAcTA,,,N,0,0,,,2017-01-24 14:43,2017-01-24 15:36,CLEMENTL,CLEMENTL
1996,49429823,751235,10651796,1227198,0,100,N,N,N,CP_Drtn,TT_FinMile,DT_FixedDrtn,RV_OK,TK_Complete,823A-MS-G3-1010,Complete 100% of tunnel drive,,,,0,0,0,0,0,0,0,0,2013-06-02 18:00,2014-05-20 18:00,2014-05-20 18:00,2017-06-12 18:00,2017-06-12 18:00,,2017-01-01 00:00,2017-01-01 00:00,,,2014-05-22 18:00,2014-05-22 18:00,,,,CS_MEOB,PT_Normal,,,,,8xOgLgFuTBe0SlIMUh2hKQ,IQFu7RksNkyKfcfHRTDMEg,,,N,0,0,,,2017-01-24 14:43,2017-01-24 15:36,CLEMENTL,CLEMENTL
1997,49429824,751235,10651797,1227198,0,100,N,N,N,CP_Drtn,TT_FinMile,DT_FixedDrtn,RV_OK,TK_Complete,823A-MS-G2-1010,Complete 100% of approved pre-cast segments manufacturing,,,,0,0,0,0,0,0,0,0,2012-10-07 18:00,2012-09-30 18:00,2012-09-30 18:00,2017-06-12 18:00,2017-06-12 18:00,,2017-01-01 00:00,2017-01-01 00:00,,,2012-09-29 18:00,2012-09-29 18:00,,,,CS_MEOB,PT_Normal,,,,,bUZZL0P4TNm5Ytweqr+/Aw,b7p9ho7BokKw8C+8yzLavQ,,,N,0,0,,,2017-01-24 14:43,2017-01-24 15:36,CLEMENTL,CLEMENTL
1998,49429825,751235,10651798,1227199,1,100,N,N,N,CP_Drtn,TT_Task,DT_FixedDUR2,RV_OK,TK_Complete,823A-TAODC-10,Access opening for the up track cut and cover tunnel at Tse Uk Tsuen Shaft,,,,0,0,0,0,232,0,0,0,,2016-02-02 08:00,2016-02-10 18:00,2017-04-15 08:00,2017-04-15 08:00,,2017-01-01 00:00,2017-01-01 00:00,,,2016-02-02 08:00,2016-03-09 18:00,,,,,PT_Normal,,,,,exhUrr2sRvKP5GeEmg4gOQ,pGIxfAynakORGenSzsGTMw,,,N,0,0,,,2017-01-24 14:43,2017-01-24 15:39,CLEMENTL,CLEMENTL
1999,49429826,751235,10651800,1227198,0,100,N,N,N,CP_Drtn,TT_FinMile,DT_FixedDrtn,RV_OK,TK_Complete,823A-HO1-WA4-1170,Works Area 4.10A,,,,0,0,0,0,0,0,0,0,2014-06-29 18:00,2016-06-01 08:00,2016-06-01 08:00,2017-06-12 18:00,2017-06-12 18:00,,2017-01-01 00:00,2017-01-01 00:00,,,2016-06-01 08:00,2016-06-01 08:00,,,,CS_MEO,PT_Normal,,,,,kxumj7rESxGeCNvHbbZxCQ,wdWpTsFtJUWYh7H1KPtg3A,,,N,0,0,,,2017-01-24 14:43,2017-01-24 15:36,CLEMENTL,CLEMENTL
2000,49429827,751235,10651800,1227198,0,0,N,N,N,CP_Drtn,TT_FinMile,DT_FixedDrtn,RV_OK,TK_NotStart,823A-HO1-WA1-1020,Works Area 1.15B,,-5248,1304,0,0,0,0,0,0,0,0,2015-03-16 18:00,,,2015-03-16 18:00,2015-03-16 18:00,,2017-01-01 08:00,2017-01-01 08:00,2017-01-01 08:00,2017-01-01 08:00,2017-01-01 08:00,2017-01-01 08:00,,2015-03-16 18:00,2015-03-16 18:00,CS_MEO,PT_Normal,,,,,mV/UFfLwQcSylt61UjISwQ,T6480xbWFE+CeCYnbJWx1A,,,N,0,0,,,2017-01-24 14:43,2017-01-24 15:36,CLEMENTL,CLEMENTL
2001,49429828,751235,10651800,1227198,0,0,N,N,N,CP_Drtn,TT_FinMile,DT_FixedDrtn,RV_OK,TK_NotStart,823A-HO1-WA3-1070,Works Area 3.3B,,-4808,1304,0,0,0,0,0,0,0,0,2015-05-10 18:00,,,2015-05-10 18:00,2015-05-10 18:00,,2017-01-01 08:00,2017-01-01 08:00,2017-01-01 08:00,2017-01-01 08:00,2017-01-01 08:00,2017-01-01 08:00,,2015-05-10 18:00,2015-05-10 18:00,CS_MEO,PT_Normal,,,,,hozpi0q5QNucBV3N7jeCug,CFsJ9TYiQUq/r/poKlemRA,,,N,0,0,,,2017-01-24 14:43,2017-01-24 15:36,CLEMENTL,CLEMENTL
2002,49429829,751235,10651800,1227198,0,100,N,N,N,CP_Drtn,TT_FinMile,DT_FixedDrtn,RV_OK,TK_Complete,823A-HO1-WA4-1250,Works Area 4.15A,,,,0,0,0,0,0,0,0,0,2014-06-29 18:00,2016-02-01 18:00,2016-02-01 18:00,2017-06-12 18:00,2017-06-12 18:00,,2017-01-01 00:00,2017-01-01 00:00,,,2016-02-01 08:00,2016-02-01 08:00,,,,CS_MEO,PT_Normal,,,,,/vfcr91iQC2s9covNX37bQ,PCt+o4r1sE6xF4ha4hoWyg,,,N,0,0,,,2017-01-24 14:43,2017-01-24 15:36,CLEMENTL,CLEMENTL
2003,49429830,751235,10651800,1227198,0,100,N,N,N,CP_Drtn,TT_FinMile,DT_FixedDrtn,RV_OK,TK_Complete,823A-HO1-WA4-1260,Works Area 4.15B,,,,0,0,0,0,0,0,0,0,2014-06-29 18:00,2016-02-01 18:00,2016-02-01 18:00,2017-06-12 18:00,2017-06-12 18:00,,2017-01-01 00:00,2017-01-01 00:00,,,2016-02-01 08:00,2016-02-01 08:00,,,,CS_MEO,PT_Normal,,,,,rQ7uQob9Q9yCaD+WdlaPEg,8cFvSDEBB0mBQ07rjxehwg,,,N,0,0,,,2017-01-24 14:43,2017-01-24 15:36,CLEMENTL,CLEMENTL
2004,49429831,751235,10651800,1239099,0,0,N,N,N,CP_Drtn,TT_FinMile,DT_FixedDrtn,RV_OK,TK_NotStart,823A-HO1-WA1-1010,Works Area 1.15A,,-5248,1304,0,0,0,0,0,0,0,0,2015-03-16 18:00,,,2015-03-16 18:00,2015-03-16 18:00,,2017-01-01 08:00,2017-01-01 08:00,2017-01-01 08:00,2017-01-01 08:00,2017-01-01 08:00,2017-01-01 08:00,,2015-03-16 18:00,2015-03-16 18:00,CS_MEO,PT_Normal,,,,,BFY2TuybQvCywTPJSA6dZA,MWFwSD/mh0yKJ6iy39XDqg,,,N,0,0,,,2017-01-24 14:43,2017-01-24 15:36,CLEMENTL,CLEMENTL
2005,49429832,751235,10651800,1227198,0,100,N,N,N,CP_Drtn,TT_FinMile,DT_FixedDrtn,RV_OK,TK_Complete,823A-HO1-WA3-1030,Works Area 3.1,,,,0,0,0,0,0,0,0,0,2013-01-27 18:00,2016-07-23 18:00,2016-07-23 18:00,2017-06-12 18:00,2017-06-12 18:00,,2017-01-01 00:00,2017-01-01 00:00,,,2016-07-01 08:00,2016-07-01 08:00,,,,CS_MEO,PT_Normal,,,,,lxcfzimNTluVthIvfwGixg,8ahBfenaYEaxVwjfs8GMFA,,,N,0,0,,,2017-01-24 14:43,2017-01-24 15:36,CLEMENTL,CLEMENTL
2006,49429833,751235,10651800,1227198,0,100,N,N,N,CP_Drtn,TT_FinMile,DT_FixedDrtn,RV_OK,TK_Complete,823A-HO1-WA3-1040,Works Area 3.2,,,,0,0,0,0,0,0,0,0,2013-08-04 18:00,2016-07-09 18:00,2016-07-09 18:00,2017-06-12 18:00,2017-06-12 18:00,,2017-01-01 00:00,2017-01-01 00:00,,,2016-07-01 08:00,2016-07-01 08:00,,,,CS_MEO,PT_Normal,,,,,clH/+IcMSmSQS4GgeohqLg,ii1Ep2+njEKc/2Jf7srcog,,,N,0,0,,,2017-01-24 14:43,2017-01-24 15:36,CLEMENTL,CLEMENTL
2007,49429834,751235,10651800,1227198,0,0,N,N,N,CP_Drtn,TT_FinMile,DT_FixedDrtn,RV_OK,TK_NotStart,823A-HO1-WA3-1050,Works Area 3.3,,-4808,1304,0,0,0,0,0,0,0,0,2015-05-10 18:00,,,2015-05-10 18:00,2015-05-10 18:00,,2017-01-01 08:00,2017-01-01 08:00,2017-01-01 08:00,2017-01-01 08:00,2017-01-01 08:00,2017-01-01 08:00,,2015-05-10 18:00,2015-05-10 18:00,CS_MEO,PT_Normal,,,,,22+IoxHLQfuFt5U4j5n6lg,TWaKZVSbmUO66ABx99SGFQ,,,N,0,0,,,2017-01-24 14:43,2017-01-24 15:36,CLEMENTL,CLEMENTL
2008,49429835,751235,10651800,1227198,0,0,N,N,N,CP_Drtn,TT_FinMile,DT_FixedDrtn,RV_OK,TK_NotStart,823A-HO1-WA3-1060,Works Area 3.3A,,-4416,1304,0,0,0,0,0,0,0,0,2015-06-28 18:00,,,2015-06-28 18:00,2015-06-28 18:00,,2017-01-01 08:00,2017-01-01 08:00,2017-01-01 08:00,2017-01-01 08:00,2017-01-01 08:00,2017-01-01 08:00,,2015-06-28 18:00,2015-06-28 18:00,CS_MEO,PT_Normal,,,,,v6OQkO61TcqOUWPdTxbFXw,iCewaRG59k+o1MTNdvgDKw,,,N,0,0,,,2017-01-24 14:43,2017-01-24 15:36,CLEMENTL,CLEMENTL
2009,49429836,751235,10651800,1227198,0,0,N,N,N,CP_Drtn,TT_FinMile,DT_FixedDrtn,RV_OK,TK_NotStart,823A-HO1-WA3-1080,Works Area 3.4 (subject to SLG approval),,-11480,1304,0,0,0,0,0,0,0,0,2013-01-26 18:00,,,2013-01-26 18:00,2013-01-26 18:00,,2017-01-01 08:00,2017-01-01 08:00,2017-01-01 08:00,2017-01-01 08:00,2017-01-01 08:00,2017-01-01 08:00,,2013-01-26 18:00,2013-01-26 18:00,CS_MEO,PT_Normal,,,,,ooir38wITbyl76VI7mAFqw,Rn7EhbbUrUKOid5zvqfjaQ,,,N,0,0,,,2017-01-24 14:43,2017-01-24 15:36,CLEMENTL,CLEMENTL
2010,49429837,751235,10651800,1227198,0,100,N,N,N,CP_Drtn,TT_FinMile,DT_FixedDrtn,RV_OK,TK_Complete,823A-HO1-WA4-1100,Works Area 4.1 (subject to SLG approval),,,,0,0,0,0,0,0,0,0,2015-01-13 18:00,2016-07-24 18:00,2016-07-24 18:00,2017-06-12 18:00,2017-06-12 18:00,,2017-01-01 00:00,2017-01-01 00:00,,,2016-07-09 18:00,2016-07-09 18:00,,,,CS_MEO,PT_Normal,,,,,MrbGPd01TpSd65aBee5yDQ,Lpb2ShMHZ0OXg9lEDVeEOg,,,N,0,0,,,2017-01-24 14:43,2017-01-24 15:36,CLEMENTL,CLEMENTL
2011,49429838,751235,10651800,1227198,0,100,N,N,N,CP_Drtn,TT_FinMile,DT_FixedDrtn,RV_OK,TK_Complete,823A-HO1-WA4-1140,Works Area 4.9,,,,0,0,0,0,0,0,0,0,2015-08-30 18:00,2016-09-19 18:00,2016-09-19 18:00,2017-06-12 18:00,2017-06-12 18:00,,2017-02-28 18:00,2017-02-28 18:00,,,2017-08-11 18:00,2017-08-11 18:00,,,,CS_MEO,PT_Normal,,,,,k3liSIh0S+WcpU+JTcblxg,U59a4fsFi0Kz2bHshjDWyg,,,N,0,0,,,2017-01-24 14:43,2017-01-24 15:39,CLEMENTL,CLEMENTL
2012,49429839,751235,10651800,1227198,0,100,N,N,N,CP_Drtn,TT_FinMile,DT_FixedDrtn,RV_OK,TK_Complete,823A-HO1-WA4-1160,Works Area 4.10,,,,0,0,0,0,0,0,0,0,2014-06-29 18:00,2016-06-01 08:00,2016-06-01 08:00,2017-06-12 18:00,2017-06-12 18:00,,2017-01-01 00:00,2017-01-01 00:00,,,2016-06-01 08:00,2016-06-01 08:00,,,,CS_MEO,PT_Normal,,,,,Vwx/xozUTPKP17rde5yPkw,re6b3/O36Ei29yTbAXrcrA,,,N,0,0,,,2017-01-24 14:43,2017-01-24 15:36,CLEMENTL,CLEMENTL
2013,49429840,751235,10651800,1227198,0,100,N,N,N,CP_Drtn,TT_FinMile,DT_FixedDrtn,RV_OK,TK_Complete,823A-HO1-WA4-1180,Works Area 4.11,,,,0,0,0,0,0,0,0,0,2014-06-29 18:00,2016-02-19 18:00,2016-02-19 18:00,2017-06-12 18:00,2017-06-12 18:00,,2017-01-01 00:00,2017-01-01 00:00,,,2016-02-01 08:00,2016-02-01 08:00,,,,CS_MEO,PT_Normal,,,,,IuNXzh0yS3SggVloeacAeA,RO5ADem4WUeUK2gtNB1++A,,,N,0,0,,,2017-01-24 14:43,2017-01-24 15:36,CLEMENTL,CLEMENTL
2014,49429841,751235,10651800,1227198,0,0,N,N,N,CP_Drtn,TT_FinMile,DT_FixedDrtn,RV_OK,TK_NotStart,823A-HO1-WA4-1190,Works Area 4.12A,,-4384,832,0,0,0,0,0,0,0,0,2015-08-30 18:00,,,2015-08-30 18:00,2015-08-30 18:00,,2017-02-28 18:00,2017-02-28 18:00,2017-02-28 18:00,2017-02-28 18:00,2017-02-28 18:00,2017-02-28 18:00,,2015-08-30 18:00,2015-08-30 18:00,CS_MEO,PT_Normal,,,,,mXGJ7pY3TWSaZn9UI+EeaA,rW+M7APaWUWfb7NL26UaYw,,,N,0,0,,,2017-01-24 14:43,2017-01-24 15:39,CLEMENTL,CLEMENTL
2015,49429842,751235,10651800,1227198,0,0,N,N,N,CP_Drtn,TT_FinMile,DT_FixedDrtn,RV_OK,TK_NotStart,823A-HO1-WA4-1200,Works Area 4.12B,,-7328,1304,0,0,0,0,0,0,0,0,2014-06-29 18:00,,,2014-06-29 18:00,2014-06-29 18:00,,2017-01-01 08:00,2017-01-01 08:00,2017-01-01 08:00,2017-01-01 08:00,2017-01-01 08:00,2017-01-01 08:00,,2014-06-29 18:00,2014-06-29 18:00,CS_MEO,PT_Normal,,,,,fZCFzLn8QEakzzOBiKMcJA,+bI4nNXEqEyhQvluCPkhYw,,,N,0,0,,,2017-01-24 14:43,2017-01-24 15:36,CLEMENTL,CLEMENTL
2016,49429843,751235,10651800,1227198,0,100,N,N,N,CP_Drtn,TT_FinMile,DT_FixedDrtn,RV_OK,TK_Complete,823A-HO1-WA4-1150,Works Area 4.9A,,,,0,0,0,0,0,0,0,0,2015-08-30 18:00,2016-09-19 18:00,2016-09-19 18:00,2017-06-12 18:00,2017-06-12 18:00,,2017-02-28 18:00,2017-02-28 18:00,,,2017-08-11 18:00,2017-08-11 18:00,,,,CS_MEO,PT_Normal,,,,,StZdIH7ET2aFDnV7mAhQ7w,xjQqHGmUSEWL1sHm/wvjWA,,,N,0,0,,,2017-01-24 14:43,2017-01-24 15:39,CLEMENTL,CLEMENTL
2017,49429844,751235,10651800,1227198,0,0,N,N,N,CP_Drtn,TT_FinMile,DT_FixedDrtn,RV_OK,TK_NotStart,823A-HO1-WA4-1110,Works Area 4.2,,-4808,1304,0,0,0,0,0,0,0,0,2015-05-10 18:00,,,2015-05-10 18:00,2015-05-10 18:00,,2017-01-01 08:00,2017-01-01 08:00,2017-01-01 08:00,2017-01-01 08:00,2017-01-01 08:00,2017-01-01 08:00,,2015-05-10 18:00,2015-05-10 18:00,CS_MEO,PT_Normal,,,,,WAkFt/VbQqqTcb6F8G0Maw,gNrssF/7fU+rB6W9Ka0OmQ,,,N,0,0,,,2017-01-24 14:43,2017-01-24 15:36,CLEMENTL,CLEMENTL
2018,49429845,751235,10651800,1227198,0,100,N,N,N,CP_Drtn,TT_FinMile,DT_FixedDrtn,RV_OK,TK_Complete,823A-HO1-WA4-1120,Works Area 4.3,,,,0,0,0,0,0,0,0,0,2015-05-10 18:00,2016-09-14 18:00,2016-09-14 18:00,2017-06-12 18:00,2017-06-12 18:00,,2017-01-01 00:00,2017-01-01 00:00,,,2016-09-01 08:00,2016-09-01 08:00,,,,CS_MEO,PT_Normal,,,,,Xu9e1F2tTO+Ro9Up89lttA,+7p+KTF8e0OkwBLLX+xmaQ,,,N,0,0,,,2017-01-24 14:43,2017-01-24 15:36,CLEMENTL,CLEMENTL
2019,49429846,751235,10651800,1227198,0,100,N,N,N,CP_Drtn,TT_FinMile,DT_FixedDrtn,RV_OK,TK_Complete,823A-HO1-WA4-1130,Works Area 4.4,,,,0,0,0,0,0,0,0,0,2015-05-10 18:00,2016-09-14 18:00,2016-09-14 18:00,2017-06-12 18:00,2017-06-12 18:00,,2017-01-01 00:00,2017-01-01 00:00,,,2016-09-01 08:00,2016-09-01 08:00,,,,CS_MEO,PT_Normal,,,,,d1YPAtUhTpqMPoyZ06cLqw,fFx6bdEX9UO4qY4/evQglg,,,N,0,0,,,2017-01-24 14:43,2017-01-24 15:36,CLEMENTL,CLEMENTL
2020,49429847,751235,10651800,1227198,0,0,N,N,N,CP_Drtn,TT_FinMile,DT_FixedDrtn,RV_OK,TK_NotStart,823A-HO1-WA4-1210,Works Area 4.12C,,-4808,1304,0,0,0,0,0,0,0,0,2015-05-10 18:00,,,2015-05-10 18:00,2015-05-10 18:00,,2017-01-01 08:00,2017-01-01 08:00,2017-01-01 08:00,2017-01-01 08:00,2017-01-01 08:00,2017-01-01 08:00,,2015-05-10 18:00,2015-05-10 18:00,CS_MEO,PT_Normal,,,,,mCPAqYjMSbi/Ec/SKK/8Vw,bhB/7yoNPEiRfnPwedWL8w,,,N,0,0,,,2017-01-24 14:43,2017-01-24 15:36,CLEMENTL,CLEMENTL
2021,49429848,751235,10651800,1227198,0,100,N,N,N,CP_Drtn,TT_FinMile,DT_FixedDrtn,RV_OK,TK_Complete,823A-HO1-WA4-1230,Works Area 4.13 (subject to SLG approval),,,,0,0,0,0,0,0,0,0,2015-05-10 18:00,2016-06-01 18:00,2016-06-01 18:00,2017-06-12 18:00,2017-06-12 18:00,,2017-01-01 00:00,2017-01-01 00:00,,,2016-06-01 08:00,2016-06-01 08:00,,,,CS_MEO,PT_Normal,,,,,El+87KbzQoO9UIRzT5ytWA,w9YVEJuA20uqKB6Xb1+k/g,,,N,0,0,,,2017-01-24 14:43,2017-01-24 15:36,CLEMENTL,CLEMENTL
2022,49429849,751235,10651800,1227198,0,100,N,N,N,CP_Drtn,TT_FinMile,DT_FixedDrtn,RV_OK,TK_Complete,823A-HO1-WA4-1240,Works Area 4.15,,,,0,0,0,0,0,0,0,0,2014-06-29 18:00,2016-02-01 18:00,2016-02-01 18:00,2017-06-12 18:00,2017-06-12 18:00,,2017-01-01 00:00,2017-01-01 00:00,,,2016-02-01 08:00,2016-02-01 08:00,,,,CS_MEO,PT_Normal,,,,,bDOKG0kYQBOOvYaeqIX+hA,qSKhElbZS02DYRAepWPtJg,,,N,0,0,,,2017-01-24 14:43,2017-01-24 15:36,CLEMENTL,CLEMENTL
2023,49429850,751235,10651800,1227198,0,100,N,N,N,CP_Drtn,TT_FinMile,DT_FixedDrtn,RV_OK,TK_Complete,823A-HO1-WA4-1270,Works Area 4.16 (subject to SLG approval),,,,0,0,0,0,0,0,0,0,2014-06-29 18:00,2016-02-01 18:00,2016-02-01 18:00,2017-06-12 18:00,2017-06-12 18:00,,2017-01-01 00:00,2017-01-01 00:00,,,2016-02-01 08:00,2016-02-01 08:00,,,,CS_MEOB,PT_Normal,,,,,Y2hKou97S/KTH22UqFCefg,6QmdRZ9SCEOyX4l429Odcg,,,N,0,0,,,2017-01-24 14:43,2017-01-24 15:36,CLEMENTL,CLEMENTL
2024,49429851,751235,10651800,1227198,0,0,N,N,N,CP_Drtn,TT_FinMile,DT_FixedDrtn,RV_OK,TK_NotStart,823A-HO1-WA5-1280,Works Area 5.1,,-3912,0,0,0,0,0,0,0,0,0,2015-08-30 18:00,,,2015-08-30 18:00,2015-08-30 18:00,,2017-01-01 08:00,2017-01-01 08:00,2017-01-01 08:00,2017-01-01 08:00,2017-01-01 08:00,2017-01-01 08:00,,2015-08-30 18:00,2015-08-30 18:00,CS_MEO,PT_Normal,,,,,X0RStjZnQKWvTV5A5UJ60Q,J+pnBP7wS028bkLYP28cSA,,,N,0,0,,,2017-01-24 14:43,2017-01-24 14:53,CLEMENTL,CLEMENTL
2025,49429852,751235,10651800,1227198,0,0,N,N,N,CP_Drtn,TT_FinMile,DT_FixedDrtn,RV_OK,TK_NotStart,823A-HO1-WA5-1290,Works Area 5.2 (subject to SLG approval),,-3912,1304,0,0,0,0,0,0,0,0,2015-08-30 18:00,,,2015-08-30 18:00,2015-08-30 18:00,,2017-01-01 08:00,2017-01-01 08:00,2017-01-01 08:00,2017-01-01 08:00,2017-01-01 08:00,2017-01-01 08:00,,2015-08-30 18:00,2015-08-30 18:00,CS_MEO,PT_Normal,,,,,E6lJs/1iSx+RWFBc7eb30w,Et7Fvt7yPE283kpx1NQMxA,,,N,0,0,,,2017-01-24 14:43,2017-01-24 15:36,CLEMENTL,CLEMENTL
2026,49429853,751235,10651800,1227198,0,0,N,N,N,CP_Drtn,TT_FinMile,DT_FixedDrtn,RV_OK,TK_NotStart,823A-HO1-WA5-1300,Works Area 5.3,,-8504,1304,0,0,0,0,0,0,0,0,2014-02-02 18:00,,,2014-02-02 18:00,2014-02-02 18:00,,2017-01-01 08:00,2017-01-01 08:00,2017-01-01 08:00,2017-01-01 08:00,2017-01-01 08:00,2017-01-01 08:00,,2014-02-02 18:00,2014-02-02 18:00,CS_MEO,PT_Normal,,,,,YnH7FjX4SQSZpu946NKezw,X4+W3m/53keZcTquVAtmmw,,,N,0,0,,,2017-01-24 14:43,2017-01-24 15:36,CLEMENTL,CLEMENTL
2027,49429854,751235,10651800,1227198,0,0,N,N,N,CP_Drtn,TT_FinMile,DT_FixedDrtn,RV_OK,TK_NotStart,823A-HO1-WA3-1090,Works Area 3.11,,-4808,1304,0,0,0,0,0,0,0,0,2015-05-10 18:00,,,2015-05-10 18:00,2015-05-10 18:00,,2017-01-01 08:00,2017-01-01 08:00,2017-01-01 08:00,2017-01-01 08:00,2017-01-01 08:00,2017-01-01 08:00,,2015-05-10 18:00,2015-05-10 18:00,CS_MEO,PT_Normal,,,,,uIAvLBQRTiyZyaJV98ImQQ,xThpeGIKJUGnXRc4TnQksQ,,,N,0,0,,,2017-01-24 14:43,2017-01-24 15:36,CLEMENTL,CLEMENTL
2028,49429855,751235,10651801,1227198,0,0,N,N,N,CP_Drtn,TT_FinMile,DT_FixedDrtn,RV_OK,TK_NotStart,823A-HO2-WA3-1010,Works Area 3.1,,-4416,1304,0,0,0,0,0,0,0,0,2015-06-28 18:00,,,2015-06-28 18:00,2015-06-28 18:00,,2017-01-01 08:00,2017-01-01 08:00,2017-01-01 08:00,2017-01-01 08:00,2017-01-01 08:00,2017-01-01 08:00,,2015-06-28 18:00,2015-06-28 18:00,CS_MEO,PT_Normal,,,,,F3Tnu6ioQdKaBUR+CZAtXg,vNKU8b6x80m8K8Lo6Gywiw,,,N,0,0,,,2017-01-24 14:43,2017-01-24 15:36,CLEMENTL,CLEMENTL
2029,49429856,751235,10651801,1227198,0,0,N,N,N,CP_Drtn,TT_FinMile,DT_FixedDrtn,RV_OK,TK_NotStart,823A-HO2-WA3-1020,Works Area 3.2,,-4416,1304,0,0,0,0,0,0,0,0,2015-06-28 18:00,,,2015-06-28 18:00,2015-06-28 18:00,,2017-01-01 08:00,2017-01-01 08:00,2017-01-01 08:00,2017-01-01 08:00,2017-01-01 08:00,2017-01-01 08:00,,2015-06-28 18:00,2015-06-28 18:00,CS_MEO,PT_Normal,,,,,OOUWh+wSTyes5e47XBNSpA,7/svJMzY9EOoyFbPsdW9cg,,,N,0,0,,,2017-01-24 14:43,2017-01-24 15:36,CLEMENTL,CLEMENTL
2030,49429857,751235,10651801,1227198,0,0,N,N,N,CP_Drtn,TT_FinMile,DT_FixedDrtn,RV_OK,TK_NotStart,823A-HO2-WA5-1040,Works Area 5.3,,-3912,1304,0,0,0,0,0,0,0,0,2015-08-30 18:00,,,2015-08-30 18:00,2015-08-30 18:00,,2017-01-01 08:00,2017-01-01 08:00,2017-01-01 08:00,2017-01-01 08:00,2017-01-01 08:00,2017-01-01 08:00,,2015-08-30 18:00,2015-08-30 18:00,CS_MEO,PT_Normal,,,,,W6iv1JxdTzCtu8YYwnHA1g,Hsa5mlGvm0CJVBsfO4qApg,,,N,0,0,,,2017-01-24 14:43,2017-01-24 15:36,CLEMENTL,CLEMENTL
2031,49429858,751235,10651801,1227198,0,0,N,N,N,CP_Drtn,TT_FinMile,DT_FixedDrtn,RV_OK,TK_NotStart,823A-HO2-WA4-1030,Works Area 4.15B,,-1880,1304,0,0,0,0,0,0,0,0,2016-05-10 18:00,,,2016-05-10 18:00,2016-05-10 18:00,,2017-01-01 08:00,2017-01-01 08:00,2017-01-01 08:00,2017-01-01 08:00,2017-01-01 08:00,2017-01-01 08:00,,2016-05-10 18:00,2016-05-10 18:00,CS_MEO,PT_Normal,,,,,BqqNGDm6TRiljiEsdX7tNA,A5v+vcRBLkqVBDFi6p+dKQ,,,N,0,0,,,2017-01-24 14:43,2017-01-24 15:36,CLEMENTL,CLEMENTL
2032,49429859,751235,10651807,1227198,0,100,N,N,N,CP_Drtn,TT_FinMile,DT_FixedDrtn,RV_OK,TK_Complete,823A-MS-B1.4-1010,Complete fabrication and factory tests of the tunnel boring machine and ready for shipment to Hong Kong,,,,0,0,0,0,0,0,0,0,2011-09-11 18:00,2011-09-05 18:00,2011-09-05 18:00,2017-06-12 18:00,2017-06-12 18:00,,2017-01-01 00:00,2017-01-01 00:00,,,2011-09-05 18:00,2011-09-05 18:00,,,,CS_MEOB,PT_Normal,,,,,wYbDUGe8QAGkUbmKP2PxKw,AWMqT6a3O0mLIz2IdRsErA,,,N,0,0,,,2017-01-24 14:43,2017-01-24 15:36,CLEMENTL,CLEMENTL
2033,49429860,751235,10651808,1227198,0,100,N,N,N,CP_Drtn,TT_FinMile,DT_FixedDrtn,RV_OK,TK_Complete,823A-MS-B1.3-1010,Commencement of final assembly for tunnel boring machine at the factory,,,,0,0,0,0,0,0,0,0,2011-03-27 18:00,2011-03-25 18:00,2011-03-25 18:00,2017-06-12 18:00,2017-06-12 18:00,,2017-01-01 00:00,2017-01-01 00:00,,,2011-03-25 18:00,2011-03-25 18:00,,,,CS_MEOB,PT_Normal,,,,,kJwXrFStTNKDM7K0AlQmwg,jqLp+smjak+MhZR/TyatGQ,,,N,0,0,,,2017-01-24 14:43,2017-01-24 15:36,CLEMENTL,CLEMENTL
2034,49429861,751235,10651809,1227198,0,100,N,N,N,CP_Drtn,TT_FinMile,DT_FixedDrtn,RV_OK,TK_Complete,823A-MS-B1.2-1010,Engineer's confirmation of the acceptance of on-demand bond or bank guarantee in respect of the procurement of TBM,,,,0,0,0,0,0,0,0,0,2010-11-21 18:00,2010-11-19 18:00,2010-11-19 18:00,2017-06-12 18:00,2017-06-12 18:00,,2017-01-01 00:00,2017-01-01 00:00,,,2010-11-19 18:00,2010-11-19 18:00,,,,CS_MEOB,PT_Normal,,,,,pGzkqCeRSayyAQzFYLv7LQ,XwGK6K4T2UO2jm8p78myrA,,,N,0,0,,,2017-01-24 14:43,2017-01-24 15:36,CLEMENTL,CLEMENTL
2035,49429862,751235,10651810,1227198,0,100,N,N,N,CP_Drtn,TT_FinMile,DT_FixedDrtn,RV_OK,TK_Complete,823A-MS-B1.5-1010,"Comp assembly, T&C of TBM & asso eqpmt (incl. surface eqpmt) & start down track tunnel drive from ERS to Tai Kong Po",,,,0,0,0,0,0,0,0,0,2012-11-04 18:00,2012-11-02 18:00,2012-11-02 18:00,2017-06-12 18:00,2017-06-12 18:00,,2017-01-01 00:00,2017-01-01 00:00,,,2012-11-02 18:00,2012-11-02 18:00,,,,CS_MEOB,PT_Normal,,,,,fHVFJ4/UT9SWNWUzO1MVEg,MVC/lc2mcU2snx/ORh5YEQ,,,N,0,0,,,2017-01-24 14:43,2017-01-24 15:36,CLEMENTL,CLEMENTL
2036,49429863,751235,10651811,1227198,0,100,N,N,N,CP_Drtn,TT_FinMile,DT_FixedDrtn,RV_OK,TK_Complete,823A-MS-B1.6-1010,"Comp assembly, T&C of TBM & asso eqpmt (incl. surface eqpmt) & start up track tunnel drive from ERS to Tai Kong Po",,,,0,0,0,0,0,0,0,0,2013-07-14 18:00,2014-11-28 18:00,2014-11-28 18:00,2017-06-12 18:00,2017-06-12 18:00,,2017-01-01 00:00,2017-01-01 00:00,,,2014-12-05 18:00,2014-12-05 18:00,,,,CS_MEOB,PT_Normal,,,,,Vf9kgSv0Qfet8t16fGyx6w,1lqW5PRlwEGjGtJ15PfNbw,,,N,0,0,,,2017-01-24 14:43,2017-01-24 15:36,CLEMENTL,CLEMENTL
2037,49429864,751235,10651812,1227198,0,100,N,N,N,CP_Drtn,TT_FinMile,DT_FixedDrtn,RV_OK,TK_Complete,823A-MS-B1.7-1010,Complete dismantling of the North tunnel boring machine,,,,0,0,0,0,0,0,0,0,2013-12-01 18:00,2016-03-03 18:00,2016-03-03 18:00,2017-06-12 18:00,2017-06-12 18:00,,2017-01-01 00:00,2017-01-01 00:00,,,2016-03-03 18:00,2016-03-03 18:00,,,,CS_MEOB,PT_Normal,,,,,SU0ogN5QTCSmMxHfQYkPwA,ATBHGGiZUUeicuake9xp8A,,,N,0,0,,,2017-01-24 14:43,2017-01-24 15:36,CLEMENTL,CLEMENTL
2038,49429865,751235,10651813,1227198,0,100,N,N,N,CP_Drtn,TT_FinMile,DT_FixedDrtn,RV_OK,TK_Complete,823A-MS-B1.1-1010,Confirmation of the order of 1st tunnel boring machine,,,,0,0,0,0,0,0,0,0,2010-09-19 18:00,2010-09-15 18:00,2010-09-15 18:00,2017-06-12 18:00,2017-06-12 18:00,,2017-01-01 00:00,2017-01-01 00:00,,,2010-09-15 18:00,2010-09-15 18:00,,,,CS_MEOB,PT_Normal,,,,,V4ri1HR5RxmMLDEL+kkydQ,GJCcW2z7VE6/tGGiO8n31Q,,,N,0,0,,,2017-01-24 14:43,2017-01-24 15:36,CLEMENTL,CLEMENTL
2039,49429866,751235,10651814,1239099,0,100,N,N,N,CP_Drtn,TT_Mile,DT_FixedDrtn,RV_OK,TK_Complete,823A-TKPS-10,Tai Kong Po Shaft (ready not later than),,,,0,0,0,0,0,0,0,0,2012-04-02 08:00,2012-04-02 08:00,2012-04-02 08:00,2017-06-12 18:00,2017-06-12 18:00,,2017-01-01 00:00,2017-01-01 00:00,,,2012-04-02 08:00,2012-04-02 08:00,,,,CS_MSO,PT_Normal,,,,,fo7Qbp59SmSFYNpSpRRb9A,E6766UI8sUGflfBtul8iSA,,,N,0,0,,,2017-01-24 14:43,2017-01-24 15:36,CLEMENTL,CLEMENTL
2040,49429867,751235,10651814,1239099,0,100,N,N,N,CP_Drtn,TT_FinMile,DT_FixedDrtn,RV_OK,TK_Complete,823A-TKPS-20,"Remove all equipment, plant, materials and temporary works, and reinstate the area after final TBM removal",,,,0,0,0,0,0,0,0,0,2013-11-10 18:00,2016-03-31 00:00,2016-03-31 00:00,2017-06-12 18:00,2017-06-12 18:00,,2017-01-01 00:00,2017-01-01 00:00,,,2016-09-01 08:00,2016-09-01 08:00,,,,CS_MEOB,PT_Normal,,,,,lcBMtkU7TfuN36xgX20mKQ,yhineJuppkyjcYM603tyFQ,,,N,0,0,,,2017-01-24 14:43,2017-01-24 15:36,CLEMENTL,CLEMENTL
