# 823A As-built Programme

Schedule from Primavera P6, 2010-07-19 to 2017-06-12, data date 2017-01-01, A marks actual dates.
This as-built programme is using the / progressed master programme under the Contractor's Monthly Progress Report (Nov / 2016) as a template. Baseline is the RMP ver.D

## Calendars

- 823-6dPH-5: Mon-Sat 08:00-12:00, 13:00-15:00, 16:00-18:00; Sun off. Exceptions (off unless hours are given): 2010-09-23, 2010-10-01, 2010-10-16, 2010-12-25, 2010-12-27, 2011-01-01, 2011-02-03 to 2011-02-05, 2011-04-05, 2011-04-22 to 2011-04-23, 2011-04-25, 2011-05-02, 2011-05-10, 2011-06-06, 2011-07-01, 2011-09-13, 2011-10-01, 2011-10-05, 2011-12-26 to 2011-12-27, 2012-01-02, 2012-01-23 to 2012-01-25, 2012-04-04, 2012-04-06 to 2012-04-07, 2012-04-09, 2012-04-28, 2012-05-01, 2012-06-23, 2012-07-02, 2012-10-01 to 2012-10-02, 2012-10-23, 2012-12-25 to 2012-12-26, 2013-01-01, 2013-02-11 to 2013-02-13, 2013-03-29 to 2013-03-30, 2013-04-01, 2013-04-04, 2013-05-01, 2013-05-17, 2013-06-12, 2013-07-01, 2013-09-20, 2013-10-01, 2013-10-14, 2013-12-25 to 2013-12-26, 2014-01-01, 2014-01-31 to 2014-02-01, 2014-02-03, 2014-04-05, 2014-04-18 to 2014-04-19, 2014-04-21, 2014-05-01, 2014-05-06, 2014-06-02, 2014-07-01, 2014-09-09, 2014-10-01 to 2014-10-02, 2014-12-25 to 2014-12-26, 2015-01-01, 2015-02-19 to 2015-02-21, 2015-04-03 to 2015-04-04, 2015-04-06 to 2015-04-07, 2015-05-01, 2015-05-25, 2015-06-20, 2015-07-01, 2015-09-28, 2015-10-01, 2015-10-21, 2015-12-25 to 2015-12-26, 2016-01-01, 2016-02-08 to 2016-02-10, 2016-03-25 to 2016-03-26, 2016-03-28, 2016-04-04, 2016-05-02, 2016-05-14, 2016-06-09, 2016-07-01, 2016-09-16, 2016-10-01, 2016-10-10, 2016-12-26 to 2016-12-27.
- 823-6dPH: Mon-Sat 08:00-12:00, 13:00-15:00, 16:00-18:00; Sun off. Exceptions (off unless hours are given): 2010-09-23, 2010-10-01, 2010-10-16, 2010-12-25, 2010-12-27, 2011-01-01, 2011-02-03 to 2011-02-05, 2011-04-05, 2011-04-22 to 2011-04-23, 2011-04-25, 2011-05-02, 2011-05-10, 2011-06-06, 2011-07-01, 2011-09-13, 2011-10-01, 2011-10-05, 2011-12-26 to 2011-12-27, 2012-01-02, 2012-01-23 to 2012-01-25, 2012-04-04, 2012-04-06 to 2012-04-07, 2012-04-09, 2012-04-28, 2012-05-01, 2012-06-23, 2012-07-02, 2012-10-01 to 2012-10-02, 2012-10-23, 2012-12-25 to 2012-12-26, 2013-01-01, 2013-02-11 to 2013-02-13, 2013-03-29 to 2013-03-30, 2013-04-01, 2013-04-04, 2013-05-01, 2013-05-17, 2013-06-12, 2013-07-01, 2013-09-20, 2013-10-01, 2013-10-14, 2013-12-25 to 2013-12-26, 2014-01-01, 2014-01-31 to 2014-02-01, 2014-02-03, 2014-04-05, 2014-04-18 to 2014-04-19, 2014-04-21, 2014-05-01, 2014-05-06, 2014-06-02, 2014-07-01, 2014-09-09, 2014-10-01 to 2014-10-02, 2014-12-25 to 2014-12-26, 2015-01-01, 2015-02-19 to 2015-02-21, 2015-04-03 to 2015-04-04, 2015-04-06 to 2015-04-07, 2015-05-01, 2015-05-25, 2015-06-20, 2015-07-01, 2015-09-28, 2015-10-01, 2015-10-21, 2015-12-25 to 2015-12-26, 2016-01-01, 2016-02-08 to 2016-02-10, 2016-03-25 to 2016-03-26, 2016-03-28, 2016-04-04, 2016-05-02, 2016-05-14, 2016-06-09, 2016-07-01, 2016-09-16, 2016-10-01, 2016-10-10, 2016-12-26 to 2016-12-27.
- 823-7d-5: Mon-Sun 08:00-12:00, 13:00-15:00, 16:00-18:00. Exceptions (off unless hours are given): 2010-07-19 to 2012-03-28 08:00-12:00, 13:00-15:00, 16:00-18:00, 2012-03-30 to 2012-05-16 08:00-12:00, 13:00-15:00, 16:00-18:00, 2012-05-18 to 2015-06-30 08:00-12:00, 13:00-15:00, 16:00-18:00.
- 823-7d: Mon-Sun 08:00-12:00, 13:00-15:00, 16:00-18:00. Exceptions (off unless hours are given): 2010-07-19 to 2012-03-28 08:00-12:00, 13:00-15:00, 16:00-18:00, 2012-03-30 to 2012-05-16 08:00-12:00, 13:00-15:00, 16:00-18:00, 2012-05-18 to 2015-06-30 08:00-12:00, 13:00-15:00, 16:00-18:00.

## Resources

| Resource | Group | Unit | Notes |
| --- | --- | --- | --- |
| General Worker | labor |  |  |
| Weld Set | equipment |  |  |
| Metal Worker | labor |  |  |
| General Welder | labor |  |  |
| Backhoe | equipment |  |  |
| Plant and Equipment Operator (Excavator) | labor |  |  |
| Bar Bender & Fixer | labor |  |  |
| PY Concretor | labor |  |  |
| Plant and Equipment Operator (Crawler-mounted Mobile Crane) | labor |  |  |
| Rigger/Metal Formwork Erector | labor |  |  |
| Crawler Crane/Mobile Crane | equipment |  |  |
| Carpenter (Formwork - Civil Construction) | labor |  |  |
| Reinforcement | material | kg |  |
| Plant Operator | labor |  |  |
| Concrete Pump | equipment |  |  |
| Permanent Concrete | material | Cu m |  |
| Concrete 45/20A | material | Cu m | Cut & Cover Tunnel |
| Concrete 20/20C | material | Cu m |  |
| Vibration Roller | equipment |  |  |
| Soil Excavation | material | Cu m |  |
| Excavation Materials | material | Cu m |  |
| Dump Truck | equipment |  |  |
| Truck Driver (Heavy Goods Vehicles) | labor |  |  |
| Breaker | equipment |  |  |
| Rock Excavation | material | Cu m |  |
| Hydraulic Rock Splitter | equipment |  |  |
| G.I Rig/Drill Rig | equipment |  |  |
| Grouting Worker | labor |  |  |
| Grouting Machine | equipment |  |  |
| Air Compressor | equipment |  |  |
| Temporary Concrete | material | Cu m |  |
| Concrete 30/20B | material | Cu m | Bore Tunnel - First stage / Concrete |
| D-Wall Grab | equipment |  |  |
| Hydrofraise Cutter | equipment |  |  |
| D-Wall | material | NO |  |
| Shear Pin | material | NO |  |
| Toe Grout | material | NO |  |
| Segment | material | NO |  |
| Concrete 50/20A | material | Cu m |  |
| Soil Fill | material | Cu m |  |
| Backfilling Materials | material | Cu m |  |
| Skill Labour | labor |  |  |
| Electrical Wireman | labor |  |  |
| Electrical Fitter | labor |  |  |
| Gantry Crane | equipment |  |  |
| Construction Plant Mechanic | labor |  |  |
| TBM | equipment |  |  |
| Tunnel Spoil | material | Cu m |  |
| Driver | labor |  |  |
| Tunnel Lining | material | NO |  |
| Coring Machine | equipment |  |  |
| Concrete 40/20A | material | Cu m | Bore Tunnel - Cast Insitu lining |
| Plasterer | labor |  |  |
| Tiler | labor |  |  |
| Painter and Decorator | labor |  |  |

## Schedule

| ID | WBS | Activity | Type | Duration | Start | Finish | Predecessors | Complete | Planned start | Planned finish | Total float | Free float | Constraint | Calendar | 823A_As-built | 823A_As-built-verified |
| --- | --- | --- | --- | --- | --- | --- | --- | --- | --- | --- | --- | --- | --- | --- | --- | --- |
|  | 1 | **Key Date** |  |  | 2010-07-19 | 2017-06-12 |  |  |  |  |  |  |  |  |  |  |
|  | 1 | **Contractual Dates** |  |  | 2010-07-19 | 2016-12-31 |  |  |  |  |  |  |  |  |  |  |
| KD-1 |  | Commencement of works | milestone | 0d | 2010-07-19 A | 2010-07-19 A |  | 100% |  |  |  |  | start on or after 2010-07-19 | 823-7d | 823A_AB |  |
| KD-2 |  | Completion of the Whole of the Works | milestone | 0d | 2016-12-31 A | 2016-12-31 A | ST-TUT-RE-1010, 823A-NT-NCC-RE-1010, 823A-PRE-SASE-1050, 823A-NT-CC7A-1180, 823A-NT-NCC-RE-1040, 823A-PRE-SASE-1060, 823A-PRE-GSADC-1010, 823A-NT-NCC-RE-1020 | 100% |  |  |  |  | finish on or before 2015-05-10 | 823-7d | 823A_AB | 823A_ABV |
|  | 2 | **Completion of Specified Parts of the Works** |  |  | 2011-12-18 | 2016-05-17 |  |  |  |  |  |  |  |  |  |  |
| KD-3D |  | Complete the temporary diversion of Wang Toi Shan Shan Tsuen Road | milestone | 0d | 2011-12-18 A | 2011-12-18 A | 823A-NT-NLS-DW-1050 | 100% |  |  |  |  | finish on or before 2011-12-18 | 823-7d | 823A_AB | 823A_ABV |
| KD-3A |  | Complete TUT Shaft within Works Area 5.1 & all requirements stated in App. Y3 of PS for ground treatment works by 822 | milestone | 0d | 2012-12-02 A | 2012-12-02 A | 823A-ST-TUT-ELS-1120 | 100% | 2013-05-31 | 2013-05-31 |  |  | finish on or before 2012-12-02 | 823-7d | 823A_AB | 823A_ABV |
| KD-3H |  | Complete commissioning of the East Culvert | milestone | 0d | 2013-03-31 A | 2013-03-31 A | 823A-NT-EC-1010 | 100% | 2013-05-31 | 2013-05-31 |  |  | finish on or before 2013-03-31 | 823-7d | 823A_AB | 823A_ABV |
| KD-3B(i) |  | Complete the down track tunnel structure at tai Kong Po Shaft for the final tunnel connections by Contract 824 | milestone | 0d | 2014-08-04 A | 2014-08-04 A | 823A-NT-TBM-SB-1110 | 100% | 2015-04-01 | 2015-04-01 |  |  | finish on or before 2013-03-03 | 823-7d | 823A_AB | 823A_ABV |
| KD-3C |  | Complete the backfilling works within Works Area 4.10 | milestone | 0d | 2015-12-21 A | 2015-12-21 A | 823A-ST-SNT-RN-1010, 823A-ST-SLS-BF-1090 | 100% | 2016-07-01 | 2016-07-01 |  |  | finish on or before 2014-08-17 | 823-7d | 823A_AB | 823A_ABV |
| KD-3B(ii) |  | Complete the up track tunnel structure at tai Kong Po Shaft for the final tunnel connections by Contract 824 | milestone | 0d | 2016-05-17 A | 2016-05-17 A | 823A-NT-TBM-NB-1110 | 100% | 2016-06-01 | 2016-06-01 |  |  | finish on or before 2013-09-22 | 823-7d | 823A_AB |  |
|  | 3 | **Specified Degrees of Completion of The Works** |  |  | 2013-12-29 | 2016-09-19 |  |  |  |  |  |  |  |  |  |  |
| KD-4A(iv) |  | Remaining cut and cover tunnel (Box 6) of the North Tunnels | milestone | 0d | 2013-12-29 A | 2013-12-29 A | 823A-NT-6A-B7BS-1170, 823A-NT-6A-B6N-1170 | 100% | 2016-05-01 | 2016-05-01 |  |  | finish on or before 2013-12-29 | 823-7d | 823A_AB | 823A_ABV |
| KD-4B |  | Complete the down track tunnel of the South Tunnels, excluding cross passages and backfilling | milestone | 0d | 2014-11-07 A | 2014-11-07 A | 823A-ST-TBM-SB-1090, 823A-ST-SLS-SB-1170, 823A-ST-SCCT-6a-1170, 823A-ST-TUT-SB-1170 | 100% | 2016-05-01 | 2016-05-01 |  |  | finish on or before 2013-10-20 | 823-7d | 823A_AB | 823A_ABV |
| KD-4A(i) |  | Complete downtrack TBM tunnel of N.Tunnels include Box 7A except the roof, and C&C tunnel at 7B&6B both up & down tracks | milestone | 0d | 2015-01-20 A | 2015-01-20 A | 823A-NT-CP27-1080, 823A-NT-CP28-1080, 823A-NT-CP26-1080, 823A-NT-6B-B13N-1090, 823A-NT-NLS-SB-1150 | 100% | 2016-06-01 | 2016-06-01 |  |  | finish on or before 2013-08-04 | 823-7d | 823A_AB | 823A_ABV |
| KD-4C |  | Complete the up track tunnel of the South Tunnels and the Shunt Neck Tunnel w/ Emergency Exit Point,excl. backfilling | milestone | 0d | 2015-11-30 A | 2015-11-30 A | 823A-ST-SCCT-6a-2240, 823A-ST-SNT11-1200, 823A-ST-CP32-1170, 823A-ST-SLS-NB-1170, 823A-ST-EP-ABWF-1030, 823A-ST-SNT1-1090, 823A-ST-SNT12-1200 | 100% | 2016-05-01 | 2016-05-01 |  |  | finish on or before 2014-03-09 | 823-7d | 823A_AB | 823A_ABV |
| KD-4A(ii) |  | Complete the up track TBM tunnel of the North Tunnels | milestone | 0d | 2016-05-31 A | 2016-05-31 A | 823A-NT-CP26-1170, 823A-NT-CP28-1170, 823A-NT-CP27-1170, 823A-NT-TBM-NB-1150 | 100% | 2016-06-01 | 2016-06-01 |  |  | finish on or before 2014-01-19 | 823-7d | 823A_AB | 823A_ABV |
| KD-4A(iii) |  | Complete up track C&C tunnel of North Tunnels at Box 7A except the roof | milestone | 0d | 2016-05-31 A | 2016-05-31 A | 823A-NT-NLS-NB-1160 | 100% | 2016-06-17 | 2016-06-17 |  |  | finish on or before 2014-01-19 | 823-7d | 823A_AB | 823A_ABV |
| KD-4D |  | Complete Closing of the access opening for up track and C&C Tunnel at TUT within Works Area 5.1 & backfilling | milestone | 0d | 2016-09-19 A | 2016-09-19 A | 823A-ST-TUT-BF-1110 | 100% | 2017-01-01 | 2017-01-01 |  |  | finish on or before 2014-08-03 | 823-7d | 823A_AB | 823A_ABV |
|  | 4 | **Schedule of Power on Dates** |  |  | 2017-01-01 | 2017-01-01 |  |  |  |  |  |  |  |  |  |  |
| 823A-POD-10 |  | Overhead Lines Power On - South Tunnels (by Designated C830) | milestone | 0d | 2017-01-01 | 2017-01-01 |  |  |  |  | -825d | 163d | start on 2014-09-29 | 823-7d-5 | 823A_AB |  |
| 823A-POD-20 |  | Overhead Lines Power On - North Tunnels (by Designated C830) | milestone | 0d | 2017-01-01 | 2017-01-01 |  |  |  |  | -783d | 163d | start on 2014-11-10 | 823-7d-5 | 823A_AB |  |
|  | 5 | **Temporary Access Opening for Designated Contractors** |  |  | 2016-02-02 | 2016-02-10 |  |  |  |  |  |  |  |  |  |  |
| 823A-TAODC-10 |  | Access opening for the up track cut and cover tunnel at Tse Uk Tsuen Shaft |  | 29d | 2016-02-02 A | 2016-02-10 A | 823A-ST-TUT-NB-1170 | 100% | 2016-02-02 | 2016-03-09 |  |  |  |  | 823A_AB |  |

Notes:
- KD-2: Planned Up to Date: No delay 261 Calendar days early (Original Completion Date 10 May 2015)
- KD-3D: Planned Up to Date: 109 Calendar days delay (Original Completion Date 28 Aug 2011)
- KD-3A: Planned Up to Date: 271 Calendar days delay (Original Completion Date 25 Dec 2011)
- KD-3H: Planned Up to Date: No delay 16 Calendar days early (Original Completion Date 31 Mar 2013)
- KD-3C: Planned Up to Date: No delay 180 Calendar days early (Original Completion Date 29 Jun 2014)
- KD-4A(iv): Planned Up to Date: Key 4A-3 to be agreed (Preliminary Completion 25 May 2014)
- KD-4B: Planned Up to Date: No delay 29 Calendar days early (Original Completion Date 29 Sep 2013)
- KD-4A(i): Planned Up to Date: Key 4A-1 to be agreed (Preliminary Completion 25 Aug 2013)
- KD-4C: Planned Up to Date: No delay 74 Calendar days early (Original Completion Date 30 Mar 2014)
- KD-4A(ii): Planned Up to Date: Key 4A-2 to be agreed (Preliminary Completion 23 Feb 2014)
- KD-4D: Planned Up to Date: No delay 111 Calendar days early (Original Completion Date 3 Aug 2014)

| ID | WBS | Activity | Type | Duration | Start | Finish | Predecessors | Complete | Planned start | Planned finish | Constraint | Calendar | 823A_As-built |
| --- | --- | --- | --- | --- | --- | --- | --- | --- | --- | --- | --- | --- | --- |
|  | 6 | **Close Out Temporary Access at Tse Uk Tsuen Shaft** |  |  | 2016-02-11 | 2016-03-16 |  |  |  |  |  |  |  |
| 823A-COTATUTS-10 |  | Close out the temporary access opening at Tse Uk Tsuen Shaft |  | 19d | 2016-02-11 A | 2016-03-16 A | 823A-TAODC-10, 823A-ST-TUT-NB-1180 | 100% | 2016-03-10 | 2016-04-05 |  | 823-6dPH | 823A_AB |
|  | 7 | **Tai Kong Po Shaft** |  |  | 2012-04-02 | 2016-03-31 |  |  |  |  |  |  |  |
| 823A-TKPS-10 |  | Tai Kong Po Shaft (ready not later than) | milestone | 0d | 2012-04-02 A | 2012-04-02 A |  | 100% |  |  | start on 2012-04-02 | 823-7d | 823A_AB |
| 823A-TKPS-20 |  | Remove all equipment, plant, materials and temporary works, and reinstate the area after final TBM removal | milestone | 0d | 2016-03-31 A | 2016-03-31 A | 823A-NT-TBM-NB-1130 | 100% | 2016-09-01 | 2016-09-01 | finish on or before 2013-11-10 | 823-7d | 823A_AB |
|  | 8 | **Interface with Contract 823B** |  |  | 2013-03-24 | 2013-03-24 |  |  |  |  |  |  |  |
| 823A-IF823B-10 |  | 823B to complete East Culvert for 823A connection | milestone | 0d | 2013-03-24 A | 2013-03-24 A |  | 100% | 2014-01-31 | 2014-01-31 | finish on 2013-03-24 | 823-7d-5 | 823A_AB |
|  | 9 | **Cost Centre A - Preliminaries** |  |  | 2010-10-04 | 2017-06-12 |  |  |  |  |  |  |  |
|  | 1 | **Milestone A1** |  |  | 2010-10-04 | 2010-10-04 |  |  |  |  |  |  |  |
| 823A-MS-A1-1010 |  | Approval of Contractor's Submission - Preliminary Master Programme (G4.6.1) | milestone | 0d | 2010-10-04 A | 2010-10-04 A | 823A-PRE-PMS-1020 | 100% |  |  | finish on or before 2010-10-10 | 823-7d-5 |  |
| 823A-MS-A1-1020 |  | Approval of Contractor's Submission - Time Chainage Programme (G4.11.1) | milestone | 0d | 2010-10-04 A | 2010-10-04 A | 823A-MS-A1-1010, 823A-PRE-PMS-1040 | 100% |  |  | finish on or before 2010-10-10 | 823-7d-5 |  |
| 823A-MS-A1-1030 |  | Approval of Contractor's Submission - Environmental Management Plan (G5.1.10) | milestone | 0d | 2010-10-04 A | 2010-10-04 A | 823A-MS-A1-1020, 823A-PRE-SPM-1020 | 100% |  |  | finish on or before 2010-10-10 | 823-7d-5 |  |
| 823A-MS-A1-1040 |  | Approval of Contractor's Submission - Quality Plan (G9.2.1) | milestone | 0d | 2010-10-04 A | 2010-10-04 A | 823A-MS-A1-1030, 823A-PRE-SPM-1040 | 100% |  |  | finish on or before 2010-10-10 | 823-7d-5 |  |
| 823A-MS-A1-1050 |  | Approval of Contractor's Submission - Method of Construction (G12.1.1) | milestone | 0d | 2010-10-04 A | 2010-10-04 A | 823A-PRE-GS-1020, 823A-MS-A1-1040 | 100% |  |  | finish on or before 2010-10-10 | 823-7d-5 |  |
| 823A-MS-A1-1060 |  | Approval of Contractor's Submission - Submission Schedule (G12.11.1) | milestone | 0d | 2010-10-04 A | 2010-10-04 A | 823A-MS-A1-1050, 823A-PRE-GS-1040 | 100% |  |  | finish on or before 2010-10-10 | 823-7d-5 |  |
|  | 2 | **Milestone A2** |  |  | 2011-01-28 | 2011-01-28 |  |  |  |  |  |  |  |
| 823A-MS-A2-1010 |  | Engineer's confirmation of satisfactory implementation of Specified Plans | milestone | 0d | 2011-01-28 A | 2011-01-28 A | 823A-PRE-SPM-1050 | 100% |  |  | finish on or before 2011-01-29 | 823-7d-5 |  |
|  | 3 | **Milestone A3** |  |  | 2011-02-26 | 2011-02-26 |  |  |  |  |  |  |  |
| 823A-MS-A3-1010 |  | Prepare and submit Contamination Assessment Report (CAR) & Remediation Action Plan (RAP) for WAs 3.1, 3.2, 3.3 & 3.3A | milestone | 0d | 2011-02-26 A | 2011-02-26 A | 823A-PRE-PW-GS-1160, 823A-PRE-PW-GS-1240 | 100% |  |  | finish on or before 2011-03-27 | 823-7d-5 |  |
|  | 4 | **Milestone A4** |  |  | 2011-07-29 | 2011-07-29 |  |  |  |  |  |  |  |
| 823A-MS-A4-1010 |  | Engineer's confirmation of satisfactory implementation of Specified Plans and Programming Management System | milestone | 0d | 2011-07-29 A | 2011-07-29 A | 823A-PRE-PMS-1050, 823A-PRE-SPM-1060 | 100% |  |  | finish on or before 2011-07-31 | 823-7d-5 |  |
|  | 5 | **Milestone A5** |  |  | 2012-01-27 | 2012-01-27 |  |  |  |  |  |  |  |
| 823A-MS-A5-1010 |  | Approval of detailed Interface Requirements Specifications with the Designated Contractors (Appendix W of the PS) | milestone | 0d | 2012-01-27 A | 2012-01-27 A | 823A-PRE-DIS-1020 | 100% |  |  | finish on or before 2012-01-29 | 823-7d-5 |  |
| 823A-MS-A5-1020 |  | Engineer's confirmation of satisfactory of implementation of Specified Plans | milestone | 0d | 2012-01-27 A | 2012-01-27 A | 823A-PRE-SPM-1070 | 100% |  |  | finish on or before 2012-01-29 | 823-7d-5 |  |

| ID | WBS | Activity | Type | Duration | Start | Finish | Predecessors | Complete | Planned start | Planned finish | Total float | Free float | Constraint | Calendar |
| --- | --- | --- | --- | --- | --- | --- | --- | --- | --- | --- | --- | --- | --- | --- |
|  | 6 | **Milestone A6** |  |  | 2012-07-27 | 2012-07-28 |  |  |  |  |  |  |  |  |
| 823A-MS-A6-1020 |  | Engineer's confirmation of Satisfactory implementation of Specified Plans and Programming Management System | milestone | 0d | 2012-07-27 A | 2012-07-27 A | 823A-PRE-SPM-1080, 823A-PRE-PMS-1060 | 100% |  |  |  |  | finish on or before 2012-07-29 | 823-7d-5 |
| 823A-MS-A6-1010 |  | Approval of detailed Interface Requirements Specifications with the Designated Contractors (Appendix W of the PS) | milestone | 0d | 2012-07-28 A | 2012-07-28 A | 823A-PRE-DIS-1040 | 100% |  |  |  |  | finish on or before 2012-07-29 | 823-7d-5 |
|  | 7 | **Milestone A7** |  |  | 2013-01-31 | 2013-01-31 |  |  |  |  |  |  |  |  |
| 823A-MS-A7-1010 |  | Engineer's confirmation of satisfactory implementation of Specified Plans | milestone | 0d | 2013-01-31 A | 2013-01-31 A | 823A-PRE-SPM-1090 | 100% | 2013-07-31 | 2013-07-31 |  |  | finish on or before 2013-01-27 | 823-7d-5 |
|  | 8 | **Milestone A8** |  |  | 2013-07-31 | 2013-07-31 |  |  |  |  |  |  |  |  |
| 823A-MS-A8-1010 |  | Engineer's confirmation of satisfactory implementation of Specified Plans and Programming Management System | milestone | 0d | 2013-07-31 A | 2013-07-31 A | 823A-PRE-SPM-1100, 823A-PRE-PMS-1070 | 100% | 2013-07-26 | 2013-07-26 |  |  | finish on or before 2013-07-28 | 823-7d-5 |
|  | 9 | **Milestone A9** |  |  | 2014-10-17 | 2014-10-17 |  |  |  |  |  |  |  |  |
| 823A-MS-A9-1010 |  | Complete removal of TBM, all equipment, plant, materials and temp. works, and reinstate the areas at Tai Kong Po Shaft | milestone | 0d | 2014-10-17 A | 2014-10-17 A | 823A-NT-TBM-NB-1130 | 100% | 2015-05-06 | 2015-05-06 |  |  | finish on or before 2013-12-01 | 823-7d-5 |
|  | 10 | **Milestone A10** |  |  | 2016-03-01 | 2016-03-01 |  |  |  |  |  |  |  |  |
| 823A-MS-A10-1010 |  | Complete cross passage construction for ERS to Tse Uk Tsuen | milestone | 0d | 2016-03-01 A | 2016-03-01 A | 823A-ST-CP32-1170, 823A-ST-TUT-NB-1170 | 100% |  |  |  |  | finish on or before 2014-03-16 | 823-7d-5 |
|  | 11 | **Milestone A11** |  |  | 2014-01-31 | 2014-01-31 |  |  |  |  |  |  |  |  |
| 823A-MS-A11-1010 |  | Engineer's confirmation of satisfactory implementation of Specified Plans | milestone | 0d | 2014-01-31 A | 2014-01-31 A | 823A-PRE-SPM-1110 | 100% |  |  |  |  | finish on or before 2014-01-26 | 823-7d-5 |
|  | 12 | **Milestone A12** |  |  | 2016-06-30 | 2016-06-30 |  |  |  |  |  |  |  |  |
| 823A-MS-A12-1010 |  | Complete installation of all cable brackets supplied by Contract 846 inside all the tunnels | milestone | 0d | 2016-06-30 A | 2016-06-30 A | 823A-ST-SNT11-1200 | 100% | 2016-09-01 | 2016-09-01 |  |  | finish on or before 2014-03-16 | 823-7d-5 |
|  | 13 | **Milestone A13** |  |  | 2017-01-18 | 2017-01-18 |  |  |  |  |  |  |  |  |
| 823A-MS-A13-1010 |  | Approval of draft Operating and Maintenance Manuals and draft as-built drawings for Whole of the Works | milestone | 0d | 2017-01-18 | 2017-01-18 | 823A-PRE-OMABD-1020 |  |  |  | -892d | 145d | finish on or before 2014-08-10 | 823-7d-5 |
|  | 14 | **Milestone A14** |  |  | 2017-06-12 | 2017-06-12 |  |  |  |  |  |  |  |  |
| 823A-MS-A14-1010 |  | Approval of Operating and Maintenance Manuals and as-built drawings for the Whole of the Works | milestone | 0d | 2017-06-12 | 2017-06-12 | 823A-PRE-OMABD-1040, 823A-PRE-OMABD-1050 |  |  |  | -855d | 0d | finish on or before 2015-02-08 | 823-7d-5 |
|  | 10 | **Cost Centre B1 - Tunnel Boring Machine (North Tunnels)** |  |  | 2010-09-15 | 2016-03-03 |  |  |  |  |  |  |  |  |
|  | 1 | **Milestone B1.1** |  |  | 2010-09-15 | 2010-09-15 |  |  |  |  |  |  |  |  |
| 823A-MS-B1.1-1010 |  | Confirmation of the order of 1st tunnel boring machine | milestone | 0d | 2010-09-15 A | 2010-09-15 A | 823A-NT-TBM-PR-1020 | 100% |  |  |  |  | finish on or before 2010-09-19 | 823-7d-5 |
|  | 2 | **Milestone B1.2** |  |  | 2010-11-19 | 2010-11-19 |  |  |  |  |  |  |  |  |
| 823A-MS-B1.2-1010 |  | Engineer's confirmation of the acceptance of on-demand bond or bank guarantee in respect of the procurement of TBM | milestone | 0d | 2010-11-19 A | 2010-11-19 A | 823A-NT-TBM-PR-1030 | 100% |  |  |  |  | finish on or before 2010-11-21 | 823-7d-5 |

| ID | WBS | Activity | Type | Duration | Start | Finish | Predecessors | Complete | Planned start | Planned finish | Constraint | Calendar |
| --- | --- | --- | --- | --- | --- | --- | --- | --- | --- | --- | --- | --- |
|  | 3 | **Milestone B1.3** |  |  | 2011-03-25 | 2011-03-25 |  |  |  |  |  |  |
| 823A-MS-B1.3-1010 |  | Commencement of final assembly for tunnel boring machine at the factory | milestone | 0d | 2011-03-25 A | 2011-03-25 A | 823A-D-TBM-TBM-1030, 823A-NT-TBM-PR-1070 | 100% |  |  | finish on or before 2011-03-27 | 823-7d-5 |
|  | 4 | **Milestone B1.4** |  |  | 2011-09-05 | 2011-09-05 |  |  |  |  |  |  |
| 823A-MS-B1.4-1010 |  | Complete fabrication and factory tests of the tunnel boring machine and ready for shipment to Hong Kong | milestone | 0d | 2011-09-05 A | 2011-09-05 A | 823A-NT-TBM-PR-1100 | 100% |  |  | finish on or before 2011-09-11 | 823-7d-5 |
|  | 5 | **Milestone B1.5** |  |  | 2012-11-02 | 2012-11-02 |  |  |  |  |  |  |
| 823A-MS-B1.5-1010 |  | Comp assembly, T&C of TBM & asso eqpmt (incl. surface eqpmt) & start down track tunnel drive from ERS to Tai Kong Po | milestone | 0d | 2012-11-02 A | 2012-11-02 A | 823A-NT-TBM-SB-1010 | 100% |  |  | finish on or before 2012-11-04 | 823-7d-5 |
|  | 6 | **Milestone B1.6** |  |  | 2014-11-28 | 2014-11-28 |  |  |  |  |  |  |
| 823A-MS-B1.6-1010 |  | Comp assembly, T&C of TBM & asso eqpmt (incl. surface eqpmt) & start up track tunnel drive from ERS to Tai Kong Po | milestone | 0d | 2014-11-28 A | 2014-11-28 A | 823A-NT-TBM-NB-1010 | 100% | 2014-12-05 | 2014-12-05 | finish on or before 2013-07-14 | 823-7d-5 |
|  | 7 | **Milestone B1.7** |  |  | 2016-03-03 | 2016-03-03 |  |  |  |  |  |  |
| 823A-MS-B1.7-1010 |  | Complete dismantling of the North tunnel boring machine | milestone | 0d | 2016-03-03 A | 2016-03-03 A | 823A-NT-TBM-NB-1130 | 100% |  |  | finish on or before 2013-12-01 | 823-7d-5 |
|  | 11 | **Cost Centre B2 - Tunnel Boring Machine (South Tunnels)** |  |  | 2011-12-10 | 2015-09-24 |  |  |  |  |  |  |
|  | 1 | **Milestone B2.1** |  |  | 2011-12-10 | 2011-12-10 |  |  |  |  |  |  |
| 823A-MS-B2.1-1010 |  | Confirmation of the order of 2nd tunnel boring machine | milestone | 0d | 2011-12-10 A | 2011-12-10 A | 823A-ST-TBM-PR-1030 | 100% |  |  | finish on or before 2011-12-25 | 823-7d-5 |
|  | 2 | **Milestone B2.2** |  |  | 2012-07-31 | 2012-07-31 |  |  |  |  |  |  |
| 823A-MS-B2.2-1010 |  | Complete fabrication and factory tests of the 2nd tunnel boring machine and delivery to Hong Kong | milestone | 0d | 2012-07-31 A | 2012-07-31 A | 823A-ST-TBM-PR-1090 | 100% |  |  | finish on or before 2012-08-26 | 823-7d-5 |
|  | 3 | **Milestone B2.3** |  |  | 2013-02-28 | 2013-02-28 |  |  |  |  |  |  |
| 823A-MS-B2.3-1010 |  | Comp assembly, T&C of TBM & asso eqpt (incl surface eqpt) & start down track tunnel drive from ERS to Tse Uk Tsuen Shaft | milestone | 0d | 2013-02-28 A | 2013-02-28 A | 823A-ST-TBM-SB-1020 | 100% | 2013-05-31 | 2013-05-31 | finish on or before 2013-03-10 | 823-7d-5 |
|  | 4 | **Milestone B2.4** |  |  | 2014-10-31 | 2014-10-31 |  |  |  |  |  |  |
| 823A-MS-B2.4-1010 |  | Comp assembly, T&C of TBM & asso eqpmt (incl surface eqpmt) & start up track tunnel drive from ERS to Tse Uk Tsuen Shaft | milestone | 0d | 2014-10-31 A | 2014-10-31 A | 823A-ST-TBM-NB-1020 | 100% |  |  | finish on or before 2013-08-18 | 823-7d-5 |
|  | 5 | **Milestone B2.5** |  |  | 2015-09-24 | 2015-09-24 |  |  |  |  |  |  |
| 823A-MS-B2.5-1010 |  | Complete dismantling of the South tunnel boring machine | milestone | 0d | 2015-09-24 A | 2015-09-24 A | 823A-ST-TBM-NB-1070 | 100% | 2015-09-25 | 2015-09-25 | finish on or before 2013-12-08 | 823-7d-5 |
|  | 12 | **Cost Centre C - Tai Kong Po to ERS Tunnel (Up Track)** |  |  | 2012-10-17 | 2016-06-01 |  |  |  |  |  |  |
|  | 1 | **Milestone C1** |  |  | 2012-10-17 | 2012-10-17 |  |  |  |  |  |  |
| 823A-MS-C1-1010 |  | Complete 30% of approved pre-cast segments manufacturing | milestone | 0d | 2012-10-17 A | 2012-10-17 A | 823A-NT-TBM-PR-1190 | 100% | 2013-05-31 | 2013-05-31 | finish on or before 2012-12-09 | 823-7d-5 |

| ID | WBS | Activity | Type | Duration | Start | Finish | Predecessors | Complete | Planned start | Planned finish | Constraint | Calendar |
| --- | --- | --- | --- | --- | --- | --- | --- | --- | --- | --- | --- | --- |
|  | 2 | **Milestone C2** |  |  | 2012-12-03 | 2012-12-03 |  |  |  |  |  |  |
| 823A-MS-C2-1010 |  | Complete 60% of approved pre-cast segments manufacturing | milestone | 0d | 2012-12-03 A | 2012-12-03 A | 823A-NT-TBM-PR-1200 | 100% | 2013-05-31 | 2013-05-31 | finish on or before 2013-03-03 | 823-7d-5 |
|  | 3 | **Milestone C3** |  |  | 2015-01-31 | 2015-01-31 |  |  |  |  |  |  |
| 823A-MS-C3-1010 |  | Complete 20% of tunnel drive | milestone | 0d | 2015-01-31 A | 2015-01-31 A | 823A-NT-TBM-NB-1050 | 100% | 2015-01-28 | 2015-01-28 | finish on or before 2013-08-11 | 823-7d-5 |
|  | 4 | **Milestone C4** |  |  | 2015-07-17 | 2015-07-17 |  |  |  |  |  |  |
| 823A-MS-C4-1010 |  | Complete 80% of tunnel drive | milestone | 0d | 2015-07-17 A | 2015-07-17 A | 823A-NT-TBM-NB-1110 | 100% |  |  | finish on or before 2013-09-29 | 823-7d-5 |
|  | 5 | **Milestone C5** |  |  | 2016-06-01 | 2016-06-01 |  |  |  |  |  |  |
| 823A-MS-C5-1010 |  | Complete tunnel invert, walkway and installation of cable brackets supplied by Contract 846 | milestone | 0d | 2016-06-01 A | 2016-06-01 A | 823A-NT-TBM-NB-1150 | 100% |  |  | finish on or before 2014-01-26 | 823-7d-5 |
|  | 13 | **Cost Centre D - Tai Kong Po to ERS Tunnel (Down Track)** |  |  | 2010-11-25 | 2015-07-17 |  |  |  |  |  |  |
|  | 1 | **Milestone D1** |  |  | 2010-11-25 | 2010-11-25 |  |  |  |  |  |  |
| 823A-MS-D1-1010 |  | Approval of tunnel lining design | milestone | 0d | 2010-11-25 A | 2010-11-25 A | 823A-D-TBM-ML-1040 | 100% |  |  | finish on or before 2010-11-28 | 823-7d-5 |
|  | 2 | **Milestone D2** |  |  | 2011-02-14 | 2011-02-14 |  |  |  |  |  |  |
| 823A-MS-D2-1010 |  | Approval of tunnel segment mould design | milestone | 0d | 2011-02-14 A | 2011-02-14 A | 823A-D-TBM-TSM-1040, 823A-D-TBM-ML-1070 | 100% |  |  | finish on or before 2011-02-17 | 823-7d-5 |
|  | 3 | **Milestone D3** |  |  | 2011-06-18 | 2011-06-18 |  |  |  |  |  |  |
| 823A-MS-D3-1010 |  | Complete fabrication of tunnel segment mould | milestone | 0d | 2011-06-18 A | 2011-06-18 A | 823A-NT-TBM-PR-1160 | 100% |  |  | finish on or before 2011-06-26 | 823-7d-5 |
|  | 4 | **Milestone D4** |  |  | 2012-02-15 | 2012-02-15 |  |  |  |  |  |  |
| 823A-MS-D4-1010 |  | Complete 50% of approved pre-cast segments manufacturing | milestone | 0d | 2012-02-15 A | 2012-02-15 A | 823A-NT-TBM-PR-1170 | 100% |  |  | finish on or before 2012-02-26 | 823-7d-5 |
|  | 5 | **Milestone D5** |  |  | 2012-07-31 | 2012-07-31 |  |  |  |  |  |  |
| 823A-MS-D5-1010 |  | Complete 100% of approved pre-cast segments manufacturing | milestone | 0d | 2012-07-31 A | 2012-07-31 A | 823A-NT-TBM-PR-1180 | 100% |  |  | finish on or before 2012-08-26 | 823-7d-5 |
|  | 6 | **Milestone D6** |  |  | 2013-03-31 | 2013-03-31 |  |  |  |  |  |  |
| 823A-MS-D6-1010 |  | Complete 30% of tunnel drive | milestone | 0d | 2013-03-31 A | 2013-03-31 A | 823A-NT-TBM-SB-1060 | 100% | 2013-07-31 | 2013-07-31 | finish on or before 2013-02-24 | 823-7d-5 |
|  | 7 | **Milestone D7** |  |  | 2014-07-31 | 2014-07-31 |  |  |  |  |  |  |
| 823A-MS-D7-1010 |  | Complete 100% of tunnel drive | milestone | 0d | 2014-07-31 A | 2014-07-31 A | 823A-NT-TBM-SB-1110 | 100% | 2014-08-19 | 2014-08-19 | finish on or before 2013-06-02 | 823-7d-5 |
|  | 8 | **Milestone D8** |  |  | 2015-07-17 | 2015-07-17 |  |  |  |  |  |  |
| 823A-MS-D8-1010 |  | Complete 100% tunnel invert & walkway and complete installation of cable brackets supplied by Contract 846 | milestone | 0d | 2015-07-17 A | 2015-07-17 A | 823A-NT-TBM-SB-1150 | 100% | 2015-07-27 | 2015-07-27 | finish on or before 2013-08-04 | 823-7d-5 |

| ID | WBS | Activity | Type | Duration | Start | Finish | Predecessors | Complete | Planned start | Planned finish | Total float | Free float | Constraint | Calendar |
| --- | --- | --- | --- | --- | --- | --- | --- | --- | --- | --- | --- | --- | --- | --- |
|  | 14 | **Cost Centre E - Tai Kong Po to ERS Tunnel (C&C Tunnel)** |  |  | 2011-12-15 | 2017-03-31 |  |  |  |  |  |  |  |  |
|  | 1 | **Milestone E1** |  |  | 2011-12-15 | 2011-12-15 |  |  |  |  |  |  |  |  |
| 823A-MS-E1-1010 |  | Complete temporary diversion of Wang Toi Shan Shan Tsuen Road | milestone | 0d | 2011-12-15 A | 2011-12-15 A | 823A-NT-NLS-DW-1050 | 100% |  |  |  |  | finish on or before 2011-12-25 | 823-7d-5 |
|  | 2 | **Milestone E2** |  |  | 2012-05-31 | 2012-05-31 |  |  |  |  |  |  |  |  |
| 823A-MS-E2-1010 |  | Complete the temporary base slab of the northern TBM launching shaft | milestone | 0d | 2012-05-31 A | 2012-05-31 A | 823A-NT-NLS-ELS-1110 | 100% |  |  |  |  | finish on or before 2012-06-24 | 823-7d-5 |
|  | 3 | **Milestone E3** |  |  | 2012-12-09 | 2012-12-09 |  |  |  |  |  |  |  |  |
| 823A-MS-E4-1010-E3 |  | Complete excavation of the cut and cover tunnels Box 6B | milestone | 0d | 2012-12-09 A | 2012-12-09 A | 823A-NT-6B-ELS-1090 | 100% | 2013-05-31 | 2013-05-31 |  |  | finish on or before 2012-12-16 | 823-7d-5 |
|  | 4 | **Milestone E4** |  |  | 2012-11-06 | 2012-11-06 |  |  |  |  |  |  |  |  |
| 823A-MS-E6-1010-E4 |  | Complete the Box 7B northern cut and cover tunnels to facilitate construction of temporary Kam Tin Nullah above | milestone | 0d | 2012-11-06 A | 2012-11-06 A | 823A-NT-7B-STR-1010 | 100% |  |  |  |  | finish on or before 2012-11-11 | 823-7d-5 |
|  | 5 | **Milestone E5** |  |  | 2013-01-19 | 2013-01-19 |  |  |  |  |  |  |  |  |
| 823A-MS-E3-1010-E5 |  | Complete temporary diversion of Kam Tin Nullah near Wang Toi Shan Shan Tsuen Road | milestone | 0d | 2013-01-19 A | 2013-01-19 A | 823A-KTRD-S6-1040 | 100% | 2013-05-31 | 2013-05-31 |  |  | finish on or before 2013-02-24 | 823-7d-5 |
|  | 6 | **Milestone E6** |  |  | 2013-12-31 | 2013-12-31 |  |  |  |  |  |  |  |  |
| 823A-MS-E7-1010-E6 |  | Complete the Box 6B northern cut and cover tunnels to Degree 1 | milestone | 0d | 2013-12-31 A | 2013-12-31 A | 823A-NT-6B-B13N-1090 | 100% | 2014-05-09 | 2014-05-09 |  |  | finish on or before 2013-07-14 | 823-7d-5 |
|  | 7 | **Milestone E7** |  |  | 2013-09-21 | 2013-09-21 |  |  |  |  |  |  |  |  |
| 823A-MS-E5-1010-E7 |  | Complete excavation of the cut and cover tunnels Box 6A | milestone | 0d | 2013-09-21 A | 2013-09-21 A | 823A-NT-6A-ELS-1100 | 100% | 2013-09-30 | 2013-09-30 |  |  | finish on or before 2014-01-05 | 823-7d-5 |
|  | 8 | **Milestone E8** |  |  | 2013-12-28 | 2013-12-28 |  |  |  |  |  |  |  |  |
| 823A-MS-E8-1010 |  | Complete the Box 6A northern cut and cover tunnels to Degree 1 | milestone | 0d | 2013-12-28 A | 2013-12-28 A | 823A-NT-6A-B6N-1170 | 100% | 2014-02-08 | 2014-02-08 |  |  | finish on or before 2014-01-05 | 823-7d-5 |
|  | 9 | **Milestone E9** |  |  | 2016-06-30 | 2016-06-30 |  |  |  |  |  |  |  |  |
| 823A-MS-E9-1010 |  | Complete backfilling of the cut & cover tunnel except Box 6A & 7A | milestone | 0d | 2016-06-30 A | 2016-06-30 A | 823A-NT-6A-BF-1010, 823A-NT-CC7A-1180 | 100% | 2016-10-24 | 2016-10-24 |  |  | finish on or before 2014-05-25 | 823-7d-5 |
|  | 10 | **Milestone E10** |  |  | 2016-07-31 | 2016-07-31 |  |  |  |  |  |  |  |  |
| 823A-MS-E10-1010 |  | Reinstate the Kam Tin Nullah near Wang Toi Shan Shan Tsuen Road and complete gauging stations | milestone | 0d | 2016-07-31 A | 2016-07-31 A | 823A-NT-6A-BF-1020 | 100% | 2016-07-01 | 2016-07-01 |  |  | finish on or before 2014-04-06 | 823-7d-5 |
|  | 11 | **Milestone E11** |  |  | 2017-03-31 | 2017-03-31 |  |  |  |  |  |  |  |  |
| 823A-MS-E11-1010 |  | Complete all reinstatement works of the Works Areas | milestone | 0d | 2017-03-31 | 2017-03-31 | 823A-NT-NCC-RE-1010, 823A-NT-NCC-RE-1040, 823A-NT-NCC-RE-1020 |  |  |  | -901d | 73d | finish on or before 2014-10-12 | 823-7d-5 |
|  | 15 | **Cost Centre F - ERS to Tse Uk Tsuen Tunnel (Up Track)** |  |  | 2013-02-28 | 2016-01-30 |  |  |  |  |  |  |  |  |
|  | 1 | **Milestone F1** |  |  | 2013-02-28 | 2013-02-28 |  |  |  |  |  |  |  |  |
| 823A-MS-F1-1010 |  | Complete 50% of approved pre-cast segments manufacturing | milestone | 0d | 2013-02-28 A | 2013-02-28 A | 823A-ST-TBM-PR-1160 | 100% | 2013-05-31 | 2013-05-31 |  |  | finish on or before 2013-03-03 | 823-7d-5 |

| ID | WBS | Activity | Type | Duration | Start | Finish | Predecessors | Complete | Planned start | Planned finish | Constraint | Calendar |
| --- | --- | --- | --- | --- | --- | --- | --- | --- | --- | --- | --- | --- |
|  | 2 | **Milestone F2** |  |  | 2013-05-29 | 2013-05-29 |  |  |  |  |  |  |
| 823A-MS-F2-1010 |  | Complete 100% of approved pre-cast segments manufacturing | milestone | 0d | 2013-05-29 A | 2013-05-29 A | 823A-ST-TBM-PR-1170 | 100% | 2013-05-31 | 2013-05-31 | finish on or before 2013-08-04 | 823-7d-5 |
|  | 3 | **Milestone F3** |  |  | 2015-08-29 | 2015-08-29 |  |  |  |  |  |  |
| 823A-MS-F3-1010 |  | Complete 100% of tunnel drive | milestone | 0d | 2015-08-29 A | 2015-08-29 A | 823A-ST-TBM-NB-1060 | 100% | 2015-08-03 | 2015-08-03 | finish on or before 2013-11-03 | 823-7d-5 |
|  | 4 | **Milestone F4** |  |  | 2016-01-30 | 2016-01-30 |  |  |  |  |  |  |
| 823A-MS-F4-1010 |  | Complete installation of cable brackets supplied by Contract 846 | milestone | 0d | 2016-01-30 A | 2016-01-30 A | 823A-ST-TBM-NB-1090 | 100% | 2014-10-10 | 2014-10-10 | finish on or before 2014-02-02 | 823-7d-5 |
|  | 16 | **Cost Centre G - ERS to Tse Uk Tsuen Tunnel (Down Track)** |  |  | 2012-08-30 | 2014-10-31 |  |  |  |  |  |  |
|  | 1 | **Milestone G1** |  |  | 2012-08-30 | 2012-08-30 |  |  |  |  |  |  |
| 823A-MS-G1-1010 |  | Complete 50% of approved pre-cast segments manufacturing | milestone | 0d | 2012-08-30 A | 2012-08-30 A | 823A-ST-TBM-PR-1140 | 100% |  |  | finish on or before 2012-09-02 | 823-7d-5 |
|  | 2 | **Milestone G2** |  |  | 2012-09-30 | 2012-09-30 |  |  |  |  |  |  |
| 823A-MS-G2-1010 |  | Complete 100% of approved pre-cast segments manufacturing | milestone | 0d | 2012-09-30 A | 2012-09-30 A | 823A-ST-TBM-PR-1150 | 100% | 2012-09-29 | 2012-09-29 | finish on or before 2012-10-07 | 823-7d-5 |
|  | 3 | **Milestone G3** |  |  | 2014-05-20 | 2014-05-20 |  |  |  |  |  |  |
| 823A-MS-G3-1010 |  | Complete 100% of tunnel drive | milestone | 0d | 2014-05-20 A | 2014-05-20 A | 823A-ST-TBM-SB-1060 | 100% | 2014-05-22 | 2014-05-22 | finish on or before 2013-06-02 | 823-7d-5 |
|  | 4 | **Milestone G4** |  |  | 2014-10-31 | 2014-10-31 |  |  |  |  |  |  |
| 823A-MS-G4-1010 |  | Complete tunnel invert, walkway and installation of cable brackets supplied by Contract 846 | milestone | 0d | 2014-10-31 A | 2014-10-31 A | 823A-ST-TBM-SB-1090 | 100% |  |  | finish on or before 2013-10-06 | 823-7d-5 |
|  | 17 | **Cost Centre H - ERS to Tse Uk Tsuen Tunnel (C&C Tunnel Incl. Shunt Neck)** |  |  | 2011-04-16 | 2017-02-28 |  |  |  |  |  |  |
|  | 1 | **Milestone H1** |  |  | 2011-04-16 | 2011-04-16 |  |  |  |  |  |  |
| 823A-MS-H1-1010 |  | Removal of contamination | milestone | 0d | 2011-04-16 A | 2011-04-16 A | 823A-PRE-PW-GS-1110 | 100% |  |  | finish on or before 2011-04-24 | 823-7d-5 |
|  | 2 | **Milestone H2** |  |  | 2012-03-15 | 2012-03-15 |  |  |  |  |  |  |
| 823A-MS-H2-1010 |  | Complete diaphragm wall construction for the launching shaft | milestone | 0d | 2012-03-15 A | 2012-03-15 A | 823A-ST-SLS-DW-1030 | 100% |  |  | finish on or before 2012-03-25 | 823-7d-5 |
|  | 3 | **Milestone H3** |  |  | 2012-06-15 | 2012-06-15 |  |  |  |  |  |  |
| 823A-MS-H3-1010 |  | Complete diaphragm wall construction for the shunt neck | milestone | 0d | 2012-06-15 A | 2012-06-15 A | 823A-ST-SN-DW-1030 | 100% |  |  | finish on or before 2012-06-17 | 823-7d-5 |
|  | 4 | **Milestone H4** |  |  | 2012-10-17 | 2012-10-17 |  |  |  |  |  |  |
| 823A-MS-H4-1010 |  | Complete excavation for the launching shaft | milestone | 0d | 2012-10-17 A | 2012-10-17 A | 823A-ST-SLS-ELS-1110 | 100% |  |  | finish on or before 2012-10-21 | 823-7d-5 |

| ID | WBS | Activity | Type | Duration | Start | Finish | Predecessors | Complete | Planned start | Planned finish | Total float | Free float | Constraint | Calendar |
| --- | --- | --- | --- | --- | --- | --- | --- | --- | --- | --- | --- | --- | --- | --- |
|  | 5 | **Milestone H5** |  |  | 2013-01-21 | 2013-01-21 |  |  |  |  |  |  |  |  |
| 823A-MS-H5-1010 |  | Complete 30% of the cut and cover tunnels | milestone | 0d | 2013-01-21 A | 2013-01-21 A | 823A-ST-SCCT-5b-3040 | 100% | 2013-05-31 | 2013-05-31 |  |  | finish on or before 2013-01-27 | 823-7d-5 |
|  | 6 | **Milestone H6** |  |  | 2013-05-31 | 2013-05-31 |  |  |  |  |  |  |  |  |
| 823A-MS-H6-1010 |  | Complete 60% of the cut and cover tunnels | milestone | 0d | 2013-05-31 A | 2013-05-31 A | 823A-ST-SCCT-2a-4040 | 100% | 2013-08-09 | 2013-08-09 |  |  | finish on or before 2013-05-19 | 823-7d-5 |
|  | 7 | **Milestone H7** |  |  | 2013-12-31 | 2013-12-31 |  |  |  |  |  |  |  |  |
| 823A-MS-H7-1010 |  | Complete the shunt neck tunnel above south Tunnel | milestone | 0d | 2013-12-31 A | 2013-12-31 A | 823A-ST-SNT5-1040 | 100% | 2014-01-03 | 2014-01-03 |  |  | finish on or before 2013-10-13 | 823-7d-5 |
|  | 8 | **Milestone H8** |  |  | 2015-02-28 | 2015-02-28 |  |  |  |  |  |  |  |  |
| 823A-MS-H8-1010 |  | Complete the remaining down track cut and cover tunnel to Degree 1 | milestone | 0d | 2015-02-28 A | 2015-02-28 A | 823A-ST-SLS-SB-1170, 823A-ST-TUT-SB-1170 | 100% | 2015-01-31 | 2015-01-31 |  |  | finish on or before 2013-10-27 | 823-7d-5 |
|  | 9 | **Milestone H9** |  |  | 2015-12-22 | 2015-12-22 |  |  |  |  |  |  |  |  |
| 823A-MS-H9-1010 |  | Complete the remaining up track cut and cover tunnel and the shunt neck to Degree 1 | milestone | 0d | 2015-12-22 A | 2015-12-22 A | 823A-ST-SNT11-1200, 823A-ST-SLS-NB-1170, 823A-ST-TUT-NB-1170 | 100% | 2016-01-13 | 2016-01-13 |  |  | finish on or before 2014-03-16 | 823-7d-5 |
|  | 10 | **Milestone H10** |  |  | 2017-01-01 | 2017-01-01 |  |  |  |  |  |  |  |  |
| 823A-MS-H10-1010 |  | Complete all reinstatement works within the Works Areas except Works Area 4.9 and 4.12C | milestone | 0d | 2017-01-01 | 2017-01-01 | 823A-ST-SNT-BF1-1040 |  |  |  | -1091d | 163d | finish on or before 2014-01-05 | 823-7d-5 |
|  | 11 | **Milestone H11** |  |  | 2017-02-28 | 2017-02-28 |  |  |  |  |  |  |  |  |
| 823A-MS-H11-1010 |  | Complete all tree planting and reinstate Works Area 4.12C | milestone | 0d | 2017-02-28 | 2017-02-28 | 823A-ST-SNT-RN-1020 |  |  |  | -779d | 104d | finish on or before 2015-01-11 | 823-7d-5 |
|  | 18 | **Cost Centre I - Tse Uk Tsuen Work Area** |  |  | 2011-11-11 | 2016-09-18 |  |  |  |  |  |  |  |  |
|  | 1 | **Milestone I1** |  |  | 2011-11-11 | 2011-11-11 |  |  |  |  |  |  |  |  |
| 823A-MS-I1-1010 |  | Complete 100% of diaphragm wall | milestone | 0d | 2011-11-11 A | 2011-11-11 A | 823A-ST-TUT-DW-1040 | 100% |  |  |  |  | finish on or before 2011-12-25 | 823-7d-5 |
|  | 2 | **Milestone I2** |  |  | 2012-02-29 | 2012-02-29 |  |  |  |  |  |  |  |  |
| 823A-MS-I2-1010 |  | Complete pumping test | milestone | 0d | 2012-02-29 A | 2012-02-29 A | 823A-ST-TUT-DW-1050 | 100% |  |  |  |  | finish on or before 2012-03-25 | 823-7d-5 |
|  | 3 | **Milestone I3** |  |  | 2012-05-04 | 2012-05-04 |  |  |  |  |  |  |  |  |
| 823A-MS-I3-1010 |  | Complete 30% of excavation | milestone | 0d | 2012-05-04 A | 2012-05-04 A | 823A-ST-TUT-ELS-1050 | 100% |  |  |  |  | finish on or before 2012-05-06 | 823-7d-5 |
|  | 4 | **Milestone I4** |  |  | 2013-07-14 | 2013-07-14 |  |  |  |  |  |  |  |  |
| 823A-MS-I4-1010 |  | Complete the temporary base slab for Tse Uk Tsuen Shaft | milestone | 0d | 2013-07-14 A | 2013-07-14 A | 823A-ST-TUT-ELS-1160 | 100% | 2015-11-01 | 2015-11-01 |  |  | finish on or before 2013-05-12 | 823-7d-5 |
|  | 5 | **Milestone I5** |  |  | 2014-10-31 | 2014-10-31 |  |  |  |  |  |  |  |  |
| 823A-MS-I5-1010 |  | Complete the down track cut and cover tunnel to Degree 1 | milestone | 0d | 2014-10-31 A | 2014-10-31 A | 823A-ST-TUT-SB-1170 | 100% | 2014-11-20 | 2014-11-20 |  |  | finish on or before 2013-10-27 | 823-7d-5 |

| ID | WBS | Activity | Type | Duration | Start | Finish | Predecessors | Complete | Planned start | Planned finish | Constraint | Calendar |
| --- | --- | --- | --- | --- | --- | --- | --- | --- | --- | --- | --- | --- |
|  | 6 | **Milestone I6** |  |  | 2016-01-12 | 2016-01-12 |  |  |  |  |  |  |
| 823A-MS-I6-1010 |  | Complete the up track cut and cover tunnel to Degree 1 | milestone | 0d | 2016-01-12 A | 2016-01-12 A | 823A-ST-TUT-NB-1170 | 100% | 2016-02-03 | 2016-02-03 | finish on or before 2014-03-16 | 823-7d-5 |
|  | 7 | **Milestone I7** |  |  | 2016-01-12 | 2016-01-12 |  |  |  |  |  |  |
| 823A-MS-I7-1010 |  | Complete closing of the access opening | milestone | 0d | 2016-01-12 A | 2016-01-12 A | 823A-ST-TUT-NB-1240 | 100% | 2016-04-20 | 2016-04-20 | finish on or before 2014-06-01 | 823-7d-5 |
|  | 8 | **Milestone I8** |  |  | 2016-09-18 | 2016-09-18 |  |  |  |  |  |  |
| 823A-MS-I8-1010 |  | Complete backfilling of the shaft | milestone | 0d | 2016-09-18 A | 2016-09-18 A | 823A-ST-TUT-BF-1110 | 100% | 2016-10-03 | 2016-10-03 | finish on or before 2014-08-10 | 823-7d-5 |
|  | 19 | **Cost Centre J - Associated Works** |  |  | 2011-05-21 | 2017-03-31 |  |  |  |  |  |  |
|  | 1 | **Milestone J1** |  |  | 2011-05-21 | 2011-05-21 |  |  |  |  |  |  |
| 823A-MS-J1-1010 |  | Complete installation of ground settlement markers within Works Areas 3.1, 3.2 and 3.3 | milestone | 0d | 2011-05-21 A | 2011-05-21 A | 823A-PRE-PW-IM-1010 | 100% |  |  | finish on or before 2011-05-29 | 823-7d-5 |
|  | 2 | **Milestone J2** |  |  | 2011-10-22 | 2011-10-22 |  |  |  |  |  |  |
| 823A-MS-J2-1010 |  | Complete ground treatment works adjacent to cut and cover tunnels at the northern launching shaft | milestone | 0d | 2011-10-22 A | 2011-10-22 A | 823A-NT-TBM-PR-1120 | 100% |  |  | finish on or before 2011-10-23 | 823-7d-5 |
|  | 3 | **Milestone J3** |  |  | 2012-01-27 | 2012-01-27 |  |  |  |  |  |  |
| 823A-MS-J3-1010 |  | Submit instrumentation monitoring report | milestone | 0d | 2012-01-27 A | 2012-01-27 A | 823A-PRE-PW-IM-1020 | 100% |  |  | finish on or before 2012-01-29 | 823-7d-5 |
|  | 4 | **Milestone J4** |  |  | 2012-06-21 | 2012-06-21 |  |  |  |  |  |  |
| 823A-MS-J4-1010 |  | Submit instrumentation monitoring report | milestone | 0d | 2012-06-21 A | 2012-06-21 A | 823A-PRE-PW-IM-1030 | 100% |  |  | finish on or before 2012-06-24 | 823-7d-5 |
|  | 5 | **Milestone J5** |  |  | 2012-10-31 | 2012-10-31 |  |  |  |  |  |  |
| 823A-MS-J5-1010 |  | Complete ground treatment works adjacent to Tse Uk Tsuen shaft | milestone | 0d | 2012-10-31 A | 2012-10-31 A | 823A-ST-TUT-GT-1040 | 100% |  |  | finish on or before 2012-11-25 | 823-7d-5 |
|  | 6 | **Milestone J6** |  |  | 2013-02-28 | 2013-02-28 |  |  |  |  |  |  |
| 823A-MS-J6-1010 |  | Submit instrumentation monitoring report | milestone | 0d | 2013-02-28 A | 2013-02-28 A | 823A-PRE-PW-IM-1040 | 100% | 2013-10-19 | 2013-10-19 | finish on or before 2013-03-03 | 823-7d-5 |
|  | 7 | **Milestone J7** |  |  | 2013-07-31 | 2013-07-31 |  |  |  |  |  |  |
| 823A-MS-J7-1010 |  | Submit instrumentation monitoring report | milestone | 0d | 2013-07-31 A | 2013-07-31 A | 823A-PRE-PW-IM-1050 | 100% | 2014-03-20 | 2014-03-20 | finish on or before 2013-08-04 | 823-7d-5 |
|  | 8 | **Milestone J8** |  |  | 2016-01-25 | 2016-01-25 |  |  |  |  |  |  |
| 823A-MS-J8-1010 |  | Complete cross passages construction for Tai Kong Po to ERS Tunnels | milestone | 0d | 2016-01-25 A | 2016-01-25 A | 823A-NT-CP28-1170, 823A-NT-CP27-1170, 823A-NT-CP26-1170 | 100% | 2016-01-30 | 2016-01-30 | finish on or before 2014-01-26 | 823-7d-5 |
|  | 9 | **Milestone J9** |  |  | 2014-02-23 | 2014-02-23 |  |  |  |  |  |  |
| 823A-MS-J9-1010 |  | Submit instrumentation monitoring report | milestone | 0d | 2014-02-23 A | 2014-02-23 A | 823A-PRE-PW-IM-1060 | 100% | 2014-02-28 | 2014-02-28 | finish on or before 2014-03-02 | 823-7d-5 |

| ID | WBS | Activity | Type | Duration | Start | Finish | Predecessors | Complete | Planned start | Planned finish | Total float | Free float | Constraint | Calendar | 823A_As-built |
| --- | --- | --- | --- | --- | --- | --- | --- | --- | --- | --- | --- | --- | --- | --- | --- |
|  | 10 | **Milestone J10** |  |  | 2014-07-31 | 2014-07-31 |  |  |  |  |  |  |  |  |  |
| 823A-MS-J10-1010 |  | Submit instrumentation monitoring report | milestone | 0d | 2014-07-31 A | 2014-07-31 A | 823A-PRE-PW-IM-1070 | 100% | 2014-08-31 | 2014-08-31 |  |  | finish on or before 2014-08-03 | 823-7d-5 |  |
|  | 11 | **Milestone J11** |  |  | 2015-01-25 | 2015-01-25 |  |  |  |  |  |  |  |  |  |
| 823A-MS-J11-1010 |  | Complete the East Culvert in Works Area 4.4 | milestone | 0d | 2015-01-25 A | 2015-01-25 A | 823A-NT-6A-BF-1020, 823A-NT-6A-BF-1050 | 100% | 2014-12-31 | 2014-12-31 |  |  | finish on or before 2014-04-06 | 823-7d-5 |  |
|  | 12 | **Milestone J12** |  |  | 2017-03-31 | 2017-03-31 |  |  |  |  |  |  |  |  |  |
| 823A-MS-J12-1010 |  | Complete all works | milestone | 0d | 2017-03-31 | 2017-03-31 | 823A-NT-NCC-RE-1020, 823A-NT-NCC-RE-1040, 823A-NT-NCC-RE-1010 |  |  |  | -901d | 73d | finish on or before 2014-10-12 | 823-7d-5 |  |
|  | 20 | **Cost Centre K - Tai Lam Kok Baring Facility** |  |  |  |  |  |  |  |  |  |  |  |  |  |
|  | 1 | **Milestone K1** |  |  |  |  |  |  |  |  |  |  |  |  |  |
|  | 2 | **Milestone K2** |  |  |  |  |  |  |  |  |  |  |  |  |  |
|  | 3 | **Milestone K3** |  |  |  |  |  |  |  |  |  |  |  |  |  |
|  | 21 | **Access Dates for Works Areas** |  |  | 2010-07-19 | 2017-01-01 |  |  |  |  |  |  |  |  |  |
|  | 1 | **First Possession Dates** |  |  | 2010-07-19 | 2013-04-01 |  |  |  |  |  |  |  |  |  |
| 823A-AD1-WA1-1010 |  | Works Area 1.15A | milestone | 0d | 2010-07-19 A | 2010-07-19 A |  | 100% |  |  |  |  | start on 2010-07-19 | 823-7d-5 | 823A_AB |
| 823A-AD1-WA3-1090 |  | Works Area 3.11 | milestone | 0d | 2010-08-16 A | 2010-08-16 A |  | 100% |  |  |  |  | start on 2010-08-16 | 823-7d-5 | 823A_AB |
| 823A-AD1-WA3-1030 |  | Works Area 3.1 | milestone | 0d | 2010-12-06 A | 2010-12-06 A |  | 100% |  |  |  |  | start on 2010-12-06 | 823-7d-5 | 823A_AB |
| 823A-AD1-WA3-1040 |  | Works Area 3.2 | milestone | 0d | 2010-12-06 A | 2010-12-06 A |  | 100% |  |  |  |  | start on 2010-12-06 | 823-7d-5 | 823A_AB |
| 823A-AD1-WA3-1050 |  | Works Area 3.3 | milestone | 0d | 2010-12-06 A | 2010-12-06 A |  | 100% |  |  |  |  | start on 2010-12-06 | 823-7d-5 | 823A_AB |
| 823A-AD1-WA3-1060 |  | Works Area 3.3A | milestone | 0d | 2010-12-06 A | 2010-12-06 A |  | 100% |  |  |  |  | start on 2010-12-06 | 823-7d-5 | 823A_AB |
| 823A-AD1-WA3-1070 |  | Works Area 3.3B | milestone | 0d | 2010-12-06 A | 2010-12-06 A |  | 100% |  |  |  |  | start on 2010-12-06 | 823-7d-5 | 823A_AB |
| 823A-AD1-WA4-1110 |  | Works Area 4.2 | milestone | 0d | 2010-12-06 A | 2010-12-06 A |  | 100% |  |  |  |  | start on 2010-12-06 | 823-7d-5 | 823A_AB |
| 823A-AD1-WA4-1120 |  | Works Area 4.3 | milestone | 0d | 2010-12-06 A | 2010-12-06 A |  | 100% |  |  |  |  | start on 2010-12-06 | 823-7d-5 | 823A_AB |
| 823A-AD1-WA4-1130 |  | Works Area 4.4 | milestone | 0d | 2010-12-06 A | 2010-12-06 A |  | 100% |  |  |  |  | start on 2010-12-06 | 823-7d-5 | 823A_AB |
| 823A-AD1-WA4-1140 |  | Works Area 4.9 | milestone | 0d | 2010-12-06 A | 2010-12-06 A |  | 100% |  |  |  |  | start on 2010-12-06 | 823-7d-5 | 823A_AB |
| 823A-AD1-WA4-1150 |  | Works Area 4.9A | milestone | 0d | 2010-12-06 A | 2010-12-06 A |  | 100% |  |  |  |  | start on 2010-12-06 | 823-7d-5 | 823A_AB |
| 823A-AD1-WA4-1160 |  | Works Area 4.10 | milestone | 0d | 2010-12-06 A | 2010-12-06 A |  | 100% |  |  |  |  | start on 2010-12-06 | 823-7d-5 | 823A_AB |
| 823A-AD1-WA4-1170 |  | Works Area 4.10A | milestone | 0d | 2010-12-06 A | 2010-12-06 A |  | 100% |  |  |  |  | start on 2010-12-06 | 823-7d-5 | 823A_AB |
| 823A-AD1-WA4-1180 |  | Works Area 4.11 | milestone | 0d | 2010-12-06 A | 2010-12-06 A |  | 100% |  |  |  |  | start on 2010-12-06 | 823-7d-5 | 823A_AB |
| 823A-AD1-WA4-1190 |  | Works Area 4.12A | milestone | 0d | 2010-12-06 A | 2010-12-06 A |  | 100% |  |  |  |  | start on 2010-12-06 | 823-7d-5 | 823A_AB |
| 823A-AD1-WA4-1200 |  | Works Area 4.12B | milestone | 0d | 2010-12-06 A | 2010-12-06 A |  | 100% |  |  |  |  | start on 2010-12-06 | 823-7d-5 | 823A_AB |
| 823A-AD1-WA4-1210 |  | Works Area 4.12C | milestone | 0d | 2010-12-06 A | 2010-12-06 A |  | 100% |  |  |  |  | start on 2010-12-06 | 823-7d-5 | 823A_AB |
| 823A-AD1-WA4-1230 |  | Works Area 4.15 | milestone | 0d | 2010-12-06 A | 2010-12-06 A |  | 100% |  |  |  |  | start on 2010-12-06 | 823-7d-5 | 823A_AB |
| 823A-AD1-WA4-1240 |  | Works Area 4.15A | milestone | 0d | 2010-12-06 A | 2010-12-06 A |  | 100% |  |  |  |  | start on 2010-12-06 | 823-7d-5 | 823A_AB |
| 823A-AD1-WA4-1250 |  | Works Area 4.15B | milestone | 0d | 2010-12-06 A | 2010-12-06 A |  | 100% |  |  |  |  | start on 2010-12-06 | 823-7d-5 | 823A_AB |
| 823A-AD1-WA5-1270 |  | Works Area 5.1 | milestone | 0d | 2011-01-03 A | 2011-01-03 A |  | 100% |  |  |  |  | start on 2011-01-03 | 823-7d-5 | 823A_AB |
| 823A-AD1-WA5-1290 |  | Works Area 5.3 | milestone | 0d | 2011-01-03 A | 2011-01-03 A |  | 100% |  |  |  |  | start on 2011-01-03 | 823-7d-5 | 823A_AB |
| 823A-AD1-WA3-1080 |  | Works Area 3.4 (subject to SLG approval) | milestone | 0d | 2011-03-20 A | 2011-03-20 A | 823A-PRE-GS-1300 | 100% |  |  |  |  | start on 2011-03-20 | 823-7d-5 | 823A_AB |
| 823A-AD1-WA4-1220 |  | Works Area 4.13 (subject to SLG approval) | milestone | 0d | 2011-03-20 A | 2011-03-20 A | 823A-PRE-GS-1300 | 100% |  |  |  |  | start on 2011-03-20 | 823-7d-5 | 823A_AB |
| 823A-AD1-WA4-1260 |  | Works Area 4.16 (subject to SLG approval) | milestone | 0d | 2011-03-20 A | 2011-03-20 A | 823A-PRE-GS-1300 | 100% |  |  |  |  | start on 2011-03-20 | 823-7d-5 | 823A_AB |
| 823A-AD1-WA5-1280 |  | Works Area 5.2 (subject to SLG approval) | milestone | 0d | 2011-03-20 A | 2011-03-20 A | 823A-PRE-GS-1300 | 100% |  |  |  |  | start on 2011-03-20 | 823-7d-5 | 823A_AB |
| 823A-AD1-WA4-1100 |  | Works Area 4.1 (subject to SLG approval) | milestone | 0d | 2011-04-07 A | 2011-04-07 A | 823A-PRE-GS-1300 | 100% |  |  |  |  | start on 2011-04-07 | 823-7d-5 | 823A_AB |
| 823A-AD1-WA1-1020 |  | Works Area 1.15B (Option No. 1) | milestone | 0d | 2013-04-01 A | 2013-04-01 A |  | 100% | 2014-02-01 | 2014-02-01 |  |  | start on 2013-04-01 | 823-7d-5 | 823A_AB |

| ID | WBS | Activity | Type | Duration | Start | Finish | Predecessors | Complete | Planned start | Planned finish | Total float | Free float | Constraint | Calendar | 823A_As-built |
| --- | --- | --- | --- | --- | --- | --- | --- | --- | --- | --- | --- | --- | --- | --- | --- |
|  | 2 | **Second Possession Dates** |  |  | 2017-01-01 | 2017-01-01 |  |  |  |  |  |  |  |  |  |
| 823A-AD2-WA3.1 |  | Works Area 3.1 | milestone | 0d | 2017-01-01 | 2017-01-01 |  |  |  |  | -615d | 163d | start on 2015-04-27 | 823-7d-5 | 823A_AB |
| 823A-AD2-WA3.2 |  | Works Area 3.2 | milestone | 0d | 2017-01-01 | 2017-01-01 |  |  |  |  | -615d | 163d | start on 2015-04-27 | 823-7d-5 | 823A_AB |
| 823A-AD2-WA4.15B |  | Works Area 4.15B | milestone | 0d | 2017-01-01 | 2017-01-01 |  |  |  |  | -601d | 163d | start on 2015-05-11 | 823-7d-5 | 823A_AB |
| 823A-AD2-WA5.3 |  | Works Area 5.3 | milestone | 0d | 2017-01-01 | 2017-01-01 |  |  |  |  | -944d | 163d | start on 2014-06-02 | 823-7d-5 | 823A_AB |
|  | 22 | **Handover Dates for Works Areas** |  |  | 2016-02-01 | 2017-02-28 |  |  |  |  |  |  |  |  |  |
|  | 1 | **First Return Dates** |  |  | 2016-02-01 | 2017-02-28 |  |  |  |  |  |  |  |  |  |
| 823A-HO1-WA4-1240 |  | Works Area 4.15 | milestone | 0d | 2016-02-01 A | 2016-02-01 A |  | 100% |  |  |  |  | finish on 2014-06-29 | 823-7d-5 | 823A_AB |
| 823A-HO1-WA4-1250 |  | Works Area 4.15A | milestone | 0d | 2016-02-01 A | 2016-02-01 A |  | 100% |  |  |  |  | finish on 2014-06-29 | 823-7d-5 | 823A_AB |
| 823A-HO1-WA4-1260 |  | Works Area 4.15B | milestone | 0d | 2016-02-01 A | 2016-02-01 A |  | 100% |  |  |  |  | finish on 2014-06-29 | 823-7d-5 | 823A_AB |
| 823A-HO1-WA4-1270 |  | Works Area 4.16 (subject to SLG approval) | milestone | 0d | 2016-02-01 A | 2016-02-01 A | 823A-HO1-WA4-1240 FF | 100% |  |  |  |  | finish on or before 2014-06-29 | 823-7d-5 | 823A_AB |
| 823A-HO1-WA4-1180 |  | Works Area 4.11 | milestone | 0d | 2016-02-19 A | 2016-02-19 A |  | 100% | 2016-02-01 | 2016-02-01 |  |  | finish on 2014-06-29 | 823-7d-5 | 823A_AB |
| 823A-HO1-WA4-1160 |  | Works Area 4.10 | milestone | 0d | 2016-06-01 A | 2016-06-01 A |  | 100% |  |  |  |  | finish on 2014-06-29 | 823-7d-5 | 823A_AB |
| 823A-HO1-WA4-1170 |  | Works Area 4.10A | milestone | 0d | 2016-06-01 A | 2016-06-01 A |  | 100% |  |  |  |  | finish on 2014-06-29 | 823-7d-5 | 823A_AB |
| 823A-HO1-WA4-1230 |  | Works Area 4.13 (subject to SLG approval) | milestone | 0d | 2016-06-01 A | 2016-06-01 A |  | 100% |  |  |  |  | finish on 2015-05-10 | 823-7d-5 | 823A_AB |
| 823A-HO1-WA3-1040 |  | Works Area 3.2 | milestone | 0d | 2016-07-09 A | 2016-07-09 A |  | 100% | 2016-07-01 | 2016-07-01 |  |  | finish on 2013-08-04 | 823-7d-5 | 823A_AB |
| 823A-HO1-WA3-1030 |  | Works Area 3.1 | milestone | 0d | 2016-07-23 A | 2016-07-23 A |  | 100% | 2016-07-01 | 2016-07-01 |  |  | finish on 2013-01-27 | 823-7d-5 | 823A_AB |
| 823A-HO1-WA4-1100 |  | Works Area 4.1 (subject to SLG approval) | milestone | 0d | 2016-07-24 A | 2016-07-24 A | 823A-NT-6A-BF-1060 | 100% | 2016-07-09 | 2016-07-09 |  |  | finish on 2015-01-13 | 823-7d-5 | 823A_AB |
| 823A-HO1-WA4-1120 |  | Works Area 4.3 | milestone | 0d | 2016-09-14 A | 2016-09-14 A |  | 100% | 2016-09-01 | 2016-09-01 |  |  | finish on 2015-05-10 | 823-7d-5 | 823A_AB |
| 823A-HO1-WA4-1130 |  | Works Area 4.4 | milestone | 0d | 2016-09-14 A | 2016-09-14 A |  | 100% | 2016-09-01 | 2016-09-01 |  |  | finish on 2015-05-10 | 823-7d-5 | 823A_AB |
| 823A-HO1-WA4-1140 |  | Works Area 4.9 | milestone | 0d | 2016-09-19 A | 2016-09-19 A | 823A-ST-SNT-RN-1030 | 100% | 2017-08-11 | 2017-08-11 |  |  | finish on 2015-08-30 | 823-7d-5 | 823A_AB |
| 823A-HO1-WA4-1150 |  | Works Area 4.9A | milestone | 0d | 2016-09-19 A | 2016-09-19 A | 823A-ST-SNT-RN-1030 | 100% | 2017-08-11 | 2017-08-11 |  |  | finish on 2015-08-30 | 823-7d-5 | 823A_AB |
| 823A-HO1-WA1-1010 |  | Works Area 1.15A | milestone | 0d | 2017-01-01 | 2017-01-01 |  |  |  |  | -656d | 163d | finish on 2015-03-16 | 823-7d | 823A_AB |
| 823A-HO1-WA1-1020 |  | Works Area 1.15B | milestone | 0d | 2017-01-01 | 2017-01-01 |  |  |  |  | -656d | 163d | finish on 2015-03-16 | 823-7d-5 | 823A_AB |
| 823A-HO1-WA3-1050 |  | Works Area 3.3 | milestone | 0d | 2017-01-01 | 2017-01-01 |  |  |  |  | -601d | 163d | finish on 2015-05-10 | 823-7d-5 | 823A_AB |
| 823A-HO1-WA3-1060 |  | Works Area 3.3A | milestone | 0d | 2017-01-01 | 2017-01-01 |  |  |  |  | -552d | 163d | finish on 2015-06-28 | 823-7d-5 | 823A_AB |
| 823A-HO1-WA3-1070 |  | Works Area 3.3B | milestone | 0d | 2017-01-01 | 2017-01-01 |  |  |  |  | -601d | 163d | finish on 2015-05-10 | 823-7d-5 | 823A_AB |
| 823A-HO1-WA3-1080 |  | Works Area 3.4 (subject to SLG approval) | milestone | 0d | 2017-01-01 | 2017-01-01 |  |  |  |  | -1435d | 163d | finish on 2013-01-26 | 823-7d-5 | 823A_AB |
| 823A-HO1-WA3-1090 |  | Works Area 3.11 | milestone | 0d | 2017-01-01 | 2017-01-01 |  |  |  |  | -601d | 163d | finish on 2015-05-10 | 823-7d-5 | 823A_AB |
| 823A-HO1-WA4-1110 |  | Works Area 4.2 | milestone | 0d | 2017-01-01 | 2017-01-01 |  |  |  |  | -601d | 163d | finish on 2015-05-10 | 823-7d-5 | 823A_AB |
| 823A-HO1-WA4-1200 |  | Works Area 4.12B | milestone | 0d | 2017-01-01 | 2017-01-01 |  |  |  |  | -916d | 163d | finish on 2014-06-29 | 823-7d-5 | 823A_AB |
| 823A-HO1-WA4-1210 |  | Works Area 4.12C | milestone | 0d | 2017-01-01 | 2017-01-01 |  |  |  |  | -601d | 163d | finish on 2015-05-10 | 823-7d-5 | 823A_AB |
| 823A-HO1-WA5-1280 |  | Works Area 5.1 | milestone | 0d | 2017-01-01 | 2017-01-01 |  |  |  |  | -489d | 0d | finish on 2015-08-30 | 823-7d-5 | 823A_AB |
| 823A-HO1-WA5-1290 |  | Works Area 5.2 (subject to SLG approval) | milestone | 0d | 2017-01-01 | 2017-01-01 | 823A-HO1-WA5-1280 FF |  |  |  | -489d | 163d | finish on 2015-08-30 | 823-7d-5 | 823A_AB |
| 823A-HO1-WA5-1300 |  | Works Area 5.3 | milestone | 0d | 2017-01-01 | 2017-01-01 |  |  |  |  | -1063d | 163d | finish on 2014-02-02 | 823-7d-5 | 823A_AB |
| 823A-HO1-WA4-1190 |  | Works Area 4.12A | milestone | 0d | 2017-02-28 | 2017-02-28 | 823A-ST-SNT-RN-1030 |  |  |  | -548d | 104d | finish on 2015-08-30 | 823-7d-5 | 823A_AB |

| ID | WBS | Activity | Type | Duration | Start | Finish | Predecessors | Complete | Planned start | Planned finish | Total float | Free float | Constraint | Calendar | 823A_As-built |
| --- | --- | --- | --- | --- | --- | --- | --- | --- | --- | --- | --- | --- | --- | --- | --- |
|  | 2 | **Second Return Dates** |  |  | 2017-01-01 | 2017-01-01 |  |  |  |  |  |  |  |  |  |
| 823A-HO2-WA3-1010 |  | Works Area 3.1 | milestone | 0d | 2017-01-01 | 2017-01-01 |  |  |  |  | -552d | 163d | finish on 2015-06-28 | 823-7d-5 | 823A_AB |
| 823A-HO2-WA3-1020 |  | Works Area 3.2 | milestone | 0d | 2017-01-01 | 2017-01-01 |  |  |  |  | -552d | 163d | finish on 2015-06-28 | 823-7d-5 | 823A_AB |
| 823A-HO2-WA4-1030 |  | Works Area 4.15B | milestone | 0d | 2017-01-01 | 2017-01-01 |  |  |  |  | -235d | 163d | finish on 2016-05-10 | 823-7d-5 | 823A_AB |
| 823A-HO2-WA5-1040 |  | Works Area 5.3 | milestone | 0d | 2017-01-01 | 2017-01-01 |  |  |  |  | -489d | 163d | finish on 2015-08-30 | 823-7d-5 | 823A_AB |
|  | 23 | **Interfacing Contractors** |  |  | 2012-09-25 | 2016-01-08 |  |  |  |  |  |  |  |  |  |
|  | 1 | **Contract 823A / Contract 824** |  |  | 2014-07-26 | 2016-01-08 |  |  |  |  |  |  |  |  |  |
| 823A-FC-824-1010 |  | Position crane for TBM retrieval (down track) |  | 7d | 2014-07-26 A | 2014-08-02 A | 823A-NT-TBM-SB-1120 SS | 100% | 2014-07-02 | 2014-07-09 |  |  |  | 823-6dPH | 823A_AB |
| 823A-IFC-824-1020 |  | TBM Break-in and Retrieval (down track) |  | 24d | 2014-08-04 A | 2014-11-04 A | 823A-FC-824-1010 | 100% | 2014-08-04 | 2014-08-30 |  |  |  | 823-6dPH | 823A_AB |
| 823A-IFC-824-1030 |  | Position crane for TBM retrieval (up track) |  | 7d | 2015-12-01 A | 2015-12-08 A | 823A-NT-TBM-NB-1120 SS | 100% |  |  |  |  |  | 823-6dPH | 823A_AB |
| 823A-IFC-824-1040 |  | TBM Break-in and Retrieval (up track) |  | 24d | 2015-12-09 A | 2016-01-08 A | 823A-IFC-824-1030 | 100% |  |  |  |  |  | 823-6dPH | 823A_AB |
|  | 2 | **Contract 823A / Contract 823B** |  |  | 2013-11-27 | 2013-11-28 |  |  |  |  |  |  |  |  |  |
| 823A-IFC-823B-2010 |  | Final tunnel connections by 823B at southern cut and cover tunnels | milestone | 0d | 2013-11-27 A | 2013-11-27 A | 823A-ST-SCCT-1b-4080 | 100% | 2014-05-13 | 2014-05-13 |  |  | finish on or before 2013-08-04 | 823-7d-5 | 823A_AB |
| 823A-IFC-823B-2020 |  | Final tunnel connection to 823B northern cut and cover tunnels | milestone | 0d | 2013-11-28 A | 2013-11-28 A | 823A-NT-6B-B13N-1080, 823A-NT-6B-B12N-1080, 823A-ST-SCCT-1a-4070 | 100% | 2014-02-28 | 2014-02-28 |  |  | finish on or before 2013-08-04 | 823-7d-5 | 823A_AB |
|  | 3 | **Contract 823A / Contract 822** |  |  | 2012-09-25 | 2014-08-31 |  |  |  |  |  |  |  |  |  |
| 823A-IFC-822-3010 |  | Ground treatment works by 822 | milestone | 0d | 2012-09-25 A | 2012-09-25 A |  | 100% |  |  |  |  |  | 823-7d-5 | 823A_AB |
| 823A-IFC-822-3020 |  | 822 to complete lining for 823A connection (Down Track) | milestone | 0d | 2014-03-31 A | 2014-03-31 A |  | 100% |  |  |  |  | finish on 2013-05-31 | 823-7d-5 | 823A_AB |
| 823A-IFC-822-3030 |  | 822 to complete lining for 823A connection (Up Track) | milestone | 0d | 2014-08-31 A | 2014-08-31 A |  | 100% |  |  |  |  | finish on 2013-10-15 | 823-7d-5 | 823A_AB |
|  | 24 | **Access Dates for Designated Contractors** |  |  | 2013-07-01 | 2017-01-02 |  |  |  |  |  |  |  |  |  |
|  | 1 | **827 - Supply and Installation of Cross Passage Doors** |  |  | 2016-01-02 | 2016-01-02 |  |  |  |  |  |  |  |  |  |
| 823A-AD-DC827-1010 |  | All cross passages within Tai Kong Po to ERS Tunnels,down track for door installation | milestone | 0d | 2016-01-02 A | 2016-01-02 A |  | 100% | 2016-01-01 | 2016-01-01 |  |  | start on 2014-01-27 | 823-7d-5 |  |
| 823A-AD-DC827-1020 |  | All cross passages within Tai Kong Po to ERS Tunnels,up track for door installation | milestone | 0d | 2016-01-02 A | 2016-01-02 A |  | 100% |  |  |  |  | start on 2014-04-14 | 823-6dPH |  |
| 823A-AD-DC827-1030 |  | All cross passages within ERS to Tse Uk Tsuen Tunnels, down track, for door frame installation | milestone | 0d | 2016-01-02 A | 2016-01-02 A |  | 100% | 2016-01-01 | 2016-01-01 |  |  | start on 2014-02-24 | 823-7d-5 |  |
| 823A-AD-DC827-1040 |  | All cross passages within ERS to Tse Uk Tsuen Tunnels, uptrack, for door installation | milestone | 0d | 2016-01-02 A | 2016-01-02 A |  | 100% | 2016-01-01 | 2016-01-01 |  |  | start on 2014-06-09 | 823-7d-5 |  |

| ID | WBS | Activity | Type | Duration | Start | Finish | Complete | Planned start | Planned finish | Total float | Free float | Constraint | Calendar | 823A_As-built |
| --- | --- | --- | --- | --- | --- | --- | --- | --- | --- | --- | --- | --- | --- | --- |
|  | 2 | **830 - Trackwork and Overhead Line System** |  |  | 2015-03-01 | 2016-05-31 |  |  |  |  |  |  |  |  |
| 823A-AD-DC830-1010 |  | Tai Kong Po to ERS Tunnels, down track, excluding Box 6A | milestone | 0d | 2015-03-01 A | 2015-03-01 A | 100% |  |  |  |  | start on 2013-08-05 | 823-7d-5 | 823A_AB |
| 823A-AD-DC830-1050 |  | ERS to Tse Uk Tsuen Tunnels, down track | milestone | 0d | 2015-03-01 A | 2015-03-01 A | 100% | 2015-03-02 | 2015-03-02 |  |  | start on 2013-10-21 | 823-6dPH | 823A_AB |
| 823A-AD-DC830-1060 |  | ERS to Tse Uk Tsuen Tunnels, up track including shunt neck | milestone | 0d | 2016-02-01 A | 2016-02-01 A | 100% |  |  |  |  | start on 2014-03-10 | 823-6dPH | 823A_AB |
| 823A-AD-DC830-1020 |  | Tai Kong Po to ERS Tunnels, (Box 7B & 6B) up track | milestone | 0d | 2016-05-31 A | 2016-05-31 A | 100% | 2016-05-01 | 2016-05-01 |  |  | start on 2013-08-05 | 823-7d-5 | 823A_AB |
| 823A-AD-DC830-1030 |  | Tai Kong Po to ERS Tunnels, up track excluding Box 7A, 7B & 6B | milestone | 0d | 2016-05-31 A | 2016-05-31 A | 100% | 2016-05-01 | 2016-05-01 |  |  | start on 2014-01-20 | 823-7d-5 | 823A_AB |
| 823A-AD-DC830-1040 |  | Tai Kong Po to ERS Tunnels, (Box 6A) both up & down tracks | milestone | 0d | 2016-05-31 A | 2016-05-31 A | 100% | 2016-05-03 | 2016-05-03 |  |  | start on 2013-12-30 | 823-6dPH | 823A_AB |
|  | 3 | **841A - Signalling System - Trackside Equipment** |  |  | 2016-01-02 | 2017-01-02 |  |  |  |  |  |  |  |  |
| 823A-AD-DC841A-1010 |  | Tai Kong Po to ERS Tunnels, down track | milestone | 0d | 2016-01-02 A | 2016-01-02 A | 100% | 2016-01-01 | 2016-01-01 |  |  | start on 2014-01-27 | 823-7d-5 |  |
| 823A-AD-DC841A-1030 |  | ERS to Tse Uk Tsuen Tunnels, down track | milestone | 0d | 2016-01-02 A | 2016-01-02 A | 100% | 2016-01-01 | 2016-01-01 |  |  | start on 2014-02-24 | 823-7d-5 |  |
| 823A-AD-DC841A-1040 |  | ERS to Tse Uk Tsuen Tunnels, up track | milestone | 0d | 2016-07-01 A | 2016-07-01 A | 100% |  |  |  |  | start on 2014-06-09 | 823-7d-5 |  |
| 823A-AD-DC841A-1020 |  | Tai Kong Po to ERS Tunnels, up track | milestone | 0d | 2017-01-02 | 2017-01-02 |  |  |  | -806d | 139d | start on 2014-04-14 | 823-6dPH |  |
|  | 4 | **841B - Signalling System - Train Borne Equipment** |  |  | 2017-01-01 | 2017-01-02 |  |  |  |  |  |  |  |  |
| 823A-AD-DC841B-1010 |  | Tai Kong Po to ERS Tunnels, down track | milestone | 0d | 2017-01-01 | 2017-01-01 |  |  |  | -1070d | 163d | start on 2014-01-27 | 823-7d-5 |  |
| 823A-AD-DC841B-1030 |  | ERS to Tse Uk Tsuen Tunnels, down track | milestone | 0d | 2017-01-01 | 2017-01-01 |  |  |  | -1042d | 163d | start on 2014-02-24 | 823-7d-5 |  |
| 823A-AD-DC841B-1040 |  | ERS to Tse Uk Tsuen Tunnels, up track | milestone | 0d | 2017-01-01 | 2017-01-01 |  |  |  | -937d | 163d | start on 2014-06-09 | 823-7d-5 |  |
| 823A-AD-DC841B-1020 |  | Tai Kong Po to ERS Tunnels, up track | milestone | 0d | 2017-01-02 | 2017-01-02 |  |  |  | -806d | 139d | start on 2014-04-14 | 823-6dPH |  |
|  | 5 | **843 - Tunnel Environmental Control System** |  |  | 2017-01-01 | 2017-01-01 |  |  |  |  |  |  |  |  |
| 823A-AD-DC-843-1010 |  | ERS to Tse Uk Tsuen Tunnels, down track | milestone | 0d | 2017-01-01 | 2017-01-01 |  |  |  | -1042d | 163d | start on 2014-02-24 | 823-7d-5 |  |
| 823A-AD-DC-843-1020 |  | ERS to Tse Uk Tsuen Tunnels, up track | milestone | 0d | 2017-01-01 | 2017-01-01 |  |  |  | -937d | 163d | start on 2014-06-09 | 823-7d-5 |  |
|  | 6 | **844 - 11kV Power Distribution** |  |  | 2017-01-01 | 2017-01-02 |  |  |  |  |  |  |  |  |
| 823A-AD-DC-844-1010 |  | Tai Kong Po to ERS Tunnels, down track | milestone | 0d | 2017-01-01 | 2017-01-01 |  |  |  | -1070d | 163d | start on 2014-01-27 | 823-7d-5 |  |
| 823A-AD-DC-844-1030 |  | ERS to Tse Uk Tsuen Tunnels, down track | milestone | 0d | 2017-01-01 | 2017-01-01 |  |  |  | -1042d | 163d | start on 2014-02-24 | 823-7d-5 |  |
| 823A-AD-DC-844-1040 |  | ERS to Tse Uk Tsuen Tunnels, up track | milestone | 0d | 2017-01-01 | 2017-01-01 |  |  |  | -937d | 163d | start on 2014-06-09 | 823-7d-5 |  |
| 823A-AD-DC-844-1020 |  | Tai Kong Po to ERS Tunnels, up track | milestone | 0d | 2017-01-02 | 2017-01-02 |  |  |  | -806d | 139d | start on 2014-04-14 | 823-6dPH |  |

| ID | WBS | Activity | Type | Duration | Start | Finish | Complete | Planned start | Planned finish | Total float | Free float | Constraint | Calendar |
| --- | --- | --- | --- | --- | --- | --- | --- | --- | --- | --- | --- | --- | --- |
|  | 7 | **846 - Trackside Auxiliaries** |  |  | 2017-01-01 | 2017-01-02 |  |  |  |  |  |  |  |
| 823A-AD-DC-846-1010 |  | Tai Kong Po to ERS Tunnels, down track | milestone | 0d | 2017-01-01 | 2017-01-01 |  |  |  | -1070d | 163d | start on 2014-01-27 | 823-7d-5 |
| 823A-AD-DC-846-1030 |  | ERS to Tse Uk Tsuen Tunnels, down track | milestone | 0d | 2017-01-01 | 2017-01-01 |  |  |  | -1042d | 163d | start on 2014-02-24 | 823-7d-5 |
| 823A-AD-DC-846-1040 |  | ERS to Tse Uk Tsuen Tunnels, up track | milestone | 0d | 2017-01-01 | 2017-01-01 |  |  |  | -937d | 163d | start on 2014-06-09 | 823-7d-5 |
| 823A-AD-DC-846-1020 |  | Tai Kong Po to ERS Tunnels, up track | milestone | 0d | 2017-01-02 | 2017-01-02 |  |  |  | -806d | 139d | start on 2014-04-14 | 823-6dPH |
|  | 8 | **849 - Radio Communication System** |  |  | 2017-01-01 | 2017-01-02 |  |  |  |  |  |  |  |
| 823A-AD-DC-849-1010 |  | Tai Kong Po to ERS Tunnels, down track | milestone | 0d | 2017-01-01 | 2017-01-01 |  |  |  | -1070d | 163d | start on 2014-01-27 | 823-7d-5 |
| 823A-AD-DC-849-1030 |  | ERS to Tse Uk Tsuen Tunnels, down track | milestone | 0d | 2017-01-01 | 2017-01-01 |  |  |  | -1042d | 163d | start on 2014-02-24 | 823-7d-5 |
| 823A-AD-DC-849-1040 |  | ERS to Tse Uk Tsuen Tunnels, up track | milestone | 0d | 2017-01-01 | 2017-01-01 |  |  |  | -937d | 163d | start on 2014-06-09 | 823-7d-5 |
| 823A-AD-DC-849-1020 |  | Tai Kong Po to ERS Tunnels, up track | milestone | 0d | 2017-01-02 | 2017-01-02 |  |  |  | -806d | 139d | start on 2014-04-14 | 823-6dPH |
|  | 9 | **850 - Passenger Mobile Communications Systems** |  |  | 2017-01-01 | 2017-01-02 |  |  |  |  |  |  |  |
| 823A-AD-DC-850-1010 |  | Tai Kong Po to ERS Tunnels, down track | milestone | 0d | 2017-01-01 | 2017-01-01 |  |  |  | -1070d | 163d | start on 2014-01-27 | 823-7d-5 |
| 823A-AD-DC-850-1030 |  | ERS to Tse Uk Tsuen Tunnels, down track | milestone | 0d | 2017-01-01 | 2017-01-01 |  |  |  | -1042d | 163d | start on 2014-02-24 | 823-7d-5 |
| 823A-AD-DC-850-1040 |  | ERS to Tse Uk Tsuen Tunnels, up track | milestone | 0d | 2017-01-01 | 2017-01-01 |  |  |  | -937d | 163d | start on 2014-06-09 | 823-7d-5 |
| 823A-AD-DC-850-1020 |  | Tai Kong Po to ERS Tunnels, up track | milestone | 0d | 2017-01-02 | 2017-01-02 |  |  |  | -806d | 139d | start on 2014-04-14 | 823-6dPH |
|  | 10 | **851 - Fixed Communication System** |  |  | 2017-01-01 | 2017-01-02 |  |  |  |  |  |  |  |
| 823A-AD-DC-851-1010 |  | Tai Kong Po to ERS Tunnels, down track | milestone | 0d | 2017-01-01 | 2017-01-01 |  |  |  | -1070d | 163d | start on 2014-01-27 | 823-7d-5 |
| 823A-AD-DC-851-1030 |  | ERS to Tse Uk Tsuen Tunnels, down track | milestone | 0d | 2017-01-01 | 2017-01-01 |  |  |  | -1042d | 163d | start on 2014-02-24 | 823-7d-5 |
| 823A-AD-DC-851-1040 |  | ERS to Tse Uk Tsuen Tunnels, up track | milestone | 0d | 2017-01-01 | 2017-01-01 |  |  |  | -937d | 163d | start on 2014-06-09 | 823-7d-5 |
| 823A-AD-DC-851-1020 |  | Tai Kong Po to ERS Tunnels, up track | milestone | 0d | 2017-01-02 | 2017-01-02 |  |  |  | -806d | 139d | start on 2014-04-14 | 823-6dPH |
|  | 11 | **8203 - Construction Stage Mobile Phone Network** |  |  | 2013-07-01 | 2017-01-01 |  |  |  |  |  |  |  |
| 823A-AD-DC-8023-1010 |  | Tai Kong Po to ERS Tunnels, both up and down tracks | milestone | 0d | 2013-07-01 A | 2013-07-01 A | 100% | 2013-12-01 | 2013-12-01 |  |  | start on 2013-07-01 | 823-7d |
| 823A-AD-DC-8023-1020 |  | ERS to Tse Uk Tsuen, down track | milestone | 0d | 2013-09-02 A | 2013-09-02 A | 100% | 2013-12-01 | 2013-12-01 |  |  | start on 2013-09-02 | 823-7d-5 |
| 823A-AD-DC-8023-1030 |  | ERS to Tse Uk Tsuen, up track | milestone | 0d | 2017-01-01 | 2017-01-01 |  |  |  | -1035d | 163d | start on 2014-03-03 | 823-7d-5 |

| ID | WBS | Activity | Duration | Start | Finish | Predecessors | Complete | Planned start | Planned finish |
| --- | --- | --- | --- | --- | --- | --- | --- | --- | --- |
|  | 25 | **Preliminaries** |  |  |  |  |  |  |  |
|  | 2 | **Preliminaries and General Requirements** |  | 2010-07-19 | 2017-06-12 |  |  |  |  |
|  | 1 | **Site Accommodation & Services to the Engineer** |  | 2010-07-19 | 2015-05-02 |  |  |  |  |
| 823A-PRE-SASE-1010 |  | Supply Engineer with Survey Equipment [PS41.1.1] | 24d | 2010-07-19 A | 2010-08-14 A | KD-1 | 100% |  |  |
| 823A-PRE-SASE-1020 |  | Provide Engineer with suitably qualified full time Survey Assistant - 4 nos. [PS41.3.1] | 24d | 2010-07-19 A | 2010-08-14 A | 823A-PRE-SASE-1010 SS | 100% |  |  |
| 823A-PRE-SASE-1030 |  | Provide Engineer with site transportation as detailed in PS42.1 | 6d | 2010-07-19 A | 2010-07-24 A | 823A-PRE-SASE-1020 SS | 100% |  |  |
| 823A-PRE-SASE-1040 |  | Submit details of qualified drivers to be assigned to the Engineer, for review [PS42.2.1] | 14d | 2010-07-19 A | 2010-08-03 A | 823A-PRE-SASE-1030 SS | 100% |  |  |
| 823A-PRE-SASE-1060 |  | Provide services and equipment for the Engineer | 1404d | 2010-08-04 A | 2015-05-02 A | 823A-PRE-SASE-1040 | 100% |  |  |
| 823A-PRE-SASE-1050 |  | Install, service and maintain 10 container offices for use by the Engineer's Site Staff | 1289d | 2010-12-20 A | 2015-05-02 A | 823A-PRE-PW-GS-1050 | 100% |  |  |
|  | 2 | **Programmme Management System** |  | 2010-07-19 | 2013-07-26 |  |  |  |  |
| 823A-PRE-PMS-1010 |  | Master Programme - Prepare and submit for approval [GS4.6.1] | 37d | 2010-07-19 A | 2010-08-30 A | KD-1 | 100% |  |  |
| 823A-PRE-PMS-1030 |  | Time Chainage Programme - Prepare and submit for approval [GS4.11.1] | 37d | 2010-07-19 A | 2010-08-30 A | KD-1 | 100% |  |  |
| 823A-PRE-PMS-1020 |  | Master Programme - Comments , Resubmission and Approval period | 28d | 2010-08-31 A | 2010-10-04 A | 823A-PRE-PMS-1010 | 100% |  |  |
| 823A-PRE-PMS-1040 |  | Time Chainage Programme - Approval period | 28d | 2010-08-31 A | 2010-10-04 A | 823A-PRE-PMS-1030 | 100% |  |  |
| 823A-PRE-PMS-1050 |  | Implement and Maintain Programme Management System for 1st Audit | 241d | 2010-10-05 A | 2011-07-29 A | 823A-PRE-PMS-1040, 823A-DS-G-1030, 823A-PRE-PMS-1020 | 100% |  |  |
| 823A-PRE-PMS-1060 |  | Implement and Maintain Programme Management System for 2nd Audit | 295d | 2011-07-30 A | 2012-07-27 A | 823A-PRE-PMS-1050 | 100% |  |  |
| 823A-PRE-PMS-1070 |  | Implement and Maintain Programme Management System for 3rd Audit | 295d | 2012-07-28 A | 2013-07-26 A | 823A-PRE-PMS-1060 | 100% |  |  |
|  | 3 | **Specified Plan Management** |  | 2010-07-19 | 2014-01-24 |  |  |  |  |
| 823A-PRE-SPM-1010 |  | Environmental Management Plan - Prepare and submit for approval [GS5.1.10] | 28d | 2010-07-19 A | 2010-08-19 A | KD-1 | 100% |  |  |
| 823A-PRE-SPM-1030 |  | Quality Plan - Prepare and submit for approval [GS9.2.1] | 28d | 2010-07-19 A | 2010-08-19 A | KD-1 | 100% |  |  |
| 823A-PRE-SPM-1120 |  | Health and Safety Plan - Prepare and submit [G3.6.1] | 60d | 2010-07-19 A | 2010-09-27 A | KD-1 | 100% |  |  |
| 823A-PRE-SPM-1130 |  | System Assurance Plan - Prepare and submit for approval [PS Appendix P3.1] | 28d | 2010-07-19 A | 2010-08-19 A | KD-1 | 100% |  |  |
| 823A-PRE-SPM-1150 |  | Design for Safety & Constructability Plan - Prepare and submit for approval [PS37.1] | 28d | 2010-07-19 A | 2010-08-19 A | KD-1 | 100% |  |  |
| 823A-PRE-SPM-1020 |  | Environmental Management Plan - Approval period | 37d | 2010-08-20 A | 2010-10-04 A | 823A-PRE-SPM-1010 | 100% |  |  |
| 823A-PRE-SPM-1040 |  | Quality Plan - Approval period | 37d | 2010-08-20 A | 2010-10-04 A | 823A-PRE-SPM-1030 | 100% |  |  |
| 823A-PRE-SPM-1140 |  | System Assurance Plan - Approval period | 28d | 2010-08-20 A | 2010-09-21 A | 823A-PRE-SPM-1130 | 100% |  |  |
| 823A-PRE-SPM-1160 |  | Design for Safety & Constructability Plan - Approval period | 28d | 2010-08-20 A | 2010-09-21 A | 823A-PRE-SPM-1150 | 100% |  |  |
| 823A-PRE-SPM-1050 |  | Implement and Maintain Specified Plans and satisfactorily confirmed by Engineer for 1st audit | 96d | 2010-10-05 A | 2011-01-28 A | 823A-PRE-SPM-1120, 823A-PRE-SPM-1160, 823A-PRE-SPM-1020, 823A-PRE-SPM-1140, 823A-PRE-SPM-1040 | 100% |  |  |
| 823A-PRE-SPM-1060 |  | Implement and Maintain Specified Plans and satisfactorily confirmed by Engineer for 2nd audit | 145d | 2011-01-29 A | 2011-07-29 A | 823A-PRE-SPM-1050 | 100% |  |  |
| 823A-PRE-SPM-1070 |  | Implement and Maintain Specified Plans and satisfactorily confirmed by Engineer for 3rd audit | 147d | 2011-07-30 A | 2012-01-27 A | 823A-PRE-SPM-1060 | 100% |  |  |
| 823A-PRE-SPM-1080 |  | Implement and Maintain Specified Plans and satisfactorily confirmed by Engineer for 4th audit | 148d | 2012-01-28 A | 2012-07-27 A | 823A-PRE-SPM-1070 | 100% |  |  |
| 823A-PRE-SPM-1090 |  | Implement and Maintain Specified Plans and satisfactorily confirmed by Engineer for 5th audit | 150d | 2012-07-28 A | 2013-01-25 A | 823A-PRE-SPM-1080 | 100% |  |  |
| 823A-PRE-SPM-1100 |  | Implement and Maintain Specified Plans and satisfactorily confirmed by Engineer for 6th audit | 145d | 2013-01-26 A | 2013-07-26 A | 823A-PRE-SPM-1090 | 100% | 2013-07-02 | 2013-12-20 |
| 823A-PRE-SPM-1110 |  | Implement and Maintain Specified Plans and satisfactorily confirmed by Engineer for 7th audit | 150d | 2013-07-27 A | 2014-01-24 A | 823A-PRE-SPM-1100 | 100% | 2013-11-28 | 2014-06-05 |

| ID | WBS | Activity | Duration | Start | Finish | Predecessors | Complete | Calendar |
| --- | --- | --- | --- | --- | --- | --- | --- | --- |
|  | 4 | **General Submission** |  | 2010-07-19 | 2011-03-14 |  |  |  |
| 823A-PRE-GS-1010 |  | Methods of Construction - Prepare and submit for approval [GS12.1.1] | 24d | 2010-07-19 A | 2010-08-14 A | KD-1 | 100% | 823-6dPH |
| 823A-PRE-GS-1030 |  | Contractor's Submission Schedule - Prepare and submit for approval [GS12.11.1] | 24d | 2010-07-19 A | 2010-08-14 A | KD-1 | 100% |  |
| 823A-PRE-GS-1050 |  | Survey Method Statement (Survey Control of Tunnel) [PS13.3.1] | 75d | 2010-07-19 A | 2010-10-15 A | KD-1 | 100% |  |
| 823A-PRE-GS-1070 |  | Spoil Disposal Plan [PS17.7.1] | 22d | 2010-07-19 A | 2010-08-12 A | KD-1 | 100% |  |
| 823A-PRE-GS-1080 |  | Waste Management Plan [PS22.10.1] | 22d | 2010-07-19 A | 2010-08-12 A | KD-1 | 100% |  |
| 823A-PRE-GS-1090 |  | Independent Checking Engineer - Appoint and submit for approval [PS7.1.8] | 24d | 2010-07-19 A | 2010-08-14 A | KD-1 | 100% |  |
| 823A-PRE-GS-1110 |  | Sub-contract Management Plan - Prepare and submit [PS34.1] | 20d | 2010-07-19 A | 2010-08-10 A | KD-1 | 100% |  |
| 823A-PRE-GS-1120 |  | Schedule of Utilities Services Arrangement [GS7.5.1] | 60d | 2010-07-19 A | 2010-09-27 A | KD-1 | 100% |  |
| 823A-PRE-GS-1130 |  | Site Safety Supervision Plan for Site Formation - Prepare and Submit | 12d | 2010-07-19 A | 2010-07-31 A | KD-1 | 100% |  |
| 823A-PRE-GS-1210 |  | Noise Management Plan [P22.3.9] | 45d | 2010-07-19 A | 2010-09-08 A | KD-1 | 100% |  |
| 823A-PRE-GS-1220 |  | Air Quality Management Plan [P22.4.3] | 45d | 2010-07-19 A | 2010-09-08 A | KD-1, 823A-PRE-GS-1210 SS | 100% |  |
| 823A-PRE-GS-1230 |  | Detailed Proposal for Water Pollution Control Measures and Proposed Monitoring [PS22.5.1] | 45d | 2010-07-19 A | 2010-09-08 A | KD-1 | 100% |  |
| 823A-PRE-GS-1240 |  | Groundwater Monitoring and Response Plan [PS22.5.2] | 28d | 2010-07-19 A | 2010-08-19 A | KD-1 | 100% |  |
| 823A-PRE-GS-1250 |  | Vibration Monitoring Plan [PS22.8.1] | 30d | 2010-07-19 A | 2010-08-21 A | KD-1 | 100% |  |
| 823A-PRE-GS-1260 |  | Proposed Outline TTM Scheme - Prepare & submit to the: Engineer for Review / SLG for Approval [PS19.3] | 42d | 2010-07-19 A | 2010-09-04 A | KD-1 | 100% |  |
| 823A-PRE-GS-1140 |  | Site Safety Supervision Plan for Site Formation - Approval period | 24d | 2010-08-02 A | 2010-08-28 A | 823A-PRE-GS-1130 | 100% |  |
| 823A-PRE-GS-1150 |  | Site Safety Supervision Plan for Site Investigation - Prepare and Submit | 12d | 2010-08-02 A | 2010-08-14 A | 823A-PRE-GS-1130 | 100% |  |
| 823A-PRE-GS-1020 |  | Methods of Construction - Approval period | 41d | 2010-08-16 A | 2010-10-04 A | 823A-PRE-GS-1010 | 100% | 823-6dPH |
| 823A-PRE-GS-1040 |  | Contractor's Submission Schedule - Approval period | 41d | 2010-08-16 A | 2010-10-04 A | 823A-PRE-GS-1030 | 100% |  |
| 823A-PRE-GS-1100 |  | Independent Checking Engineer - Approval period | 24d | 2010-08-16 A | 2010-09-11 A | 823A-PRE-GS-1090 | 100% |  |
| 823A-PRE-GS-1160 |  | Site Safety Supervision Plan for Site Investigation - Approval period | 24d | 2010-08-16 A | 2010-09-11 A | 823A-PRE-GS-1150 | 100% |  |
| 823A-PRE-GS-1270 |  | Reviewal Period / Approval Process by Engineer/SLG of the Proposed TTM Scheme [PS19.4] | 69d | 2010-09-06 A | 2010-11-27 A | 823A-PRE-GS-1260 | 100% |  |
| 823A-PRE-GS-1170 |  | Site Safety Supervision Plan for ELS - Prepare and Submit | 12d | 2010-09-13 A | 2010-09-27 A | 823A-PRE-GS-1160 | 100% |  |
| 823A-PRE-GS-1180 |  | Site Safety Supervision Plan for ELS - Approval Period | 24d | 2010-09-28 A | 2010-10-27 A | 823A-PRE-GS-1170 | 100% |  |
| 823A-PRE-GS-1060 |  | Survey Method Statement (Survey Control of Tunnel) - Approval period | 24d | 2010-10-18 A | 2010-11-13 A | 823A-PRE-GS-1050 | 100% | 823-6dPH |
| 823A-PRE-GS-1190 |  | Site Safety Supervision Plan for Tunnel Works - Prepare and Submit | 12d | 2010-10-28 A | 2010-11-10 A | 823A-PRE-GS-1180 | 100% |  |
| 823A-PRE-GS-1200 |  | Site Safety Supervision Plan for Tunnel Works - Approval Period | 24d | 2010-11-11 A | 2010-12-08 A | 823A-PRE-GS-1190 | 100% |  |
| 823A-PRE-GS-1280 |  | Resubmission of Proposed Outline TTM Scheme (if required) | 33d | 2010-11-29 A | 2011-01-08 A | 823A-PRE-GS-1270 | 100% |  |
| 823A-PRE-GS-1290 |  | Reviewal Period / Approval Process by Engineer/SLG of the Resubmitted Proposed Outline TTM Scheme [PS19.4] | 42d | 2011-01-10 A | 2011-03-02 A | 823A-PRE-GS-1280 | 100% |  |
| 823A-PRE-GS-1300 |  | Notification Period of the Approved TTM Scheme prior to implementation [PS19.4] | 10d | 2011-03-03 A | 2011-03-14 A | 823A-PRE-GS-1290 | 100% |  |

| ID | WBS | Activity | Duration | Start | Finish | Predecessors | Complete | Resources | 823A_As-built |
| --- | --- | --- | --- | --- | --- | --- | --- | --- | --- |
|  | 5 | **Preliminary Works** |  | 2010-08-16 | 2014-07-25 |  |  |  |  |
|  | 1 | **General Works** |  | 2010-08-16 | 2011-11-30 |  |  |  |  |
| 823A-PRE-PW-GS-1010 |  | Initial Site Survey (WA3.11) | 3d | 2010-08-16 A | 2010-08-18 A | 823A-AD1-WA3-1090 | 100% |  | 823A_AB |
| 823A-PRE-PW-GS-1020 |  | Initial Site Survey Report (WA3.11) | 6d | 2010-08-19 A | 2010-08-25 A | 823A-PRE-PW-GS-1010 | 100% |  | 823A_AB |
| 823A-PRE-PW-GS-1120 |  | Contamination Assessment Plan (CAP) - Prepare and submit to EPD for Approval (WA3.3 - Area M, I, L) | 12d | 2010-10-05 A | 2010-10-19 A | 823A-PRE-SPM-1020 | 100% |  | 823A_AB |
| 823A-PRE-PW-GS-1200 |  | Contamination Assessment Plan (CAP) - Prepare and Submit to EPD for Approval (WA 3.1, 3.2, 3.3 remaining, 3.3A) | 12d | 2010-10-05 A | 2010-10-19 A | 823A-PRE-SPM-1020 | 100% |  | 823A_AB |
| 823A-PRE-PW-GS-1130 |  | Contamination Assessment Plan (CAP) - Approval Period (WA3.3 - Area M, I, L) | 36d | 2010-10-20 A | 2010-11-30 A | 823A-PRE-PW-GS-1120 | 100% |  | 823A_AB |
| 823A-PRE-PW-GS-1210 |  | Contamination Assessment Plan (CAP) - Approval Period (WA 3.1, 3.2, 3.3 remaining, 3.3A) | 36d | 2010-10-20 A | 2010-11-30 A | 823A-PRE-PW-GS-1200 | 100% |  | 823A_AB |
| 823A-PRE-PW-GS-1030 |  | Initial Site Survey & Condition Survey (WA3.1, 3.2, 3.3, 3.3A, 3.3B, 4.2, 4.3, 4.4) | 12d | 2010-12-06 A | 2010-12-18 A | 823A-AD1-WA3-1070, 823A-AD1-WA4-1110, 823A-AD1-WA3-1050, 823A-AD1-WA4-1120, 823A-AD1-WA4-1130, 823A-AD1-WA3-1040, 823A-AD1-WA3-1060, 823A-AD1-WA3-1030, 823A-PRE-PW-GS-1020 | 100% |  | 823A_AB |
| 823A-PRE-PW-GS-1050 |  | Initial Site Survey & Condition Survey (WA4.9A, 4.10, 4.10A, 4.11, 4.12B, 4.12C, 4.15, 4.15A, 4.15B) | 12d | 2010-12-06 A | 2010-12-18 A | 823A-AD1-WA4-1180, 823A-AD1-WA4-1240, 823A-AD1-WA4-1160, 823A-AD1-WA4-1250, 823A-AD1-WA4-1230, 823A-AD1-WA4-1170, 823A-AD1-WA4-1210, 823A-AD1-WA4-1150, 823A-AD1-WA4-1200 | 100% |  | 823A_AB |
| 823A-PRE-PW-GS-1070 |  | Temporary Occupation Area: Conduct, prepare and submit TOA Record Survey for Works Areas 4.9 & 4.12A [PS4.2] | 28d | 2010-12-06 A | 2011-01-10 A | 823A-AD1-WA4-1140 | 100% |  | 823A_AB |
| 823A-PRE-PW-GS-1140 |  | Conduct Contamination Assessment in accordance with the Approved CAP (WA3.3 - Area M, I, L) | 24d | 2010-12-06 A | 2011-01-05 A | 823A-PRE-PW-GS-1130, 823A-AD1-WA3-1050 | 100% |  | 823A_AB |
| 823A-PRE-PW-GS-1150 |  | Contamination Assessment Report & Remediation Action Plan - Prepare & Submit to EPD for Approval (WA3.3 - Area M, I, L) | 24d | 2010-12-06 A | 2011-01-05 A | 823A-PRE-PW-GS-1140 SS | 100% |  | 823A_AB |
| 823A-PRE-PW-GS-1220 |  | Conduct Contamination Assessment in accordance with the Approved CAP (WA 3.1, 3.2, 3.3 remaining, 3.3A) | 30d | 2010-12-06 A | 2011-01-12 A | 823A-AD1-WA3-1050, 823A-AD1-WA3-1050 SS, 823A-AD1-WA3-1030, 823A-AD1-WA3-1060, 823A-PRE-PW-GS-1210, 823A-AD1-WA3-1040 | 100% |  | 823A_AB |
| 823A-PRE-PW-GS-1280 |  | Conduct remediation for Area Q in accordance with method proposed in the approved Remediation Action Plan [PS22.9.2] | 120d | 2010-12-06 A | 2011-05-06 A | 823A-AD1-WA3-1050, 823A-AD1-WA3-1040, 823A-AD1-WA3-1060 | 100% |  | 823A_AB |
| 823A-PRE-PW-GS-1320 |  | Condition Survey EBS for presence of Asbestos and gather samples | 12d | 2010-12-06 A | 2010-12-18 A | 823A-AD1-WA3-1070, 823A-AD1-WA3-1050, 823A-AD1-WA3-1060, 823A-AD1-WA4-1120, 823A-AD1-WA3-1040, 823A-AD1-WA4-1130, 823A-AD1-WA3-1030 | 100% |  | 823A_AB |
| 823A-PRE-PW-GS-1230 |  | Contamination Assessment Report & Remediation Action Plan - Prepare & Submit to EPD for Approval (WA3.1, 3.2, 3.3, 3.3A) | 24d | 2010-12-13 A | 2011-01-12 A | 823A-PRE-PW-GS-1220 FF | 100% |  | 823A_AB |
| 823A-PRE-PW-GS-1040 |  | Initial Site Survey Report (WA3.1, 3.2, 3.3, 3.3A, 3.3B, 4.2, 4.3, 4.4) | 14d | 2010-12-20 A | 2011-01-07 A | 823A-PRE-PW-GS-1030 | 100% |  | 823A_AB |
| 823A-PRE-PW-GS-1060 |  | Initial Site Survey Report (WA4.9A, 4.10, 4.10A, 4.11, 4.12B, 4.12C, 4.15, 4.15A, 4.15B) | 14d | 2010-12-20 A | 2011-01-07 A | 823A-PRE-PW-GS-1050 | 100% |  | 823A_AB |
| 823A-PRE-PW-GS-1330 |  | Testing of gathered samples | 6d | 2010-12-20 A | 2010-12-28 A | 823A-PRE-PW-GS-1320 | 100% |  | 823A_AB |
| 823A-PRE-PW-GS-1340 |  | Prepare and submit Asbestos Investigation Report (AIR) & Asbestos Abatement Plan (AAP) | 12d | 2010-12-29 A | 2011-01-12 A | 823A-PRE-PW-GS-1330 | 100% |  | 823A_AB |
| 823A-PRE-PW-GS-1080 |  | Temporary Occupation Area: Conduct, prepare and submit TOA Record Survey for Works Areas 5.1 & 5.3 [PS4.2.3] | 28d | 2011-01-03 A | 2011-02-07 A | 823A-AD1-WA5-1290, 823A-AD1-WA5-1270 | 100% |  | 823A_AB |
| 823A-PRE-PW-GS-1390 |  | Confirmation of tree survey | 14d | 2011-01-03 A | 2011-01-18 A | 823A-AD1-WA4-1120, 823A-AD1-WA4-1140, 823A-AD1-WA4-1160, 823A-AD1-WA4-1210, 823A-AD1-WA4-1230, 823A-AD1-WA5-1270, 823A-AD1-WA3-1050, 823A-AD1-WA4-1180, 823A-AD1-WA4-1200, 823A-AD1-WA4-1150, 823A-AD1-WA3-1070, 823A-AD1-WA4-1130, 823A-AD1-WA4-1240, 823A-AD1-WA3-1030, 823A-AD1-WA3-1040, 823A-AD1-WA3-1060, 823A-AD1-WA4-1250, 823A-AD1-WA4-1190, 823A-AD1-WA5-1290, 823A-AD1-WA4-1170 | 100% |  | 823A_AB |
| 823A-PRE-PW-GS-1160 |  | Contamination Assessment Report & Remediation Action Plan - Approval (WA3.3 - Area M, I, L) | 36d | 2011-01-06 A | 2011-02-19 A | 823A-PRE-PW-GS-1150, 823A-PRE-PW-GS-1140 | 100% |  | 823A_AB |
| 823A-PRE-PW-GS-1090 |  | Proposal for Site Clearance Works [PS4.4.1] | 6d | 2011-01-08 A | 2011-01-14 A | 823A-PRE-PW-GS-1040 | 100% |  | 823A_AB |
| 823A-PRE-PW-GS-1110 |  | Backfill existing stream courses in Works Area 4.9, 4.10 and 4.11 [PS18.5.1] | 79d | 2011-01-11 A | 2011-04-16 A | 823A-PRE-PW-GS-1060, 823A-PRE-PW-GS-1070 | 100% | General Worker [10112 h]; Backhoe [10112 h] | 823A_AB |
| 823A-PRE-PW-GS-1240 |  | Contamination Assessment Report & Remediation Action Plan - Approval (WA3.1, 3.2, 3.3, 3.3A) | 36d | 2011-01-13 A | 2011-02-26 A | 823A-PRE-PW-GS-1230 | 100% |  | 823A_AB |
| 823A-PRE-PW-GS-1350 |  | Approval period of AIR & AAP | 30d | 2011-01-13 A | 2011-02-19 A | 823A-PRE-PW-GS-1340 | 100% |  | 823A_AB |
| 823A-PRE-PW-GS-1100 |  | Site Clearance / Site Formation Works (including demolition of EBS) | 71d | 2011-01-20 A | 2011-04-16 A | 823A-PRE-TW-1040, 823A-PRE-PW-GS-1390 FF, 823A-PRE-TW-1030, 823A-PRE-TW-1020, 823A-PRE-PW-GS-1090 | 100% | General Worker [18176 h]; Backhoe [9088 h]; Plant and Equipment Operator (Excavator) [9088 h] | 823A_AB |
| 823A-PRE-PW-GS-1170 |  | Conduct remediation in accordance with the approved Remediation Action Plan (WA3.3 - Area M, I, L) | 120d | 2011-02-21 A | 2011-07-19 A | 823A-PRE-PW-GS-1160 | 100% | General Worker [76800 h] | 823A_AB |
| 823A-PRE-PW-GS-1360 |  | Notification period to Engineer and EPD prior to Asbestos abatement works | 28d | 2011-02-21 A | 2011-03-24 A | 823A-PRE-PW-GS-1350 | 100% |  | 823A_AB |
| 823A-PRE-PW-GS-1250 |  | Conduct remediation in accordance with the approved Remediation Action Plan (WA 3.1, 3.2, 3.3 remaining, 3.3A) | 120d | 2011-02-28 A | 2011-07-26 A | 823A-PRE-PW-GS-1240 | 100% | General Worker [76800 h] | 823A_AB |
| 823A-PRE-PW-GS-1370 |  | Asbestos abatement works | 24d | 2011-03-25 A | 2011-04-26 A | 823A-PRE-PW-GS-1100 SS, 823A-PRE-PW-GS-1360 | 100% | General Worker [7680 h]; Backhoe [3072 h]; Plant and Equipment Operator (Excavator) [3072 h] | 823A_AB |
| 823A-PRE-PW-GS-1380 |  | Demolition of EBS | 24d | 2011-03-25 A | 2011-04-26 A | 823A-PRE-PW-GS-1370 SS | 100% | General Worker [9216 h]; Backhoe [3072 h]; Plant and Equipment Operator (Excavator) [3072 h] | 823A_AB |
| 823A-PRE-PW-GS-1290 |  | Remediation Report - Prepare and submit for Approval [PS22.9.2] (Area Q) | 24d | 2011-05-07 A | 2011-06-04 A | 823A-PRE-PW-GS-1280 | 100% |  | 823A_AB |
| 823A-PRE-PW-GS-1300 |  | Remediation Report - Approval (Area Q) | 36d | 2011-06-07 A | 2011-07-19 A | 823A-PRE-PW-GS-1290 | 100% |  | 823A_AB |
| 823A-PRE-PW-GS-1260 |  | Remediation Report - Prepare and submit for Approval (WA 3.1, 3.2, 3.3 remaining, 3.3A) | 24d | 2011-07-13 A | 2011-08-09 A | 823A-PRE-PW-GS-1250 FS-12d | 100% |  | 823A_AB |
| 823A-PRE-PW-GS-1180 |  | Remediation Report - Prepare and submit for Approval (WA3.3 - Area M, I, L) | 18d | 2011-07-20 A | 2011-08-09 A | 823A-PRE-PW-GS-1170 | 100% |  | 823A_AB |
| 823A-PRE-PW-GS-1190 |  | Remediation Report - Approval (WA3.3 - Area M, I, L) | 36d | 2011-08-10 A | 2011-09-21 A | 823A-PRE-PW-GS-1180 | 100% |  | 823A_AB |
| 823A-PRE-PW-GS-1270 |  | Remediation Report - Approval (WA 3.1, 3.2, 3.3 remaining, 3.3A) | 36d | 2011-08-10 A | 2011-09-21 A | 823A-PRE-PW-GS-1260 | 100% |  | 823A_AB |
| 823A-PRE-PW-GS-1310 |  | Removal of contaminated soil at North Tunnels (Area N,O,P,Q,R,S) | 58d | 2011-09-22 A | 2011-11-30 A | 823A-PRE-PW-GS-1300, 823A-PRE-PW-GS-1270, 823A-PRE-PW-GS-1190 | 100% |  | 823A_AB |

| ID | WBS | Activity | Duration | Start | Finish | Predecessors | Complete | Planned start | Planned finish | Constraint | Resources | 823A_As-built |
| --- | --- | --- | --- | --- | --- | --- | --- | --- | --- | --- | --- | --- |
|  | 2 | **Instrumentation Monitoring** |  | 2011-01-20 | 2014-07-25 |  |  |  |  |  |  |  |
| 823A-PRE-PW-IM-1010 |  | Installation of ground settlement markers | 96d | 2011-01-20 A | 2011-05-21 A | 823A-PRE-PW-GS-1040, 823A-PRE-PW-GS-1100 SS | 100% |  |  |  |  |  |
| 823A-PRE-PW-IM-1020 |  | Settlement monitoring and submit report | 204d | 2011-05-23 A | 2012-01-27 A | 823A-PRE-PW-IM-1010 | 100% |  |  |  |  |  |
| 823A-PRE-PW-IM-1030 |  | Settlement monitoring and submit report | 119d | 2012-01-28 A | 2012-06-21 A | 823A-PRE-PW-IM-1020 | 100% |  |  |  |  |  |
| 823A-PRE-PW-IM-1040 |  | Settlement monitoring and submit report | 200d | 2012-06-22 A | 2013-02-22 A | 823A-PRE-PW-IM-1030 | 100% |  |  |  |  |  |
| 823A-PRE-PW-IM-1050 |  | Settlement monitoring and submit report | 124d | 2013-02-23 A | 2013-07-26 A | 823A-PRE-PW-IM-1040 | 100% | 2013-08-01 | 2013-12-28 |  |  |  |
| 823A-PRE-PW-IM-1060 |  | Settlement monitoring and submit report | 171d | 2013-07-27 A | 2014-02-21 A | 823A-PRE-PW-IM-1050 | 100% | 2013-08-01 | 2014-02-26 |  |  |  |
| 823A-PRE-PW-IM-1070 |  | Settlement monitoring and submit report | 124d | 2014-02-22 A | 2014-07-25 A | 823A-PRE-PW-IM-1060 | 100% |  |  |  |  |  |
|  | 3 | **Archaeology Survey and Rescue Operation (South Tunnels Area)** |  | 2011-01-03 | 2011-07-09 |  |  |  |  |  |  |  |
| 823APRE-PW-ASR-1010 |  | Permit Applications (incl. License to Search and Excavate Antiquities and Excavation Permit) | 46d | 2011-01-03 A | 2011-02-28 A | 823A-AD1-WA4-1230, 823A-AD1-WA4-1240, 823A-AD1-WA4-1250, 823A-AD1-WA4-1140, 823A-AD1-WA4-1190, 823A-AD1-WA5-1290, 823A-AD1-WA4-1160, 823A-AD1-WA4-1200, 823A-AD1-WA4-1210, 823A-AD1-WA5-1270, 823A-AD1-WA4-1150, 823A-AD1-WA4-1170, 823A-AD1-WA4-1180 | 100% |  |  |  |  | 823A_AB |
| 823APRE-PW-ASR-1020 |  | Check for underground utilities | 3d | 2011-03-01 A | 2011-03-03 A | 823APRE-PW-ASR-1010 | 100% |  |  |  |  | 823A_AB |
| 823APRE-PW-ASR-1030 |  | Field walking and hand augering | 6d | 2011-03-04 A | 2011-03-10 A | 823APRE-PW-ASR-1020 | 100% |  |  |  |  | 823A_AB |
| 823APRE-PW-ASR-1040 |  | Excavation of trial pits | 6d | 2011-03-11 A | 2011-03-17 A | 823APRE-PW-ASR-1030 | 100% |  |  |  | General Welder [768 h] | 823A_AB |
| 823APRE-PW-ASR-1050 |  | Rescue excavation rescue works (if required) | 90d | 2011-03-18 A | 2011-07-09 A | 823APRE-PW-ASR-1040 | 100% |  |  |  |  | 823A_AB |
|  | 6 | **Temporary Works** |  | 2010-07-19 | 2011-01-22 |  |  |  |  |  |  |  |
| 823A-PRE-TW-1050 |  | Marine Survey at Barging Point [PS4.3] (before construction of barging facilities) | 63d | 2010-07-19 A | 2010-09-30 A | 823A-AD1-WA1-1010 | 100% |  |  |  |  |  |
| 823A-PRE-TW-1010 |  | Erection of Hoarding with Gate (WA3.11) | 4d | 2010-08-19 A | 2010-08-23 A | 823A-PRE-PW-GS-1010, 823A-PRE-GS-1110 | 100% |  |  |  | Weld Set [512 h]; Metal Worker [512 h]; General Welder [256 h] |  |
| 823A-PRE-TW-1060 |  | Construct barging facilities | 33d | 2010-10-02 A | 2010-11-10 A | 823A-PRE-TW-1050 | 100% |  |  |  | General Worker [4224 h] |  |
| 823A-PRE-TW-1070 |  | Operation Plan for the Barging Facility - Prepare and Submit for Approval [PS17.1.9] | 24d | 2010-11-11 A | 2010-12-08 A | 823A-PRE-GS-1100, 823A-PRE-TW-1060 | 100% |  |  |  |  |  |
| 823A-PRE-TW-1080 |  | Operation Plan for the Barging Facility - Review and Approval Period | 36d | 2010-12-09 A | 2011-01-22 A | 823A-PRE-TW-1070 | 100% |  |  |  |  |  |
| 823A-PRE-TW-1020 |  | Erection of Metal Steel Hoarding, Gate, and Chainlink Fence at Works Areas 3.1, 3.2, 3.3 and 3.3A [PS4.6.1] | 24d | 2010-12-20 A | 2011-01-19 A | 823A-PRE-GS-1140, 823A-PRE-PW-GS-1030, 823A-PRE-TW-1010 | 100% |  |  |  | Weld Set [3072 h]; Metal Worker [3072 h]; General Welder [1536 h] |  |
| 823A-PRE-TW-1030 |  | Erection of Metal Steel Hoarding, Gate, and Chainlink Fence at Works Areas 4.9, 4.10, 4.11, 4.12A~C, and 4.15 [PS4.6.1] | 24d | 2010-12-20 A | 2011-01-19 A | 823A-PRE-PW-GS-1050 | 100% |  |  |  | Weld Set [3072 h]; Metal Worker [3072 h]; General Welder [1536 h] |  |
| 823A-PRE-TW-1040 |  | Project Signboard Erection [PS4.6.8] | 12d | 2010-12-20 A | 2011-01-05 A | 823A-PRE-TW-1020 SS, 823A-PRE-TW-1030 SS | 100% |  |  |  | Metal Worker [3072 h]; General Welder [768 h]; Weld Set [1536 h] |  |
|  | 7 | **General and Special Attendance for Designated Contractors** |  | 2013-07-02 | 2015-03-25 |  |  |  |  |  |  |  |
| 823A-PRE-GSADC-1010 |  | General and Special Attendance for Designated Contractors | 516d | 2013-07-02 A | 2015-03-25 A | 823A-AD-DC-8023-1010 | 100% | 2013-12-02 | 2015-08-31 | start on or after 2012-12-01 | General Worker [66048 h] |  |

| ID | WBS | Activity | Duration | Start | Finish | Predecessors | Complete | Remaining | Planned start | Planned finish | Total float | Free float | Calendar | 823A_As-built |
| --- | --- | --- | --- | --- | --- | --- | --- | --- | --- | --- | --- | --- | --- | --- |
|  | 8 | **Detailed Interface Specification** |  | 2011-10-08 | 2012-07-27 |  |  |  |  |  |  |  |  |  |
| 823A-PRE-DIS-1010 |  | Prepare and Submit Detailed Interface Specification | 60d | 2011-10-08 A | 2011-12-16 A | 823A-PRE-SPM-1070 SS+57d | 100% |  |  |  |  |  | 823-6dPH |  |
| 823A-PRE-DIS-1020 |  | Approval of Detailed Interface Plan | 30d | 2011-12-17 A | 2012-01-27 A | 823A-PRE-DIS-1010 | 100% |  |  |  |  |  | 823-6dPH |  |
| 823A-PRE-DIS-1030 |  | Prepare and Submit Detailed Interface Specification | 60d | 2012-04-10 A | 2012-06-20 A | 823A-PRE-DIS-1020 FS+58d | 100% |  |  |  |  |  | 823-6dPH |  |
| 823A-PRE-DIS-1040 |  | Approval of Detailed Interface Plan | 30d | 2012-06-21 A | 2012-07-27 A | 823A-PRE-DIS-1030 | 100% |  |  |  |  |  | 823-6dPH |  |
|  | 9 | **O&M Manuals and As-Built Drawings** |  | 2014-07-28 | 2017-06-12 |  |  |  |  |  |  |  |  |  |
| 823A-PRE-OMABD-1010 |  | Prepare and Submit Draft Operation and Maintenance Manual [PS33.1] | 93d | 2014-07-28 A | 2016-06-01 A | 823A-ST-SNT11-1200 | 100% |  | 2015-08-24 | 2015-12-12 |  |  |  |  |
| 823A-PRE-OMABD-1020 |  | Review and approval period of Draft Operation and Maintenance Manual | 30d | 2016-06-02 A | 2017-01-18 | 823A-PRE-OMABD-1010 | 50% | 15d | 2016-08-10 | 2016-09-13 | -726d | 0d |  |  |
| 823A-PRE-OMABD-1030 |  | Prepare and Submit Final Operation and Maintenance Manual [PS33.1] | 129d | 2016-06-02 A | 2017-05-18 | 823A-PRE-OMABD-1020 | 20% | 103d | 2016-09-14 | 2017-02-16 | -700d | 0d |  |  |
| 823A-PRE-OMABD-1040 |  | Provide Engineer with As-Built Drawing for the Whole of the Works [PS33.2] | 21d | 2016-07-02 A | 2017-06-02 | 823A-PRE-OMABD-1030 | 38% | 13d | 2016-11-21 | 2016-12-14 | -700d | 0d |  |  |
| 823A-PRE-OMABD-1050 |  | Provide Engineer with Asset Registration Information [PS33.3] | 21d | 2017-05-19 | 2017-06-12 | 823A-PRE-OMABD-1040 SS |  |  |  |  | -700d | 0d |  |  |
|  | 3 | **Design Submissions** |  | 2010-07-19 | 2015-10-24 |  |  |  |  |  |  |  |  |  |
|  | 1 | **General** |  | 2010-07-19 | 2011-11-10 |  |  |  |  |  |  |  |  |  |
| 823A-DS-G-1010 |  | Preliminary Design Programme - Prepare and Submit for Approval [PS7.1.8 - App. Z2.1] | 12d | 2010-07-19 A | 2010-07-31 A | KD-1 | 100% |  |  |  |  |  | 823-6dPH |  |
| 823A-DS-G-1040 |  | Schedule of Designs - Prepare and Submit for Approval [PS7.1.8 - App. Z2.5] | 12d | 2010-07-19 A | 2010-07-31 A |  | 100% |  |  |  |  |  | 823-6dPH |  |
| 823A-DS-G-1020 |  | Preliminary Design Programme - Review and Approval Period [PS7.1.8 - App. Z2.2] | 22d | 2010-08-02 A | 2010-08-26 A | 823A-DS-G-1010 | 100% |  |  |  |  |  | 823-6dPH |  |
| 823A-DS-G-1030 |  | Preliminary Design Programme - Resubmission and Approval (if required) [PS7.1.8 - App. Z2.2] | 30d | 2010-08-27 A | 2010-10-02 A | 823A-DS-G-1020 | 100% |  |  |  |  |  | 823-6dPH |  |
| 823A-DS-G-1050 |  | Detailed Proposal for Carrying Out the Cross Passage Works [PS11.5.2] | 30d | 2011-10-07 A | 2011-11-10 A | 823A-D-TBM-TS-1030 | 100% |  |  |  |  |  |  |  |
|  | 2 | **Design for TBM Tunnel** |  | 2010-07-19 | 2012-03-05 |  |  |  |  |  |  |  |  |  |
|  | 1 | **TBM Design** |  | 2010-07-19 | 2010-09-15 |  |  |  |  |  |  |  |  |  |
| 823A-D-TBM-TBM-1010 |  | Design TBM and submit full details to the Engineer [PS7.2.1] | 23d | 2010-07-19 A | 2010-08-13 A | 823A-DS-G-1040 FF | 100% |  |  |  |  |  |  | 823A_AB |
| 823A-D-TBM-TBM-1020 |  | TBM Design - Approval period | 12d | 2010-08-14 A | 2010-08-27 A | 823A-D-TBM-TBM-1010 | 100% |  |  |  |  |  |  | 823A_AB |
| 823A-D-TBM-TBM-1030 |  | TBM Design - Resubmission and approval period | 16d | 2010-08-28 A | 2010-09-15 A | 823A-D-TBM-TBM-1020 | 100% |  |  |  |  |  |  | 823A_AB |
|  | 2 | **Design for Permanent Lining for Main Tunnels** |  | 2010-07-19 | 2011-01-07 |  |  |  |  |  |  |  |  |  |
| 823A-D-TBM-ML-1010 |  | AIP Design - Prepare and Submit | 23d | 2010-07-19 A | 2010-08-13 A | KD-1 | 100% |  |  |  |  |  |  | 823A_AB |
| 823A-D-TBM-ML-1020 |  | AIP Design - Review and Approval Period (by MTRC) | 24d | 2010-08-14 A | 2010-09-10 A | 823A-D-TBM-ML-1010 | 100% |  |  |  |  |  |  | 823A_AB |
| 823A-D-TBM-ML-1030 |  | DDS Design - Prepare and Submit | 38d | 2010-09-11 A | 2010-10-28 A | 823A-D-TBM-ML-1020 | 100% |  |  |  |  |  |  | 823A_AB |
| 823A-D-TBM-ML-1040 |  | DDS Design - Review and Approval Period (by MTRC) | 24d | 2010-10-29 A | 2010-11-25 A | 823A-D-TBM-ML-1030 | 100% |  |  |  |  |  |  | 823A_AB |
| 823A-D-TBM-ML-1050 |  | DDS Design - Response to comments and Resubmit | 6d | 2010-11-26 A | 2010-12-02 A | 823A-D-TBM-ML-1040 | 100% |  |  |  |  |  |  | 823A_AB |
| 823A-D-TBM-ML-1060 |  | DDS Design - Review and Approval Period (for resubmission) (by MTRC & related Government Authorities) | 24d | 2010-12-03 A | 2011-01-03 A | 823A-D-TBM-ML-1050 | 100% |  |  |  |  |  |  | 823A_AB |
| 823A-D-TBM-ML-1070 |  | Issue Completed Working Drawings | 4d | 2011-01-04 A | 2011-01-07 A | 823A-D-TBM-ML-1060 | 100% |  |  |  |  |  |  | 823A_AB |

| ID | WBS | Activity | Duration | Start | Finish | Predecessors | Complete | 823A_As-built |
| --- | --- | --- | --- | --- | --- | --- | --- | --- |
|  | 3 | **Design for Permanent Lining for Cross Passages and Main Tunnel Connections** |  | 2011-01-08 | 2011-07-18 |  |  |  |
| 823A-D-TBM-CPL-1010 |  | AIP Design - Prepare and Submit | 36d | 2011-01-08 A | 2011-02-22 A | 823A-D-TBM-ML-1070 | 100% | 823A_AB |
| 823A-D-TBM-CPL-1020 |  | AIP Design - Review and Approval Period (by MTRC) | 24d | 2011-02-23 A | 2011-03-22 A | 823A-D-TBM-CPL-1010 | 100% | 823A_AB |
| 823A-D-TBM-CPL-1030 |  | AIP Design - Response to comments and Resubmit | 2d | 2011-03-23 A | 2011-03-24 A | 823A-D-TBM-CPL-1020 | 100% | 823A_AB |
| 823A-D-TBM-CPL-1040 |  | AIP Design - Review and Approval Period (for resubmission) (by MTRC & related Government Authorities) | 24d | 2011-03-25 A | 2011-04-26 A | 823A-D-TBM-CPL-1030 | 100% | 823A_AB |
| 823A-D-TBM-CPL-1050 |  | DDS Design - Prepare and Submit | 36d | 2011-03-25 A | 2011-05-12 A | 823A-D-TBM-CPL-1040 SS | 100% | 823A_AB |
| 823A-D-TBM-CPL-1060 |  | DDS Design - Review and Approval Period (by MTRC & related Government Authorities) | 24d | 2011-05-13 A | 2011-06-10 A | 823A-D-TBM-CPL-1050 | 100% | 823A_AB |
| 823A-D-TBM-CPL-1070 |  | DDS Design - Response to comments and Resubmit | 4d | 2011-06-11 A | 2011-06-15 A | 823A-D-TBM-CPL-1060 | 100% | 823A_AB |
| 823A-D-TBM-CPL-1080 |  | DDS Design - Review and Approval Period (for resubmission) (by MTRC & related Government Authorities) | 24d | 2011-06-16 A | 2011-07-14 A | 823A-D-TBM-CPL-1070 | 100% | 823A_AB |
| 823A-D-TBM-CPL-1090 |  | Issue Completed Working Drawings | 3d | 2011-07-15 A | 2011-07-18 A | 823A-D-TBM-CPL-1080 | 100% | 823A_AB |
|  | 4 | **Design for Temporary Support for Cross-Passage** |  | 2011-07-19 | 2011-11-10 |  |  |  |
| 823A-D-TBM-TS-1010 |  | DDS Design - Prepare and Submit | 36d | 2011-07-19 A | 2011-08-29 A | 823A-D-TBM-CPL-1090 | 100% | 823A_AB |
| 823A-D-TBM-TS-1020 |  | DDS Design - Review and Approval Period (by MTRC) | 26d | 2011-08-30 A | 2011-09-29 A | 823A-D-TBM-TS-1010 | 100% | 823A_AB |
| 823A-D-TBM-TS-1030 |  | DDS Design - Response to comments and Resubmit | 4d | 2011-09-30 A | 2011-10-06 A | 823A-D-TBM-TS-1020 | 100% | 823A_AB |
| 823A-D-TBM-TS-1040 |  | DDS Design - Review and Approval Period (for resubmission) (by MTRC & related Government Authorities) | 26d | 2011-10-07 A | 2011-11-05 A | 823A-D-TBM-TS-1030 | 100% | 823A_AB |
| 823A-D-TBM-TS-1050 |  | Issue Completed Working Drawings | 4d | 2011-11-07 A | 2011-11-10 A | 823A-DS-G-1050 FF, 823A-D-TBM-TS-1040 | 100% | 823A_AB |
|  | 5 | **Design for Connection between Bored Tunnels and Cut & Cover Tunnels** |  | 2011-08-30 | 2012-03-05 |  |  |  |
| 823A-D-TBM-C-1010 |  | AIP Design - Prepare and Submit | 36d | 2011-08-30 A | 2011-10-13 A | 823A-D-TBM-TS-1010 | 100% | 823A_AB |
| 823A-D-TBM-C-1020 |  | AIP Design - Review and Approval Period (by MTRC) | 24d | 2011-10-14 A | 2011-11-10 A | 823A-D-TBM-C-1010 | 100% | 823A_AB |
| 823A-D-TBM-C-1030 |  | AIP Design - Response to comments and Resubmit | 2d | 2011-11-11 A | 2011-11-12 A | 823A-D-TBM-C-1020 | 100% | 823A_AB |
| 823A-D-TBM-C-1040 |  | AIP Design - Review and Approval Period (for resubmission) (by MTRC & related Government Authorities) | 24d | 2011-11-14 A | 2011-12-10 A | 823A-D-TBM-C-1030 | 100% | 823A_AB |
| 823A-D-TBM-C-1050 |  | DDS Design - Prepare and Submit | 36d | 2011-11-14 A | 2011-12-24 A | 823A-D-TBM-C-1040 SS | 100% | 823A_AB |
| 823A-D-TBM-C-1060 |  | DDS Design - Review and Approval Period (by MTRC) | 24d | 2011-12-28 A | 2012-01-28 A | 823A-D-TBM-C-1050 | 100% | 823A_AB |
| 823A-D-TBM-C-1070 |  | DDS Design - Response to comments and Resubmit | 4d | 2012-01-30 A | 2012-02-02 A | 823A-D-TBM-C-1060 | 100% | 823A_AB |
| 823A-D-TBM-C-1080 |  | DDS Design - Review and Approval Period (for resubmission) (by MTRC & related Government Authorities) | 24d | 2012-02-03 A | 2012-03-01 A | 823A-D-TBM-C-1070 | 100% | 823A_AB |
| 823A-D-TBM-C-1090 |  | Issue Completed Working Drawings | 3d | 2012-03-02 A | 2012-03-05 A | 823A-D-TBM-C-1080 | 100% | 823A_AB |

| ID | WBS | Activity | Duration | Start | Finish | Predecessors | Complete | 823A_As-built |
| --- | --- | --- | --- | --- | --- | --- | --- | --- |
|  | 6 | **Tunnel Segment Mould** |  | 2010-11-26 | 2011-02-14 |  |  |  |
| 823A-D-TBM-TSM-1010 |  | Prepare and Submit | 12d | 2010-11-26 A | 2010-12-09 A | 823A-D-TBM-TBM-1030, 823A-D-TBM-ML-1040 | 100% | 823A_AB |
| 823A-D-TBM-TSM-1020 |  | Review and Approval Period | 24d | 2010-12-10 A | 2011-01-10 A | 823A-D-TBM-TSM-1010 | 100% | 823A_AB |
| 823A-D-TBM-TSM-1030 |  | Response to comments and Resubmit | 3d | 2011-01-11 A | 2011-01-13 A | 823A-D-TBM-TSM-1020 | 100% | 823A_AB |
| 823A-D-TBM-TSM-1040 |  | Review and Approval Period (for resubmission) | 24d | 2011-01-14 A | 2011-02-14 A | 823A-D-TBM-TSM-1030 | 100% | 823A_AB |
|  | 3 | **Design for Launching Shaft** |  | 2010-07-19 | 2012-02-28 |  |  |  |
|  | 1 | **Design forTemporary Cofferdam for Northern Launching Shaft** |  | 2010-07-19 | 2010-11-10 |  |  |  |
| 823A-D-LS-NLS-1010 |  | DDS Design - Prepare and Submit | 36d | 2010-07-19 A | 2010-08-28 A | KD-1 | 100% | 823A_AB |
| 823A-D-LS-NLS-1020 |  | DDS Design - Review and Approval Period (by MTRC) | 26d | 2010-08-30 A | 2010-09-29 A | 823A-D-LS-NLS-1010 | 100% | 823A_AB |
| 823A-D-LS-NLS-1030 |  | DDS Design - Response to comments and Resubmit | 4d | 2010-09-30 A | 2010-10-05 A | 823A-D-LS-NLS-1020 | 100% | 823A_AB |
| 823A-D-LS-NLS-1040 |  | DDS Design - Review and Approval Period (for resubmission) (by MTRC & related Government Authorities) | 26d | 2010-10-06 A | 2010-11-05 A | 823A-D-LS-NLS-1030 | 100% | 823A_AB |
| 823A-D-LS-NLS-1050 |  | Issue Completed Working Drawings | 4d | 2010-11-06 A | 2010-11-10 A | 823A-D-LS-NLS-1040 | 100% | 823A_AB |
|  | 2 | **Design for Temporary Cofferdam for Southern Launching Shaft & Shunt Neck** |  | 2010-11-11 | 2011-03-09 |  |  |  |
| 823A-D-LS-SLS-1010 |  | DDS Design - Prepare and Submit | 36d | 2010-11-11 A | 2010-12-22 A | 823A-D-LS-NLS-1050 | 100% | 823A_AB |
| 823A-D-LS-SLS-1020 |  | DDS Design - Review and Approval Period (by MTRC) | 26d | 2010-12-23 A | 2011-01-25 A | 823A-D-LS-SLS-1010 | 100% | 823A_AB |
| 823A-D-LS-SLS-1030 |  | DDS Design - Response to comments and Resubmit | 4d | 2011-01-26 A | 2011-01-29 A | 823A-D-LS-SLS-1020 | 100% | 823A_AB |
| 823A-D-LS-SLS-1040 |  | DDS Design - Review and Approval Period (for resubmission) (by MTRC & related Government Authorities) | 26d | 2011-01-31 A | 2011-03-04 A | 823A-D-LS-SLS-1030 | 100% | 823A_AB |
| 823A-D-LS-SLS-1050 |  | Issue Completed Working Drawings | 4d | 2011-03-05 A | 2011-03-09 A | 823A-D-LS-SLS-1040 | 100% | 823A_AB |
|  | 3 | **Design for Temporary Cofferdam for Tse Uk Tsuen Shaft** |  | 2011-03-10 | 2011-07-08 |  |  |  |
| 823A-D-LS-TUT-1010 |  | DDS Design - Prepare and Submit | 36d | 2011-03-10 A | 2011-04-21 A | 823A-D-LS-SLS-1050 | 100% | 823A_AB |
| 823A-D-LS-TUT-1020 |  | DDS Design - Review and Approval Period (by MTRC) | 26d | 2011-04-26 A | 2011-05-27 A | 823A-D-LS-TUT-1010 | 100% | 823A_AB |
| 823A-D-LS-TUT-1030 |  | DDS Design - Response to comments and Resubmit | 4d | 2011-05-28 A | 2011-06-01 A | 823A-D-LS-TUT-1020 | 100% | 823A_AB |
| 823A-D-LS-TUT-1040 |  | DDS Design - Review and Approval Period (for resubmission) (by MTRC & related Government Authorities) | 26d | 2011-06-02 A | 2011-07-04 A | 823A-D-LS-TUT-1030 | 100% | 823A_AB |
| 823A-D-LS-TUT-1050 |  | Issue Completed Working Drawings | 4d | 2011-07-05 A | 2011-07-08 A | 823A-D-LS-TUT-1040 | 100% | 823A_AB |

| ID | WBS | Activity | Duration | Start | Finish | Predecessors | Complete | 823A_As-built |
| --- | --- | --- | --- | --- | --- | --- | --- | --- |
|  | 4 | **Design for Temporary Works for TBM Launching and Retrieval** |  | 2011-07-09 | 2011-11-01 |  |  |  |
| 823A-D-LS-TW-1010 |  | DDS Design - Prepare and Submit | 36d | 2011-07-09 A | 2011-08-19 A | 823A-D-LS-TUT-1050 | 100% | 823A_AB |
| 823A-D-LS-TW-1020 |  | DDS Design - Review and Approval Period (by MTRC) | 26d | 2011-08-20 A | 2011-09-20 A | 823A-D-LS-TW-1010 | 100% | 823A_AB |
| 823A-D-LS-TW-1030 |  | DDS Design - Response to comments and Resubmit | 4d | 2011-09-21 A | 2011-09-24 A | 823A-D-LS-TW-1020 | 100% | 823A_AB |
| 823A-D-LS-TW-1040 |  | DDS Design - Review and Approval Period (for resubmission) (by MTRC & related Government Authorities) | 26d | 2011-09-26 A | 2011-10-27 A | 823A-D-LS-TW-1030 | 100% | 823A_AB |
| 823A-D-LS-TW-1050 |  | Issue Completed Working Drawings | 4d | 2011-10-28 A | 2011-11-01 A | 823A-D-LS-TW-1040 | 100% | 823A_AB |
|  | 5 | **Design for Temporary Noise Enclousure for Launching Shafts** |  | 2011-11-02 | 2012-02-28 |  |  |  |
| 823A-D-LS-NE-1010 |  | DDS Design - Prepare and Submit | 36d | 2011-11-02 A | 2011-12-13 A | 823A-D-LS-TW-1050 | 100% | 823A_AB |
| 823A-D-LS-NE-1020 |  | DDS Design - Review and Approval Period (by MTRC) | 26d | 2011-12-14 A | 2012-01-16 A | 823A-D-LS-NE-1010 | 100% | 823A_AB |
| 823A-D-LS-NE-1030 |  | DDS Design - Response to comments and Resubmit | 4d | 2012-01-17 A | 2012-01-20 A | 823A-D-LS-NE-1020 | 100% | 823A_AB |
| 823A-D-LS-NE-1040 |  | DDS Design - Review and Approval Period (for resubmission) (by MTRC & related Government Authorities) | 26d | 2012-01-21 A | 2012-02-23 A | 823A-D-LS-NE-1030 | 100% | 823A_AB |
| 823A-D-LS-NE-1050 |  | Issue Completed Working Drawings | 4d | 2012-02-24 A | 2012-02-28 A | 823A-D-LS-NE-1040 | 100% | 823A_AB |
|  | 4 | **Design for Cut & Cover Tunnel** |  | 2011-12-14 | 2012-04-14 |  |  |  |
|  | 1 | **Design for Formworks and Falseworks for Box Tunnel** |  | 2011-12-14 | 2012-04-14 |  |  |  |
| 823A-D-CCT-FW-1010 |  | Formworks / Falsework - Prepare & Submit | 36d | 2011-12-14 A | 2012-01-31 A | 823A-D-LS-NE-1010 | 100% | 823A_AB |
| 823A-D-CCT-FW-1020 |  | Formworks / Falsework - Review & Approval Period (by MTRC) | 24d | 2012-02-01 A | 2012-02-28 A | 823A-D-CCT-FW-1010 | 100% | 823A_AB |
| 823A-D-CCT-FW-1030 |  | Formworks / Falsework - Response to comments and Resubmit | 12d | 2012-02-29 A | 2012-03-13 A | 823A-D-CCT-FW-1020 | 100% | 823A_AB |
| 823A-D-CCT-FW-1040 |  | Formworks / Falsework - Review & Approval Period (for resubmission) (by MTRC & related Government Authorities) | 24d | 2012-03-14 A | 2012-04-14 A | 823A-D-CCT-FW-1030 | 100% | 823A_AB |
|  | 5 | **Design for Miscellaneous** |  | 2010-07-19 | 2015-10-24 |  |  |  |
|  | 1 | **Design for the Layout of Site Hoarding** |  | 2010-07-19 | 2010-10-12 |  |  |  |
| 823A-D-MIS-SH-1010 |  | Layout of Site Hoarding - Prepare and Submit | 12d | 2010-07-19 A | 2010-07-31 A | KD-1 | 100% |  |
| 823A-D-MIS-SH-1020 |  | Layout of Site Hoarding - Review and Approval Period (by MTRC) | 24d | 2010-08-02 A | 2010-08-28 A | 823A-D-MIS-SH-1010 | 100% |  |
| 823A-D-MIS-SH-1030 |  | Layout of Site Hoarding - Response to comments and Resubmit | 12d | 2010-08-30 A | 2010-09-11 A | 823A-D-MIS-SH-1020 | 100% |  |
| 823A-D-MIS-SH-1040 |  | Layout of Site Hoarding - Review and Approval Period (for resubmission) (by MTRC & related Government Authorities) | 24d | 2010-09-13 A | 2010-10-12 A | 823A-D-MIS-SH-1030 | 100% |  |

| ID | WBS | Activity | Duration | Start | Finish | Predecessors | Complete | Planned start | Planned finish | 823A_As-built |
| --- | --- | --- | --- | --- | --- | --- | --- | --- | --- | --- |
|  | 2 | **Design for the Layout of Engineer's Site Accommodation** |  | 2010-10-13 | 2011-01-08 |  |  |  |  |  |
| 823A-D-MIS-EA-1010 |  | Layout of Engineer's Accommodation - Prepare and Submit | 12d | 2010-10-13 A | 2010-10-27 A | 823A-D-MIS-SH-1040 | 100% |  |  |  |
| 823A-D-MIS-EA-1020 |  | Layout of Engineer's Accommodation - Review and Approval Period (by MTRC) | 24d | 2010-10-28 A | 2010-11-24 A | 823A-D-MIS-EA-1010 | 100% |  |  |  |
| 823A-D-MIS-EA-1030 |  | Layout of Engineer's Accommodation - Response to comments and Resubmit | 12d | 2010-11-25 A | 2010-12-08 A | 823A-D-MIS-EA-1020 | 100% |  |  |  |
| 823A-D-MIS-EA-1040 |  | Layout of Engineer's Accommodation - Review and Approval Period (for resubmit) (by MTRC & related Government Authorities | 24d | 2010-12-09 A | 2011-01-08 A | 823A-D-MIS-EA-1030 | 100% |  |  |  |
|  | 3 | **Temporary Diversion Scheme - Wong Toi Shan Shan Tsuen Road** |  | 2011-01-10 | 2011-05-26 |  |  |  |  |  |
| 823A-D-MIS-TTA-1010 |  | TTMS Assessment Report - Prepare and Submit | 36d | 2011-01-10 A | 2011-02-23 A | 823A-D-MIS-EA-1040 | 100% |  |  | 823A_AB |
| 823A-D-MIS-TTA-1020 |  | TTMS Assessment Report - Review and Approval Period (by MTRC) | 26d | 2011-02-24 A | 2011-03-25 A | 823A-D-MIS-TTA-1010 | 100% |  |  | 823A_AB |
| 823A-D-MIS-TTA-1030 |  | TTMS Assessment Report - Response to comments and Resubmit | 9d | 2011-03-26 A | 2011-04-06 A | 823A-D-MIS-TTA-1020 | 100% |  |  | 823A_AB |
| 823A-D-MIS-TTA-1040 |  | TTMS Assessment Report - Review and Approval Period (for resubmission) (by MTRC & related Government Authorities) | 26d | 2011-04-07 A | 2011-05-12 A | 823A-D-MIS-TTA-1030 | 100% |  |  | 823A_AB |
| 823A-D-MIS-TTA-1050 |  | Issue Completed Working Drawings | 12d | 2011-05-13 A | 2011-05-26 A | 823A-D-MIS-TTA-1040 | 100% |  |  | 823A_AB |
|  | 4 | **Temporary Diversion Scheme - Kam Tin River** |  | 2011-02-24 | 2011-06-23 |  |  |  |  |  |
| 823A-D-MIS-KTR-1010 |  | DIA Report - Prepare and Submit | 36d | 2011-02-24 A | 2011-04-07 A | 823A-D-MIS-TTA-1010 | 100% |  |  | 823A_AB |
| 823A-D-MIS-KTR-1020 |  | DIA Report - Review and Approval Period (by MTRC) | 26d | 2011-04-08 A | 2011-05-13 A | 823A-D-MIS-KTR-1010 | 100% |  |  | 823A_AB |
| 823A-D-MIS-KTR-1030 |  | DIA Report - Response to comments and Resubmit | 4d | 2011-05-14 A | 2011-05-18 A | 823A-D-MIS-KTR-1020 | 100% |  |  | 823A_AB |
| 823A-D-MIS-KTR-1040 |  | DIA Report - Review and Approval Period (for resubmission) (by MTRC & related Government Authorities) | 26d | 2011-05-19 A | 2011-06-18 A | 823A-D-MIS-KTR-1030 | 100% |  |  | 823A_AB |
| 823A-D-MIS-KTR-1050 |  | Issue Completed Working Drawings | 4d | 2011-06-20 A | 2011-06-23 A | 823A-D-MIS-KTR-1040 | 100% |  |  | 823A_AB |
|  | 5 | **Retaining Wall Reprovisioning Works** |  | 2015-06-01 | 2015-10-24 |  |  |  |  |  |
| 823A-D-MIS-RW-1010 |  | AIP Design - Prepare & Submit | 16d | 2015-06-01 A | 2015-06-06 A | 823A-NT-NLS-NB-1120 | 100% | 2015-09-23 | 2015-10-13 | 823A_AB |
| 823A-D-MIS-RW-1020 |  | AIP Design - Review & Approval Period (by MTR) | 24d | 2015-06-08 A | 2015-06-13 A | 823A-D-MIS-RW-1010 | 100% | 2015-10-14 | 2015-11-11 | 823A_AB |
| 823A-D-MIS-RW-1030 |  | AIP Design - Response to comments and Resubmit | 3d | 2015-06-15 A | 2015-06-19 A | 823A-D-MIS-RW-1020 | 100% | 2015-11-12 | 2015-11-14 | 823A_AB |
| 823A-D-MIS-RW-1040 |  | AIP Design - Review & Approval Period (for resubmission) (by MTRC & related Government Authorities) | 24d | 2015-06-22 A | 2015-06-30 A | 823A-D-MIS-RW-1030 | 100% | 2015-11-16 | 2015-12-12 | 823A_AB |
| 823A-D-MIS-RW-1050 |  | DDS Design - Prepare & Submit | 35d | 2015-09-01 A | 2015-09-05 A | 823A-D-MIS-RW-1040 SS | 100% | 2016-01-13 | 2016-02-25 | 823A_AB |
| 823A-D-MIS-RW-1060 |  | DDS Design - Review & Approval Period (by MTRC) | 24d | 2015-09-07 A | 2015-09-12 A | 823A-D-MIS-RW-1050 | 100% | 2016-02-26 | 2016-03-24 | 823A_AB |
| 823A-D-MIS-RW-1070 |  | DDS Design - Response to comments & Resubmit | 4d | 2015-09-14 A | 2015-09-19 A | 823A-D-MIS-RW-1060 | 100% | 2016-03-29 | 2016-04-01 | 823A_AB |
| 823A-D-MIS-RW-1080 |  | DDS Design - Review & Approval Period (for resubmission) (by MTRC & related Government Authorities) | 24d | 2015-09-21 A | 2015-10-20 A | 823A-D-MIS-RW-1070 | 100% | 2016-04-02 | 2016-04-30 | 823A_AB |
| 823A-D-MIS-RW-1090 |  | Issue Completed Working Drawings | 3d | 2015-10-22 A | 2015-10-24 A | 823A-D-MIS-RW-1080 | 100% | 2016-01-27 | 2016-01-29 | 823A_AB |

| ID | WBS | Activity | Type | Duration | Start | Finish | Predecessors | Complete | Calendar | Resources | 823A_As-built | % Planned | % Actual | Actual Up to Date | UNITS | Total Quantity | Planned Up to Date | user_text8 |
| --- | --- | --- | --- | --- | --- | --- | --- | --- | --- | --- | --- | --- | --- | --- | --- | --- | --- | --- |
|  | 6 | **Design for Barging Point Structures and Associated Facilities** |  |  | 2011-11-30 | 2012-01-31 |  |  |  |  |  |  |  |  |  |  |  |  |
| 823A-D-MIS-BPF-1010 |  | Layout of Barging Point - Prepare and Submit |  | 6d | 2011-11-30 A | 2011-12-06 A | 823A-D-MIS-KTR-1050 | 100% |  |  | 823A_AB |  |  |  |  |  |  |  |
| 823A-D-MIS-BPF-1050 |  | Loading Ramps - Prepare and Submit |  | 6d | 2011-11-30 A | 2011-12-06 A | 823A-D-MIS-BPF-1010 | 100% |  |  | 823A_AB |  |  |  |  |  |  |  |
| 823A-D-MIS-BPF-1090 |  | Weighbridge - Prepare and Submit |  | 6d | 2011-11-30 A | 2011-12-06 A | 823A-D-MIS-BPF-1050 SS+6d | 100% |  |  | 823A_AB |  |  |  |  |  |  |  |
| 823A-D-MIS-BPF-1020 |  | Layout of Barging Point - Review and Approval Period (by MTRC) |  | 18d | 2011-12-07 A | 2011-12-29 A | 823A-D-MIS-BPF-1010 | 100% |  |  | 823A_AB |  |  |  |  |  |  |  |
| 823A-D-MIS-BPF-1060 |  | Loading Ramps - Review and Approval Period (by MTRC) |  | 18d | 2011-12-07 A | 2011-12-29 A | 823A-D-MIS-BPF-1050 | 100% |  |  | 823A_AB |  |  |  |  |  |  |  |
| 823A-D-MIS-BPF-1100 |  | Weighbridge - Review and Approval Period (by MTRC) |  | 18d | 2011-12-07 A | 2011-12-29 A | 823A-D-MIS-BPF-1090 | 100% |  |  | 823A_AB |  |  |  |  |  |  |  |
| 823A-D-MIS-BPF-1030 |  | Layout of Barging Point - Response to comments and Resubmit |  | 6d | 2011-12-30 A | 2012-01-06 A | 823A-D-MIS-BPF-1020 | 100% |  |  | 823A_AB |  |  |  |  |  |  |  |
| 823A-D-MIS-BPF-1070 |  | Loading Ramps - Response to comments and Resubmit |  | 6d | 2011-12-30 A | 2012-01-06 A | 823A-D-MIS-BPF-1060 | 100% |  |  | 823A_AB |  |  |  |  |  |  |  |
| 823A-D-MIS-BPF-1110 |  | Weighbridge - Response to comments and Resubmit |  | 6d | 2011-12-30 A | 2012-01-06 A | 823A-D-MIS-BPF-1100 | 100% |  |  | 823A_AB |  |  |  |  |  |  |  |
| 823A-D-MIS-BPF-1040 |  | Layout of Barging Point - Review and Approval Period (for resubmission) (by MTRC & related Government Authorities) |  | 18d | 2012-01-07 A | 2012-01-31 A | 823A-D-MIS-BPF-1030 | 100% |  |  | 823A_AB |  |  |  |  |  |  |  |
| 823A-D-MIS-BPF-1080 |  | Loading Ramps - Review and Approval Period (for resubmission) (by MTRC & related Government Authorities) |  | 18d | 2012-01-07 A | 2012-01-31 A | 823A-D-MIS-BPF-1070 | 100% |  |  | 823A_AB |  |  |  |  |  |  |  |
| 823A-D-MIS-BPF-1120 |  | Weighbridge - Review and Approval Period (for resubmission) (by MTRC & related Government Authorities) |  | 18d | 2012-01-07 A | 2012-01-31 A | 823A-D-MIS-BPF-1110 | 100% |  |  | 823A_AB |  |  |  |  |  |  |  |
|  | 4 | **North Tunnel** |  |  | 2010-07-19 | 2017-03-31 |  |  |  |  |  |  |  |  |  |  |  |  |
|  | 1 | **North Lanuching Shaft (Box 7A)** |  |  | 2010-12-06 | 2016-11-11 |  |  |  |  |  |  |  |  |  |  |  |  |
|  | 1 | **D-Wall** |  |  | 2010-12-06 | 2011-12-15 |  |  |  |  |  |  |  |  |  |  |  |  |
| 823A-NT-NLS-DW-1010 |  | Site Possession and Site set up and Mobilization |  | 8d | 2010-12-06 A | 2010-12-14 A | 823A-AD1-WA3-1070, 823A-AD1-WA4-1130 | 100% | 823-6dPH | General Worker [2048 h]; Backhoe [1024 h] | 823A_AB | 100% | 100% |  |  |  |  |  |
| 823A-NT-NLS-DW-1020 |  | Pre-drill and guide wall |  | 65d | 2010-12-15 A | 2011-03-07 A | 823A-PRE-GS-1070, 823A-PRE-GS-1080, 823A-PRE-GS-1100, 823A-PRE-GS-1220, 823A-PRE-GS-1200, 823A-PRE-PW-GS-1080, 823A-PRE-GS-1060, 823A-PRE-GS-1230, 823APRE-PW-ASR-1050, 823A-PRE-PW-GS-1380, 823A-PRE-GS-1120, 823A-PRE-GS-1250, 823A-NT-NLS-DW-1010 | 100% | 823-6dPH | G.I Rig/Drill Rig [8320 h]; General Worker [8320 h]; Bar Bender & Fixer [8320 h]; Carpenter (Formwork - Civil Construction) [12480 h]; Plant and Equipment Operator (Crawler-mounted Mobile Crane) [8320 h]; Concrete 30/20B [86 Cu m]; Temporary Concrete [86 Cu m]; PY Concretor [4160 h] | 823A_AB | 100% | 100% |  |  |  |  |  |
| 823A-NT-NLS-DW-1030 |  | D-wall construction (1084m3) |  | 95d | 2011-03-08 A | 2011-07-05 A | 823A-NT-NLS-DW-1020 | 100% |  | Plant and Equipment Operator (Crawler-mounted Mobile Crane) [18240 h]; Bar Bender & Fixer [12160 h]; General Worker [6080 h]; Rigger/Metal Formwork Erector [12160 h]; Backhoe [6080 h]; D-Wall Grab [6080 h]; Hydrofraise Cutter [6080 h]; Crawler Crane/Mobile Crane [6080 h]; D-Wall [20 NO]; Concrete 45/20A [1084 Cu m]; Temporary Concrete [1084 Cu m]; Plant Operator [6080 h] | 823A_AB | 100% | 100% | 1080 | m3 | 1084 | 1080 |  |
| 823A-NT-NLS-DW-1040 |  | Sonic test, shear pin, toe grout and pumping test |  | 124d | 2011-07-06 A | 2011-11-30 A | 823A-NT-NLS-DW-1030 | 100% |  | Plant Operator [15872 h]; Plant and Equipment Operator (Crawler-mounted Mobile Crane) [7936 h]; General Worker [31744 h]; Air Compressor [15872 h]; Crawler Crane/Mobile Crane [7936 h]; Grouting Machine [7936 h]; G.I Rig/Drill Rig [15872 h]; Shear Pin [100 NO]; Toe Grout [100 NO] | 823A_AB | 100% | 100% |  |  |  |  |  |
| 823A-NT-NLS-DW-1050 |  | Wang Toi Shan Shan Tsuen Road diversion works |  | 120d | 2011-07-26 A | 2011-12-15 A | 823A-D-MIS-TTA-1050 | 100% | 823-6dPH | General Worker [15360 h]; Backhoe [7680 h]; Carpenter (Formwork - Civil Construction) [30720 h] | 823A_AB | 100% | 100% |  |  |  |  |  |
|  | 2 | **Excavation and Lateral Support** |  |  | 2011-12-01 | 2012-05-31 |  |  |  |  |  |  |  |  |  |  |  |  |
| 823A-NT-NLS-ELS-1010 |  | Excavate up to +10.5mPD (369m3) |  | 2d | 2011-12-01 A | 2011-12-02 A | 823A-NT-NLS-DW-1040, 823A-NT-NLS-DW-1050, 823A-PRE-PW-GS-1310 | 100% |  | Plant and Equipment Operator (Excavator) [256 h]; Backhoe [256 h]; Soil Excavation [369 Cu m]; Excavation Materials [369 Cu m]; Dump Truck [640 h]; Truck Driver (Heavy Goods Vehicles) [640 h]; General Worker [256 h] | 823A_AB | 100% | 100% | 369 | m3 | 369 | 369 |  |
| 823A-NT-NLS-ELS-1020 |  | Install Strut S0 +11.0mPD |  | 4d | 2011-12-03 A | 2011-12-07 A | 823A-NT-NLS-ELS-1010 | 100% |  | Weld Set [1024 h]; Crawler Crane/Mobile Crane [256 h]; General Welder [1024 h]; Rigger/Metal Formwork Erector [1024 h]; Plant and Equipment Operator (Crawler-mounted Mobile Crane) [256 h] | 823A_AB | 100% | 100% |  |  |  |  |  |
| 823A-NT-NLS-ELS-1030 |  | Excavate up to +8.0mPD (1525m3) |  | 6d | 2011-12-06 A | 2011-12-12 A | 823A-NT-NLS-ELS-1020 FS-2d | 100% |  | Excavation Materials [1525 Cu m]; Soil Excavation [1525 Cu m]; Truck Driver (Heavy Goods Vehicles) [3584 h]; Dump Truck [3584 h]; General Worker [768 h]; Backhoe [1152 h]; Plant and Equipment Operator (Excavator) [1152 h]; Plant and Equipment Operator (Crawler-mounted Mobile Crane) [384 h]; Crawler Crane/Mobile Crane [384 h] | 823A_AB | 100% | 100% | 1525 | m3 | 1525 | 1525 |  |
| 823A-NT-NLS-ELS-1040 |  | Install Strut S1 +8.5mPD |  | 4d | 2011-12-10 A | 2011-12-14 A | 823A-NT-NLS-ELS-1030 FS-2d | 100% |  | Crawler Crane/Mobile Crane [256 h]; Weld Set [1024 h]; Plant and Equipment Operator (Crawler-mounted Mobile Crane) [256 h]; General Welder [1024 h]; Rigger/Metal Formwork Erector [1024 h] | 823A_AB | 100% | 100% |  |  |  |  |  |
| 823A-NT-NLS-ELS-1050 |  | Excavate up to +4.5mPD (2135m3) |  | 7d | 2011-12-13 A | 2011-12-20 A | 823A-NT-NLS-ELS-1040 FS-2d | 100% |  | Plant and Equipment Operator (Excavator) [1344 h]; Plant and Equipment Operator (Crawler-mounted Mobile Crane) [448 h]; Crawler Crane/Mobile Crane [448 h]; Backhoe [1344 h]; Excavation Materials [2135 Cu m]; Soil Excavation [2135 Cu m]; Truck Driver (Heavy Goods Vehicles) [3584 h]; Dump Truck [3584 h]; General Worker [896 h] | 823A_AB | 100% | 100% | 2135 | m3 | 2135 | 2135 |  |
| 823A-NT-NLS-ELS-1060 |  | Install Strut S2 +5.0mPD |  | 4d | 2011-12-19 A | 2011-12-22 A | 823A-NT-NLS-ELS-1050 FS-2d | 100% |  | Crawler Crane/Mobile Crane [256 h]; Weld Set [1024 h]; General Welder [1024 h]; Rigger/Metal Formwork Erector [1024 h]; Plant and Equipment Operator (Crawler-mounted Mobile Crane) [256 h] | 823A_AB | 100% | 100% |  |  |  |  |  |
| 823A-NT-NLS-ELS-1070 |  | Excavate up to +0.5mPD (2440m3) |  | 14d | 2011-12-21 A | 2012-01-09 A | 823A-NT-NLS-ELS-1060 FS-2d | 100% |  | Plant and Equipment Operator (Excavator) [2688 h]; Breaker [896 h]; Backhoe [224 h]; Crawler Crane/Mobile Crane [896 h]; Excavation Materials [2440 Cu m]; Soil Excavation [2176 Cu m]; Rock Excavation [264 Cu m]; Hydraulic Rock Splitter [896 h]; Truck Driver (Heavy Goods Vehicles) [4480 h]; Dump Truck [4480 h]; General Worker [1792 h]; G.I Rig/Drill Rig [896 h]; Plant and Equipment Operator (Crawler-mounted Mobile Crane) [896 h] | 823A_AB | 100% | 100% | 2440 | m3 | 2440 | 2440 | 2,176m3 soil + 264m3 |
| 823A-NT-NLS-ELS-1080 |  | Install Strut S3 +1.0mPD |  | 4d | 2012-01-07 A | 2012-01-11 A | 823A-NT-NLS-ELS-1070 FS-2d | 100% |  | Crawler Crane/Mobile Crane [256 h]; Weld Set [1024 h]; Plant and Equipment Operator (Crawler-mounted Mobile Crane) [256 h]; Rigger/Metal Formwork Erector [1024 h]; General Welder [1024 h] | 823A_AB | 100% | 100% |  |  |  |  |  |
| 823A-NT-NLS-ELS-1090 |  | Excavate up to -6.5mPD (4340m3) |  | 106d | 2012-01-10 A | 2012-05-22 A | 823A-NT-NLS-ELS-1080 FS-2d | 100% |  | Plant and Equipment Operator (Excavator) [20160 h]; Plant Operator [6784 h]; Crawler Crane/Mobile Crane [6784 h]; Backhoe [13568 h]; Excavation Materials [4340 Cu m]; Rock Excavation [4340 Cu m]; Breaker [6784 h]; Hydraulic Rock Splitter [6784 h]; Dump Truck [6784 h]; Plant and Equipment Operator (Crawler-mounted Mobile Crane) [6784 h]; Truck Driver (Heavy Goods Vehicles) [6784 h]; G.I Rig/Drill Rig [6784 h]; General Worker [13568 h] | 823A_AB | 100% | 100% | 4340 | m3 | 4340 | 4340 | 4,340m3 rock |
| 823A-NT-NLS-ELS-1100 |  | Install rock dowel and tie back |  | 106d | 2012-01-16 A | 2012-05-28 A | 823A-NT-NLS-ELS-1090 SS+5d | 100% |  | Plant Operator [13568 h]; Grouting Worker [13568 h]; G.I Rig/Drill Rig [13568 h]; Grouting Machine [6784 h]; General Worker [13568 h]; Air Compressor [6784 h] | 823A_AB | 100% | 100% |  |  |  |  |  |
| 823A-NT-NLS-ELS-1110 |  | Construction of temporary slab and entrance seal (622m3) |  | 7d | 2012-05-24 A | 2012-05-31 A | 823A-NT-NLS-ELS-1100 FS-4d, 823A-NT-NLS-ELS-1090 | 100% |  | Plant Operator [448 h]; Concrete 20/20C [622 Cu m]; Temporary Concrete [622 Cu m]; Crawler Crane/Mobile Crane [448 h]; Concrete Pump [448 h]; Plant and Equipment Operator (Crawler-mounted Mobile Crane) [896 h]; Rigger/Metal Formwork Erector [1792 h]; Bar Bender & Fixer [1792 h]; PY Concretor [896 h]; Carpenter (Formwork - Civil Construction) [1792 h]; General Worker [1792 h] | 823A_AB | 100% | 100% | 622 | m3 | 622 | 622 |  |
| 823A-NT-NLS-ELS-1120 |  | Handover to TBM Team | milestone | 0d | 2012-05-31 A | 2012-05-31 A | 823A-NT-NLS-ELS-1110 | 100% | 823-6dPH |  | 823A_AB |  | 100% |  |  |  |  |  |

| ID | WBS | Activity | Duration | Start | Finish | Predecessors | Complete | Planned start | Planned finish | Calendar | Resources | % Planned | % Actual | 823A_As-built | Actual Up to Date | UNITS | Total Quantity | Planned Up to Date |
| --- | --- | --- | --- | --- | --- | --- | --- | --- | --- | --- | --- | --- | --- | --- | --- | --- | --- | --- |
|  | 3 | **Structure** |  | 2014-12-05 | 2016-06-18 |  |  |  |  |  |  |  |  |  |  |  |  |  |
|  | 1 | **Southbound (Down Track)** |  | 2014-12-05 | 2015-11-30 |  |  |  |  |  |  |  |  |  |  |  |  |  |
| 823A-NT-NLS-SB-1010 |  | Placing of waterproof member T-lock & testing (Base Slab) | 2d | 2014-12-05 A | 2014-12-06 A | 823A-D-TBM-C-1090, 823A-NT-TBM-SB-1140 | 100% | 2014-12-06 | 2014-12-08 |  | General Worker [256 h] | 100% | 100% | 823A_AB |  |  |  |  |
| 823A-NT-NLS-SB-1020 |  | Erect external formwork (Base Slab) | 2d | 2014-12-08 A | 2014-12-09 A | 823A-NT-NLS-SB-1010 | 100% | 2014-12-09 | 2014-12-10 |  | Crawler Crane/Mobile Crane [128 h]; Carpenter (Formwork - Civil Construction) [512 h]; Plant and Equipment Operator (Crawler-mounted Mobile Crane) [128 h] | 100% | 100% | 823A_AB |  |  |  |  |
| 823A-NT-NLS-SB-1030 |  | Rebar fixing (Base Slab) | 3d | 2014-12-10 A | 2014-12-12 A | 823A-NT-NLS-SB-1020 | 100% | 2014-12-11 | 2014-12-13 |  | Reinforcement [34071 kg]; Crawler Crane/Mobile Crane [192 h]; Plant and Equipment Operator (Crawler-mounted Mobile Crane) [192 h]; Bar Bender & Fixer [1536 h] | 100% | 100% | 823A_AB |  |  |  |  |
| 823A-NT-NLS-SB-1040 |  | Erect internal kicker formwork (Base Slab) | 2d | 2014-12-13 A | 2014-12-15 A | 823A-NT-NLS-SB-1030 | 100% | 2014-12-15 | 2014-12-16 |  | Crawler Crane/Mobile Crane [128 h]; Carpenter (Formwork - Civil Construction) [768 h]; Plant and Equipment Operator (Crawler-mounted Mobile Crane) [128 h] | 100% | 100% | 823A_AB |  |  |  |  |
| 823A-NT-NLS-SB-1050 |  | Concreting (Base Slab) (225m3) | 1d | 2014-12-16 A | 2014-12-16 A | 823A-NT-NLS-SB-1040 | 100% | 2014-12-17 | 2014-12-17 |  | Plant Operator [64 h]; Concrete Pump [64 h]; Crawler Crane/Mobile Crane [64 h]; Permanent Concrete [225 Cu m]; Concrete 45/20A [225 Cu m]; PY Concretor [256 h]; General Worker [256 h]; Plant and Equipment Operator (Crawler-mounted Mobile Crane) [64 h]; Rigger/Metal Formwork Erector [128 h] | 100% | 100% | 823A_AB | 225 | m3 | 225 | 225 |
| 823A-NT-NLS-SB-1060 |  | Curing (Base Slab) | 7d | 2014-12-17 A | 2014-12-23 A | 823A-NT-NLS-SB-1050 | 100% | 2014-12-18 | 2014-12-27 |  | General Worker [448 h] | 100% | 100% | 823A_AB |  |  |  |  |
| 823A-NT-NLS-SB-1070 |  | Removal of formwork (Base Slab) | 1d | 2014-12-24 A | 2014-12-24 A | 823A-NT-NLS-SB-1050 FS+1d | 100% | 2014-12-19 | 2014-12-19 |  | Crawler Crane/Mobile Crane [64 h]; Carpenter (Formwork - Civil Construction) [256 h]; Plant and Equipment Operator (Crawler-mounted Mobile Crane) [64 h] | 100% | 100% | 823A_AB |  |  |  |  |
| 823A-NT-NLS-SB-1080 |  | Erect internal formwork & Falsework (Wall & Roof) | 3d | 2015-06-06 A | 2015-06-09 A | 823A-NT-NLS-SB-1060 FF, 823A-NT-NLS-SB-1070 | 100% |  |  |  | Crawler Crane/Mobile Crane [192 h]; Plant and Equipment Operator (Crawler-mounted Mobile Crane) [192 h]; Carpenter (Formwork - Civil Construction) [1536 h]; Rigger/Metal Formwork Erector [768 h] | 100% | 100% | 823A_AB |  |  |  |  |
| 823A-NT-NLS-SB-1090 |  | Rebar fixing (Wall & Roof) | 3d | 2015-06-22 A | 2015-06-24 A | 823A-NT-NLS-SB-1080 | 100% | 2015-06-10 | 2015-06-12 |  | Reinforcement [67234 kg]; Crawler Crane/Mobile Crane [192 h]; Bar Bender & Fixer [1536 h]; Plant and Equipment Operator (Crawler-mounted Mobile Crane) [192 h] | 100% | 100% | 823A_AB |  |  |  |  |
| 823A-NT-NLS-SB-1100 |  | Erect external formwork (Wall & Roof) | 2d | 2015-06-25 A | 2015-06-29 A | 823A-NT-NLS-SB-1090 | 100% | 2015-06-13 | 2015-06-15 |  | Crawler Crane/Mobile Crane [128 h]; Carpenter (Formwork - Civil Construction) [1024 h]; Plant and Equipment Operator (Crawler-mounted Mobile Crane) [128 h]; Rigger/Metal Formwork Erector [512 h] | 100% | 100% | 823A_AB |  |  |  |  |
| 823A-NT-NLS-SB-1110 |  | Concreting (Wall & Roof) (444m3) | 1d | 2015-06-30 A | 2015-06-30 A | 823A-NT-NLS-SB-1100 | 100% | 2015-06-16 | 2015-06-16 |  | Plant Operator [64 h]; Crawler Crane/Mobile Crane [64 h]; Concrete Pump [64 h]; Permanent Concrete [444 Cu m]; Concrete 45/20A [444 Cu m]; PY Concretor [256 h]; General Worker [256 h]; Plant and Equipment Operator (Crawler-mounted Mobile Crane) [64 h]; Rigger/Metal Formwork Erector [256 h] | 100% | 100% | 823A_AB | 444 | m3 | 444 | 444 |
| 823A-NT-NLS-SB-1120 |  | Curing (Wall & Roof) | 7d | 2015-07-08 A | 2015-07-15 A | 823A-NT-NLS-SB-1110 | 100% |  |  |  | General Worker [448 h] | 100% | 100% | 823A_AB |  |  |  |  |
| 823A-NT-NLS-SB-1130 |  | Preparation of construction joint for wall and roof | 1d | 2015-07-16 A | 2015-07-16 A | 823A-NT-NLS-SB-1120, 823A-NT-NLS-SB-1110 | 100% |  |  | 823-6dPH | General Worker [128 h] | 100% | 100% | 823A_AB |  |  |  |  |
| 823A-NT-NLS-SB-1140 |  | Removal external formwork (Wall) | 1d | 2015-07-17 A | 2015-07-17 A | 823A-NT-NLS-SB-1130 | 100% |  |  |  | Crawler Crane/Mobile Crane [64 h]; Carpenter (Formwork - Civil Construction) [256 h]; Plant and Equipment Operator (Crawler-mounted Mobile Crane) [64 h] | 100% | 100% | 823A_AB |  |  |  |  |
| 823A-NT-NLS-SB-1150 |  | Side walkway and cable bracket (360m3) | 15d | 2015-07-18 A | 2015-10-05 A | 823A-NT-NLS-SB-1140 | 100% | 2015-07-18 | 2015-08-04 |  | Permanent Concrete [102 Cu m]; Concrete 20/20C [102 Cu m]; Crawler Crane/Mobile Crane [960 h]; Concrete Pump [960 h]; Carpenter (Formwork - Civil Construction) [2880 h]; PY Concretor [1920 h]; General Worker [1920 h]; Plant and Equipment Operator (Crawler-mounted Mobile Crane) [960 h]; Rigger/Metal Formwork Erector [1920 h] | 100% | 100% | 823A_AB | 360 | m3 | 360 | 360 |
| 823A-NT-NLS-SB-1160 |  | Access opening to DC (DC access period) | 123d | 2015-10-06 A | 2015-11-02 A | 823A-NT-NLS-SB-1150 | 100% | 2015-10-06 | 2016-03-04 | 823-6dPH |  | 100% | 100% | 823A_AB |  |  |  |  |
| 823A-NT-NLS-SB-1170 |  | Remaining wall and roof slab (Closing of DC access opening) | 29d | 2015-11-03 A | 2015-11-30 A | 823A-NT-NLS-SB-1160 | 100% | 2015-12-12 | 2016-01-18 | 823-6dPH | General Worker [3712 h]; Rigger/Metal Formwork Erector [3712 h]; Bar Bender & Fixer [7424 h]; Carpenter (Formwork - Civil Construction) [7424 h]; PY Concretor [3712 h]; Crawler Crane/Mobile Crane [1856 h]; Plant and Equipment Operator (Crawler-mounted Mobile Crane) [1856 h] | 100% | 100% | 823A_AB |  |  |  |  |
|  | 2 | **Northbound (Up Track)** |  | 2016-04-12 | 2016-06-18 |  |  |  |  |  |  |  |  |  |  |  |  |  |
| 823A-NT-NLS-NB-1010 |  | Placing of waterproof member T-lock & testing (Base Slab) | 2d | 2016-04-12 A | 2016-04-13 A | 823A-NT-TBM-NB-1140, 823A-NT-TBM-NB-1170 | 100% | 2016-05-20 | 2016-05-21 |  | General Worker [256 h] | 100% | 100% | 823A_AB |  |  |  |  |
| 823A-NT-NLS-NB-1020 |  | Erect external formwork (Base Slab) | 2d | 2016-04-14 A | 2016-04-15 A | 823A-NT-NLS-NB-1010 | 100% | 2016-05-23 | 2016-05-24 |  | Crawler Crane/Mobile Crane [128 h]; Carpenter (Formwork - Civil Construction) [512 h]; Plant and Equipment Operator (Crawler-mounted Mobile Crane) [128 h] | 100% | 100% | 823A_AB |  |  |  |  |
| 823A-NT-NLS-NB-1030 |  | Rebar fixing (Base Slab) | 3d | 2016-04-16 A | 2016-04-19 A | 823A-NT-NLS-NB-1020 | 100% | 2016-05-25 | 2016-05-27 |  | Reinforcement [34071 kg]; Crawler Crane/Mobile Crane [192 h]; Plant and Equipment Operator (Crawler-mounted Mobile Crane) [192 h]; Bar Bender & Fixer [1536 h] | 100% | 100% | 823A_AB |  |  |  |  |
| 823A-NT-NLS-NB-1040 |  | Erect internal kicker formwork (Base Slab) | 2d | 2016-04-20 A | 2016-04-21 A | 823A-NT-NLS-NB-1030 | 100% | 2016-05-28 | 2016-05-30 |  | Crawler Crane/Mobile Crane [128 h]; Carpenter (Formwork - Civil Construction) [512 h]; Plant and Equipment Operator (Crawler-mounted Mobile Crane) [128 h] | 100% | 100% | 823A_AB |  |  |  |  |
| 823A-NT-NLS-NB-1050 |  | Concreting (Base Slab) (225m3) | 1d | 2016-04-22 A | 2016-04-22 A | 823A-NT-NLS-NB-1040 | 100% | 2016-05-31 | 2016-05-31 |  | Plant Operator [64 h]; Concrete Pump [64 h]; Crawler Crane/Mobile Crane [64 h]; Permanent Concrete [225 Cu m]; Concrete 45/20A [225 Cu m]; PY Concretor [256 h]; General Worker [256 h]; Plant and Equipment Operator (Crawler-mounted Mobile Crane) [64 h]; Rigger/Metal Formwork Erector [128 h] | 100% | 100% | 823A_AB | 225 | m3 | 225 | 225 |
| 823A-NT-NLS-NB-1060 |  | Curing (Base Slab) | 7d | 2016-04-23 A | 2016-04-29 A | 823A-NT-NLS-NB-1050 | 100% | 2016-06-01 | 2016-06-08 |  | General Worker [448 h] | 100% | 100% | 823A_AB |  |  |  |  |
| 823A-NT-NLS-NB-1070 |  | Preparation of construction joint for base slab | 1d | 2016-04-30 A | 2016-04-30 A | 823A-NT-NLS-NB-1050 | 100% | 2016-06-01 | 2016-06-01 | 823-6dPH | General Welder [128 h] | 100% | 100% | 823A_AB |  |  |  |  |
| 823A-NT-NLS-NB-1080 |  | Removal of formwork (Base Slab) | 1d | 2016-05-09 A | 2016-05-10 A | 823A-NT-NLS-NB-1070 | 100% | 2016-05-24 | 2016-05-24 |  | Crawler Crane/Mobile Crane [64 h]; Carpenter (Formwork - Civil Construction) [256 h]; Plant and Equipment Operator (Crawler-mounted Mobile Crane) [64 h] | 100% | 100% | 823A_AB |  |  |  |  |
| 823A-NT-NLS-NB-1090 |  | Erect internal formwork & Falsework (Wall & Roof) | 4d | 2016-05-11 A | 2016-05-16 A | 823A-NT-NLS-NB-1080 | 100% | 2016-05-25 | 2016-05-28 |  | Crawler Crane/Mobile Crane [256 h]; Plant and Equipment Operator (Crawler-mounted Mobile Crane) [256 h]; Carpenter (Formwork - Civil Construction) [2048 h]; Rigger/Metal Formwork Erector [1024 h] | 100% | 100% | 823A_AB |  |  |  |  |
| 823A-NT-NLS-NB-1100 |  | Rebar fixing (Wall & Roof) | 3d | 2016-05-17 A | 2016-05-19 A | 823A-NT-NLS-NB-1060 FF, 823A-NT-NLS-NB-1090 | 100% | 2016-05-30 | 2016-06-01 |  | Bar Bender & Fixer [1536 h]; Plant and Equipment Operator (Crawler-mounted Mobile Crane) [192 h]; Reinforcement [67234 kg]; Crawler Crane/Mobile Crane [192 h] | 100% | 100% | 823A_AB |  |  |  |  |
| 823A-NT-NLS-NB-1110 |  | Erect external formwork (Wall & Roof) | 2d | 2016-05-20 A | 2016-05-21 A | 823A-NT-NLS-NB-1100 | 100% | 2016-06-02 | 2016-06-03 |  | Crawler Crane/Mobile Crane [128 h]; Rigger/Metal Formwork Erector [512 h]; Carpenter (Formwork - Civil Construction) [1024 h]; Plant and Equipment Operator (Crawler-mounted Mobile Crane) [128 h] | 100% | 100% | 823A_AB |  |  |  |  |
| 823A-NT-NLS-NB-1120 |  | Concreting (Wall & Roof) (444m3) | 1d | 2016-05-23 A | 2016-05-23 A | 823A-NT-NLS-NB-1110 | 100% | 2016-06-04 | 2016-06-04 |  | Plant Operator [64 h]; Crawler Crane/Mobile Crane [64 h]; Concrete Pump [64 h]; Permanent Concrete [444 Cu m]; Concrete 45/20A [444 Cu m]; PY Concretor [256 h]; General Worker [256 h]; Plant and Equipment Operator (Crawler-mounted Mobile Crane) [64 h]; Rigger/Metal Formwork Erector [256 h] | 100% | 100% | 823A_AB | 444 | m3 | 444 | 444 |
| 823A-NT-NLS-NB-1130 |  | Curing (Wall & Roof) | 7d | 2016-05-24 A | 2016-05-30 A | 823A-NT-NLS-NB-1120 | 100% | 2016-06-06 | 2016-06-14 |  | General Worker [448 h] | 100% | 100% | 823A_AB |  |  |  |  |
| 823A-NT-NLS-NB-1140 |  | Preparation of construction joint for wall and roof | 1d | 2016-05-31 A | 2016-05-31 A | 823A-NT-NLS-NB-1130 | 100% | 2016-06-15 | 2016-06-15 | 823-6dPH | General Welder [128 h] | 100% | 100% | 823A_AB |  |  |  |  |
| 823A-NT-NLS-NB-1150 |  | Removal external formwork (Wall) | 1d | 2016-06-01 A | 2016-06-01 A | 823A-NT-NLS-NB-1120, 823A-NT-NLS-NB-1140 | 100% |  |  |  | Crawler Crane/Mobile Crane [64 h]; Carpenter (Formwork - Civil Construction) [256 h]; Plant and Equipment Operator (Crawler-mounted Mobile Crane) [64 h] | 100% | 100% | 823A_AB |  |  |  |  |
| 823A-NT-NLS-NB-1160 |  | Side walkway and cable bracket (102m3) | 13d | 2016-06-02 A | 2016-06-17 A | 823A-NT-NLS-NB-1150 | 100% |  |  |  | Plant Operator [832 h]; Permanent Concrete [102 Cu m]; Concrete 20/20C [102 Cu m]; Crawler Crane/Mobile Crane [832 h]; Concrete Pump [832 h]; Carpenter (Formwork - Civil Construction) [2496 h]; PY Concretor [1664 h]; General Worker [1664 h]; Plant and Equipment Operator (Crawler-mounted Mobile Crane) [832 h]; Rigger/Metal Formwork Erector [1664 h] | 100% | 100% | 823A_AB | 102 | m3 | 102 | 102 |
| 823A-NT-NLS-NB-1170 |  | Access opening to DC (DC access period) | 22d | 2016-06-18 A | 2016-06-18 A | 823A-NT-NLS-NB-1160 | 100% | 2016-06-18 | 2016-07-14 | 823-6dPH |  | 100% | 100% | 823A_AB |  |  |  |  |
| 823A-NT-NLS-NB-1180 |  | Remaining wall and roof slab (Closing of DC access opening) | 29d | 2016-06-18 A | 2016-06-18 A | 823A-NT-NLS-NB-1170 | 100% | 2016-07-15 | 2016-08-17 | 823-6dPH | Bar Bender & Fixer [7424 h]; PY Concretor [3712 h]; Plant and Equipment Operator (Crawler-mounted Mobile Crane) [1856 h]; Rigger/Metal Formwork Erector [3712 h]; General Worker [3712 h]; Crawler Crane/Mobile Crane [1856 h]; Carpenter (Formwork - Civil Construction) [7424 h] | 100% | 100% | 823A_AB |  |  |  |  |

| ID | WBS | Activity | Duration | Start | Finish | Predecessors | Complete | Planned start | Planned finish | Calendar | Resources | Actual Up to Date | UNITS | Total Quantity | Planned Up to Date | % Planned | % Actual | 823A_As-built | TIme Gain/Loss |
| --- | --- | --- | --- | --- | --- | --- | --- | --- | --- | --- | --- | --- | --- | --- | --- | --- | --- | --- | --- |
|  | 4 | **Backfilling** |  | 2016-09-13 | 2016-11-11 |  |  |  |  |  |  |  |  |  |  |  |  |  |  |
| 823A-NT-CC7A-1120 |  | Backfilling between tunnels (2000m3) | 14d | 2016-09-13 A | 2016-09-30 A | 823A-NT-NLS-SB-1170, 823A-NT-NLS-NB-1180 | 100% | 2016-09-01 | 2016-09-17 | 823-6dPH | Rigger/Metal Formwork Erector [11008 h]; Plant and Equipment Operator (Excavator) [5504 h]; Vibration Roller [2752 h]; General Worker [5504 h]; Backhoe [5504 h] | 2000 | m3 | 2000 | 2000 | 100% | 100% | 823A_AB |  |
| 823A-NT-CC7A-1130 |  | Remove Strut S2 | 3d | 2016-10-03 A | 2016-10-11 A | 823A-NT-CC7A-1120 | 100% | 2016-10-03 | 2016-10-05 | 823-6dPH |  |  |  |  |  | 100% | 100% | 823A_AB |  |
| 823A-NT-CC7A-1150 |  | Remove Strut S1 | 2d | 2016-10-11 A | 2016-11-01 A | 823A-NT-CC7A-1140 | 100% | 2016-10-22 | 2016-10-24 | 823-6dPH |  |  |  |  |  | 100% | 100% | 823A_AB |  |
| 823A-NT-CC7A-1140 |  | Backfilling up top S1 Soffit | 13d | 2016-10-28 A | 2016-11-01 A | 823A-NT-CC7A-1130 | 100% | 2016-10-06 | 2016-10-21 | 823-6dPH |  |  |  |  |  | 100% | 100% | 823A_AB |  |
| 823A-NT-CC7A-1160 |  | Backfilling up top S0 Soffit | 6d | 2016-11-01 A | 2016-11-05 A | 823A-NT-CC7A-1150 | 100% | 2016-11-07 | 2016-11-12 | 823-6dPH |  |  |  |  |  | 100% | 100% | 823A_AB |  |
| 823A-NT-CC7A-1170 |  | Remove Strut S0 | 2d | 2016-11-07 A | 2016-11-08 A | 823A-NT-CC7A-1160 | 100% | 2016-11-14 | 2016-11-15 | 823-6dPH |  |  |  |  |  | 100% | 100% | 823A_AB |  |
| 823A-NT-CC7A-1180 |  | Backfilling up to ground level | 3d | 2016-11-09 A | 2016-11-11 A | 823A-NT-CC7A-1170 | 100% | 2016-11-16 | 2016-11-18 | 823-6dPH |  |  |  |  |  | 100% | 100% | 823A_AB |  |
|  | 2 | **Cut and Cover Tunnel** |  | 2010-12-06 | 2017-03-31 |  |  |  |  |  |  |  |  |  |  |  |  |  |  |
|  | 1 | **Box 7B** |  | 2010-12-06 | 2016-05-05 |  |  |  |  |  |  |  |  |  |  |  |  |  |  |
|  | 1 | **D- Wall Construction** |  | 2010-12-06 | 2011-11-21 |  |  |  |  |  |  |  |  |  |  |  |  |  |  |
| 823A-NT-7B-DW-1010 |  | Site Possession and Site set up and Mobilization | 8d | 2010-12-06 A | 2010-12-14 A | 823A-NT-NLS-DW-1010 SS | 100% |  |  | 823-6dPH |  |  |  |  |  | 100% | 100% | 823A_AB |  |
| 823A-NT-7B-DW-1020 |  | Pre-drilling and guidewall | 65d | 2010-12-15 A | 2011-03-07 A | 823A-NT-7B-DW-1010 | 100% |  |  |  |  |  |  |  |  | 100% | 100% | 823A_AB |  |
| 823A-NT-7B-DW-1030 |  | D-wall construction (1451m3) | 95d | 2011-03-08 A | 2011-07-05 A | 823A-NT-7B-DW-1020 FS+6d | 100% |  |  |  | Plant and Equipment Operator (Crawler-mounted Mobile Crane) [12160 h]; Concrete 45/20A [1451 Cu m]; Temporary Concrete [1451 Cu m]; Crawler Crane/Mobile Crane [6080 h]; D-Wall [26 NO] | 1451 | m3 | 1451 | 1451 | 100% | 100% | 823A_AB |  |
| 823A-NT-7B-DW-1040 |  | Sonic test, shear pin, toe grout and pumping Test | 116d | 2011-07-06 A | 2011-11-21 A | 823A-NT-7B-DW-1030 | 100% |  |  |  | Plant Operator [14848 h]; Grouting Worker [14848 h]; General Worker [14848 h]; Plant and Equipment Operator (Crawler-mounted Mobile Crane) [7424 h]; Air Compressor [14848 h]; Shear Pin [130 NO]; Toe Grout [130 NO]; G.I Rig/Drill Rig [14848 h]; Grouting Machine [7424 h]; Crawler Crane/Mobile Crane [7424 h] |  |  |  |  | 100% | 100% | 823A_AB |  |
|  | 2 | **Excavation and Lateral Support** |  | 2011-11-29 | 2012-07-12 |  |  |  |  |  |  |  |  |  |  |  |  |  |  |
| 823A-NT-7B-ELS-1010 |  | Excavate from ground level to formation level -5.5mPD (4559m3) | 143d | 2011-11-29 A | 2012-05-26 A | 823A-NT-7B-DW-1040 | 100% |  |  | 823-6dPH | Plant Operator [18304 h]; Excavation Materials [4559 Cu m]; Soil Excavation [4559 Cu m]; Backhoe [18304 h]; General Worker [18304 h]; Truck Driver (Heavy Goods Vehicles) [64064 h]; Dump Truck [64064 h] | 4559 | m3 | 4559 | 4559 | 100% | 100% | 823A_AB |  |
| 823A-NT-7B-ELS-1020 |  | Install rock dowel and tie back | 143d | 2012-01-16 A | 2012-07-12 A | 823A-NT-7B-ELS-1010 SS | 100% |  |  |  | General Worker [18304 h]; Air Compressor [9152 h]; Plant Operator [18304 h]; Grouting Worker [18304 h]; Grouting Machine [9152 h]; G.I Rig/Drill Rig [18304 h] |  |  |  |  | 100% | 100% | 823A_AB |  |
| 823A-NT-7B-ELS-1040 |  | Placing of blinding layer (North Bound) | 2d | 2012-05-18 A | 2012-05-19 A | 823A-NT-7B-ELS-1010 | 100% |  |  |  | Temporary Concrete [38 Cu m]; Concrete 20/20C [38 Cu m]; Crawler Crane/Mobile Crane [128 h]; Plant and Equipment Operator (Crawler-mounted Mobile Crane) [128 h]; PY Concretor [128 h]; General Worker [256 h] |  |  |  |  | 100% | 100% | 823A_AB |  |
| 823A-NT-7B-ELS-1030 |  | Placing of blinding layer (South Bound) | 2d | 2012-06-01 A | 2012-06-02 A | 823A-NT-7B-ELS-1010 | 100% |  |  |  | Concrete 20/20C [38 Cu m]; Temporary Concrete [38 Cu m]; PY Concretor [128 h]; Crawler Crane/Mobile Crane [128 h]; Plant and Equipment Operator (Crawler-mounted Mobile Crane) [128 h]; General Worker [128 h] |  |  |  |  | 100% | 100% | 823A_AB |  |
|  | 3 | **Structure** |  | 2012-06-04 | 2016-05-05 |  |  |  |  |  |  |  |  |  |  |  |  |  |  |
| 823A-NT-7B-STR-1010 |  | Construction of Bay 2 to Bay 7a (3565m3) | 129d | 2012-06-04 A | 2012-11-06 A | 823A-D-CCT-FW-1040, 823A-NT-7B-ELS-1040, 823A-NT-7B-ELS-1030, 823A-NT-7B-ELS-1020 FF | 100% |  |  | 823-6dPH | Plant and Equipment Operator (Crawler-mounted Mobile Crane) [8256 h]; Rigger/Metal Formwork Erector [16512 h]; Carpenter (Formwork - Civil Construction) [99072 h]; PY Concretor [16512 h]; Bar Bender & Fixer [66048 h]; General Worker [33024 h]; Concrete Pump [8256 h]; Crawler Crane/Mobile Crane [8256 h] | 3565 | m3 | 3565 | 3565 | 100% | 100% | 823A_AB |  |
| 823A-NT-7B-STR-1020 |  | Side walkway and cable bracket (Southbound) | 30d | 2015-10-02 A | 2015-10-31 A | 823A-NT-TBM-SB-1130 | 100% | 2015-10-02 | 2015-11-06 | 823-6dPH | Plant Operator [1920 h]; Carpenter (Formwork - Civil Construction) [5760 h]; Concrete Pump [1920 h]; PY Concretor [3840 h]; Plant and Equipment Operator (Crawler-mounted Mobile Crane) [3840 h]; General Worker [3840 h]; Rigger/Metal Formwork Erector [3840 h]; Crawler Crane/Mobile Crane [1920 h] | 240 | m3 | 240 | 240 | 100% | 100% | 823A_AB | -31 |
| 823A-NT-7B-STR-1030 |  | Side walkway and cable bracket (Northbound) | 25d | 2016-05-03 A | 2016-05-05 A | 823A-NT-6B-B13S-1090 | 100% | 2016-05-03 | 2016-06-01 | 823-6dPH | General Worker [3200 h]; Plant and Equipment Operator (Crawler-mounted Mobile Crane) [1600 h]; Rigger/Metal Formwork Erector [3200 h]; Concrete Pump [1600 h]; Crawler Crane/Mobile Crane [1600 h]; PY Concretor [3200 h]; Plant Operator [1600 h]; Carpenter (Formwork - Civil Construction) [4800 h] | 240 | m3 | 240 | 240 | 100% | 100% | 823A_AB | -24 |

| ID | WBS | Activity | Duration | Start | Finish | Predecessors | Complete | Planned start | Planned finish | Calendar | Resources | Actual Up to Date | UNITS | Total Quantity | Planned Up to Date | % Planned | % Actual | 823A_As-built | TIme Gain/Loss |
| --- | --- | --- | --- | --- | --- | --- | --- | --- | --- | --- | --- | --- | --- | --- | --- | --- | --- | --- | --- |
|  | 4 | **Backfilling** |  | 2012-11-07 | 2012-12-31 |  |  |  |  |  |  |  |  |  |  |  |  |  |  |
| 823A-NT-7B-BF-1010 |  | Backfilling (1344m3) | 28d | 2012-11-07 A | 2012-12-31 A | 823A-NT-7B-STR-1010 | 100% | 2012-11-07 | 2012-12-08 | 823-6dPH | Backhoe [3584 h]; Vibration Roller [1792 h]; Crawler Crane/Mobile Crane [1792 h]; Rigger/Metal Formwork Erector [7168 h]; General Welder [1792 h]; Truck Driver (Heavy Goods Vehicles) [10752 h]; Dump Truck [10752 h]; Plant Operator [3584 h]; Plant and Equipment Operator (Crawler-mounted Mobile Crane) [1792 h] | 1344 | m3 | 1344 | 1344 | 100% | 100% | 823A_AB |  |
|  | 2 | **Box 6A** |  | 2012-09-01 | 2016-07-18 |  |  |  |  |  |  |  |  |  |  |  |  |  |  |
|  | 1 | **Excavation and Lateral Support** |  | 2012-09-01 | 2013-09-21 |  |  |  |  |  |  |  |  |  |  |  |  |  |  |
| 823A-NT-6A-ELS-1010 |  | Scheme Design, Mobilization, Site set up & Material delivery and Instrumentations | 58d | 2012-09-01 A | 2012-11-10 A |  | 100% |  |  |  |  |  |  |  |  | 100% | 100% | 823A_AB |  |
| 823A-NT-6A-ELS-1020 |  | Downstream pipe pile wall construction (45 nos.) and grout curtain (45 nos.) | 62d | 2012-11-12 A | 2013-01-05 A | 823A-NT-6A-ELS-1010 | 100% | 2012-11-12 | 2013-01-25 |  | G.I Rig/Drill Rig [7936 h]; Crawler Crane/Mobile Crane [3968 h]; Weld Set [3968 h]; Grouting Machine [3968 h]; Air Compressor [3968 h]; General Welder [3968 h]; Grouting Worker [3968 h]; Metal Worker [3968 h]; Plant Operator [3968 h]; Plant and Equipment Operator (Crawler-mounted Mobile Crane) [3968 h]; General Worker [16384 h] |  |  |  |  | 100% | 100% | 823A_AB |  |
| 823A-NT-6A-ELS-1060 |  | Erection of temporary working platform for Up stream and Installation of Instrumentation System | 13d | 2012-12-10 A | 2012-12-24 A | 823A-NT-6A-ELS-1040 SS | 100% |  |  |  | Rigger/Metal Formwork Erector [832 h]; Plant and Equipment Operator (Crawler-mounted Mobile Crane) [832 h]; Crawler Crane/Mobile Crane [832 h] |  |  |  |  | 100% | 100% | 823A_AB |  |
| 823A-NT-6A-ELS-1030 |  | Curtain Grout for cut slope (120 nos.) | 50d | 2012-12-28 A | 2013-01-31 A | 823A-NT-6A-ELS-1020 | 100% | 2013-07-26 | 2013-09-23 |  | General Worker [12800 h]; Plant Operator [6400 h]; Plant and Equipment Operator (Crawler-mounted Mobile Crane) [3200 h]; Air Compressor [6400 h]; Weld Set [3200 h]; Grouting Machine [3200 h]; Crawler Crane/Mobile Crane [3200 h]; G.I Rig/Drill Rig [6400 h] |  |  |  |  | 100% | 100% | 823A_AB |  |
| 823A-NT-6A-ELS-1070 |  | Upstream pipe pile wall construction adjacent to WTSSTR, (17nos.) | 27d | 2013-01-02 A | 2013-02-02 A | 823A-NT-6A-ELS-1060 | 100% | 2012-12-27 | 2013-01-28 |  | G.I Rig/Drill Rig [1728 h]; Crawler Crane/Mobile Crane [1728 h]; Weld Set [1728 h]; Grouting Machine [1728 h]; Air Compressor [1728 h]; General Welder [1728 h]; Grouting Worker [3456 h]; General Worker [3456 h]; Plant Operator [3456 h]; Plant and Equipment Operator (Crawler-mounted Mobile Crane) [1728 h] |  |  |  |  | 100% | 100% | 823A_AB |  |
| 823A-NT-6A-ELS-1080 |  | Upstream pipe pile wall construction at Kam Tin River, 15m depth, 42nos. 1drill rig) | 33d | 2013-01-08 A | 2013-02-02 A | 823A-NT-6A-ELS-1070 | 100% | 2013-01-29 | 2013-03-11 |  | G.I Rig/Drill Rig [2112 h]; Crawler Crane/Mobile Crane [2112 h]; Weld Set [2112 h]; Grouting Machine [2112 h]; Air Compressor [2112 h]; General Welder [2112 h]; General Worker [4224 h]; Plant Operator [4224 h]; Plant and Equipment Operator (Crawler-mounted Mobile Crane) [2112 h]; Grouting Worker [4224 h] |  |  |  |  | 100% | 100% | 823A_AB |  |
| 823A-NT-6A-ELS-1090 |  | Excavation and soil nail installation | 75d | 2013-01-15 A | 2013-09-18 A | 823A-NT-6A-ELS-1030, 823A-NT-6A-ELS-1080, 823A-KTRD-S6-1030, 823A-KTRD-S6-1040 | 100% | 2013-04-02 | 2013-07-03 |  | Soil Excavation [15000 Cu m]; Backhoe [14400 h]; G.I Rig/Drill Rig [9600 h]; Crawler Crane/Mobile Crane [4800 h]; Plant and Equipment Operator (Excavator) [14400 h]; General Worker [9600 h]; Truck Driver (Heavy Goods Vehicles) [48000 h]; Air Compressor [9600 h]; Grouting Machine [4800 h]; Plant Operator [14400 h]; Grouting Worker [9600 h] | 17656 | m3 | 17656 | 17656 | 100% | 100% | 823A_AB |  |
| 823A-NT-6A-ELS-1040 |  | Drilling for ground improvement only (if require) | 63d | 2013-03-02 A | 2013-09-18 A | 823A-NT-6A-ELS-1020 SS | 100% | 2012-12-10 | 2013-02-27 |  |  |  |  |  |  | 100% | 100% | 823A_AB |  |
| 823A-NT-6A-ELS-1050 |  | If settlement reach the AAA alarm & action level TAM grouting will apply during excavation | 30d | 2013-03-02 A | 2013-09-18 A | 823A-NT-6A-ELS-1040, 823A-NT-6A-ELS-1090 SS | 100% | 2013-04-11 | 2013-05-16 |  |  |  |  |  |  | 100% | 100% | 823A_AB |  |
| 823A-NT-6A-ELS-1100 |  | Excavation for rock and blinding layer | 30d | 2013-06-19 A | 2013-09-21 A | 823A-NT-6A-ELS-1050, 823A-NT-6A-ELS-1090 | 100% | 2013-08-24 | 2013-09-28 |  | Rock Excavation [2800 Cu m]; G.I Rig/Drill Rig [5760 h]; Breaker [1920 h]; Backhoe [3840 h]; Crawler Crane/Mobile Crane [1920 h]; Dump Truck [3840 h]; Grouting Machine [1920 h]; Air Compressor [3840 h]; General Welder [3840 h]; Grouting Worker [3840 h]; Plant Operator [5760 h]; Plant and Equipment Operator (Excavator) [5760 h]; Plant and Equipment Operator (Crawler-mounted Mobile Crane) [1920 h]; Truck Driver (Heavy Goods Vehicles) [3840 h] | 3110 | m3 | 3110 | 3110 | 100% | 100% | 823A_AB | -8 |
|  | 2 | **Structure** |  | 2013-09-23 | 2015-10-02 |  |  |  |  |  |  |  |  |  |  |  |  |  |  |
|  | 1 | **Bay 6** |  | 2013-09-28 | 2015-10-02 |  |  |  |  |  |  |  |  |  |  |  |  |  |  |
|  | 1 | **Southbound (Down Track)** |  |  |  |  |  |  |  |  |  |  |  |  |  |  |  |  |  |
|  | 2 | **Northbound (Up Track)** |  | 2013-09-28 | 2015-10-02 |  |  |  |  |  |  |  |  |  |  |  |  |  |  |
| 823A-NT-6A-B6N-1010 |  | Placing of waterproof member T-lock & testing | 1d | 2013-09-28 A | 2013-09-30 A | 823A-NT-6A-ELS-1090 | 100% | 2013-11-01 | 2013-11-01 | 823-6dPH | General Worker [128 h] |  |  |  |  | 100% | 100% | 823A_AB |  |
| 823A-NT-6A-B6N-1020 |  | Erect external formwork | 1d | 2013-09-30 A | 2013-10-02 A | 823A-NT-6A-B6N-1010 | 100% | 2013-11-02 | 2013-11-02 | 823-6dPH | Crawler Crane/Mobile Crane [64 h]; Carpenter (Formwork - Civil Construction) [256 h]; Plant and Equipment Operator (Crawler-mounted Mobile Crane) [64 h] |  |  |  |  | 100% | 100% | 823A_AB |  |
| 823A-NT-6A-B6N-1030 |  | Rebar fixing | 2d | 2013-10-02 A | 2013-10-03 A | 823A-NT-6A-B6N-1020 | 100% | 2013-11-04 | 2013-11-05 |  | Reinforcement [5785 kg]; Crawler Crane/Mobile Crane [128 h]; Bar Bender & Fixer [1024 h]; Plant and Equipment Operator (Crawler-mounted Mobile Crane) [128 h] |  |  |  |  | 100% | 100% | 823A_AB |  |
| 823A-NT-6A-B6N-1040 |  | Erect internal kicker formwork | 2d | 2013-10-03 A | 2013-10-04 A | 823A-NT-6A-B6N-1030 | 100% | 2013-11-06 | 2013-11-07 |  | Crawler Crane/Mobile Crane [128 h]; Plant and Equipment Operator (Crawler-mounted Mobile Crane) [128 h]; Carpenter (Formwork - Civil Construction) [512 h] |  |  |  |  | 100% | 100% | 823A_AB |  |
| 823A-NT-6A-B6N-1050 |  | Concreting (164m3) | 1d | 2013-10-05 A | 2013-10-05 A | 823A-NT-6A-B6N-1040 | 100% | 2013-11-08 | 2013-11-08 |  | Permanent Concrete [164 Cu m]; Concrete 45/20A [164 Cu m]; Crawler Crane/Mobile Crane [64 h]; Concrete Pump [64 h]; PY Concretor [256 h]; General Worker [256 h]; Plant and Equipment Operator (Crawler-mounted Mobile Crane) [64 h]; Rigger/Metal Formwork Erector [256 h]; Plant Operator [64 h] | 164 | m3 | 164 | 164 | 100% | 100% | 823A_AB |  |
| 823A-NT-6A-B6N-1060 |  | Curing | 7d | 2013-10-07 A | 2013-10-14 A | 823A-NT-6A-B6N-1050 | 100% | 2013-11-09 | 2013-11-16 |  | General Worker [448 h] |  |  |  |  | 100% | 100% | 823A_AB |  |
| 823A-NT-6A-B6N-1070 |  | Preparation of construction joint for base slab | 1d | 2013-10-07 A | 2013-10-07 A | 823A-NT-6A-B6N-1050 | 100% | 2013-11-09 | 2013-11-09 | 823-6dPH | General Worker [128 h] |  |  |  |  | 100% | 100% | 823A_AB |  |
| 823A-NT-6A-B6N-1080 |  | Removal of formwork | 1d | 2013-10-08 A | 2013-10-08 A | 823A-NT-6A-B6N-1070 SS | 100% | 2013-11-09 | 2013-11-09 |  | Crawler Crane/Mobile Crane [64 h]; Carpenter (Formwork - Civil Construction) [256 h]; Plant and Equipment Operator (Crawler-mounted Mobile Crane) [64 h] |  |  |  |  | 100% | 100% | 823A_AB |  |
| 823A-NT-6A-B6N-1090 |  | Erect internal formwork & Falsework | 4d | 2013-10-23 A | 2013-11-04 A | 823A-NT-6A-B6N-1080, 823A-NT-6A-B7BN-1090 SS | 100% | 2014-01-28 | 2014-02-04 |  | Crawler Crane/Mobile Crane [256 h]; Plant and Equipment Operator (Crawler-mounted Mobile Crane) [256 h]; Carpenter (Formwork - Civil Construction) [2048 h]; Rigger/Metal Formwork Erector [1024 h] |  |  |  |  | 100% | 100% | 823A_AB | +30 |
| 823A-NT-6A-B6N-1100 |  | Rebar fixing | 3d | 2013-11-05 A | 2013-11-07 A | 823A-NT-6A-B6N-1090 | 100% | 2014-01-15 | 2014-01-17 |  | Reinforcement [11365 kg]; Crawler Crane/Mobile Crane [192 h]; Bar Bender & Fixer [1536 h]; Plant and Equipment Operator (Crawler-mounted Mobile Crane) [192 h] |  |  |  |  | 100% | 100% | 823A_AB | +30 |
| 823A-NT-6A-B6N-1110 |  | Erect external formwork | 2d | 2013-11-08 A | 2013-11-09 A | 823A-NT-6A-B6N-1100 | 100% | 2014-01-18 | 2014-01-20 |  | Crawler Crane/Mobile Crane [128 h]; Carpenter (Formwork - Civil Construction) [768 h]; Plant and Equipment Operator (Crawler-mounted Mobile Crane) [128 h] |  |  |  |  | 100% | 100% | 823A_AB | +30 |
| 823A-NT-6A-B6N-1120 |  | Concreting (242m3) | 1d | 2013-11-11 A | 2013-11-11 A | 823A-NT-6A-B6N-1110 | 100% | 2014-01-21 | 2014-01-21 |  | Permanent Concrete [242 Cu m]; Concrete 45/20A [242 Cu m]; Crawler Crane/Mobile Crane [64 h]; Concrete Pump [64 h]; PY Concretor [256 h]; General Worker [256 h]; Plant and Equipment Operator (Crawler-mounted Mobile Crane) [64 h]; Rigger/Metal Formwork Erector [256 h]; Plant Operator [64 h] | 242 | m3 | 242 | 242 | 100% | 100% | 823A_AB | +30 |
| 823A-NT-6A-B6N-1130 |  | Curing | 10d | 2013-11-12 A | 2013-11-22 A | 823A-NT-6A-B6N-1120 | 100% | 2014-01-22 | 2014-02-05 |  | General Worker [640 h] |  |  |  |  | 100% | 100% | 823A_AB | +30 |
| 823A-NT-6A-B6N-1140 |  | Preparation of construction joint for wall and roof | 1d | 2013-11-12 A | 2013-11-12 A | 823A-NT-6A-B6N-1120 | 100% | 2014-01-22 | 2014-01-22 | 823-6dPH | General Worker [128 h] |  |  |  |  | 100% | 100% | 823A_AB | +30 |
| 823A-NT-6A-B6N-1150 |  | Removal external and internal formwork for wall | 2d | 2013-11-12 A | 2013-11-13 A | 823A-NT-6A-B6N-1140 SS | 100% | 2014-01-22 | 2014-01-23 |  | Crawler Crane/Mobile Crane [128 h]; Carpenter (Formwork - Civil Construction) [512 h]; Plant and Equipment Operator (Crawler-mounted Mobile Crane) [128 h] |  |  |  |  | 100% | 100% | 823A_AB | +30 |
| 823A-NT-6A-B6N-1160 |  | Removal internal falsework and formwork for roof | 1d | 2013-11-23 A | 2013-11-23 A | 823A-NT-6A-B6N-1130, 823A-NT-6A-B6N-1150 | 100% | 2014-02-06 | 2014-02-06 |  | Crawler Crane/Mobile Crane [64 h]; Plant and Equipment Operator (Crawler-mounted Mobile Crane) [64 h]; Carpenter (Formwork - Civil Construction) [256 h]; Rigger/Metal Formwork Erector [256 h] |  |  |  |  | 100% | 100% | 823A_AB |  |
| 823A-NT-6A-B6N-1170 |  | Side walkway and cable bracket (19m3) | 5d | 2015-03-27 A | 2015-10-02 A | 823A-NT-6A-B6N-1160, 823A-NT-6A-B7BN-1170 SS, 823A-NT-6A-B7BS-1170 | 100% | 2015-03-13 | 2015-03-18 |  | Permanent Concrete [19 Cu m]; Concrete 20/20C [19 Cu m]; Crawler Crane/Mobile Crane [320 h]; Concrete Pump [320 h]; Carpenter (Formwork - Civil Construction) [960 h]; PY Concretor [640 h]; Plant and Equipment Operator (Crawler-mounted Mobile Crane) [320 h]; Rigger/Metal Formwork Erector [640 h]; General Worker [640 h] | 19 | m3 | 19 | 19 | 100% | 100% | 823A_AB |  |

| ID | WBS | Activity | Duration | Start | Finish | Predecessors | Complete | Planned start | Planned finish | Calendar | Resources | % Planned | % Actual | 823A_As-built | Actual Up to Date | UNITS | Total Quantity | Planned Up to Date | TIme Gain/Loss |
| --- | --- | --- | --- | --- | --- | --- | --- | --- | --- | --- | --- | --- | --- | --- | --- | --- | --- | --- | --- |
|  | 3 | **Central Base Slab** |  |  |  |  |  |  |  |  |  |  |  |  |  |  |  |  |  |
|  | 2 | **Bay 7B** |  | 2013-09-28 | 2015-10-02 |  |  |  |  |  |  |  |  |  |  |  |  |  |  |
|  | 1 | **Southbound (Down Track)** |  | 2013-09-28 | 2014-05-31 |  |  |  |  |  |  |  |  |  |  |  |  |  |  |
| 823A-NT-6A-B7BS-1010 |  | Placing of waterproof member T-lock & testing | 1d | 2013-09-28 A | 2013-09-30 A | 823A-NT-6A-B11C-1070, 823A-NT-6A-ELS-1100 | 100% | 2013-12-06 | 2013-12-06 | 823-6dPH | General Worker [128 h] | 100% | 100% | 823A_AB |  |  |  |  |  |
| 823A-NT-6A-B7BS-1020 |  | Erect external formwork | 1d | 2013-09-30 A | 2013-10-02 A | 823A-NT-6A-B7BS-1010 | 100% | 2013-12-07 | 2013-12-07 | 823-6dPH | Crawler Crane/Mobile Crane [64 h]; Carpenter (Formwork - Civil Construction) [256 h]; Plant and Equipment Operator (Crawler-mounted Mobile Crane) [64 h] | 100% | 100% | 823A_AB |  |  |  |  |  |
| 823A-NT-6A-B7BS-1030 |  | Rebar fixing | 2d | 2013-10-05 A | 2013-10-08 A | 823A-NT-6A-B7BS-1020 | 100% | 2013-12-09 | 2013-12-10 |  | Reinforcement [11569 kg]; Crawler Crane/Mobile Crane [128 h]; Bar Bender & Fixer [1024 h]; Plant and Equipment Operator (Crawler-mounted Mobile Crane) [128 h] | 100% | 100% | 823A_AB |  |  |  |  |  |
| 823A-NT-6A-B7BS-1040 |  | Erect internal kicker formwork | 2d | 2013-10-09 A | 2013-10-17 A | 823A-NT-6A-B7BS-1030 | 100% | 2013-11-28 | 2013-11-29 |  | Crawler Crane/Mobile Crane [128 h]; Plant and Equipment Operator (Crawler-mounted Mobile Crane) [128 h]; Carpenter (Formwork - Civil Construction) [512 h] | 100% | 100% | 823A_AB |  |  |  |  |  |
| 823A-NT-6A-B7BS-1050 |  | Concreting (121m3) | 1d | 2013-10-18 A | 2013-10-18 A | 823A-NT-6A-B7BS-1040 | 100% | 2013-11-30 | 2013-11-30 |  | Permanent Concrete [121 Cu m]; Concrete 45/20A [121 Cu m]; Crawler Crane/Mobile Crane [64 h]; Concrete Pump [64 h]; PY Concretor [256 h]; General Worker [256 h]; Rigger/Metal Formwork Erector [256 h]; Plant Operator [64 h]; Plant and Equipment Operator (Crawler-mounted Mobile Crane) [64 h] | 100% | 100% | 823A_AB | 121 | m3 | 121 | 121 |  |
| 823A-NT-6A-B7BS-1060 |  | Curing | 7d | 2013-10-19 A | 2013-10-19 A | 823A-NT-6A-B7BS-1050 | 100% | 2013-12-02 | 2013-12-09 |  | General Worker [448 h] | 100% | 100% | 823A_AB |  |  |  |  |  |
| 823A-NT-6A-B7BS-1080 |  | Removal of formwork | 1d | 2013-10-19 A | 2013-10-19 A | 823A-NT-6A-B7BS-1070 SS | 100% | 2013-12-02 | 2013-12-02 |  | Crawler Crane/Mobile Crane [64 h]; Carpenter (Formwork - Civil Construction) [256 h]; Plant and Equipment Operator (Crawler-mounted Mobile Crane) [64 h] | 100% | 100% | 823A_AB |  |  |  |  |  |
| 823A-NT-6A-B7BS-1070 |  | Preparation of construction joint for base slab | 1d | 2013-10-21 A | 2013-10-21 A | 823A-NT-6A-B7BS-1050 | 100% | 2013-12-02 | 2013-12-02 | 823-6dPH | General Worker [128 h] | 100% | 100% | 823A_AB |  |  |  |  |  |
| 823A-NT-6A-B7BS-1090 |  | Erect internal formwork & Falsework | 4d | 2013-11-01 A | 2013-11-04 A | 823A-NT-6A-B7BS-1080 | 100% | 2013-11-01 | 2013-11-05 |  | Crawler Crane/Mobile Crane [256 h]; Plant and Equipment Operator (Crawler-mounted Mobile Crane) [256 h]; Rigger/Metal Formwork Erector [1024 h]; Carpenter (Formwork - Civil Construction) [2048 h] | 100% | 100% | 823A_AB |  |  |  |  | +27 |
| 823A-NT-6A-B7BS-1100 |  | Rebar fixing | 3d | 2013-11-05 A | 2013-11-07 A | 823A-NT-6A-B7BS-1090 | 100% | 2013-11-06 | 2013-11-08 |  | Reinforcement [22729 kg]; Crawler Crane/Mobile Crane [192 h]; Bar Bender & Fixer [1536 h]; Plant and Equipment Operator (Crawler-mounted Mobile Crane) [192 h] | 100% | 100% | 823A_AB |  |  |  |  | +25 |
| 823A-NT-6A-B7BS-1110 |  | Erect external formwork | 2d | 2013-11-08 A | 2013-11-09 A | 823A-NT-6A-B7BS-1100 | 100% | 2013-11-09 | 2013-11-11 |  | Crawler Crane/Mobile Crane [128 h]; Carpenter (Formwork - Civil Construction) [768 h]; Plant and Equipment Operator (Crawler-mounted Mobile Crane) [128 h] | 100% | 100% | 823A_AB |  |  |  |  | +25 |
| 823A-NT-6A-B7BS-1120 |  | Concreting (121m3) | 1d | 2013-11-11 A | 2013-11-11 A | 823A-NT-6A-B7BS-1110 | 100% | 2013-11-12 | 2013-11-12 |  | Permanent Concrete [121 Cu m]; Concrete 45/20A [121 Cu m]; Crawler Crane/Mobile Crane [64 h]; Concrete Pump [64 h]; PY Concretor [256 h]; General Worker [256 h]; Plant and Equipment Operator (Crawler-mounted Mobile Crane) [64 h]; Rigger/Metal Formwork Erector [256 h]; Plant Operator [64 h] | 100% | 100% | 823A_AB | 121 | m3 | 121 | 121 | +25 |
| 823A-NT-6A-B7BS-1130 |  | Curing | 10d | 2013-11-12 A | 2013-11-22 A | 823A-NT-6A-B7BS-1120 | 100% | 2013-11-13 | 2013-11-23 |  | General Worker [640 h] | 100% | 100% | 823A_AB |  |  |  |  | +25 |
| 823A-NT-6A-B7BS-1140 |  | Preparation of construction joint for wall and roof | 1d | 2013-11-12 A | 2013-11-12 A | 823A-NT-6A-B7BS-1120 | 100% | 2013-11-13 | 2013-11-13 | 823-6dPH | General Worker [128 h] | 100% | 100% | 823A_AB |  |  |  |  | +25 |
| 823A-NT-6A-B7BS-1150 |  | Removal external and internal formwork for wall | 2d | 2013-11-12 A | 2013-11-13 A | 823A-NT-6A-B7BS-1140 SS | 100% | 2013-11-13 | 2013-11-14 |  | Crawler Crane/Mobile Crane [128 h]; Carpenter (Formwork - Civil Construction) [512 h]; Plant and Equipment Operator (Crawler-mounted Mobile Crane) [128 h] | 100% | 100% | 823A_AB |  |  |  |  | +25 |
| 823A-NT-6A-B7BS-1160 |  | Removal internal falsework and formwork for roof | 1d | 2013-11-23 A | 2013-11-23 A | 823A-NT-6A-B7BS-1150, 823A-NT-6A-B7BS-1130 | 100% | 2013-11-25 | 2013-11-25 |  | Crawler Crane/Mobile Crane [64 h]; Plant and Equipment Operator (Crawler-mounted Mobile Crane) [64 h]; Carpenter (Formwork - Civil Construction) [256 h]; Rigger/Metal Formwork Erector [256 h] | 100% | 100% | 823A_AB |  |  |  |  | +25 |
| 823A-NT-6A-B7BS-1170 |  | Side walkway and cable bracket (38m3) | 5d | 2014-05-27 A | 2014-05-31 A | 823A-NT-6A-B8S-1170, 823A-NT-6A-B7BS-1160 | 100% |  |  |  | Permanent Concrete [38 Cu m]; Concrete 20/20C [38 Cu m]; Crawler Crane/Mobile Crane [320 h]; Concrete Pump [320 h]; Carpenter (Formwork - Civil Construction) [960 h]; PY Concretor [640 h]; General Worker [640 h]; Plant and Equipment Operator (Crawler-mounted Mobile Crane) [320 h]; Rigger/Metal Formwork Erector [640 h]; Plant Operator [320 h] | 100% | 100% | 823A_AB | 38 | m3 | 38 | 38 | +27 |
|  | 2 | **Northbound (Up Track)** |  | 2013-09-28 | 2015-10-02 |  |  |  |  |  |  |  |  |  |  |  |  |  |  |
| 823A-NT-6A-B7BN-1010 |  | Placing of waterproof member T-lock & testing | 1d | 2013-09-28 A | 2013-09-30 A | 823A-NT-6A-B6N-1010 SS | 100% | 2013-11-01 | 2013-11-01 | 823-6dPH | General Worker [128 h] | 100% | 100% | 823A_AB |  |  |  |  |  |
| 823A-NT-6A-B7BN-1020 |  | Erect external formwork | 1d | 2013-09-30 A | 2013-10-02 A | 823A-NT-6A-B7BN-1010 | 100% | 2013-11-02 | 2013-11-02 | 823-6dPH | Carpenter (Formwork - Civil Construction) [256 h]; Plant and Equipment Operator (Crawler-mounted Mobile Crane) [64 h]; Crawler Crane/Mobile Crane [64 h] | 100% | 100% | 823A_AB |  |  |  |  |  |
| 823A-NT-6A-B7BN-1030 |  | Rebar fixing | 2d | 2013-10-02 A | 2013-10-03 A | 823A-NT-6A-B7BN-1020 | 100% | 2013-11-04 | 2013-11-05 |  | Bar Bender & Fixer [1024 h]; Plant and Equipment Operator (Crawler-mounted Mobile Crane) [128 h]; Reinforcement [11569 kg]; Crawler Crane/Mobile Crane [128 h] | 100% | 100% | 823A_AB |  |  |  |  |  |
| 823A-NT-6A-B7BN-1040 |  | Erect internal kicker formwork | 2d | 2013-10-03 A | 2013-10-04 A | 823A-NT-6A-B7BN-1030 | 100% | 2013-11-06 | 2013-11-07 |  | Carpenter (Formwork - Civil Construction) [512 h]; Plant and Equipment Operator (Crawler-mounted Mobile Crane) [128 h]; Crawler Crane/Mobile Crane [128 h] | 100% | 100% | 823A_AB |  |  |  |  |  |
| 823A-NT-6A-B7BN-1050 |  | Concreting (240m3) | 1d | 2013-10-05 A | 2013-10-05 A | 823A-NT-6A-B7BN-1040 | 100% | 2013-11-08 | 2013-11-08 |  | PY Concretor [256 h]; General Worker [256 h]; Rigger/Metal Formwork Erector [256 h]; Permanent Concrete [240 Cu m]; Concrete 45/20A [240 Cu m]; Plant Operator [64 h]; Concrete Pump [64 h]; Crawler Crane/Mobile Crane [64 h]; Plant and Equipment Operator (Crawler-mounted Mobile Crane) [64 h] | 100% | 100% | 823A_AB | 240 | m3 | 240 | 240 |  |
| 823A-NT-6A-B7BN-1060 |  | Curing | 7d | 2013-10-07 A | 2013-10-14 A | 823A-NT-6A-B7BN-1050, 823A-NT-6A-B6N-1060 FF | 100% | 2013-11-09 | 2013-11-16 |  | General Worker [448 h] | 100% | 100% | 823A_AB |  |  |  |  |  |
| 823A-NT-6A-B7BN-1070 |  | Preparation of construction joint for base slab | 1d | 2013-10-07 A | 2013-10-07 A | 823A-NT-6A-B7BN-1050 | 100% | 2013-11-09 | 2013-11-09 | 823-6dPH | General Worker [128 h] | 100% | 100% | 823A_AB |  |  |  |  |  |
| 823A-NT-6A-B7BN-1080 |  | Removal of formwork | 1d | 2013-10-08 A | 2013-10-08 A | 823A-NT-6A-B7BN-1070 SS | 100% | 2013-11-09 | 2013-11-09 |  | Crawler Crane/Mobile Crane [64 h]; Carpenter (Formwork - Civil Construction) [256 h]; Plant and Equipment Operator (Crawler-mounted Mobile Crane) [64 h] | 100% | 100% | 823A_AB |  |  |  |  |  |
| 823A-NT-6A-B7BN-1090 |  | Erect internal formwork & Falsework | 4d | 2013-10-23 A | 2013-11-09 A | 823A-NT-6A-B7BN-1080, 823A-NT-6A-B8N-1150 | 100% | 2014-01-28 | 2014-02-04 |  | Crawler Crane/Mobile Crane [256 h]; Plant and Equipment Operator (Crawler-mounted Mobile Crane) [256 h]; Rigger/Metal Formwork Erector [1024 h]; Carpenter (Formwork - Civil Construction) [2048 h] | 100% | 100% | 823A_AB |  |  |  |  | +30 |
| 823A-NT-6A-B7BN-1100 |  | Rebar fixing | 3d | 2013-11-11 A | 2013-11-19 A | 823A-NT-6A-B7BN-1090 | 100% | 2014-01-15 | 2014-01-17 |  | Crawler Crane/Mobile Crane [192 h]; Bar Bender & Fixer [1536 h]; Plant and Equipment Operator (Crawler-mounted Mobile Crane) [192 h]; Reinforcement [22729 kg] | 100% | 100% | 823A_AB |  |  |  |  | +30 |
| 823A-NT-6A-B7BN-1110 |  | Erect external formwork | 2d | 2013-11-20 A | 2013-11-21 A | 823A-NT-6A-B7BN-1100 | 100% | 2014-01-18 | 2014-01-20 |  | Crawler Crane/Mobile Crane [128 h]; Carpenter (Formwork - Civil Construction) [768 h]; Plant and Equipment Operator (Crawler-mounted Mobile Crane) [128 h] | 100% | 100% | 823A_AB |  |  |  |  | +30 |
| 823A-NT-6A-B7BN-1120 |  | Concreting (240m3) | 1d | 2013-11-22 A | 2013-11-22 A | 823A-NT-6A-B7BN-1110 | 100% | 2014-01-21 | 2014-01-21 |  | Crawler Crane/Mobile Crane [64 h]; Concrete Pump [64 h]; PY Concretor [256 h]; General Worker [256 h]; Plant and Equipment Operator (Crawler-mounted Mobile Crane) [64 h]; Rigger/Metal Formwork Erector [256 h]; Permanent Concrete [240 Cu m]; Concrete 45/20A [240 Cu m]; Plant Operator [64 h] | 100% | 100% | 823A_AB | 240 | m3 | 240 | 240 | +30 |
| 823A-NT-6A-B7BN-1130 |  | Curing | 10d | 2013-11-23 A | 2013-12-05 A | 823A-NT-6A-B7BN-1120 | 100% | 2014-01-22 | 2014-02-05 |  | General Worker [640 h] | 100% | 100% | 823A_AB |  |  |  |  | +30 |
| 823A-NT-6A-B7BN-1140 |  | Preparation of construction joint for wall and roof | 1d | 2013-11-23 A | 2013-11-23 A | 823A-NT-6A-B7BN-1120 | 100% | 2014-01-22 | 2014-01-22 | 823-6dPH | General Worker [128 h] | 100% | 100% | 823A_AB |  |  |  |  | +30 |
| 823A-NT-6A-B7BN-1150 |  | Removal external and internal formwork for wall | 2d | 2013-11-23 A | 2013-11-25 A | 823A-NT-6A-B7BN-1140 SS | 100% | 2014-01-22 | 2014-01-23 |  | Crawler Crane/Mobile Crane [128 h]; Carpenter (Formwork - Civil Construction) [512 h]; Plant and Equipment Operator (Crawler-mounted Mobile Crane) [128 h] | 100% | 100% | 823A_AB |  |  |  |  | +30 |
| 823A-NT-6A-B7BN-1160 |  | Removal internal falsework and formwork for roof | 1d | 2013-12-06 A | 2013-12-06 A | 823A-NT-6A-B7BN-1150, 823A-NT-6A-B7BN-1130 | 100% | 2014-01-04 | 2014-01-04 |  | Crawler Crane/Mobile Crane [64 h]; Plant and Equipment Operator (Crawler-mounted Mobile Crane) [64 h]; Carpenter (Formwork - Civil Construction) [256 h]; Rigger/Metal Formwork Erector [256 h] | 100% | 100% | 823A_AB |  |  |  |  |  |
| 823A-NT-6A-B7BN-1170 |  | Side walkway and cable bracket | 5d | 2015-03-27 A | 2015-10-02 A | 823A-NT-6A-B7BN-1160, 823A-NT-6A-B8N-1170 | 100% | 2015-03-13 | 2015-03-18 |  | PY Concretor [1280 h]; General Worker [1280 h]; Plant and Equipment Operator (Crawler-mounted Mobile Crane) [320 h]; Rigger/Metal Formwork Erector [1280 h]; Permanent Concrete [38 Cu m]; Concrete 20/20C [38 Cu m]; Plant Operator [320 h]; Crawler Crane/Mobile Crane [320 h]; Concrete Pump [320 h]; Carpenter (Formwork - Civil Construction) [960 h] | 100% | 100% | 823A_AB | 38 | m3 | 38 | 38 |  |

| ID | WBS | Activity | Duration | Start | Finish | Predecessors | Complete | Planned start | Planned finish | Calendar | Resources | % Planned | % Actual | 823A_As-built | Actual Up to Date | UNITS | Total Quantity | Planned Up to Date | TIme Gain/Loss |
| --- | --- | --- | --- | --- | --- | --- | --- | --- | --- | --- | --- | --- | --- | --- | --- | --- | --- | --- | --- |
|  | 3 | **Central Base Slab** |  | 2013-10-07 | 2013-10-21 |  |  |  |  |  |  |  |  |  |  |  |  |  |  |
| 823A-NT-6A-B7BC-1010 |  | Placing of waterproof member T-lock & testing | 1d | 2013-10-07 A | 2013-10-07 A | 823A-NT-6A-B11N-1080, 823A-NT-6A-B7BN-1060 | 100% | 2013-11-01 | 2013-11-01 | 823-6dPH | General Worker [128 h] | 100% | 100% | 823A_AB |  |  |  |  |  |
| 823A-NT-6A-B7BC-1020 |  | Rebar fixing | 2d | 2013-10-08 A | 2013-10-09 A | 823A-NT-6A-B7BC-1030 | 100% | 2013-11-04 | 2013-11-05 |  | Reinforcement [11569 kg]; Crawler Crane/Mobile Crane [128 h]; Bar Bender & Fixer [1024 h]; Plant and Equipment Operator (Crawler-mounted Mobile Crane) [128 h] | 100% | 100% | 823A_AB |  |  |  |  |  |
| 823A-NT-6A-B7BC-1030 |  | Erect external formwork | 1d | 2013-10-12 A | 2013-10-17 A | 823A-NT-6A-B7BC-1010 | 100% | 2013-11-02 | 2013-11-02 | 823-6dPH | Carpenter (Formwork - Civil Construction) [256 h]; Plant and Equipment Operator (Crawler-mounted Mobile Crane) [64 h]; Crawler Crane/Mobile Crane [64 h] | 100% | 100% | 823A_AB |  |  |  |  |  |
| 823A-NT-6A-B7BC-1040 |  | Concreting (222m3) | 1d | 2013-10-18 A | 2013-10-18 A | 823A-NT-6A-B7BC-1020 | 100% | 2013-11-06 | 2013-11-06 |  | Permanent Concrete [222 Cu m]; Concrete 45/20A [222 Cu m]; Crawler Crane/Mobile Crane [64 h]; Concrete Pump [64 h]; PY Concretor [256 h]; General Worker [256 h]; Plant and Equipment Operator (Crawler-mounted Mobile Crane) [64 h]; Rigger/Metal Formwork Erector [256 h]; Plant Operator [64 h] | 100% | 100% | 823A_AB | 222 | m3 | 222 | 222 |  |
| 823A-NT-6A-B7BC-1050 |  | Curing | 7d | 2013-10-19 A | 2013-10-21 A | 823A-NT-6A-B7BC-1040 | 100% | 2013-11-07 | 2013-11-14 |  | General Worker [448 h] | 100% | 100% | 823A_AB |  |  |  |  |  |
| 823A-NT-6A-B7BC-1060 |  | Preparation of construction joint for base slab | 1d | 2013-10-19 A | 2013-10-19 A | 823A-NT-6A-B7BC-1040 | 100% | 2013-11-07 | 2013-11-07 | 823-6dPH | General Worker [128 h] | 100% | 100% | 823A_AB |  |  |  |  |  |
| 823A-NT-6A-B7BC-1070 |  | Removal of formwork | 1d | 2013-10-19 A | 2013-10-19 A | 823A-NT-6A-B7BC-1060 SS | 100% | 2013-11-07 | 2013-11-07 |  | Crawler Crane/Mobile Crane [64 h]; Carpenter (Formwork - Civil Construction) [256 h]; Plant and Equipment Operator (Crawler-mounted Mobile Crane) [64 h] | 100% | 100% | 823A_AB |  |  |  |  |  |
|  | 3 | **Bay 8** |  | 2013-10-07 | 2015-03-26 |  |  |  |  |  |  |  |  |  |  |  |  |  |  |
|  | 1 | **Southbound (Down Track)** |  | 2013-10-07 | 2014-05-26 |  |  |  |  |  |  |  |  |  |  |  |  |  |  |
| 823A-NT-6A-B8S-1010 |  | Placing of waterproof member T-lock & testing | 1d | 2013-10-07 A | 2013-10-07 A | 823A-NT-6A-B8C-1050, 823A-NT-6A-B7BC-1050, 823A-NT-6A-B7BS-1010 SS | 100% | 2013-12-06 | 2013-12-06 | 823-6dPH | General Worker [128 h] | 100% | 100% | 823A_AB |  |  |  |  |  |
| 823A-NT-6A-B8S-1020 |  | Erect external formwork | 1d | 2013-10-08 A | 2013-10-09 A | 823A-NT-6A-B8S-1010 | 100% | 2013-12-07 | 2013-12-07 | 823-6dPH | Crawler Crane/Mobile Crane [64 h]; Carpenter (Formwork - Civil Construction) [768 h]; Plant and Equipment Operator (Crawler-mounted Mobile Crane) [64 h] | 100% | 100% | 823A_AB |  |  |  |  |  |
| 823A-NT-6A-B8S-1030 |  | Rebar fixing | 2d | 2013-10-10 A | 2013-10-11 A | 823A-NT-6A-B8S-1020 | 100% | 2013-12-09 | 2013-12-10 |  | Reinforcement [3856 kg]; Crawler Crane/Mobile Crane [128 h]; Bar Bender & Fixer [1536 h]; Plant and Equipment Operator (Crawler-mounted Mobile Crane) [128 h] | 100% | 100% | 823A_AB |  |  |  |  |  |
| 823A-NT-6A-B8S-1040 |  | Erect internal kicker formwork | 2d | 2013-10-12 A | 2013-10-17 A | 823A-NT-6A-B8S-1030 | 100% | 2013-12-11 | 2013-12-12 |  | Crawler Crane/Mobile Crane [128 h]; Carpenter (Formwork - Civil Construction) [1536 h]; Plant and Equipment Operator (Crawler-mounted Mobile Crane) [128 h] | 100% | 100% | 823A_AB |  |  |  |  |  |
| 823A-NT-6A-B8S-1050 |  | Concreting (111m3) | 1d | 2013-10-18 A | 2013-10-18 A | 823A-NT-6A-B8S-1040 | 100% | 2013-12-13 | 2013-12-13 |  | Permanent Concrete [111 Cu m]; Concrete 45/20A [111 Cu m]; Crawler Crane/Mobile Crane [64 h]; Concrete Pump [64 h]; PY Concretor [256 h]; General Worker [768 h]; Plant and Equipment Operator (Crawler-mounted Mobile Crane) [64 h]; Rigger/Metal Formwork Erector [256 h] | 100% | 100% | 823A_AB | 111 | m3 | 111 | 111 |  |
| 823A-NT-6A-B8S-1060 |  | Curing | 7d | 2013-10-19 A | 2013-10-21 A | 823A-NT-6A-B7BS-1060 FF, 823A-NT-6A-B8S-1050 | 100% | 2013-12-02 | 2013-12-09 |  | General Worker [896 h] | 100% | 100% | 823A_AB |  |  |  |  |  |
| 823A-NT-6A-B8S-1070 |  | Preparation of construction joint for base slab | 1d | 2013-10-19 A | 2013-10-19 A | 823A-NT-6A-B8S-1050 | 100% | 2013-11-28 | 2013-11-28 | 823-6dPH | General Worker [128 h] | 100% | 100% | 823A_AB |  |  |  |  |  |
| 823A-NT-6A-B8S-1080 |  | Removal of formwork | 1d | 2013-10-19 A | 2013-10-19 A | 823A-NT-6A-B8S-1070 SS | 100% | 2013-11-28 | 2013-11-28 |  | Crawler Crane/Mobile Crane [64 h]; Carpenter (Formwork - Civil Construction) [512 h]; Plant and Equipment Operator (Crawler-mounted Mobile Crane) [64 h] | 100% | 100% | 823A_AB |  |  |  |  |  |
| 823A-NT-6A-B8S-1090 |  | Erect internal formwork & Falsework | 4d | 2013-11-01 A | 2013-11-09 A | 823A-NT-6A-B8S-1080, 823A-NT-6A-B7BS-1090 SS | 100% | 2013-11-01 | 2013-11-05 |  | Crawler Crane/Mobile Crane [256 h]; Plant and Equipment Operator (Crawler-mounted Mobile Crane) [256 h]; Rigger/Metal Formwork Erector [2048 h]; Carpenter (Formwork - Civil Construction) [2560 h] | 100% | 100% | 823A_AB |  |  |  |  | +27 |
| 823A-NT-6A-B8S-1100 |  | Rebar fixing | 3d | 2013-11-11 A | 2013-11-19 A | 823A-NT-6A-B8S-1060, 823A-NT-6A-B8S-1090 | 100% | 2013-11-06 | 2013-11-08 |  | Reinforcement [11365 kg]; Crawler Crane/Mobile Crane [192 h]; Plant and Equipment Operator (Crawler-mounted Mobile Crane) [192 h]; Bar Bender & Fixer [1536 h] | 100% | 100% | 823A_AB |  |  |  |  | +29 |
| 823A-NT-6A-B8S-1110 |  | Erect external formwork | 2d | 2013-11-20 A | 2013-11-21 A | 823A-NT-6A-B8S-1100 | 100% | 2013-11-09 | 2013-11-11 |  | Crawler Crane/Mobile Crane [128 h]; Carpenter (Formwork - Civil Construction) [1024 h]; Plant and Equipment Operator (Crawler-mounted Mobile Crane) [128 h] | 100% | 100% | 823A_AB |  |  |  |  | +29 |
| 823A-NT-6A-B8S-1120 |  | Concreting (220m3) | 1d | 2013-11-22 A | 2013-11-22 A | 823A-NT-6A-B8S-1110 | 100% | 2013-11-12 | 2013-11-12 |  | Permanent Concrete [220 Cu m]; Concrete 45/20A [220 Cu m]; Crawler Crane/Mobile Crane [64 h]; PY Concretor [256 h]; General Worker [768 h]; Plant and Equipment Operator (Crawler-mounted Mobile Crane) [64 h]; Rigger/Metal Formwork Erector [256 h]; Concrete Pump [64 h] | 100% | 100% | 823A_AB | 220 | m3 | 220 | 220 | +29 |
| 823A-NT-6A-B8S-1130 |  | Curing | 10d | 2013-11-23 A | 2013-12-05 A | 823A-NT-6A-B8S-1120 | 100% | 2013-11-13 | 2013-11-23 |  | General Worker [1280 h] | 100% | 100% | 823A_AB |  |  |  |  | +27 |
| 823A-NT-6A-B8S-1140 |  | Preparation of construction joint for wall and roof | 1d | 2013-11-23 A | 2013-11-23 A | 823A-NT-6A-B8S-1120 | 100% | 2013-11-13 | 2013-11-13 | 823-6dPH | General Worker [128 h] | 100% | 100% | 823A_AB |  |  |  |  | +29 |
| 823A-NT-6A-B8S-1150 |  | Removal external and internal formwork for wall | 2d | 2013-11-23 A | 2013-11-25 A | 823A-NT-6A-B8S-1140 SS | 100% | 2013-11-13 | 2013-11-14 |  | Crawler Crane/Mobile Crane [128 h]; Carpenter (Formwork - Civil Construction) [1024 h]; Plant and Equipment Operator (Crawler-mounted Mobile Crane) [128 h] | 100% | 100% | 823A_AB |  |  |  |  | +29 |
| 823A-NT-6A-B8S-1160 |  | Removal internal falsework and formwork for roof | 1d | 2013-12-06 A | 2013-12-06 A | 823A-NT-6A-B8S-1130, 823A-NT-6A-B8S-1150 | 100% | 2013-12-05 | 2013-12-05 |  | Crawler Crane/Mobile Crane [64 h]; Plant and Equipment Operator (Crawler-mounted Mobile Crane) [64 h]; Carpenter (Formwork - Civil Construction) [512 h]; Rigger/Metal Formwork Erector [384 h] | 100% | 100% | 823A_AB |  |  |  |  | +27 |
| 823A-NT-6A-B8S-1170 |  | Side walkway and cable bracket (38m3) | 5d | 2014-05-21 A | 2014-05-26 A | 823A-NT-6A-B9S-1170, 823A-NT-6A-B8S-1160 | 100% |  |  |  | PY Concretor [1280 h]; General Worker [2560 h]; Plant and Equipment Operator (Crawler-mounted Mobile Crane) [320 h]; Rigger/Metal Formwork Erector [1280 h]; Carpenter (Formwork - Civil Construction) [320 h]; Permanent Concrete [38 Cu m]; Concrete 20/20C [38 Cu m]; Crawler Crane/Mobile Crane [320 h]; Concrete Pump [320 h] | 100% | 100% | 823A_AB | 38 | m3 | 38 | 38 | +27 |

| ID | WBS | Activity | Duration | Start | Finish | Predecessors | Complete | Planned start | Planned finish | Calendar | Resources | % Planned | % Actual | 823A_As-built | Actual Up to Date | UNITS | Total Quantity | Planned Up to Date | TIme Gain/Loss |
| --- | --- | --- | --- | --- | --- | --- | --- | --- | --- | --- | --- | --- | --- | --- | --- | --- | --- | --- | --- |
|  | 2 | **Northbound (Up Track)** |  | 2013-10-07 | 2015-03-26 |  |  |  |  |  |  |  |  |  |  |  |  |  |  |
| 823A-NT-6A-B8N-1010 |  | Placing of waterproof member T-lock & testing | 1d | 2013-10-07 A | 2013-10-07 A | 823A-NT-6A-B6N-1080, 823A-NT-6A-B7BN-1080 | 100% | 2013-11-01 | 2013-11-01 | 823-6dPH | General Worker [128 h] | 100% | 100% | 823A_AB |  |  |  |  |  |
| 823A-NT-6A-B8N-1020 |  | Erect external formwork | 1d | 2013-10-08 A | 2013-10-09 A | 823A-NT-6A-B8N-1010 | 100% | 2013-11-02 | 2013-11-02 | 823-6dPH | Crawler Crane/Mobile Crane [64 h]; Plant and Equipment Operator (Crawler-mounted Mobile Crane) [64 h]; Carpenter (Formwork - Civil Construction) [768 h] | 100% | 100% | 823A_AB |  |  |  |  |  |
| 823A-NT-6A-B8N-1030 |  | Rebar fixing | 2d | 2013-10-10 A | 2013-10-11 A | 823A-NT-6A-B8N-1020 | 100% | 2013-11-04 | 2013-11-05 |  | Reinforcement [11569 kg]; Crawler Crane/Mobile Crane [128 h]; Bar Bender & Fixer [1536 h]; Plant and Equipment Operator (Crawler-mounted Mobile Crane) [128 h] | 100% | 100% | 823A_AB |  |  |  |  |  |
| 823A-NT-6A-B8N-1040 |  | Erect internal kicker formwork | 2d | 2013-10-12 A | 2013-10-17 A | 823A-NT-6A-B8N-1030 | 100% | 2013-11-06 | 2013-11-07 |  | Crawler Crane/Mobile Crane [128 h]; Carpenter (Formwork - Civil Construction) [1536 h]; Plant and Equipment Operator (Crawler-mounted Mobile Crane) [128 h] | 100% | 100% | 823A_AB |  |  |  |  |  |
| 823A-NT-6A-B8N-1050 |  | Concreting (222m3) | 1d | 2013-10-18 A | 2013-10-18 A | 823A-NT-6A-B8N-1040 | 100% | 2013-11-08 | 2013-11-08 |  | Permanent Concrete [222 Cu m]; Concrete 45/20A [222 Cu m]; Crawler Crane/Mobile Crane [64 h]; Concrete Pump [64 h]; PY Concretor [256 h]; General Worker [768 h]; Plant and Equipment Operator (Crawler-mounted Mobile Crane) [64 h]; Rigger/Metal Formwork Erector [256 h] | 100% | 100% | 823A_AB | 222 | m3 | 222 | 222 |  |
| 823A-NT-6A-B8N-1060 |  | Curing | 7d | 2013-10-19 A | 2013-10-21 A | 823A-NT-6A-B8N-1050 | 100% | 2013-11-01 | 2013-11-08 |  | General Worker [896 h] | 100% | 100% | 823A_AB |  |  |  |  |  |
| 823A-NT-6A-B8N-1070 |  | Preparation of construction joint for base slab | 1d | 2013-10-19 A | 2013-10-19 A | 823A-NT-6A-B8N-1050 | 100% | 2013-11-01 | 2013-11-01 | 823-6dPH | General Worker [128 h] | 100% | 100% | 823A_AB |  |  |  |  |  |
| 823A-NT-6A-B8N-1080 |  | Removal of formwork | 1d | 2013-10-19 A | 2013-10-19 A | 823A-NT-6A-B8N-1070 SS | 100% | 2013-11-01 | 2013-11-01 |  | Crawler Crane/Mobile Crane [64 h]; Carpenter (Formwork - Civil Construction) [512 h]; Plant and Equipment Operator (Crawler-mounted Mobile Crane) [64 h] | 100% | 100% | 823A_AB |  |  |  |  |  |
| 823A-NT-6A-B8N-1090 |  | Erect internal formwork & Falsework | 4d | 2013-11-04 A | 2013-12-02 A | 823A-NT-6A-B9N-1090 SS, 823A-NT-6A-B8N-1080 | 100% | 2013-12-30 | 2014-01-03 |  | Crawler Crane/Mobile Crane [256 h]; Plant and Equipment Operator (Crawler-mounted Mobile Crane) [256 h]; Rigger/Metal Formwork Erector [2048 h]; Carpenter (Formwork - Civil Construction) [2560 h] | 100% | 100% | 823A_AB |  |  |  |  | +30 |
| 823A-NT-6A-B8N-1100 |  | Rebar fixing | 3d | 2013-12-03 A | 2013-12-10 A | 823A-NT-6A-B8N-1090 | 100% | 2013-12-19 | 2013-12-21 |  | Reinforcement [22729 kg]; Crawler Crane/Mobile Crane [192 h]; Bar Bender & Fixer [1536 h]; Plant and Equipment Operator (Crawler-mounted Mobile Crane) [192 h] | 100% | 100% | 823A_AB |  |  |  |  | +30 |
| 823A-NT-6A-B8N-1110 |  | Erect external formwork | 2d | 2013-12-11 A | 2013-12-12 A | 823A-NT-6A-B8N-1100 | 100% | 2013-12-23 | 2013-12-24 |  | Crawler Crane/Mobile Crane [128 h]; Carpenter (Formwork - Civil Construction) [1024 h]; Plant and Equipment Operator (Crawler-mounted Mobile Crane) [128 h] | 100% | 100% | 823A_AB |  |  |  |  | +30 |
| 823A-NT-6A-B8N-1120 |  | Concreting (327m3) | 1d | 2013-12-13 A | 2013-12-13 A | 823A-NT-6A-B8N-1110 | 100% | 2013-12-27 | 2013-12-27 |  | Permanent Concrete [327 Cu m]; Concrete 45/20A [327 Cu m]; Concrete Pump [64 h]; PY Concretor [256 h]; General Worker [768 h]; Plant and Equipment Operator (Crawler-mounted Mobile Crane) [64 h]; Rigger/Metal Formwork Erector [256 h]; Crawler Crane/Mobile Crane [64 h] | 100% | 100% | 823A_AB | 327 | m3 | 327 | 327 | +30 |
| 823A-NT-6A-B8N-1130 |  | Curing | 10d | 2013-12-14 A | 2013-12-27 A | 823A-NT-6A-B8N-1120 | 100% | 2013-12-28 | 2014-01-09 |  | General Worker [1280 h] | 100% | 100% | 823A_AB |  |  |  |  | +27 |
| 823A-NT-6A-B8N-1140 |  | Preparation of construction joint for wall and roof | 1d | 2013-12-14 A | 2013-12-14 A | 823A-NT-6A-B8N-1120 | 100% | 2013-12-28 | 2013-12-28 | 823-6dPH | General Worker [128 h] | 100% | 100% | 823A_AB |  |  |  |  | +30 |
| 823A-NT-6A-B8N-1150 |  | Removal external and internal formwork for wall | 2d | 2013-12-14 A | 2013-12-16 A | 823A-NT-6A-B8N-1140 SS | 100% | 2013-12-28 | 2013-12-30 |  | Crawler Crane/Mobile Crane [128 h]; Carpenter (Formwork - Civil Construction) [1024 h]; Plant and Equipment Operator (Crawler-mounted Mobile Crane) [128 h] | 100% | 100% | 823A_AB |  |  |  |  | +30 |
| 823A-NT-6A-B8N-1160 |  | Removal internal falsework and formwork for roof | 1d | 2013-12-28 A | 2013-12-28 A | 823A-NT-6A-B8N-1130, 823A-NT-6A-B8N-1150 | 100% | 2014-01-10 | 2014-01-10 |  | Crawler Crane/Mobile Crane [64 h]; Plant and Equipment Operator (Crawler-mounted Mobile Crane) [64 h]; Carpenter (Formwork - Civil Construction) [512 h]; Rigger/Metal Formwork Erector [384 h] | 100% | 100% | 823A_AB |  |  |  |  | +27 |
| 823A-NT-6A-B8N-1170 |  | Side walkway and cable bracket (38m3) | 5d | 2015-03-21 A | 2015-03-26 A | 823A-NT-6A-B8N-1160, 823A-NT-6A-B9N-1170 SS | 100% | 2015-03-07 | 2015-03-12 |  | Permanent Concrete [38 Cu m]; Concrete 20/20C [38 Cu m]; Crawler Crane/Mobile Crane [320 h]; Concrete Pump [320 h]; Carpenter (Formwork - Civil Construction) [1920 h]; PY Concretor [1280 h]; General Worker [2560 h]; Plant and Equipment Operator (Crawler-mounted Mobile Crane) [320 h]; Rigger/Metal Formwork Erector [1280 h] | 100% | 100% | 823A_AB | 38 | m3 | 38 | 38 | +27 |
|  | 3 | **Central Base Slab** |  | 2013-10-11 | 2013-10-21 |  |  |  |  |  |  |  |  |  |  |  |  |  |  |
| 823A-NT-6A-B8C-1010 |  | Placing of waterproof member T-lock & testing | 1d | 2013-10-11 A | 2013-10-11 A | 823A-NT-6A-B7BC-1010 SS | 100% | 2013-11-20 | 2013-11-20 | 823-6dPH | General Worker [128 h] | 100% | 100% | 823A_AB |  |  |  |  |  |
| 823A-NT-6A-B8C-1020 |  | Rebar fixing | 2d | 2013-10-12 A | 2013-10-12 A | 823A-NT-6A-B8C-1010 | 100% | 2013-11-21 | 2013-11-22 |  | Reinforcement [11569 kg]; Crawler Crane/Mobile Crane [128 h]; Bar Bender & Fixer [1536 h]; Plant and Equipment Operator (Crawler-mounted Mobile Crane) [128 h] | 100% | 100% | 823A_AB |  |  |  |  |  |
| 823A-NT-6A-B8C-1030 |  | Erect external formwork | 1d | 2013-10-15 A | 2013-10-15 A | 823A-NT-6A-B8C-1020 | 100% | 2013-11-23 | 2013-11-23 |  | Crawler Crane/Mobile Crane [64 h]; Carpenter (Formwork - Civil Construction) [768 h]; Plant and Equipment Operator (Crawler-mounted Mobile Crane) [64 h] | 100% | 100% | 823A_AB |  |  |  |  |  |
| 823A-NT-6A-B8C-1040 |  | Concreting (225m3) | 1d | 2013-10-18 A | 2013-10-18 A | 823A-NT-6A-B8C-1030 | 100% | 2013-11-25 | 2013-11-25 |  | Permanent Concrete [225 Cu m]; Concrete 45/20A [225 Cu m]; Crawler Crane/Mobile Crane [64 h]; Concrete Pump [64 h]; PY Concretor [256 h]; General Worker [768 h]; Plant and Equipment Operator (Crawler-mounted Mobile Crane) [64 h]; Rigger/Metal Formwork Erector [256 h] | 100% | 100% | 823A_AB | 225 | m3 | 225 | 225 |  |
| 823A-NT-6A-B8C-1050 |  | Curing | 7d | 2013-10-19 A | 2013-10-21 A | 823A-NT-6A-B8C-1040 | 100% | 2013-11-12 | 2013-11-19 |  | General Worker [896 h] | 100% | 100% | 823A_AB |  |  |  |  |  |
| 823A-NT-6A-B8C-1060 |  | Preparation of construction joint for base slab | 1d | 2013-10-19 A | 2013-10-21 A | 823A-NT-6A-B8C-1040 | 100% | 2013-11-12 | 2013-11-12 | 823-6dPH | General Worker [128 h] | 100% | 100% | 823A_AB |  |  |  |  |  |
| 823A-NT-6A-B8C-1070 |  | Removal of formwork | 1d | 2013-10-19 A | 2013-10-21 A | 823A-NT-6A-B8C-1060 SS | 100% | 2013-11-12 | 2013-11-12 |  | Crawler Crane/Mobile Crane [64 h]; Carpenter (Formwork - Civil Construction) [512 h]; Plant and Equipment Operator (Crawler-mounted Mobile Crane) [64 h] | 100% | 100% | 823A_AB |  |  |  |  |  |

| ID | WBS | Activity | Duration | Start | Finish | Predecessors | Complete | Planned start | Planned finish | Calendar | Resources | % Planned | % Actual | 823A_As-built | Actual Up to Date | UNITS | Total Quantity | Planned Up to Date | TIme Gain/Loss |
| --- | --- | --- | --- | --- | --- | --- | --- | --- | --- | --- | --- | --- | --- | --- | --- | --- | --- | --- | --- |
|  | 4 | **Bay 9** |  | 2013-10-19 | 2015-03-26 |  |  |  |  |  |  |  |  |  |  |  |  |  |  |
|  | 1 | **Southbound (Down Track)** |  | 2013-10-19 | 2014-05-20 |  |  |  |  |  |  |  |  |  |  |  |  |  |  |
| 823A-NT-6A-B9S-1010 |  | Placing of waterproof member T-lock & testing | 1d | 2013-10-19 A | 2013-10-22 A | 823A-NT-6A-B8S-1080 | 100% | 2013-11-27 | 2013-11-27 | 823-6dPH | Skill Labour [64 h] | 100% | 100% | 823A_AB |  |  |  |  |  |
| 823A-NT-6A-B9S-1020 |  | Erect external formwork | 1d | 2013-10-21 A | 2013-10-21 A | 823A-NT-6A-B9S-1010 | 100% | 2013-11-28 | 2013-11-28 | 823-6dPH | Crawler Crane/Mobile Crane [64 h]; Carpenter (Formwork - Civil Construction) [768 h]; Plant and Equipment Operator (Crawler-mounted Mobile Crane) [64 h] | 100% | 100% | 823A_AB |  |  |  |  |  |
| 823A-NT-6A-B9S-1030 |  | Rebar fixing | 2d | 2013-10-22 A | 2013-10-25 A | 823A-NT-6A-B9S-1020 | 100% | 2013-11-29 | 2013-11-30 |  | Reinforcement [11569 kg]; Crawler Crane/Mobile Crane [128 h]; Bar Bender & Fixer [1536 h]; Plant and Equipment Operator (Crawler-mounted Mobile Crane) [128 h] | 100% | 100% | 823A_AB |  |  |  |  |  |
| 823A-NT-6A-B9S-1040 |  | Erect internal kicker formwork | 2d | 2013-10-24 A | 2013-10-25 A | 823A-NT-6A-B9S-1030 | 100% | 2013-11-27 | 2013-11-28 |  | Crawler Crane/Mobile Crane [128 h]; Plant and Equipment Operator (Crawler-mounted Mobile Crane) [128 h]; Carpenter (Formwork - Civil Construction) [1536 h] | 100% | 100% | 823A_AB |  |  |  |  |  |
| 823A-NT-6A-B9S-1050 |  | Concreting (222m3) | 1d | 2013-10-26 A | 2013-10-26 A | 823A-NT-6A-B9S-1040 | 100% | 2013-12-04 | 2013-12-04 |  | Permanent Concrete [222 Cu m]; Concrete 45/20A [222 Cu m]; Crawler Crane/Mobile Crane [64 h]; Concrete Pump [64 h]; PY Concretor [256 h]; General Worker [768 h]; Plant and Equipment Operator (Crawler-mounted Mobile Crane) [64 h]; Rigger/Metal Formwork Erector [256 h] | 100% | 100% | 823A_AB | 222 | m3 | 222 | 222 |  |
| 823A-NT-6A-B9S-1060 |  | Curing | 7d | 2013-10-28 A | 2013-10-28 A | 823A-NT-6A-B9S-1050 | 100% | 2013-12-05 | 2013-12-12 |  | General Worker [896 h] | 100% | 100% | 823A_AB |  |  |  |  |  |
| 823A-NT-6A-B9S-1080 |  | Removal of formwork | 1d | 2013-10-28 A | 2013-10-29 A | 823A-NT-6A-B9S-1070 SS | 100% | 2013-12-05 | 2013-12-05 |  | Crawler Crane/Mobile Crane [64 h]; Carpenter (Formwork - Civil Construction) [512 h]; Plant and Equipment Operator (Crawler-mounted Mobile Crane) [64 h] | 100% | 100% | 823A_AB |  |  |  |  |  |
| 823A-NT-6A-B9S-1070 |  | Preparation of construction joint for base slab | 1d | 2013-10-29 A | 2013-10-29 A | 823A-NT-6A-B9S-1050 | 100% | 2013-12-05 | 2013-12-05 | 823-6dPH | General Worker [128 h] | 100% | 100% | 823A_AB |  |  |  |  |  |
| 823A-NT-6A-B9S-1090 |  | Erect internal formwork & Falsework | 4d | 2013-11-15 A | 2013-12-02 A | 823A-NT-6A-B9S-1080, 823A-NT-6A-B8S-1150, 823A-NT-6A-B9S-1060 FF | 100% | 2013-11-15 | 2013-11-19 |  | Crawler Crane/Mobile Crane [256 h]; Plant and Equipment Operator (Crawler-mounted Mobile Crane) [256 h]; Rigger/Metal Formwork Erector [2048 h]; Carpenter (Formwork - Civil Construction) [2560 h] | 100% | 100% | 823A_AB |  |  |  |  | +29 |
| 823A-NT-6A-B9S-1100 |  | Rebar fixing | 3d | 2013-12-03 A | 2013-12-19 A | 823A-NT-6A-B9S-1090 | 100% | 2013-12-04 | 2013-12-06 |  | Reinforcement [22729 kg]; Crawler Crane/Mobile Crane [192 h]; Bar Bender & Fixer [1536 h]; Plant and Equipment Operator (Crawler-mounted Mobile Crane) [192 h] | 100% | 100% | 823A_AB |  |  |  |  | +27 |
| 823A-NT-6A-B9S-1110 |  | Erect external formwork | 2d | 2013-12-20 A | 2013-12-21 A | 823A-NT-6A-B9S-1100 | 100% | 2013-12-07 | 2013-12-09 |  | Crawler Crane/Mobile Crane [128 h]; Carpenter (Formwork - Civil Construction) [1024 h]; Plant and Equipment Operator (Crawler-mounted Mobile Crane) [128 h] | 100% | 100% | 823A_AB |  |  |  |  | +27 |
| 823A-NT-6A-B9S-1120 |  | Concreting (222m3) | 1d | 2013-12-23 A | 2013-12-23 A | 823A-NT-6A-B9S-1110 | 100% | 2013-12-10 | 2013-12-10 |  | Permanent Concrete [222 Cu m]; Concrete 45/20A [222 Cu m]; Crawler Crane/Mobile Crane [64 h]; Concrete Pump [64 h]; PY Concretor [256 h]; General Worker [768 h]; Plant and Equipment Operator (Crawler-mounted Mobile Crane) [64 h]; Rigger/Metal Formwork Erector [256 h] | 100% | 100% | 823A_AB | 222 | m3 | 222 | 222 | +27 |
| 823A-NT-6A-B9S-1130 |  | Curing | 10d | 2013-12-24 A | 2014-01-07 A | 823A-NT-6A-B9S-1120 | 100% | 2013-12-11 | 2013-12-21 |  | General Worker [1280 h] | 100% | 100% | 823A_AB |  |  |  |  | +27 |
| 823A-NT-6A-B9S-1140 |  | Preparation of construction joint for wall and roof | 1d | 2013-12-24 A | 2013-12-24 A | 823A-NT-6A-B9S-1120 | 100% | 2013-12-11 | 2013-12-11 | 823-6dPH | General Worker [128 h] | 100% | 100% | 823A_AB |  |  |  |  | +27 |
| 823A-NT-6A-B9S-1150 |  | Removal external and internal formwork for wall | 2d | 2013-12-24 A | 2013-12-27 A | 823A-NT-6A-B9S-1140 SS | 100% | 2013-12-11 | 2013-12-12 |  | Crawler Crane/Mobile Crane [128 h]; Plant and Equipment Operator (Crawler-mounted Mobile Crane) [128 h]; Carpenter (Formwork - Civil Construction) [1024 h] | 100% | 100% | 823A_AB |  |  |  |  | +27 |
| 823A-NT-6A-B9S-1160 |  | Removal internal falsework and formwork for roof | 1d | 2014-01-08 A | 2014-01-08 A | 823A-NT-6A-B9S-1150, 823A-NT-6A-B9S-1130 | 100% | 2014-02-10 | 2014-02-10 |  | Crawler Crane/Mobile Crane [64 h]; Plant and Equipment Operator (Crawler-mounted Mobile Crane) [64 h]; Carpenter (Formwork - Civil Construction) [512 h]; Rigger/Metal Formwork Erector [384 h] | 100% | 100% | 823A_AB |  |  |  |  | +27 |
| 823A-NT-6A-B9S-1170 |  | Side walkway and cable bracket (38m3) | 5d | 2014-05-15 A | 2014-05-20 A | 823A-NT-6A-B9S-1160, 823A-NT-6A-B10S-1170 | 100% |  |  |  | Permanent Concrete [38 Cu m]; Concrete 20/20C [38 Cu m]; Crawler Crane/Mobile Crane [320 h]; Concrete Pump [320 h]; Carpenter (Formwork - Civil Construction) [1920 h]; PY Concretor [1280 h]; General Worker [2560 h]; Plant and Equipment Operator (Crawler-mounted Mobile Crane) [320 h]; Rigger/Metal Formwork Erector [1280 h] | 100% | 100% | 823A_AB | 38 | m3 | 38 | 38 | +27 |
|  | 2 | **Northbound (Up Track)** |  | 2013-10-19 | 2015-03-26 |  |  |  |  |  |  |  |  |  |  |  |  |  |  |
| 823A-NT-6A-B9N-1010 |  | Placing of waterproof member T-lock & testing | 1d | 2013-10-19 A | 2013-10-22 A | 823A-NT-6A-B8N-1080, 823A-NT-6A-B8N-1010 SS | 100% | 2013-11-01 | 2013-11-01 | 823-6dPH | General Worker [128 h] | 100% | 100% | 823A_AB |  |  |  |  |  |
| 823A-NT-6A-B9N-1020 |  | Erect external formwork | 1d | 2013-10-21 A | 2013-10-21 A | 823A-NT-6A-B9N-1010 | 100% | 2013-11-02 | 2013-11-02 | 823-6dPH | Crawler Crane/Mobile Crane [64 h]; Carpenter (Formwork - Civil Construction) [768 h]; Plant and Equipment Operator (Crawler-mounted Mobile Crane) [64 h] | 100% | 100% | 823A_AB |  |  |  |  |  |
| 823A-NT-6A-B9N-1030 |  | Rebar fixing | 2d | 2013-10-22 A | 2013-10-25 A | 823A-NT-6A-B9N-1020 | 100% | 2013-11-04 | 2013-11-05 |  | Reinforcement [11569 kg]; Crawler Crane/Mobile Crane [128 h]; Bar Bender & Fixer [1536 h]; Plant and Equipment Operator (Crawler-mounted Mobile Crane) [128 h] | 100% | 100% | 823A_AB |  |  |  |  |  |
| 823A-NT-6A-B9N-1040 |  | Erect internal kicker formwork | 2d | 2013-10-24 A | 2013-10-25 A | 823A-NT-6A-B9N-1030 | 100% | 2013-11-06 | 2013-11-07 |  | Crawler Crane/Mobile Crane [128 h]; Carpenter (Formwork - Civil Construction) [1536 h]; Plant and Equipment Operator (Crawler-mounted Mobile Crane) [128 h] | 100% | 100% | 823A_AB |  |  |  |  |  |
| 823A-NT-6A-B9N-1050 |  | Concreting (222m3) | 1d | 2013-10-26 A | 2013-10-26 A | 823A-NT-6A-B9N-1040 | 100% | 2013-11-08 | 2013-11-08 |  | Permanent Concrete [222 Cu m]; Concrete 45/20A [222 Cu m]; Crawler Crane/Mobile Crane [64 h]; Concrete Pump [64 h]; PY Concretor [256 h]; General Worker [768 h]; Plant and Equipment Operator (Crawler-mounted Mobile Crane) [64 h]; Rigger/Metal Formwork Erector [256 h] | 100% | 100% | 823A_AB | 222 | m3 | 222 | 222 |  |
| 823A-NT-6A-B9N-1060 |  | Curing | 7d | 2013-10-28 A | 2013-10-29 A | 823A-NT-6A-B8N-1060 FF, 823A-NT-6A-B9N-1050 | 100% | 2013-11-09 | 2013-11-16 |  | General Worker [896 h] | 100% | 100% | 823A_AB |  |  |  |  |  |
| 823A-NT-6A-B9N-1080 |  | Removal of formwork | 1d | 2013-10-28 A | 2013-10-29 A | 823A-NT-6A-B9N-1070 SS | 100% | 2013-11-09 | 2013-11-09 |  | Crawler Crane/Mobile Crane [64 h]; Carpenter (Formwork - Civil Construction) [512 h]; Plant and Equipment Operator (Crawler-mounted Mobile Crane) [64 h] | 100% | 100% | 823A_AB |  |  |  |  |  |
| 823A-NT-6A-B9N-1070 |  | Preparation of construction joint for base slab | 1d | 2013-10-29 A | 2013-10-29 A | 823A-NT-6A-B9N-1050 | 100% | 2013-11-09 | 2013-11-09 | 823-6dPH | General Worker [128 h] | 100% | 100% | 823A_AB |  |  |  |  |  |
| 823A-NT-6A-B9N-1090 |  | Erect internal formwork & Falsework | 4d | 2013-11-04 A | 2013-12-02 A | 823A-NT-6A-B9N-1080, 823A-NT-6A-B11N-1150 | 100% | 2013-12-30 | 2014-01-03 |  | Plant and Equipment Operator (Crawler-mounted Mobile Crane) [256 h]; Rigger/Metal Formwork Erector [2048 h]; Carpenter (Formwork - Civil Construction) [2560 h]; Crawler Crane/Mobile Crane [256 h] | 100% | 100% | 823A_AB |  |  |  |  | +29 |
| 823A-NT-6A-B9N-1100 |  | Rebar fixing | 3d | 2013-12-03 A | 2013-12-10 A | 823A-NT-6A-B9N-1090 | 100% | 2013-12-19 | 2013-12-21 |  | Reinforcement [22729 kg]; Crawler Crane/Mobile Crane [192 h]; Bar Bender & Fixer [1536 h]; Plant and Equipment Operator (Crawler-mounted Mobile Crane) [192 h] | 100% | 100% | 823A_AB |  |  |  |  | +27 |
| 823A-NT-6A-B9N-1110 |  | Erect external formwork | 2d | 2013-12-11 A | 2013-12-12 A | 823A-NT-6A-B9N-1100 | 100% | 2013-12-23 | 2013-12-24 |  | Crawler Crane/Mobile Crane [128 h]; Carpenter (Formwork - Civil Construction) [1024 h]; Plant and Equipment Operator (Crawler-mounted Mobile Crane) [128 h] | 100% | 100% | 823A_AB |  |  |  |  | +27 |
| 823A-NT-6A-B9N-1120 |  | Concreting (222m3) | 1d | 2013-12-13 A | 2013-12-13 A | 823A-NT-6A-B9N-1110 | 100% | 2013-12-27 | 2013-12-27 |  | Permanent Concrete [222 Cu m]; Concrete 45/20A [222 Cu m]; Crawler Crane/Mobile Crane [64 h]; Concrete Pump [64 h]; PY Concretor [256 h]; General Worker [768 h]; Plant and Equipment Operator (Crawler-mounted Mobile Crane) [64 h]; Rigger/Metal Formwork Erector [256 h] | 100% | 100% | 823A_AB | 222 | m3 | 222 | 222 | +27 |
| 823A-NT-6A-B9N-1130 |  | Curing | 10d | 2013-12-14 A | 2013-12-27 A | 823A-NT-6A-B9N-1120 | 100% | 2013-12-28 | 2014-01-09 |  | General Worker [1280 h] | 100% | 100% | 823A_AB |  |  |  |  | +27 |
| 823A-NT-6A-B9N-1140 |  | Preparation of construction joint for wall and roof | 1d | 2013-12-14 A | 2013-12-14 A | 823A-NT-6A-B9N-1120 | 100% | 2013-12-28 | 2013-12-28 | 823-6dPH | General Worker [128 h] | 100% | 100% | 823A_AB |  |  |  |  | +27 |
| 823A-NT-6A-B9N-1150 |  | Removal external and internal formwork for wall | 2d | 2013-12-14 A | 2013-12-16 A | 823A-NT-6A-B9N-1140 SS | 100% | 2013-12-28 | 2013-12-30 |  | Crawler Crane/Mobile Crane [128 h]; Carpenter (Formwork - Civil Construction) [1024 h]; Plant and Equipment Operator (Crawler-mounted Mobile Crane) [128 h] | 100% | 100% | 823A_AB |  |  |  |  | +27 |
| 823A-NT-6A-B9N-1160 |  | Removal internal falsework and formwork for roof | 1d | 2013-12-28 A | 2013-12-28 A | 823A-NT-6A-B9N-1150, 823A-NT-6A-B9N-1130 | 100% | 2014-01-10 | 2014-01-10 |  | Crawler Crane/Mobile Crane [64 h]; Plant and Equipment Operator (Crawler-mounted Mobile Crane) [64 h]; Carpenter (Formwork - Civil Construction) [512 h]; Rigger/Metal Formwork Erector [384 h] | 100% | 100% | 823A_AB |  |  |  |  | +27 |
| 823A-NT-6A-B9N-1170 |  | Side walkway and cable bracket (38m3) | 5d | 2015-03-21 A | 2015-03-26 A | 823A-NT-6A-B9N-1160, 823A-NT-6A-B10N-1170 | 100% | 2015-03-07 | 2015-03-12 |  | Permanent Concrete [38 Cu m]; Concrete 20/20C [38 Cu m]; Crawler Crane/Mobile Crane [320 h]; Concrete Pump [320 h]; Carpenter (Formwork - Civil Construction) [1920 h]; PY Concretor [1280 h]; Plant and Equipment Operator (Crawler-mounted Mobile Crane) [320 h]; Rigger/Metal Formwork Erector [1280 h]; General Worker [2560 h] | 100% | 100% | 823A_AB | 38 | m3 | 38 | 38 | +27 |

| ID | WBS | Activity | Duration | Start | Finish | Predecessors | Complete | Planned start | Planned finish | Calendar | Resources | % Planned | % Actual | 823A_As-built | Actual Up to Date | UNITS | Total Quantity | Planned Up to Date | TIme Gain/Loss |
| --- | --- | --- | --- | --- | --- | --- | --- | --- | --- | --- | --- | --- | --- | --- | --- | --- | --- | --- | --- |
|  | 3 | **Central Base Slab** |  | 2013-10-21 | 2013-10-29 |  |  |  |  |  |  |  |  |  |  |  |  |  |  |
| 823A-NT-6A-B9C-1010 |  | Placing of waterproof member T-lock & testing | 1d | 2013-10-21 A | 2013-10-22 A | 823A-NT-6A-B8C-1070, 823A-NT-6A-B7BC-1070, 823A-NT-6A-B9N-1060 | 100% | 2013-11-18 | 2013-11-18 | 823-6dPH | General Worker [128 h] | 100% | 100% | 823A_AB |  |  |  |  |  |
| 823A-NT-6A-B9C-1030 |  | Erect external formwork | 2d | 2013-10-21 A | 2013-10-22 A | 823A-NT-6A-B9C-1020 | 100% | 2013-11-22 | 2013-11-23 |  | Carpenter (Formwork - Civil Construction) [1536 h]; Plant and Equipment Operator (Crawler-mounted Mobile Crane) [128 h]; Crawler Crane/Mobile Crane [128 h] | 100% | 100% | 823A_AB |  |  |  |  |  |
| 823A-NT-6A-B9C-1020 |  | Rebar fixing | 3d | 2013-10-23 A | 2013-10-25 A | 823A-NT-6A-B9C-1010 | 100% | 2013-11-19 | 2013-11-21 |  | Reinforcement [11569 kg]; Crawler Crane/Mobile Crane [192 h]; Bar Bender & Fixer [2304 h]; Plant and Equipment Operator (Crawler-mounted Mobile Crane) [192 h] | 100% | 100% | 823A_AB |  |  |  |  |  |
| 823A-NT-6A-B9C-1040 |  | Concreting (222m3) | 1d | 2013-10-26 A | 2013-10-26 A | 823A-NT-6A-B9C-1030 | 100% | 2013-11-25 | 2013-11-25 |  | Permanent Concrete [222 Cu m]; Concrete 45/20A [222 Cu m]; Crawler Crane/Mobile Crane [64 h]; Concrete Pump [64 h]; PY Concretor [256 h]; Plant and Equipment Operator (Crawler-mounted Mobile Crane) [64 h]; Rigger/Metal Formwork Erector [256 h]; General Worker [768 h] | 100% | 100% | 823A_AB | 222 | m3 | 222 | 222 |  |
| 823A-NT-6A-B9C-1050 |  | Curing | 7d | 2013-10-28 A | 2013-10-29 A | 823A-NT-6A-B9C-1040 | 100% | 2013-11-26 | 2013-12-03 |  | General Worker [896 h] | 100% | 100% | 823A_AB |  |  |  |  |  |
| 823A-NT-6A-B9C-1070 |  | Removal of formwork | 1d | 2013-10-28 A | 2013-10-29 A | 823A-NT-6A-B9C-1060 SS | 100% | 2013-11-26 | 2013-11-26 |  | Crawler Crane/Mobile Crane [64 h]; Carpenter (Formwork - Civil Construction) [512 h]; Plant and Equipment Operator (Crawler-mounted Mobile Crane) [64 h] | 100% | 100% | 823A_AB |  |  |  |  |  |
| 823A-NT-6A-B9C-1060 |  | Preparation of construction joint for base slab | 1d | 2013-10-29 A | 2013-10-29 A | 823A-NT-6A-B9C-1040 | 100% | 2013-11-26 | 2013-11-26 | 823-6dPH | General Worker [128 h] | 100% | 100% | 823A_AB |  |  |  |  |  |
|  | 5 | **Bay 10** |  | 2013-10-03 | 2015-03-20 |  |  |  |  |  |  |  |  |  |  |  |  |  |  |
|  | 1 | **Southbound (Down Track)** |  | 2013-10-03 | 2014-05-14 |  |  |  |  |  |  |  |  |  |  |  |  |  |  |
| 823A-NT-6A-B10S-1010 |  | Placing of waterproof member T-lock & testing | 1d | 2013-10-03 A | 2013-10-03 A | 823A-NT-6A-B9S-1010 SS, 823A-NT-6A-B9C-1050 | 100% | 2013-12-27 | 2013-12-27 | 823-6dPH | General Worker [128 h] | 100% | 100% | 823A_AB |  |  |  |  |  |
| 823A-NT-6A-B10S-1020 |  | Erect external formwork | 1d | 2013-10-04 A | 2013-10-04 A | 823A-NT-6A-B10S-1010 | 100% | 2013-12-28 | 2013-12-28 | 823-6dPH | Crawler Crane/Mobile Crane [64 h]; Carpenter (Formwork - Civil Construction) [768 h]; Plant and Equipment Operator (Crawler-mounted Mobile Crane) [64 h] | 100% | 100% | 823A_AB |  |  |  |  |  |
| 823A-NT-6A-B10S-1030 |  | Rebar fixing | 2d | 2013-10-05 A | 2013-10-07 A | 823A-NT-6A-B10S-1020 | 100% | 2013-12-30 | 2013-12-31 |  | Reinforcement [11569 kg]; Crawler Crane/Mobile Crane [128 h]; Bar Bender & Fixer [1536 h]; Plant and Equipment Operator (Crawler-mounted Mobile Crane) [128 h] | 100% | 100% | 823A_AB |  |  |  |  |  |
| 823A-NT-6A-B10S-1040 |  | Erect internal kicker formwork | 2d | 2013-10-08 A | 2013-10-09 A | 823A-NT-6A-B10S-1030 | 100% | 2014-01-02 | 2014-01-03 |  | Crawler Crane/Mobile Crane [128 h]; Carpenter (Formwork - Civil Construction) [1536 h]; Plant and Equipment Operator (Crawler-mounted Mobile Crane) [128 h] | 100% | 100% | 823A_AB |  |  |  |  |  |
| 823A-NT-6A-B10S-1050 |  | Concreting (330m3) | 1d | 2013-10-10 A | 2013-10-10 A | 823A-NT-6A-B10S-1040 | 100% | 2014-01-04 | 2014-01-04 |  | Permanent Concrete [330 Cu m]; Concrete 45/20A [330 Cu m]; Crawler Crane/Mobile Crane [64 h]; Concrete Pump [64 h]; PY Concretor [256 h]; Plant and Equipment Operator (Crawler-mounted Mobile Crane) [64 h]; Rigger/Metal Formwork Erector [256 h]; General Worker [768 h] | 100% | 100% | 823A_AB | 330 | m3 | 330 | 330 |  |
| 823A-NT-6A-B10S-1060 |  | Curing | 7d | 2013-10-11 A | 2013-10-17 A | 823A-NT-6A-B10S-1050 | 100% | 2014-01-06 | 2014-01-13 |  | General Worker [896 h] | 100% | 100% | 823A_AB |  |  |  |  |  |
| 823A-NT-6A-B10S-1070 |  | Preparation of construction joint for base slab | 1d | 2013-10-11 A | 2013-10-11 A | 823A-NT-6A-B10S-1050 | 100% | 2014-01-06 | 2014-01-06 | 823-6dPH | General Worker [128 h] | 100% | 100% | 823A_AB |  |  |  |  |  |
| 823A-NT-6A-B10S-1080 |  | Removal of formwork | 1d | 2013-10-12 A | 2013-10-12 A | 823A-NT-6A-B10S-1070 SS | 100% | 2014-01-06 | 2014-01-06 |  | Crawler Crane/Mobile Crane [64 h]; Carpenter (Formwork - Civil Construction) [512 h]; Plant and Equipment Operator (Crawler-mounted Mobile Crane) [64 h] | 100% | 100% | 823A_AB |  |  |  |  |  |
| 823A-NT-6A-B10S-1090 |  | Erect internal formwork & Falsework | 4d | 2013-11-15 A | 2013-11-19 A | 823A-NT-6A-B10S-1060 FF, 823A-NT-6A-B9S-1090 SS, 823A-NT-6A-B10S-1080 | 100% |  |  |  | Crawler Crane/Mobile Crane [256 h]; Plant and Equipment Operator (Crawler-mounted Mobile Crane) [256 h]; Rigger/Metal Formwork Erector [2048 h]; Carpenter (Formwork - Civil Construction) [2560 h] | 100% | 100% | 823A_AB |  |  |  |  | +29 |
| 823A-NT-6A-B10S-1100 |  | Rebar fixing | 3d | 2013-11-20 A | 2013-12-02 A | 823A-NT-6A-B10S-1090 | 100% | 2013-11-20 | 2013-11-22 |  | Reinforcement [22729 kg]; Crawler Crane/Mobile Crane [192 h]; Bar Bender & Fixer [1536 h]; Plant and Equipment Operator (Crawler-mounted Mobile Crane) [192 h] | 100% | 100% | 823A_AB |  |  |  |  | +29 |
| 823A-NT-6A-B10S-1110 |  | Erect external formwork | 2d | 2013-12-03 A | 2013-12-04 A | 823A-NT-6A-B10S-1100 | 100% |  |  |  | Crawler Crane/Mobile Crane [128 h]; Carpenter (Formwork - Civil Construction) [1536 h]; Plant and Equipment Operator (Crawler-mounted Mobile Crane) [128 h] | 100% | 100% | 823A_AB |  |  |  |  | +29 |
| 823A-NT-6A-B10S-1120 |  | Concreting (330m3) | 1d | 2013-12-05 A | 2013-12-05 A | 823A-NT-6A-B10S-1110 | 100% |  |  |  | Permanent Concrete [222 Cu m]; Concrete 45/20A [222 Cu m]; Crawler Crane/Mobile Crane [64 h]; Concrete Pump [64 h]; PY Concretor [256 h]; General Worker [768 h]; Plant and Equipment Operator (Crawler-mounted Mobile Crane) [64 h]; Rigger/Metal Formwork Erector [256 h] | 100% | 100% | 823A_AB | 330 | m3 | 330 | 330 | +29 |
| 823A-NT-6A-B10S-1130 |  | Curing | 10d | 2013-12-06 A | 2013-12-17 A | 823A-NT-6A-B10S-1120 | 100% |  |  |  | General Worker [1280 h] | 100% | 100% | 823A_AB |  |  |  |  | +27 |
| 823A-NT-6A-B10S-1140 |  | Preparation of construction joint for wall and roof | 1d | 2013-12-06 A | 2013-12-06 A | 823A-NT-6A-B10S-1120 | 100% |  |  | 823-6dPH | General Worker [128 h] | 100% | 100% | 823A_AB |  |  |  |  | +29 |
| 823A-NT-6A-B10S-1150 |  | Removal external and internal formwork for wall | 2d | 2013-12-06 A | 2013-12-07 A | 823A-NT-6A-B10S-1140 SS | 100% |  |  |  | Crawler Crane/Mobile Crane [128 h]; Carpenter (Formwork - Civil Construction) [1024 h]; Plant and Equipment Operator (Crawler-mounted Mobile Crane) [128 h] | 100% | 100% | 823A_AB |  |  |  |  | +29 |
| 823A-NT-6A-B10S-1160 |  | Removal internal falsework and formwork for roof | 1d | 2013-12-18 A | 2013-12-18 A | 823A-NT-6A-B10S-1150, 823A-NT-6A-B10S-1130 | 100% |  |  |  | Crawler Crane/Mobile Crane [64 h]; Plant and Equipment Operator (Crawler-mounted Mobile Crane) [64 h]; Carpenter (Formwork - Civil Construction) [640 h]; Rigger/Metal Formwork Erector [512 h] | 100% | 100% | 823A_AB |  |  |  |  | +27 |
| 823A-NT-6A-B10S-1170 |  | Side walkway and cable bracket (38m3) | 5d | 2014-05-09 A | 2014-05-14 A | 823A-NT-6A-B11S-1170, 823A-NT-6A-B10S-1160 | 100% |  |  |  | Permanent Concrete [38 Cu m]; Concrete 20/20C [38 Cu m]; Crawler Crane/Mobile Crane [320 h]; Concrete Pump [320 h]; Carpenter (Formwork - Civil Construction) [1920 h]; PY Concretor [1280 h]; General Worker [2560 h]; Plant and Equipment Operator (Crawler-mounted Mobile Crane) [320 h]; Rigger/Metal Formwork Erector [1280 h] | 100% | 100% | 823A_AB | 38 | m3 | 38 | 38 | +27 |

| ID | WBS | Activity | Duration | Start | Finish | Predecessors | Complete | Planned start | Planned finish | Calendar | Resources | % Planned | % Actual | 823A_As-built | Actual Up to Date | UNITS | Total Quantity | Planned Up to Date | TIme Gain/Loss |
| --- | --- | --- | --- | --- | --- | --- | --- | --- | --- | --- | --- | --- | --- | --- | --- | --- | --- | --- | --- |
|  | 2 | **Northbound (Up Track)** |  | 2013-10-03 | 2015-03-20 |  |  |  |  |  |  |  |  |  |  |  |  |  |  |
| 823A-NT-6A-B10N-1010 |  | Placing of waterproof member T-lock & testing | 1d | 2013-10-03 A | 2013-10-03 A | 823A-NT-6A-B9N-1080 | 100% | 2013-11-29 | 2013-11-29 | 823-6dPH | General Worker [128 h] | 100% | 100% | 823A_AB |  |  |  |  |  |
| 823A-NT-6A-B10N-1020 |  | Erect external formwork | 1d | 2013-10-04 A | 2013-10-05 A | 823A-NT-6A-B10N-1010 | 100% | 2013-11-30 | 2013-11-30 | 823-6dPH | Crawler Crane/Mobile Crane [64 h]; Carpenter (Formwork - Civil Construction) [768 h]; Plant and Equipment Operator (Crawler-mounted Mobile Crane) [64 h] | 100% | 100% | 823A_AB |  |  |  |  |  |
| 823A-NT-6A-B10N-1030 |  | Rebar fixing | 2d | 2013-10-05 A | 2013-10-07 A | 823A-NT-6A-B10N-1020 | 100% | 2013-12-02 | 2013-12-03 |  | Reinforcement [11569 kg]; Crawler Crane/Mobile Crane [128 h]; Bar Bender & Fixer [1536 h]; Plant and Equipment Operator (Crawler-mounted Mobile Crane) [128 h] | 100% | 100% | 823A_AB |  |  |  |  |  |
| 823A-NT-6A-B10N-1040 |  | Erect internal kicker formwork | 2d | 2013-10-08 A | 2013-10-09 A | 823A-NT-6A-B10N-1030 | 100% | 2013-12-04 | 2013-12-05 |  | Crawler Crane/Mobile Crane [128 h]; Carpenter (Formwork - Civil Construction) [1536 h]; Plant and Equipment Operator (Crawler-mounted Mobile Crane) [128 h] | 100% | 100% | 823A_AB |  |  |  |  |  |
| 823A-NT-6A-B10N-1050 |  | Concreting (240m3) | 1d | 2013-10-10 A | 2013-10-10 A | 823A-NT-6A-B10N-1040 | 100% | 2013-12-06 | 2013-12-06 |  | Permanent Concrete [240 Cu m]; Concrete 45/20A [240 Cu m]; Crawler Crane/Mobile Crane [64 h]; Concrete Pump [64 h]; PY Concretor [256 h]; General Worker [768 h]; Plant and Equipment Operator (Crawler-mounted Mobile Crane) [64 h]; Rigger/Metal Formwork Erector [256 h] | 100% | 100% | 823A_AB | 240 | m3 | 240 | 240 |  |
| 823A-NT-6A-B10N-1060 |  | Curing | 7d | 2013-10-11 A | 2013-10-17 A | 823A-NT-6A-B10N-1050 | 100% | 2013-12-07 | 2013-12-14 |  | General Worker [896 h] | 100% | 100% | 823A_AB |  |  |  |  |  |
| 823A-NT-6A-B10N-1070 |  | Preparation of construction joint for base slab | 1d | 2013-10-11 A | 2013-10-11 A | 823A-NT-6A-B10N-1050 | 100% | 2013-12-07 | 2013-12-07 | 823-6dPH | General Worker [128 h] | 100% | 100% | 823A_AB |  |  |  |  |  |
| 823A-NT-6A-B10N-1080 |  | Removal of formwork | 1d | 2013-10-12 A | 2013-10-12 A | 823A-NT-6A-B10N-1070 SS | 100% | 2013-11-29 | 2013-11-29 |  | Crawler Crane/Mobile Crane [64 h]; Carpenter (Formwork - Civil Construction) [512 h]; Plant and Equipment Operator (Crawler-mounted Mobile Crane) [64 h] | 100% | 100% | 823A_AB |  |  |  |  |  |
| 823A-NT-6A-B10N-1090 |  | Erect internal formwork & Falsework | 4d | 2013-11-18 A | 2013-11-22 A | 823A-NT-6A-B10N-1080, 823A-NT-6A-B11N-1090 SS | 100% | 2013-12-13 | 2013-12-17 |  | Crawler Crane/Mobile Crane [256 h]; Plant and Equipment Operator (Crawler-mounted Mobile Crane) [256 h]; Rigger/Metal Formwork Erector [2048 h]; Carpenter (Formwork - Civil Construction) [2560 h] | 100% | 100% | 823A_AB |  |  |  |  | +27 |
| 823A-NT-6A-B10N-1100 |  | Rebar fixing | 3d | 2013-11-23 A | 2013-11-26 A | 823A-NT-6A-B10N-1090 | 100% | 2013-12-18 | 2013-12-20 |  | Reinforcement [22729 kg]; Crawler Crane/Mobile Crane [192 h]; Bar Bender & Fixer [2304 h]; Plant and Equipment Operator (Crawler-mounted Mobile Crane) [192 h] | 100% | 100% | 823A_AB |  |  |  |  | +27 |
| 823A-NT-6A-B10N-1110 |  | Erect external formwork | 2d | 2013-11-27 A | 2013-11-28 A | 823A-NT-6A-B10N-1100 | 100% | 2013-12-21 | 2013-12-23 |  | Crawler Crane/Mobile Crane [128 h]; Carpenter (Formwork - Civil Construction) [1536 h]; Plant and Equipment Operator (Crawler-mounted Mobile Crane) [128 h] | 100% | 100% | 823A_AB |  |  |  |  | +27 |
| 823A-NT-6A-B10N-1120 |  | Concreting (240m3) | 1d | 2013-11-29 A | 2013-11-29 A | 823A-NT-6A-B10N-1110 | 100% | 2013-12-24 | 2013-12-24 |  | General Worker [768 h]; Plant and Equipment Operator (Crawler-mounted Mobile Crane) [64 h]; Rigger/Metal Formwork Erector [256 h]; PY Concretor [256 h]; Permanent Concrete [240 Cu m]; Concrete 45/20A [240 Cu m]; Crawler Crane/Mobile Crane [64 h]; Concrete Pump [64 h] | 100% | 100% | 823A_AB | 240 | m3 | 240 | 240 | +27 |
| 823A-NT-6A-B10N-1130 |  | Curing | 10d | 2013-11-30 A | 2013-12-12 A | 823A-NT-6A-B10N-1120 | 100% | 2013-12-27 | 2014-01-08 |  | General Worker [1280 h] | 100% | 100% | 823A_AB |  |  |  |  | +27 |
| 823A-NT-6A-B10N-1140 |  | Preparation of construction joint for wall and roof | 1d | 2013-11-30 A | 2013-11-30 A | 823A-NT-6A-B10N-1120 | 100% | 2013-12-27 | 2013-12-27 | 823-6dPH | General Worker [128 h] | 100% | 100% | 823A_AB |  |  |  |  | +27 |
| 823A-NT-6A-B10N-1150 |  | Removal external and internal formwork for wall | 2d | 2013-11-30 A | 2013-12-02 A | 823A-NT-6A-B10N-1140 SS | 100% | 2013-12-27 | 2013-12-28 |  | Crawler Crane/Mobile Crane [128 h]; Carpenter (Formwork - Civil Construction) [1024 h]; Plant and Equipment Operator (Crawler-mounted Mobile Crane) [128 h] | 100% | 100% | 823A_AB |  |  |  |  | +27 |
| 823A-NT-6A-B10N-1160 |  | Removal internal falsework and formwork for roof | 1d | 2013-12-13 A | 2013-12-13 A | 823A-NT-6A-B10N-1130, 823A-NT-6A-B10N-1150 | 100% | 2013-12-28 | 2013-12-28 |  | Crawler Crane/Mobile Crane [64 h]; Plant and Equipment Operator (Crawler-mounted Mobile Crane) [64 h]; Carpenter (Formwork - Civil Construction) [640 h]; Rigger/Metal Formwork Erector [512 h] | 100% | 100% | 823A_AB |  |  |  |  | +27 |
| 823A-NT-6A-B10N-1170 |  | Side walkway and cable bracket (38m3) | 5d | 2015-03-16 A | 2015-03-20 A | 823A-NT-6A-B11N-1170 SS, 823A-NT-6A-B10N-1160 | 100% | 2015-03-02 | 2015-03-06 |  | Carpenter (Formwork - Civil Construction) [1920 h]; General Worker [2560 h]; Plant and Equipment Operator (Crawler-mounted Mobile Crane) [320 h]; Rigger/Metal Formwork Erector [1280 h]; PY Concretor [1280 h]; Permanent Concrete [38 Cu m]; Concrete 20/20C [38 Cu m]; Crawler Crane/Mobile Crane [320 h]; Concrete Pump [320 h] | 100% | 100% | 823A_AB | 38 | m3 | 38 | 38 | +27 |
|  | 3 | **Central Base Slab** |  | 2013-10-03 | 2013-10-17 |  |  |  |  |  |  |  |  |  |  |  |  |  |  |
| 823A-NT-6A-B10C-1010 |  | Placing of waterproof member T-lock & testing | 1d | 2013-10-03 A | 2013-10-03 A | 823A-NT-6A-B9C-1010 SS, 823A-NT-6A-B10N-1080 | 100% | 2013-12-06 | 2013-12-06 | 823-6dPH | General Worker [128 h] | 100% | 100% | 823A_AB |  |  |  |  |  |
| 823A-NT-6A-B10C-1020 |  | Rebar fixing | 2d | 2013-10-04 A | 2013-10-05 A | 823A-NT-6A-B10C-1010 | 100% | 2013-12-07 | 2013-12-09 |  | Reinforcement [11569 kg]; Crawler Crane/Mobile Crane [128 h]; Bar Bender & Fixer [1536 h]; Plant and Equipment Operator (Crawler-mounted Mobile Crane) [128 h] | 100% | 100% | 823A_AB |  |  |  |  |  |
| 823A-NT-6A-B10C-1030 |  | Erect external formwork | 1d | 2013-10-07 A | 2013-10-09 A | 823A-NT-6A-B10C-1020 | 100% | 2013-12-10 | 2013-12-10 |  | Crawler Crane/Mobile Crane [64 h]; Carpenter (Formwork - Civil Construction) [768 h]; Plant and Equipment Operator (Crawler-mounted Mobile Crane) [64 h] | 100% | 100% | 823A_AB |  |  |  |  |  |
| 823A-NT-6A-B10C-1040 |  | Concreting (240m3) | 1d | 2013-10-10 A | 2013-10-10 A | 823A-NT-6A-B10C-1030 | 100% | 2013-12-11 | 2013-12-11 |  | Permanent Concrete [240 Cu m]; Concrete 45/20A [240 Cu m]; Crawler Crane/Mobile Crane [64 h]; Concrete Pump [64 h]; General Worker [768 h]; Plant and Equipment Operator (Crawler-mounted Mobile Crane) [64 h]; Rigger/Metal Formwork Erector [256 h]; PY Concretor [256 h] | 100% | 100% | 823A_AB | 240 | m3 | 240 | 240 |  |
| 823A-NT-6A-B10C-1050 |  | Curing | 7d | 2013-10-11 A | 2013-10-17 A | 823A-NT-6A-B10C-1040 | 100% | 2013-12-12 | 2013-12-19 |  | General Worker [896 h] | 100% | 100% | 823A_AB |  |  |  |  |  |
| 823A-NT-6A-B10C-1060 |  | Preparation of construction joint for base slab | 1d | 2013-10-11 A | 2013-10-12 A | 823A-NT-6A-B10C-1040 | 100% | 2013-12-12 | 2013-12-12 | 823-6dPH | General Worker [128 h] | 100% | 100% | 823A_AB |  |  |  |  |  |
| 823A-NT-6A-B10C-1070 |  | Removal of formwork | 1d | 2013-10-11 A | 2013-10-12 A | 823A-NT-6A-B10C-1060 SS | 100% | 2013-12-12 | 2013-12-12 |  | Carpenter (Formwork - Civil Construction) [512 h]; Plant and Equipment Operator (Crawler-mounted Mobile Crane) [64 h]; Crawler Crane/Mobile Crane [64 h] | 100% | 100% | 823A_AB |  |  |  |  |  |

| ID | WBS | Activity | Duration | Start | Finish | Predecessors | Complete | Planned start | Planned finish | Calendar | Resources | % Planned | % Actual | 823A_As-built | Actual Up to Date | UNITS | Total Quantity | Planned Up to Date | TIme Gain/Loss |
| --- | --- | --- | --- | --- | --- | --- | --- | --- | --- | --- | --- | --- | --- | --- | --- | --- | --- | --- | --- |
|  | 6 | **Bay 11** |  | 2013-09-23 | 2015-03-20 |  |  |  |  |  |  |  |  |  |  |  |  |  |  |
|  | 1 | **Southbound (Down Track)** |  | 2013-09-23 | 2014-05-08 |  |  |  |  |  |  |  |  |  |  |  |  |  |  |
| 823A-NT-6A-B11S-1010 |  | Placing of waterproof member T-lock & testing | 1d | 2013-09-23 A | 2013-09-24 A | 823A-NT-6A-B10S-1080, 823A-NT-6A-B9S-1080, 823A-NT-6A-B11C-1050, 823A-NT-6A-B10C-1050 | 100% | 2013-12-21 | 2013-12-21 | 823-6dPH | General Worker [128 h] | 100% | 100% | 823A_AB |  |  |  |  |  |
| 823A-NT-6A-B11S-1020 |  | Erect external formwork | 1d | 2013-09-23 A | 2013-09-24 A | 823A-NT-6A-B11S-1010 | 100% | 2013-12-19 | 2013-12-19 | 823-6dPH | Crawler Crane/Mobile Crane [64 h]; Plant and Equipment Operator (Crawler-mounted Mobile Crane) [64 h]; Carpenter (Formwork - Civil Construction) [768 h] | 100% | 100% | 823A_AB |  |  |  |  |  |
| 823A-NT-6A-B11S-1030 |  | Rebar fixing | 2d | 2013-09-25 A | 2013-09-27 A | 823A-NT-6A-B11S-1020 | 100% | 2013-12-20 | 2013-12-21 |  | Reinforcement [11569 kg]; Crawler Crane/Mobile Crane [128 h]; Bar Bender & Fixer [1536 h]; Plant and Equipment Operator (Crawler-mounted Mobile Crane) [128 h] | 100% | 100% | 823A_AB |  |  |  |  |  |
| 823A-NT-6A-B11S-1040 |  | Erect internal kicker formwork | 2d | 2013-09-28 A | 2013-09-30 A | 823A-NT-6A-B11S-1030 | 100% | 2013-12-17 | 2013-12-18 |  | Crawler Crane/Mobile Crane [128 h]; Carpenter (Formwork - Civil Construction) [1536 h]; Plant and Equipment Operator (Crawler-mounted Mobile Crane) [128 h] | 100% | 100% | 823A_AB |  |  |  |  |  |
| 823A-NT-6A-B11S-1050 |  | Concreting (200m3) | 1d | 2013-10-02 A | 2013-10-02 A | 823A-NT-6A-B11S-1040 | 100% | 2014-01-11 | 2014-01-11 |  | Permanent Concrete [200 Cu m]; Concrete 45/20A [200 Cu m]; Crawler Crane/Mobile Crane [64 h]; Concrete Pump [64 h]; PY Concretor [256 h]; General Worker [768 h]; Plant and Equipment Operator (Crawler-mounted Mobile Crane) [64 h]; Rigger/Metal Formwork Erector [256 h] | 100% | 100% | 823A_AB | 200 | m3 | 200 | 200 |  |
| 823A-NT-6A-B11S-1060 |  | Curing | 7d | 2013-10-03 A | 2013-10-10 A | 823A-NT-6A-B11S-1050 | 100% | 2014-01-13 | 2014-01-20 |  | General Worker [896 h] | 100% | 100% | 823A_AB |  |  |  |  |  |
| 823A-NT-6A-B11S-1070 |  | Preparation of construction joint for base slab | 1d | 2013-10-03 A | 2013-10-03 A | 823A-NT-6A-B11S-1050 | 100% | 2014-01-13 | 2014-01-13 | 823-6dPH | General Worker [128 h] | 100% | 100% | 823A_AB |  |  |  |  |  |
| 823A-NT-6A-B11S-1080 |  | Removal of formwork | 1d | 2013-10-11 A | 2013-10-12 A | 823A-NT-6A-B11S-1070 SS | 100% | 2014-01-13 | 2014-01-13 |  | Crawler Crane/Mobile Crane [64 h]; Carpenter (Formwork - Civil Construction) [512 h]; Plant and Equipment Operator (Crawler-mounted Mobile Crane) [64 h] | 100% | 100% | 823A_AB |  |  |  |  |  |
| 823A-NT-6A-B11S-1090 |  | Erect internal formwork & Falsework | 4d | 2013-11-25 A | 2013-11-28 A | 823A-NT-6A-B10S-1150, 823A-NT-6A-B11S-1080, 823A-NT-6A-B11S-1060 FF | 100% | 2013-11-29 | 2013-12-03 |  | Crawler Crane/Mobile Crane [256 h]; Plant and Equipment Operator (Crawler-mounted Mobile Crane) [256 h]; Rigger/Metal Formwork Erector [2048 h]; Carpenter (Formwork - Civil Construction) [2560 h] | 100% | 100% | 823A_AB |  |  |  |  | +29 |
| 823A-NT-6A-B11S-1100 |  | Rebar fixing | 3d | 2013-11-29 A | 2013-12-02 A | 823A-NT-6A-B11S-1090 | 100% | 2013-12-04 | 2013-12-06 |  | Reinforcement [22729 kg]; Bar Bender & Fixer [2304 h]; Plant and Equipment Operator (Crawler-mounted Mobile Crane) [192 h]; Crawler Crane/Mobile Crane [192 h] | 100% | 100% | 823A_AB |  |  |  |  | +29 |
| 823A-NT-6A-B11S-1110 |  | Erect external formwork | 2d | 2013-12-03 A | 2013-12-04 A | 823A-NT-6A-B11S-1100 | 100% | 2013-12-10 | 2013-12-11 |  | Crawler Crane/Mobile Crane [128 h]; Carpenter (Formwork - Civil Construction) [1536 h]; Plant and Equipment Operator (Crawler-mounted Mobile Crane) [128 h] | 100% | 100% | 823A_AB |  |  |  |  | +29 |
| 823A-NT-6A-B11S-1120 |  | Concreting (200m3) | 1d | 2013-12-05 A | 2013-12-05 A | 823A-NT-6A-B11S-1110 | 100% | 2013-12-12 | 2013-12-12 |  | Concrete Pump [64 h]; PY Concretor [256 h]; General Worker [768 h]; Plant and Equipment Operator (Crawler-mounted Mobile Crane) [64 h]; Rigger/Metal Formwork Erector [256 h]; Crawler Crane/Mobile Crane [64 h]; Permanent Concrete [222 Cu m]; Concrete 45/20A [222 Cu m] | 100% | 100% | 823A_AB | 200 | m3 | 200 | 200 | +29 |
| 823A-NT-6A-B11S-1130 |  | Curing | 10d | 2013-12-06 A | 2013-12-17 A | 823A-NT-6A-B11S-1120 | 100% | 2013-12-13 | 2013-12-24 |  | General Worker [1280 h] | 100% | 100% | 823A_AB |  |  |  |  | +27 |
| 823A-NT-6A-B11S-1140 |  | Preparation of construction joint for wall and roof | 1d | 2013-12-06 A | 2013-12-06 A | 823A-NT-6A-B11S-1120 | 100% | 2013-12-13 | 2013-12-13 | 823-6dPH | General Worker [128 h] | 100% | 100% | 823A_AB |  |  |  |  | +29 |
| 823A-NT-6A-B11S-1150 |  | Removal external and internal formwork for wall | 2d | 2013-12-06 A | 2013-12-07 A | 823A-NT-6A-B11S-1140 SS | 100% | 2013-12-13 | 2013-12-14 |  | Plant and Equipment Operator (Crawler-mounted Mobile Crane) [128 h]; Crawler Crane/Mobile Crane [128 h]; Carpenter (Formwork - Civil Construction) [1024 h] | 100% | 100% | 823A_AB |  |  |  |  | +29 |
| 823A-NT-6A-B11S-1160 |  | Removal internal falsework and formwork for roof | 1d | 2013-12-18 A | 2013-12-18 A | 823A-NT-6A-B11S-1130, 823A-NT-6A-B11S-1150 | 100% | 2013-12-27 | 2013-12-27 |  | Crawler Crane/Mobile Crane [32 h]; Plant and Equipment Operator (Crawler-mounted Mobile Crane) [32 h]; Carpenter (Formwork - Civil Construction) [256 h]; Rigger/Metal Formwork Erector [128 h] | 100% | 100% | 823A_AB |  |  |  |  | +27 |
| 823A-NT-6A-B11S-1170 |  | Side walkway and cable bracket (38m3) | 5d | 2014-05-02 A | 2014-05-08 A | 823A-NT-6A-B11S-1160 | 100% |  |  |  | Permanent Concrete [38 Cu m]; Concrete 20/20C [38 Cu m]; Crawler Crane/Mobile Crane [40 h]; Carpenter (Formwork - Civil Construction) [320 h]; PY Concretor [160 h]; General Worker [320 h]; Plant and Equipment Operator (Crawler-mounted Mobile Crane) [80 h]; Rigger/Metal Formwork Erector [160 h]; Concrete Pump [40 h] | 100% | 100% | 823A_AB | 38 | m3 | 38 | 38 | +27 |
|  | 2 | **Northbound (Up Track)** |  | 2013-09-23 | 2015-03-20 |  |  |  |  |  |  |  |  |  |  |  |  |  |  |
| 823A-NT-6A-B11N-1010 |  | Placing of waterproof member T-lock & testing | 1d | 2013-09-23 A | 2013-09-24 A | 823A-NT-6A-B10N-1010 SS | 100% | 2013-10-31 | 2013-10-31 | 823-6dPH | Skill Labour [64 h] | 100% | 100% | 823A_AB |  |  |  |  |  |
| 823A-NT-6A-B11N-1020 |  | Erect external formwork | 1d | 2013-09-23 A | 2013-09-24 A | 823A-NT-6A-B11N-1010 | 100% | 2013-10-31 | 2013-10-31 | 823-6dPH | Carpenter (Formwork - Civil Construction) [96 h]; Plant and Equipment Operator (Crawler-mounted Mobile Crane) [8 h]; Crawler Crane/Mobile Crane [8 h] | 100% | 100% | 823A_AB |  |  |  |  |  |
| 823A-NT-6A-B11N-1030 |  | Rebar fixing | 2d | 2013-09-25 A | 2013-09-27 A | 823A-NT-6A-B11N-1020 | 100% | 2013-11-01 | 2013-11-02 |  | Reinforcement [11569 kg]; Crawler Crane/Mobile Crane [16 h]; Bar Bender & Fixer [256 h]; Plant and Equipment Operator (Crawler-mounted Mobile Crane) [16 h] | 100% | 100% | 823A_AB |  |  |  |  |  |
| 823A-NT-6A-B11N-1040 |  | Erect internal kicker formwork | 2d | 2013-09-28 A | 2013-09-30 A | 823A-NT-6A-B11N-1030 | 100% | 2013-11-01 | 2013-11-02 |  | Crawler Crane/Mobile Crane [16 h]; Carpenter (Formwork - Civil Construction) [192 h]; Plant and Equipment Operator (Crawler-mounted Mobile Crane) [16 h] | 100% | 100% | 823A_AB |  |  |  |  |  |
| 823A-NT-6A-B11N-1050 |  | Concreting (220m3) | 1d | 2013-10-02 A | 2013-10-02 A | 823A-NT-6A-B11N-1040 | 100% | 2013-11-29 | 2013-11-29 |  | Concrete 45/20A [220 Cu m]; Crawler Crane/Mobile Crane [8 h]; Concrete Pump [8 h]; PY Concretor [64 h]; General Worker [96 h]; Plant and Equipment Operator (Crawler-mounted Mobile Crane) [16 h]; Rigger/Metal Formwork Erector [32 h]; Permanent Concrete [220 Cu m] | 100% | 100% | 823A_AB | 220 | m3 | 220 | 220 |  |
| 823A-NT-6A-B11N-1060 |  | Curing | 7d | 2013-10-03 A | 2013-10-10 A | 823A-NT-6A-B10N-1060 FF, 823A-NT-6A-B11N-1050 | 100% | 2013-12-07 | 2013-12-14 |  | General Worker [224 h] | 100% | 100% | 823A_AB |  |  |  |  |  |
| 823A-NT-6A-B11N-1070 |  | Preparation of construction joint for base slab | 1d | 2013-10-03 A | 2013-10-03 A | 823A-NT-6A-B11N-1050 | 100% | 2013-11-30 | 2013-11-30 | 823-6dPH |  | 100% | 100% | 823A_AB |  |  |  |  |  |
| 823A-NT-6A-B11N-1080 |  | Removal of formwork | 1d | 2013-10-11 A | 2013-10-12 A | 823A-NT-6A-B11N-1070 SS | 100% | 2013-11-30 | 2013-11-30 |  | Crawler Crane/Mobile Crane [8 h]; Carpenter (Formwork - Civil Construction) [64 h]; Plant and Equipment Operator (Crawler-mounted Mobile Crane) [8 h] | 100% | 100% | 823A_AB |  |  |  |  |  |
| 823A-NT-6A-B11N-1090 |  | Erect internal formwork & Falsework | 4d | 2013-11-18 A | 2013-11-22 A | 823A-NT-6A-B11S-1150, 823A-NT-6A-B11N-1080 | 100% | 2013-12-13 | 2013-12-17 |  | Crawler Crane/Mobile Crane [56 h]; Plant and Equipment Operator (Crawler-mounted Mobile Crane) [56 h]; Rigger/Metal Formwork Erector [224 h]; Carpenter (Formwork - Civil Construction) [448 h] | 100% | 100% | 823A_AB |  |  |  |  | +29 |
| 823A-NT-6A-B11N-1100 |  | Rebar fixing | 3d | 2013-11-23 A | 2013-11-26 A | 823A-NT-6A-B11N-1090 | 100% | 2013-12-18 | 2013-12-20 |  | Reinforcement [22729 kg]; Crawler Crane/Mobile Crane [32 h]; Bar Bender & Fixer [512 h]; Plant and Equipment Operator (Crawler-mounted Mobile Crane) [32 h] | 100% | 100% | 823A_AB |  |  |  |  | +29 |
| 823A-NT-6A-B11N-1110 |  | Erect external formwork | 2d | 2013-11-27 A | 2013-11-28 A | 823A-NT-6A-B11N-1100 | 100% | 2013-12-21 | 2013-12-23 |  | Crawler Crane/Mobile Crane [16 h]; Carpenter (Formwork - Civil Construction) [192 h]; Plant and Equipment Operator (Crawler-mounted Mobile Crane) [16 h] | 100% | 100% | 823A_AB |  |  |  |  | +29 |
| 823A-NT-6A-B11N-1120 |  | Concreting (220m3) | 1d | 2013-11-29 A | 2013-11-29 A | 823A-NT-6A-B11N-1110 | 100% | 2013-12-24 | 2013-12-24 |  | Concrete 45/20A [220 Cu m]; Permanent Concrete [220 Cu m]; Crawler Crane/Mobile Crane [8 h]; Concrete Pump [8 h]; PY Concretor [64 h]; General Worker [96 h]; Plant and Equipment Operator (Crawler-mounted Mobile Crane) [16 h]; Rigger/Metal Formwork Erector [32 h] | 100% | 100% | 823A_AB | 220 | m3 | 220 | 220 | +29 |
| 823A-NT-6A-B11N-1130 |  | Curing | 10d | 2013-11-30 A | 2013-12-12 A | 823A-NT-6A-B11N-1120 | 100% | 2013-12-27 | 2014-01-08 |  | General Worker [224 h] | 100% | 100% | 823A_AB |  |  |  |  | +27 |
| 823A-NT-6A-B11N-1140 |  | Preparation of construction joint for wall and roof | 1d | 2013-11-30 A | 2013-11-30 A | 823A-NT-6A-B11N-1120 | 100% | 2013-12-27 | 2013-12-27 | 823-6dPH |  | 100% | 100% | 823A_AB |  |  |  |  | +29 |
| 823A-NT-6A-B11N-1150 |  | Removal external and internal formwork for wall | 2d | 2013-11-30 A | 2013-12-02 A | 823A-NT-6A-B11N-1140 SS | 100% | 2013-12-27 | 2013-12-28 |  | Crawler Crane/Mobile Crane [16 h]; Plant and Equipment Operator (Crawler-mounted Mobile Crane) [16 h]; Carpenter (Formwork - Civil Construction) [128 h] | 100% | 100% | 823A_AB |  |  |  |  | +29 |
| 823A-NT-6A-B11N-1160 |  | Removal internal falsework and formwork for roof | 1d | 2013-12-13 A | 2013-12-13 A | 823A-NT-6A-B11N-1130, 823A-NT-6A-B11N-1150 | 100% | 2013-12-28 | 2013-12-28 |  | Crawler Crane/Mobile Crane [32 h]; Plant and Equipment Operator (Crawler-mounted Mobile Crane) [32 h]; Carpenter (Formwork - Civil Construction) [256 h]; Rigger/Metal Formwork Erector [128 h] | 100% | 100% | 823A_AB |  |  |  |  | +27 |
| 823A-NT-6A-B11N-1170 |  | Side walkway and cable bracket (38m3) | 5d | 2015-03-16 A | 2015-03-20 A | 823A-NT-6A-B11N-1160, 823A-NT-6A-B9N-1160 | 100% | 2015-03-02 | 2015-03-06 |  | Carpenter (Formwork - Civil Construction) [320 h]; PY Concretor [160 h]; General Worker [320 h]; Plant and Equipment Operator (Crawler-mounted Mobile Crane) [80 h]; Rigger/Metal Formwork Erector [160 h]; Permanent Concrete [38 Cu m]; Concrete 20/20C [38 Cu m]; Crawler Crane/Mobile Crane [40 h]; Concrete Pump [40 h] | 100% | 100% | 823A_AB | 38 | m3 | 38 | 38 | +27 |

| ID | WBS | Activity | Duration | Start | Finish | Predecessors | Complete | Planned start | Planned finish | Calendar | Resources | % Planned | % Actual | 823A_As-built | Actual Up to Date | UNITS | Total Quantity | Planned Up to Date | TIme Gain/Loss | user_text8 |
| --- | --- | --- | --- | --- | --- | --- | --- | --- | --- | --- | --- | --- | --- | --- | --- | --- | --- | --- | --- | --- |
|  | 3 | **Central Base Slab** |  | 2013-09-23 | 2013-10-11 |  |  |  |  |  |  |  |  |  |  |  |  |  |  |  |
| 823A-NT-6A-B11C-1010 |  | Placing of waterproof member T-lock & testing | 1d | 2013-09-23 A | 2013-09-24 A | 823A-NT-6A-B9C-1070, 823A-NT-6A-B11N-1060, 823A-NT-6A-B10C-1070 | 100% | 2013-11-26 | 2013-11-26 | 823-6dPH | Skill Labour [64 h] | 100% | 100% | 823A_AB |  |  |  |  |  |  |
| 823A-NT-6A-B11C-1020 |  | Rebar fixing | 2d | 2013-09-25 A | 2013-09-27 A | 823A-NT-6A-B11C-1010 | 100% | 2013-11-25 | 2013-11-26 |  | Reinforcement [11569 kg]; Crawler Crane/Mobile Crane [16 h]; Bar Bender & Fixer [256 h]; Plant and Equipment Operator (Crawler-mounted Mobile Crane) [16 h] | 100% | 100% | 823A_AB |  |  |  |  |  |  |
| 823A-NT-6A-B11C-1030 |  | Erect external formwork | 1d | 2013-09-28 A | 2013-09-30 A | 823A-NT-6A-B11C-1020 | 100% | 2013-11-23 | 2013-11-23 |  | Crawler Crane/Mobile Crane [16 h]; Carpenter (Formwork - Civil Construction) [192 h]; Plant and Equipment Operator (Crawler-mounted Mobile Crane) [16 h] | 100% | 100% | 823A_AB |  |  |  |  |  |  |
| 823A-NT-6A-B11C-1040 |  | Concreting (222m3) | 1d | 2013-10-02 A | 2013-10-02 A | 823A-NT-6A-B11C-1030 | 100% | 2013-12-18 | 2013-12-18 |  | Permanent Concrete [222 Cu m]; Concrete 45/20A [222 Cu m]; Crawler Crane/Mobile Crane [8 h]; Concrete Pump [8 h]; PY Concretor [64 h]; General Worker [96 h]; Plant and Equipment Operator (Crawler-mounted Mobile Crane) [16 h]; Rigger/Metal Formwork Erector [32 h] | 100% | 100% | 823A_AB | 222 | m3 | 222 | 222 |  |  |
| 823A-NT-6A-B11C-1050 |  | Curing | 7d | 2013-10-03 A | 2013-10-10 A | 823A-NT-6A-B11C-1040 | 100% | 2013-12-19 | 2013-12-28 |  | General Worker [224 h] | 100% | 100% | 823A_AB |  |  |  |  |  |  |
| 823A-NT-6A-B11C-1060 |  | Preparation of construction joint for base slab | 1d | 2013-10-03 A | 2013-10-03 A | 823A-NT-6A-B11C-1040 | 100% | 2013-12-19 | 2013-12-19 | 823-6dPH |  | 100% | 100% | 823A_AB |  |  |  |  |  |  |
| 823A-NT-6A-B11C-1070 |  | Removal of formwork | 1d | 2013-10-11 A | 2013-10-11 A | 823A-NT-6A-B11C-1060 SS | 100% |  |  |  | Crawler Crane/Mobile Crane [8 h]; Carpenter (Formwork - Civil Construction) [64 h]; Plant and Equipment Operator (Crawler-mounted Mobile Crane) [8 h] | 100% | 100% | 823A_AB |  |  |  |  |  |  |
|  | 3 | **Backfilling** |  | 2013-12-31 | 2016-07-18 |  |  |  |  |  |  |  |  |  |  |  |  |  |  |  |
| 823A-NT-6A-BF-1010 |  | Backfilling to 0.5m below the top of C&C Tunnel (+3.46mPD) (5218m3) | 26d | 2013-12-31 A | 2014-01-30 A | 823A-NT-6A-B6N-1150 | 100% |  |  |  | Soil Fill [5218 Cu m]; Crawler Crane/Mobile Crane [208 h]; Backhoe [416 h]; Vibration Roller [208 h]; General Worker [1248 h]; Backfilling Materials [5218 Cu m]; Plant and Equipment Operator (Crawler-mounted Mobile Crane) [832 h] | 100% | 100% | 823A_AB | 5218 | m3 | 5218 | 5218 | +30 |  |
| 823A-NT-6A-BF-1000 |  | Removal of Temporary Nullah | 90d | 2014-02-04 A | 2014-06-16 A | 823A-NT-6A-BF-1010 | 100% | 2014-03-01 | 2014-06-21 |  |  | 100% | 100% | 823A_AB |  |  |  |  |  |  |
| 823A-NT-6A-BF-1050 |  | Construction & connect East Box Culvert from Box 6B to KTR | 21d | 2014-02-10 A | 2014-04-15 A | 823A-NT-6A-BF-1040 FF | 100% | 2014-04-14 | 2014-05-13 | 823-6dPH |  | 100% | 100% | 823A_AB |  |  |  |  |  |  |
| 823A-NT-6A-BF-1030 |  | Reinstate Nullah Base of original route | 12d | 2014-02-25 A | 2014-03-28 A | 823A-NT-6A-BF-1020 | 100% | 2014-02-25 | 2014-03-10 | 823-6dPH |  | 100% | 100% | 823A_AB |  |  |  |  |  |  |
| 823A-NT-6A-BF-1020 |  | Reinstate the permenant Retaining wall of Nullah | 18d | 2014-03-04 A | 2014-04-12 A | 823A-NT-6A-BF-1010 | 100% | 2014-03-01 | 2014-03-21 |  | Temporary Concrete [310 Cu m]; Concrete 20/20C [310 Cu m]; Crawler Crane/Mobile Crane [8 h]; Concrete Pump [8 h]; PY Concretor [32 h]; General Worker [64 h]; Plant and Equipment Operator (Crawler-mounted Mobile Crane) [16 h]; Rigger/Metal Formwork Erector [32 h] | 100% | 100% | 823A_AB |  |  |  |  |  |  |
| 823A-NT-6A-BF-1040 |  | Reinstate Nullah to original route | 33d | 2014-03-29 A | 2014-04-15 A | 823A-NT-6A-BF-1030 | 100% | 2014-03-29 | 2014-05-13 | 823-6dPH |  | 100% | 100% | 823A_AB |  |  |  |  |  |  |
| 823A-NT-6A-BF-1060 |  | Reinstatement of Wang Toi Shan Shan Tsuen Road | 180d | 2015-12-01 A | 2016-07-18 A | 823A-NT-6A-BF-1050 | 100% | 2015-12-01 | 2016-07-13 | 823-6dPH |  | 100% | 100% | 823A_AB |  |  |  |  |  |  |
|  | 3 | **Box 6B** |  | 2011-03-01 | 2013-12-30 |  |  |  |  |  |  |  |  |  |  |  |  |  |  |  |
|  | 1 | **D- Wall Construction** |  | 2011-03-01 | 2012-08-31 |  |  |  |  |  |  |  |  |  |  |  |  |  |  |  |
| 823A-NT-6B-DW-1010 |  | Pre-drilling at Works Area 4.4 | 225d | 2011-03-01 A | 2011-11-30 A | 823A-NT-7B-DW-1020 | 100% |  |  | 823-6dPH | G.I Rig/Drill Rig [4528 h]; Plant and Equipment Operator (Crawler-mounted Mobile Crane) [4528 h]; General Worker [4528 h] | 100% | 100% | 823A_AB |  |  |  |  |  |  |
| 823A-NT-6B-DW-1020 |  | Site Setup and guide wall | 25d | 2011-12-01 A | 2011-12-31 A | 823A-NT-6B-DW-1010 | 100% |  |  | 823-6dPH | Backhoe [200 h]; Temporary Concrete [71 Cu m]; Concrete 30/20B [71 Cu m]; Plant and Equipment Operator (Crawler-mounted Mobile Crane) [200 h]; General Worker [400 h]; Carpenter (Formwork - Civil Construction) [400 h]; PY Concretor [400 h]; Bar Bender & Fixer [400 h] | 100% | 100% | 823A_AB |  |  |  |  |  |  |
| 823A-NT-6B-DW-1030 |  | D-wall construction (3104m3) | 152d | 2012-01-03 A | 2012-07-10 A | 823A-NT-6B-DW-1020 | 100% |  |  | 823-6dPH | Concrete 45/20A [3104 Cu m]; D-Wall [20 NO]; Temporary Concrete [3104 Cu m]; D-Wall Grab [872 h]; Hydrofraise Cutter [872 h]; Crawler Crane/Mobile Crane [872 h]; Plant and Equipment Operator (Crawler-mounted Mobile Crane) [3488 h]; General Worker [3488 h]; Backhoe [872 h]; Bar Bender & Fixer [10464 h]; Rigger/Metal Formwork Erector [5232 h] | 100% | 100% | 823A_AB | 3104 | m3 | 3104 | 3104 |  |  |
| 823A-NT-6B-DW-1040 |  | Sonic test, shear pin, toe grout and pumping Test | 45d | 2012-07-11 A | 2012-08-31 A | 823A-NT-6B-DW-1030 | 100% |  |  | 823-6dPH | Shear Pin [120 NO]; Toe Grout [120 NO]; G.I Rig/Drill Rig [360 h]; Grouting Machine [360 h]; General Worker [1440 h]; Plant and Equipment Operator (Crawler-mounted Mobile Crane) [1080 h]; Crawler Crane/Mobile Crane [360 h] | 100% | 100% | 823A_AB |  |  |  |  |  |  |
|  | 2 | **Excavation and Lateral Support** |  | 2012-09-01 | 2012-12-08 |  |  |  |  |  |  |  |  |  |  |  |  |  |  |  |
| 823A-NT-6B-ELS-1010 |  | Excavate up to +8.0mPD (775m3) | 3d | 2012-09-01 A | 2012-09-04 A | 823A-NT-6B-DW-1040 | 100% |  |  | 823-6dPH | Excavation Materials [775 Cu m]; Soil Excavation [775 Cu m]; Backhoe [32 h]; Plant and Equipment Operator (Crawler-mounted Mobile Crane) [32 h]; Truck Driver (Heavy Goods Vehicles) [256 h]; Dump Truck [256 h]; General Worker [64 h] | 100% | 100% | 823A_AB | 775 | m3 | 775 | 775 |  |  |
| 823A-NT-6B-ELS-1020 |  | Install Strut S1 +8.5mPD | 4d | 2012-09-05 A | 2012-09-08 A | 823A-NT-6B-ELS-1010 | 100% |  |  | 823-6dPH | Crawler Crane/Mobile Crane [32 h]; Weld Set [128 h]; Rigger/Metal Formwork Erector [128 h]; General Welder [128 h]; Plant and Equipment Operator (Crawler-mounted Mobile Crane) [32 h] | 100% | 100% | 823A_AB |  |  |  |  |  |  |
| 823A-NT-6B-ELS-1030 |  | Excavate up to +4.5mPD (2713m3) | 14d | 2012-09-10 A | 2012-09-25 A | 823A-NT-6B-ELS-1020 | 100% |  |  | 823-6dPH | Excavation Materials [2713 Cu m]; Soil Excavation [2713 Cu m]; Backhoe [192 h]; Crawler Crane/Mobile Crane [64 h]; Plant and Equipment Operator (Crawler-mounted Mobile Crane) [256 h]; Truck Driver (Heavy Goods Vehicles) [896 h]; General Worker [256 h]; Dump Truck [896 h] | 100% | 100% | 823A_AB | 2713 | m3 | 2713 | 2713 |  |  |
| 823A-NT-6B-ELS-1040 |  | Install Strut S2 +5.0mPD | 4d | 2012-09-26 A | 2012-09-29 A | 823A-NT-6B-ELS-1030 | 100% |  |  | 823-6dPH | Crawler Crane/Mobile Crane [32 h]; Weld Set [128 h]; Plant and Equipment Operator (Crawler-mounted Mobile Crane) [32 h]; Rigger/Metal Formwork Erector [128 h]; General Welder [128 h] | 100% | 100% | 823A_AB |  |  |  |  |  |  |
| 823A-NT-6B-ELS-1050 |  | Excavate up to +0.5mPD (3100m3) | 15d | 2012-10-03 A | 2012-10-19 A | 823A-NT-6B-ELS-1040 | 100% |  |  | 823-6dPH | Dump Truck [1008 h]; Excavation Materials [3100 Cu m]; Soil Excavation [3100 Cu m]; Backhoe [216 h]; Crawler Crane/Mobile Crane [72 h]; Plant and Equipment Operator (Crawler-mounted Mobile Crane) [288 h]; Truck Driver (Heavy Goods Vehicles) [1008 h]; General Worker [288 h] | 100% | 100% | 823A_AB | 3100 | m3 | 3100 | 3100 |  |  |
| 823A-NT-6B-ELS-1060 |  | Install Strut S3 +1.0mPD | 4d | 2012-10-20 A | 2012-10-25 A | 823A-NT-6B-ELS-1050 | 100% |  |  | 823-6dPH | Crawler Crane/Mobile Crane [32 h]; Weld Set [128 h]; Plant and Equipment Operator (Crawler-mounted Mobile Crane) [32 h]; Rigger/Metal Formwork Erector [128 h]; General Welder [128 h] | 100% | 100% | 823A_AB |  |  |  |  |  |  |
| 823A-NT-6B-ELS-1070 |  | Excavate up to -3.0mPD (2713m3) | 14d | 2012-10-26 A | 2012-11-10 A | 823A-NT-6B-ELS-1060 | 100% |  |  | 823-6dPH | Excavation Materials [2713 Cu m]; Soil Excavation [2713 Cu m]; Crawler Crane/Mobile Crane [64 h]; Backhoe [192 h]; Plant and Equipment Operator (Crawler-mounted Mobile Crane) [256 h]; Truck Driver (Heavy Goods Vehicles) [896 h]; General Worker [256 h]; Dump Truck [896 h] | 100% | 100% | 823A_AB | 2713 | m3 | 2713 | 2713 |  |  |
| 823A-NT-6B-ELS-1080 |  | Install Strut S4 -2.5mPD | 4d | 2012-11-12 A | 2012-11-15 A | 823A-NT-6B-ELS-1070 | 100% |  |  | 823-6dPH | Crawler Crane/Mobile Crane [32 h]; Weld Set [128 h]; Plant and Equipment Operator (Crawler-mounted Mobile Crane) [32 h]; Rigger/Metal Formwork Erector [128 h]; General Welder [128 h] | 100% | 100% | 823A_AB |  |  |  |  |  |  |
| 823A-NT-6B-ELS-1090 |  | Excavate up to -5.5mPD (4952m3) | 24d | 2012-11-16 A | 2012-12-07 A | 823A-NT-6B-ELS-1080 | 100% | 2012-11-16 | 2012-12-13 | 823-6dPH | Excavation Materials [4952 Cu m]; Soil Excavation [3416 Cu m]; Crawler Crane/Mobile Crane [184 h]; Backhoe [368 h]; Breaker [184 h]; Plant and Equipment Operator (Crawler-mounted Mobile Crane) [1104 h]; Truck Driver (Heavy Goods Vehicles) [1472 h]; General Worker [368 h]; Dump Truck [1472 h] | 100% | 100% | 823A_AB | 4952 | m3 | 4952 | 4952 |  | 1,170m3 soil + 768m3 rock |
| 823A-NT-6B-ELS-1100 |  | Placing of blinding layer | 1d | 2012-12-08 A | 2012-12-08 A | 823A-NT-6B-ELS-1090, 823A-NT-6B-ELS-1090 FF | 100% | 2013-06-15 | 2013-06-15 | 823-6dPH | Temporary Concrete [59 Cu m]; Concrete 20/20C [59 Cu m]; Crawler Crane/Mobile Crane [8 h]; Plant and Equipment Operator (Crawler-mounted Mobile Crane) [8 h]; PY Concretor [16 h]; General Worker [16 h] | 100% | 100% | 823A_AB |  |  |  |  |  |  |

| ID | WBS | Activity | Duration | Start | Finish | Predecessors | Complete | Planned start | Planned finish | Calendar | Resources | % Planned | % Actual | 823A_As-built | Actual Up to Date | UNITS | Total Quantity | Planned Up to Date | TIme Gain/Loss |
| --- | --- | --- | --- | --- | --- | --- | --- | --- | --- | --- | --- | --- | --- | --- | --- | --- | --- | --- | --- |
|  | 3 | **Structure** |  | 2012-12-10 | 2013-12-30 |  |  |  |  |  |  |  |  |  |  |  |  |  |  |
|  | 1 | **Bay 12** |  | 2012-12-17 | 2013-12-21 |  |  |  |  |  |  |  |  |  |  |  |  |  |  |
|  | 1 | **Base Slab** |  | 2012-12-17 | 2013-01-12 |  |  |  |  |  |  |  |  |  |  |  |  |  |  |
| 823A-NT-6B-B12B-1010 |  | Placing of waterproof member T-lock & testing for base slab | 1d | 2012-12-17 A | 2012-12-17 A | 823A-NT-6B-B13B-1080 SS | 100% | 2013-06-22 | 2013-06-22 |  | Skill Labour [64 h] | 100% | 100% | 823A_AB |  |  |  |  |  |
| 823A-NT-6B-B12B-1020 |  | Erect external formwork for base slab | 1d | 2012-12-18 A | 2012-12-18 A | 823A-NT-6B-B12B-1010 | 100% | 2013-06-24 | 2013-06-24 |  | Crawler Crane/Mobile Crane [8 h]; Carpenter (Formwork - Civil Construction) [96 h]; Plant and Equipment Operator (Crawler-mounted Mobile Crane) [8 h] | 100% | 100% | 823A_AB |  |  |  |  |  |
| 823A-NT-6B-B12B-1030 |  | Rebar fixing for base slab | 1d | 2012-12-19 A | 2012-12-19 A | 823A-NT-6B-B12B-1020 | 100% | 2013-06-25 | 2013-06-25 |  | Reinforcement [68142 kg]; Crawler Crane/Mobile Crane [16 h]; Plant and Equipment Operator (Crawler-mounted Mobile Crane) [16 h]; Bar Bender & Fixer [256 h] | 100% | 100% | 823A_AB |  |  |  |  |  |
| 823A-NT-6B-B12B-1040 |  | Erect internal kicker formwork for base slab | 1d | 2012-12-20 A | 2012-12-20 A | 823A-NT-6B-B12B-1030 | 100% | 2013-06-26 | 2013-06-26 |  | Crawler Crane/Mobile Crane [16 h]; Plant and Equipment Operator (Crawler-mounted Mobile Crane) [96 h]; Carpenter (Formwork - Civil Construction) [192 h] | 100% | 100% | 823A_AB |  |  |  |  |  |
| 823A-NT-6B-B12B-1050 |  | Concreting for base slab (350m3) | 1d | 2012-12-28 A | 2012-12-28 A | 823A-NT-6B-B12B-1030, 823A-NT-6B-B12B-1040 | 100% | 2013-06-27 | 2013-06-27 |  | Permanent Concrete [350 Cu m]; Concrete 45/20A [350 Cu m]; Crawler Crane/Mobile Crane [8 h]; Concrete Pump [8 h]; PY Concretor [64 h]; General Worker [96 h]; Plant and Equipment Operator (Crawler-mounted Mobile Crane) [16 h]; Rigger/Metal Formwork Erector [32 h] | 100% | 100% | 823A_AB | 350 | m3 | 350 | 350 |  |
| 823A-NT-6B-B12B-1060 |  | Curing for base slab | 7d | 2012-12-29 A | 2013-01-04 A | 823A-NT-6B-B12B-1050 | 100% | 2013-06-28 | 2013-07-04 | 823-7d | General Worker [224 h] | 100% | 100% | 823A_AB |  |  |  |  |  |
| 823A-NT-6B-B12B-1080 |  | Removal of formwork for base slab | 1d | 2012-12-29 A | 2012-12-31 A | 823A-NT-6B-B12B-1060, 823A-NT-6B-B12B-1070 | 100% | 2013-07-05 | 2013-07-05 |  | Crawler Crane/Mobile Crane [8 h]; Carpenter (Formwork - Civil Construction) [64 h]; Plant and Equipment Operator (Crawler-mounted Mobile Crane) [8 h] | 100% | 100% | 823A_AB |  |  |  |  |  |
| 823A-NT-6B-B12B-1090 |  | Infill concrete in between D-wall and base slab (204m3) | 4d | 2013-01-04 A | 2013-01-08 A | 823A-NT-6B-B12B-1080 | 100% | 2013-07-06 | 2013-07-10 |  | Temporary Concrete [204 Cu m]; Concrete 20/20C [204 Cu m]; Crawler Crane/Mobile Crane [8 h]; Concrete Pump [8 h]; PY Concretor [32 h]; Plant and Equipment Operator (Crawler-mounted Mobile Crane) [16 h]; General Worker [64 h]; Rigger/Metal Formwork Erector [16 h] | 100% | 100% | 823A_AB |  |  |  |  |  |
| 823A-NT-6B-B12B-1070 |  | Preparation of construction joint for base slab | 1d | 2013-01-05 A | 2013-01-05 A | 823A-NT-6B-B12B-1050 | 100% | 2013-06-28 | 2013-06-28 | 823-6dPH |  | 100% | 100% | 823A_AB |  |  |  |  |  |
| 823A-NT-6B-B12B-1100 |  | Removal strut S4 and S3 | 4d | 2013-01-09 A | 2013-01-12 A | 823A-NT-6B-B12B-1090 | 100% | 2013-07-11 | 2013-07-15 |  | Crawler Crane/Mobile Crane [16 h]; Plant and Equipment Operator (Crawler-mounted Mobile Crane) [16 h]; Rigger/Metal Formwork Erector [128 h] | 100% | 100% | 823A_AB |  |  |  |  |  |
|  | 2 | **Southbound** |  | 2013-01-15 | 2013-12-02 |  |  |  |  |  |  |  |  |  |  |  |  |  |  |
| 823A-NT-6B-B12S-1010 |  | Erect internal formwork & Falsework for wall and roof | 3d | 2013-01-15 A | 2013-01-18 A | 823A-NT-6B-B12B-1100 | 100% | 2013-06-08 | 2013-06-11 |  | Crawler Crane/Mobile Crane [48 h]; Plant and Equipment Operator (Crawler-mounted Mobile Crane) [48 h]; Carpenter (Formwork - Civil Construction) [384 h]; Rigger/Metal Formwork Erector [192 h] | 100% | 100% | 823A_AB |  |  |  |  |  |
| 823A-NT-6B-B12S-1020 |  | Rebar fixing for wall and roof | 3d | 2013-01-19 A | 2013-01-22 A | 823A-NT-6B-B12S-1010 | 100% | 2013-06-13 | 2013-06-15 |  | Reinforcement [67234 kg]; Crawler Crane/Mobile Crane [32 h]; Bar Bender & Fixer [512 h]; Plant and Equipment Operator (Crawler-mounted Mobile Crane) [32 h] | 100% | 100% | 823A_AB |  |  |  |  |  |
| 823A-NT-6B-B12S-1030 |  | Erect external formwork for wall and roof | 2d | 2013-01-23 A | 2013-01-24 A | 823A-NT-6B-B12S-1020 | 100% | 2013-06-17 | 2013-06-18 |  | Crawler Crane/Mobile Crane [16 h]; Plant and Equipment Operator (Crawler-mounted Mobile Crane) [16 h]; Carpenter (Formwork - Civil Construction) [192 h] | 100% | 100% | 823A_AB |  |  |  |  |  |
| 823A-NT-6B-B12S-1040 |  | Concreting for wall and roof (489m3) | 1d | 2013-01-25 A | 2013-01-25 A | 823A-NT-6B-B12S-1030 | 100% | 2013-06-19 | 2013-06-19 |  | Permanent Concrete [489 Cu m]; Concrete 45/20A [489 Cu m]; Crawler Crane/Mobile Crane [8 h]; Concrete Pump [8 h]; Plant and Equipment Operator (Crawler-mounted Mobile Crane) [16 h]; PY Concretor [64 h]; General Worker [96 h]; Rigger/Metal Formwork Erector [32 h] | 100% | 100% | 823A_AB | 489 | m3 | 489 | 489 |  |
| 823A-NT-6B-B12S-1050 |  | Curing for wall and roof | 10d | 2013-01-26 A | 2013-01-28 A | 823A-NT-6B-B12S-1040 | 100% | 2013-06-20 | 2013-06-29 | 823-7d | General Worker [224 h] | 100% | 100% | 823A_AB |  |  |  |  |  |
| 823A-NT-6B-B12S-1070 |  | Removal external and internal formwork for wall | 2d | 2013-01-26 A | 2013-01-28 A | 823A-NT-6B-B12S-1060 | 100% | 2013-06-21 | 2013-06-22 |  | Crawler Crane/Mobile Crane [16 h]; Plant and Equipment Operator (Crawler-mounted Mobile Crane) [16 h]; Carpenter (Formwork - Civil Construction) [128 h] | 100% | 100% | 823A_AB |  |  |  |  |  |
| 823A-NT-6B-B12S-1060 |  | Preparation of construction joint for wall and roof | 1d | 2013-01-29 A | 2013-01-30 A | 823A-NT-6B-B12S-1040 | 100% | 2013-06-20 | 2013-06-20 | 823-6dPH |  | 100% | 100% | 823A_AB |  |  |  |  |  |
| 823A-NT-6B-B12S-1080 |  | Removal internal falsework and formwork for roof | 1d | 2013-01-29 A | 2013-01-30 A | 823A-NT-6B-B12S-1050, 823A-NT-6B-B12S-1070 | 100% | 2013-07-02 | 2013-07-02 |  | Crawler Crane/Mobile Crane [32 h]; Carpenter (Formwork - Civil Construction) [256 h]; Plant and Equipment Operator (Crawler-mounted Mobile Crane) [32 h]; Rigger/Metal Formwork Erector [128 h] | 100% | 100% | 823A_AB |  |  |  |  |  |
| 823A-NT-6B-B12S-1090 |  | Side walkway and cable bracket (204m3) | 5d | 2013-10-22 A | 2013-12-02 A | 823A-NT-6B-B12S-1080, 823A-NT-7B-STR-1020 | 100% | 2014-02-10 | 2014-02-14 |  | Permanent Concrete [204 Cu m]; Concrete 20/20C [204 Cu m]; Crawler Crane/Mobile Crane [40 h]; Concrete Pump [40 h]; PY Concretor [160 h]; Plant and Equipment Operator (Crawler-mounted Mobile Crane) [80 h]; Rigger/Metal Formwork Erector [160 h]; Carpenter (Formwork - Civil Construction) [320 h]; General Worker [320 h] | 100% | 100% | 823A_AB | 204 | m3 | 204 | 204 | -31 |
|  | 3 | **Northbound** |  | 2013-01-18 | 2013-12-21 |  |  |  |  |  |  |  |  |  |  |  |  |  |  |
| 823A-NT-6B-B12N-1010 |  | Erect internal formwork & Falsework for wall and roof | 4d | 2013-01-18 A | 2013-01-22 A | 823A-NT-6B-B12S-1010 | 100% | 2013-06-08 | 2013-06-13 |  | Crawler Crane/Mobile Crane [48 h]; Plant and Equipment Operator (Crawler-mounted Mobile Crane) [48 h]; Carpenter (Formwork - Civil Construction) [384 h]; Rigger/Metal Formwork Erector [192 h] | 100% | 100% | 823A_AB |  |  |  |  |  |
| 823A-NT-6B-B12N-1020 |  | Rebar fixing for wall and roof | 4d | 2013-01-23 A | 2013-01-28 A | 823A-NT-6B-B12N-1010 | 100% | 2013-06-14 | 2013-06-18 |  | Reinforcement [67234 kg]; Crawler Crane/Mobile Crane [32 h]; Bar Bender & Fixer [512 h]; Plant and Equipment Operator (Crawler-mounted Mobile Crane) [32 h] | 100% | 100% | 823A_AB |  |  |  |  |  |
| 823A-NT-6B-B12N-1030 |  | Erect external formwork for wall and roof | 2d | 2013-01-29 A | 2013-01-30 A | 823A-NT-6B-B12N-1020 | 100% | 2013-06-19 | 2013-06-20 |  | Crawler Crane/Mobile Crane [16 h]; Plant and Equipment Operator (Crawler-mounted Mobile Crane) [16 h]; Carpenter (Formwork - Civil Construction) [192 h] | 100% | 100% | 823A_AB |  |  |  |  |  |
| 823A-NT-6B-B12N-1040 |  | Concreting for wall and roof (489m3) | 1d | 2013-01-31 A | 2013-01-31 A | 823A-NT-6B-B12N-1030 | 100% | 2013-06-21 | 2013-06-21 |  | Permanent Concrete [444 Cu m]; Concrete 45/20A [444 Cu m]; Crawler Crane/Mobile Crane [8 h]; Concrete Pump [8 h]; Plant and Equipment Operator (Crawler-mounted Mobile Crane) [16 h]; PY Concretor [64 h]; General Worker [96 h]; Rigger/Metal Formwork Erector [32 h] | 100% | 100% | 823A_AB | 489 | m3 | 489 | 489 |  |
| 823A-NT-6B-B12N-1050 |  | Curing for wall and roof | 10d | 2013-02-01 A | 2013-02-02 A | 823A-NT-6B-B12N-1040 | 100% | 2013-06-22 | 2013-07-01 | 823-7d | General Worker [224 h] | 100% | 100% | 823A_AB |  |  |  |  |  |
| 823A-NT-6B-B12N-1060 |  | Preparation of construction joint for wall and roof | 1d | 2013-02-04 A | 2013-02-04 A | 823A-NT-6B-B12N-1040 | 100% | 2013-06-08 | 2013-06-08 | 823-6dPH |  | 100% | 100% | 823A_AB |  |  |  |  |  |
| 823A-NT-6B-B12N-1070 |  | Removal external and internal formwork for wall | 2d | 2013-02-05 A | 2013-02-05 A | 823A-NT-6B-B12N-1060 | 100% | 2013-06-10 | 2013-06-11 |  | Crawler Crane/Mobile Crane [16 h]; Plant and Equipment Operator (Crawler-mounted Mobile Crane) [16 h]; Carpenter (Formwork - Civil Construction) [128 h] | 100% | 100% | 823A_AB |  |  |  |  |  |
| 823A-NT-6B-B12N-1080 |  | Removal internal falsework and formwork for roof | 1d | 2013-02-06 A | 2013-02-06 A | 823A-NT-6B-B12N-1070, 823A-NT-6B-B12N-1050 | 100% | 2013-06-13 | 2013-06-13 |  | Crawler Crane/Mobile Crane [32 h]; Carpenter (Formwork - Civil Construction) [256 h]; Plant and Equipment Operator (Crawler-mounted Mobile Crane) [32 h]; Rigger/Metal Formwork Erector [128 h] | 100% | 100% | 823A_AB |  |  |  |  |  |
| 823A-NT-6B-B12N-1090 |  | Side walkway and cable bracket (204m3) | 5d | 2013-12-17 A | 2013-12-21 A | 823A-NT-7B-STR-1030, 823A-NT-6B-B12N-1080 | 100% | 2014-05-10 | 2014-05-15 |  | Permanent Concrete [204 Cu m]; Concrete 20/20C [204 Cu m]; Crawler Crane/Mobile Crane [40 h]; Concrete Pump [40 h]; Carpenter (Formwork - Civil Construction) [320 h]; General Worker [320 h]; Plant and Equipment Operator (Crawler-mounted Mobile Crane) [80 h]; Rigger/Metal Formwork Erector [160 h]; PY Concretor [160 h] | 100% | 100% | 823A_AB | 204 | m3 | 204 | 204 |  |

| ID | WBS | Activity | Duration | Start | Finish | Predecessors | Complete | Planned start | Planned finish | Calendar | Resources | % Planned | % Actual | 823A_As-built | Actual Up to Date | UNITS | Total Quantity | Planned Up to Date | TIme Gain/Loss |
| --- | --- | --- | --- | --- | --- | --- | --- | --- | --- | --- | --- | --- | --- | --- | --- | --- | --- | --- | --- |
|  | 2 | **Bay 13** |  | 2012-12-10 | 2013-12-30 |  |  |  |  |  |  |  |  |  |  |  |  |  |  |
|  | 1 | **Base Slab** |  | 2012-12-10 | 2013-01-10 |  |  |  |  |  |  |  |  |  |  |  |  |  |  |
| 823A-NT-6B-B13B-1010 |  | Placing of waterproof member T-lock & testing for base slab | 1d | 2012-12-10 A | 2012-12-10 A |  | 100% | 2013-06-01 | 2013-06-01 |  | Skill Labour [64 h] | 100% | 100% | 823A_AB |  |  |  |  |  |
| 823A-NT-6B-B13B-1020 |  | Erect external formwork for base slab | 1d | 2012-12-11 A | 2012-12-11 A | 823A-NT-6B-ELS-1100, 823A-NT-6B-B13B-1010 | 100% | 2013-06-03 | 2013-06-03 |  | Crawler Crane/Mobile Crane [8 h]; Carpenter (Formwork - Civil Construction) [96 h]; Plant and Equipment Operator (Crawler-mounted Mobile Crane) [8 h] | 100% | 100% | 823A_AB |  |  |  |  |  |
| 823A-NT-6B-B13B-1030 |  | Rebar fixing for base slab | 2d | 2012-12-12 A | 2012-12-13 A | 823A-NT-6B-B13B-1020 | 100% | 2013-06-04 | 2013-06-05 |  | Reinforcement [68142 kg]; Crawler Crane/Mobile Crane [16 h]; Plant and Equipment Operator (Crawler-mounted Mobile Crane) [16 h]; Bar Bender & Fixer [256 h] | 100% | 100% | 823A_AB |  |  |  |  |  |
| 823A-NT-6B-B13B-1040 |  | Erect internal kicker formwork for base slab | 1d | 2012-12-14 A | 2012-12-14 A | 823A-NT-6B-B13B-1030 | 100% | 2013-06-06 | 2013-06-06 |  | Crawler Crane/Mobile Crane [16 h]; Plant and Equipment Operator (Crawler-mounted Mobile Crane) [96 h]; Carpenter (Formwork - Civil Construction) [192 h] | 100% | 100% | 823A_AB |  |  |  |  |  |
| 823A-NT-6B-B13B-1050 |  | Concreting for base slab (350m3) | 1d | 2012-12-20 A | 2012-12-20 A | 823A-NT-6B-B13B-1030, 823A-NT-6B-B13B-1040 | 100% | 2013-06-07 | 2013-06-07 |  | Permanent Concrete [350 Cu m]; Concrete 45/20A [350 Cu m]; Crawler Crane/Mobile Crane [8 h]; Concrete Pump [8 h]; PY Concretor [64 h]; General Worker [96 h]; Plant and Equipment Operator (Crawler-mounted Mobile Crane) [16 h]; Rigger/Metal Formwork Erector [32 h] | 100% | 100% | 823A_AB | 350 | m3 | 350 | 350 |  |
| 823A-NT-6B-B13B-1060 |  | Curing for base slab | 7d | 2012-12-21 A | 2012-12-28 A | 823A-NT-6B-B13B-1050 | 100% | 2013-06-08 | 2013-06-14 | 823-7d | General Worker [224 h] | 100% | 100% | 823A_AB |  |  |  |  |  |
| 823A-NT-6B-B13B-1070 |  | Preparation of construction joint for base slab | 1d | 2012-12-29 A | 2012-12-29 A | 823A-NT-6B-B13B-1050 | 100% | 2013-06-08 | 2013-06-08 | 823-6dPH |  | 100% | 100% | 823A_AB |  |  |  |  |  |
| 823A-NT-6B-B13B-1080 |  | Removal of formwork for base slab | 1d | 2012-12-31 A | 2012-12-31 A | 823A-NT-6B-B13B-1070 SS | 100% | 2013-06-08 | 2013-06-08 |  | Crawler Crane/Mobile Crane [8 h]; Carpenter (Formwork - Civil Construction) [64 h]; Plant and Equipment Operator (Crawler-mounted Mobile Crane) [8 h] | 100% | 100% | 823A_AB |  |  |  |  |  |
| 823A-NT-6B-B13B-1090 |  | Infill concrete in between D-wall and base slab (204m3) | 4d | 2013-01-02 A | 2013-01-05 A | 823A-NT-6B-B12B-1090 SS, 823A-NT-6B-B13B-1080, 823A-NT-6B-B13B-1060 | 100% | 2013-06-15 | 2013-06-19 |  | Temporary Concrete [204 Cu m]; Concrete 20/20C [204 Cu m]; Crawler Crane/Mobile Crane [8 h]; Concrete Pump [8 h]; PY Concretor [32 h]; Plant and Equipment Operator (Crawler-mounted Mobile Crane) [16 h]; General Worker [64 h]; Rigger/Metal Formwork Erector [16 h] | 100% | 100% | 823A_AB |  |  |  |  |  |
| 823A-NT-6B-B13B-1100 |  | Removal strut S4 and S3 | 4d | 2013-01-07 A | 2013-01-10 A | 823A-NT-6B-B13B-1090 | 100% | 2013-06-20 | 2013-06-24 |  | Crawler Crane/Mobile Crane [16 h]; Plant and Equipment Operator (Crawler-mounted Mobile Crane) [16 h]; Rigger/Metal Formwork Erector [128 h] | 100% | 100% | 823A_AB |  |  |  |  |  |
|  | 2 | **Southbound** |  | 2013-01-15 | 2013-12-02 |  |  |  |  |  |  |  |  |  |  |  |  |  |  |
| 823A-NT-6B-B13S-1010 |  | Erect internal formwork & Falsework for wall and roof | 3d | 2013-01-15 A | 2013-01-17 A | 823A-NT-6B-B13B-1100, 823A-NT-6B-B12B-1100 | 100% | 2013-06-01 | 2013-06-04 |  | Crawler Crane/Mobile Crane [48 h]; Plant and Equipment Operator (Crawler-mounted Mobile Crane) [48 h]; Carpenter (Formwork - Civil Construction) [384 h]; Rigger/Metal Formwork Erector [192 h] | 100% | 100% | 823A_AB |  |  |  |  |  |
| 823A-NT-6B-B13S-1020 |  | Rebar fixing for wall and roof | 3d | 2013-01-18 A | 2013-01-21 A | 823A-NT-6B-B13S-1010 | 100% | 2013-06-05 | 2013-06-07 |  | Reinforcement [67234 kg]; Crawler Crane/Mobile Crane [32 h]; Bar Bender & Fixer [512 h]; Plant and Equipment Operator (Crawler-mounted Mobile Crane) [32 h] | 100% | 100% | 823A_AB |  |  |  |  |  |
| 823A-NT-6B-B13S-1030 |  | Erect external formwork for wall and roof | 2d | 2013-01-22 A | 2013-01-23 A | 823A-NT-6B-B13S-1020 | 100% | 2013-06-08 | 2013-06-10 |  | Crawler Crane/Mobile Crane [16 h]; Plant and Equipment Operator (Crawler-mounted Mobile Crane) [16 h]; Carpenter (Formwork - Civil Construction) [192 h] | 100% | 100% | 823A_AB |  |  |  |  |  |
| 823A-NT-6B-B13S-1040 |  | Concreting for wall and roof (489m3) | 1d | 2013-01-25 A | 2013-01-25 A | 823A-NT-6B-B13S-1030 | 100% | 2013-06-11 | 2013-06-11 |  | Permanent Concrete [444 Cu m]; Concrete 45/20A [444 Cu m]; Crawler Crane/Mobile Crane [8 h]; Concrete Pump [8 h]; Plant and Equipment Operator (Crawler-mounted Mobile Crane) [16 h]; PY Concretor [64 h]; General Worker [96 h]; Rigger/Metal Formwork Erector [32 h] | 100% | 100% | 823A_AB | 489 | m3 | 489 | 489 |  |
| 823A-NT-6B-B13S-1050 |  | Curing for wall and roof | 10d | 2013-01-26 A | 2013-01-28 A | 823A-NT-6B-B13S-1040 | 100% | 2013-06-12 | 2013-06-21 | 823-7d | General Worker [224 h] | 100% | 100% | 823A_AB |  |  |  |  |  |
| 823A-NT-6B-B13S-1060 |  | Preparation of construction joint for wall and roof | 1d | 2013-01-29 A | 2013-01-29 A | 823A-NT-6B-B13S-1040 | 100% | 2013-06-13 | 2013-06-13 | 823-6dPH |  | 100% | 100% | 823A_AB |  |  |  |  |  |
| 823A-NT-6B-B13S-1070 |  | Removal external and internal formwork for wall | 2d | 2013-01-30 A | 2013-01-31 A | 823A-NT-6B-B13S-1060 | 100% | 2013-06-14 | 2013-06-15 |  | Crawler Crane/Mobile Crane [16 h]; Plant and Equipment Operator (Crawler-mounted Mobile Crane) [16 h]; Carpenter (Formwork - Civil Construction) [128 h] | 100% | 100% | 823A_AB |  |  |  |  |  |
| 823A-NT-6B-B13S-1080 |  | Removal internal falsework and formwork for roof | 1d | 2013-02-01 A | 2013-02-02 A | 823A-NT-6B-B13S-1070, 823A-NT-6B-B13S-1050 | 100% | 2013-06-22 | 2013-06-22 |  | Crawler Crane/Mobile Crane [32 h]; Carpenter (Formwork - Civil Construction) [256 h]; Plant and Equipment Operator (Crawler-mounted Mobile Crane) [32 h]; Rigger/Metal Formwork Erector [128 h] | 100% | 100% | 823A_AB |  |  |  |  |  |
| 823A-NT-6B-B13S-1090 |  | Side walkway and cable bracket (204m3) | 5d | 2013-10-22 A | 2013-12-02 A | 823A-NT-6B-B13S-1080, 823A-NT-6B-B12S-1090 | 100% | 2014-02-13 | 2014-02-18 |  | Permanent Concrete [204 Cu m]; Concrete 20/20C [204 Cu m]; Crawler Crane/Mobile Crane [40 h]; Carpenter (Formwork - Civil Construction) [320 h]; PY Concretor [160 h]; Plant and Equipment Operator (Crawler-mounted Mobile Crane) [80 h]; Rigger/Metal Formwork Erector [160 h]; General Worker [320 h]; Concrete Pump [40 h] | 100% | 100% | 823A_AB | 204 | m3 | 204 | 204 | -31 |
|  | 3 | **Northbound** |  | 2013-01-18 | 2013-12-30 |  |  |  |  |  |  |  |  |  |  |  |  |  |  |
| 823A-NT-6B-B13N-1010 |  | Erect internal formwork & Falsework for wall and roof | 4d | 2013-01-18 A | 2013-01-22 A | 823A-NT-6B-B12N-1010 SS | 100% | 2013-06-01 | 2013-06-05 |  | Crawler Crane/Mobile Crane [48 h]; Plant and Equipment Operator (Crawler-mounted Mobile Crane) [48 h]; Carpenter (Formwork - Civil Construction) [384 h]; Rigger/Metal Formwork Erector [192 h] | 100% | 100% | 823A_AB |  |  |  |  |  |
| 823A-NT-6B-B13N-1020 |  | Rebar fixing for wall and roof | 4d | 2013-01-23 A | 2013-01-26 A | 823A-NT-6B-B13N-1010 | 100% | 2013-06-06 | 2013-06-10 |  | Reinforcement [67234 kg]; Crawler Crane/Mobile Crane [32 h]; Bar Bender & Fixer [512 h]; Plant and Equipment Operator (Crawler-mounted Mobile Crane) [32 h] | 100% | 100% | 823A_AB |  |  |  |  |  |
| 823A-NT-6B-B13N-1030 |  | Erect external formwork for wall and roof | 2d | 2013-01-28 A | 2013-01-29 A | 823A-NT-6B-B13N-1020 | 100% | 2013-06-11 | 2013-06-13 |  | Crawler Crane/Mobile Crane [16 h]; Plant and Equipment Operator (Crawler-mounted Mobile Crane) [16 h]; Carpenter (Formwork - Civil Construction) [192 h] | 100% | 100% | 823A_AB |  |  |  |  |  |
| 823A-NT-6B-B13N-1040 |  | Concreting for wall and roof (489m3) | 1d | 2013-01-30 A | 2013-01-31 A | 823A-NT-6B-B13N-1030 | 100% | 2013-06-14 | 2013-06-14 |  | Permanent Concrete [444 Cu m]; Concrete 45/20A [444 Cu m]; Crawler Crane/Mobile Crane [8 h]; Concrete Pump [8 h]; Plant and Equipment Operator (Crawler-mounted Mobile Crane) [16 h]; PY Concretor [64 h]; General Worker [96 h]; Rigger/Metal Formwork Erector [32 h] | 100% | 100% | 823A_AB | 489 | m3 | 489 | 489 |  |
| 823A-NT-6B-B13N-1050 |  | Curing for wall and roof | 10d | 2013-02-01 A | 2013-02-04 A | 823A-NT-6B-B13N-1040 | 100% | 2013-06-15 | 2013-06-24 | 823-7d | General Worker [224 h] | 100% | 100% | 823A_AB |  |  |  |  |  |
| 823A-NT-6B-B13N-1060 |  | Preparation of construction joint for wall and roof | 1d | 2013-02-05 A | 2013-02-05 A | 823A-NT-6B-B13N-1040 | 100% | 2013-06-15 | 2013-06-15 | 823-6dPH |  | 100% | 100% | 823A_AB |  |  |  |  |  |
| 823A-NT-6B-B13N-1070 |  | Removal external and internal formwork for wall | 2d | 2013-02-06 A | 2013-02-07 A | 823A-NT-6B-B13N-1060 | 100% | 2013-06-17 | 2013-06-18 |  | Crawler Crane/Mobile Crane [16 h]; Plant and Equipment Operator (Crawler-mounted Mobile Crane) [16 h]; Carpenter (Formwork - Civil Construction) [128 h] | 100% | 100% | 823A_AB |  |  |  |  |  |
| 823A-NT-6B-B13N-1080 |  | Removal internal falsework and formwork for roof | 1d | 2013-02-08 A | 2013-02-08 A | 823A-NT-6B-B13N-1070, 823A-NT-6B-B13N-1050 | 100% | 2013-06-25 | 2013-06-25 |  | Crawler Crane/Mobile Crane [32 h]; Carpenter (Formwork - Civil Construction) [256 h]; Plant and Equipment Operator (Crawler-mounted Mobile Crane) [32 h]; Rigger/Metal Formwork Erector [128 h] | 100% | 100% | 823A_AB |  |  |  |  |  |
| 823A-NT-6B-B13N-1090 |  | Side walkway and cable bracket (204m3) | 5d | 2013-12-23 A | 2013-12-30 A | 823A-NT-6B-B12N-1090, 823A-NT-6B-B13N-1080 | 100% | 2014-05-16 | 2014-05-21 |  | Permanent Concrete [204 Cu m]; Crawler Crane/Mobile Crane [40 h]; Concrete Pump [40 h]; Carpenter (Formwork - Civil Construction) [320 h]; PY Concretor [160 h]; General Worker [320 h]; Plant and Equipment Operator (Crawler-mounted Mobile Crane) [80 h]; Rigger/Metal Formwork Erector [160 h]; Concrete 20/20C [204 Cu m] | 100% | 100% | 823A_AB | 204 | m3 | 204 | 204 |  |

| ID | WBS | Activity | Duration | Start | Finish | Predecessors | Complete | Remaining | Planned start | Planned finish | Total float | Free float | Calendar | Resources | Actual Up to Date | UNITS | Total Quantity | Planned Up to Date | % Planned | % Actual | 823A_As-built | Time Gain / Loss | (+/-) Weeks |
| --- | --- | --- | --- | --- | --- | --- | --- | --- | --- | --- | --- | --- | --- | --- | --- | --- | --- | --- | --- | --- | --- | --- | --- |
|  | 4 | **Backfilling** |  | 2013-02-04 | 2013-02-28 |  |  |  |  |  |  |  |  |  |  |  |  |  |  |  |  |  |  |
| NT-CC6B-BF-B12-1010 |  | Backfilling to 0.5m below the top of C&C Tunnel (+3.46mPD) (2343m3) | 12d | 2013-02-04 A | 2013-02-21 A | 823A-NT-6B-B13N-1070, 823A-NT-6B-B13S-1070, 823A-NT-6B-B12N-1070, 823A-NT-6B-B12S-1070 | 100% |  | 2013-06-01 | 2013-06-15 |  |  | 823-6dPH | Backfilling Materials [2343 Cu m]; Soil Fill [2349 Cu m]; Crawler Crane/Mobile Crane [216 h]; Backhoe [432 h]; Vibration Roller [216 h]; General Worker [1296 h]; Plant and Equipment Operator (Crawler-mounted Mobile Crane) [864 h] | 2343 | m3 | 2343 | 2343 | 100% | 100% | 823A_AB |  |  |
| NT-CC6B-BF-B12-1020 |  | Placing 0.5m thk concrete lateral support (+3.96mPD) | 1d | 2013-02-22 A | 2013-02-23 A | NT-CC6B-BF-B12-1010 | 100% |  | 2013-06-17 | 2013-06-17 |  |  | 823-6dPH | Temporary Concrete [142 Cu m]; Concrete 20/20C [142 Cu m]; Crawler Crane/Mobile Crane [8 h]; PY Concretor [16 h]; General Worker [32 h]; Plant and Equipment Operator (Crawler-mounted Mobile Crane) [8 h] | 143 | m3 | 143 | 143 | 100% | 100% | 823A_AB |  |  |
| NT-CC6B-BF-B12-1030 |  | Removal strut S2 | 4d | 2013-02-23 A | 2013-02-28 A | NT-CC6B-BF-B12-1020 FS+2d | 100% |  | 2013-06-20 | 2013-06-24 |  |  | 823-6dPH | Plant and Equipment Operator (Crawler-mounted Mobile Crane) [16 h]; Rigger/Metal Formwork Erector [128 h]; Crawler Crane/Mobile Crane [16 h] |  |  |  |  | 100% | 100% | 823A_AB |  |  |
|  | 4 | **East Culvert** |  | 2013-03-01 | 2014-06-27 |  |  |  |  |  |  |  |  |  |  |  |  |  |  |  |  |  |  |
| 823A-NT-EC-1010 |  | Construction of Temporary Culvert (open channel) | 23d | 2013-03-01 A | 2013-03-28 A | NT-CC6B-BF-B12-1030 | 100% |  | 2013-06-25 | 2013-07-22 |  |  |  |  |  |  |  |  | 100% | 100% | 823A_AB |  |  |
| 823A-NT-EC-1020 |  | Temporary box culvert (At Box 6B Area) Saw Cut D-wall | 6d | 2014-04-01 A | 2014-04-08 A | 823A-NT-6A-BF-1020 SS | 100% |  |  |  |  |  |  | Crawler Crane/Mobile Crane [16 h]; Plant and Equipment Operator (Crawler-mounted Mobile Crane) [16 h]; Rigger/Metal Formwork Erector [128 h] |  |  |  |  | 100% | 100% | 823A_AB |  |  |
| 823A-NT-EC-1021 |  | Erect 3m high block wall | 14d | 2014-04-09 A | 2014-04-28 A | 823A-NT-EC-1020 | 100% |  |  |  |  |  | 823-6dPH |  |  |  |  |  | 100% | 100% | 823A_AB |  |  |
| 823A-NT-EC-1024 |  | Temporary box culvert (Outside Box 6B Area) Sheet piling | 6d | 2014-04-14 A | 2014-04-23 A | 823A-NT-6A-BF-1020 | 100% |  |  |  |  |  | 823-6dPH |  |  |  |  |  | 100% | 100% | 823A_AB |  |  |
| 823A-NT-EC-1025 |  | ELS Works | 16d | 2014-04-24 A | 2014-05-14 A | 823A-NT-EC-1024 | 100% |  |  |  |  |  | 823-6dPH |  |  |  |  |  | 100% | 100% | 823A_AB |  |  |
| 823A-NT-EC-1022 |  | Connection to East Box Culvert (823B portion) | 2d | 2014-04-29 A | 2014-04-30 A | 823A-NT-EC-1021 | 100% |  |  |  |  |  | 823-6dPH |  |  |  |  |  | 100% | 100% | 823A_AB |  |  |
| 823A-NT-EC-1023 |  | Blinding | 1d | 2014-05-02 A | 2014-05-02 A | 823A-NT-EC-1022 | 100% |  |  |  |  |  | 823-6dPH |  |  |  |  |  | 100% | 100% | 823A_AB |  |  |
| 823A-NT-EC-1026 |  | Blinding | 1d | 2014-05-15 A | 2014-05-15 A | 823A-NT-EC-1025 | 100% |  |  |  |  |  | 823-6dPH |  |  |  |  |  | 100% | 100% | 823A_AB |  |  |
| 823A-NT-EC-1030 |  | Removal of Temporary Culvert and Reinstatement | 28d | 2014-05-16 A | 2014-06-27 A | 823A-NT-EC-1026, 823A-NT-6A-BF-1020, 823A-NT-6A-BF-1050, 823A-NT-EC-1023 | 100% |  | 2014-05-16 | 2014-06-18 |  |  |  |  |  |  |  |  | 100% | 100% | 823A_AB |  |  |
|  | 5 | **Reinstatement and Landscaping** |  | 2016-09-01 | 2017-03-31 |  |  |  |  |  |  |  |  |  |  |  |  |  |  |  |  |  |  |
| 823A-NT-NCC-RE-1030 |  | Tree Planting works | 78d | 2016-09-01 A | 2017-03-10 | 823A-NT-NCC-RE-1020 SS | 24% | 59d | 2016-09-01 | 2016-12-03 | -712d | 0d | 823-6dPH |  |  |  |  |  | 100% | 25% | 823A_AB | -22 | -98.1 |
| 823A-NT-NCC-RE-1040 |  | Woodland Shrub Mix | 65d | 2016-09-01 A | 2017-03-02 | 823A-NT-NCC-RE-1030 SS | 20% | 52d | 2016-09-01 | 2016-11-18 | -712d | 25d | 823-6dPH |  |  |  |  |  | 100% | 20% | 823A_AB | -22 | -98.1 |
| 823A-NT-NCC-RE-1010 |  | Reinstatement of TOA's | 126d | 2016-11-01 A | 2017-03-31 | 823A-D-MIS-RW-1090 FF+80d, 823A-NT-6A-BF-1050, 823A-NT-6A-BF-1000, 823A-NT-6A-BF-1020, 823A-NT-EC-1030 | 39% | 77d | 2016-11-01 | 2017-03-29 | -737d | 0d |  |  |  |  |  |  | 100% | 10% | 823A_AB | -13 | -106.8 |
| 823A-NT-NCC-RE-1020 |  | Hydroseeding works | 126d | 2016-11-01 A | 2016-11-30 A | 823A-NT-NCC-RE-1010 SS | 100% |  | 2016-11-01 | 2017-03-29 |  |  | 823-6dPH |  |  |  |  |  | 100% | 100% | 823A_AB |  |  |
|  | 3 | **Temporary Kam Tin River Diversion** |  | 2011-03-16 | 2013-01-19 |  |  |  |  |  |  |  |  |  |  |  |  |  |  |  |  |  |  |
|  | 1 | **Stage 1 - 3** |  | 2011-03-16 | 2011-12-31 |  |  |  |  |  |  |  |  |  |  |  |  |  |  |  |  |  |  |
| 823A-NT-KTR-S13-1010 |  | Kam Tin River Diversion (Stage 1-3) | 237d | 2011-03-16 A | 2011-12-31 A | 823A-NT-7B-DW-1010 FS+72d | 100% |  |  |  |  |  |  |  |  |  |  |  | 100% | 100% | 823A_AB |  |  |
|  | 2 | **Stage 4** |  | 2012-11-01 | 2013-01-08 |  |  |  |  |  |  |  |  |  |  |  |  |  |  |  |  |  |  |
| 823A-KTRD-S4-1020 |  | Concrete fill up to +8.0mPD near side A mass concrete wall | 7d | 2012-11-01 A | 2012-11-08 A | 823A-NT-7B-STR-1010 SS, 823A-NT-KTR-S13-1010 | 100% |  |  |  |  |  | 823-6dPH |  |  |  |  |  | 100% | 100% | 823A_AB |  |  |
| 823A-KTRD-S4-1030 |  | Construction of mass concrete wall to +8.0mPD at side A (4 bay CH A80~A120) | 8d | 2012-11-01 A | 2012-11-09 A | 823A-KTRD-S4-1020 SS | 100% |  |  |  |  |  | 823-6dPH |  |  |  |  |  | 100% | 100% | 823A_AB |  |  |
| 823A-KTRD-S4-1040 |  | Construction of base slab lining and low flow channel (4 bay A9~A10, B8~B9; LFC CH 80~110) | 7d | 2012-11-10 A | 2012-11-17 A | 823A-KTRD-S4-1030 | 100% |  |  |  |  |  | 823-6dPH |  |  |  |  |  | 100% | 100% | 823A_AB |  |  |
| 823A-KTRD-S4-1050 |  | Construction of mass concrete wall to +8.0mPD of side B (3 bay CH B60~B90) | 8d | 2012-11-10 A | 2012-11-19 A | 823A-KTRD-S4-1030 | 100% |  |  |  |  |  | 823-6dPH |  |  |  |  |  | 100% | 100% | 823A_AB |  |  |
| 823A-KTRD-S4-1060 |  | Construction of T-shaped retaining wall (1 Bay CH B50~B60) | 8d | 2012-11-10 A | 2012-11-19 A | 823A-KTRD-S4-1030 | 100% |  |  |  |  |  | 823-6dPH |  |  |  |  |  | 100% | 100% | 823A_AB |  |  |
| 823A-KTRD-S4-1070 |  | Soil backfill at side A from +5.0mPD to +8.0mPD | 6d | 2012-11-20 A | 2012-11-26 A | 823A-KTRD-S4-1050, 823A-KTRD-S4-1040 | 100% |  |  |  |  |  | 823-6dPH |  |  |  |  |  | 100% | 100% | 823A_AB |  |  |
| 823A-KTRD-S4-1080 |  | Concrete backfill at side B from +5.0mPD to +8.0mPD | 1d | 2012-11-20 A | 2012-11-20 A | 823A-KTRD-S4-1060, 823A-KTRD-S4-1050 | 100% |  |  |  |  |  | 823-6dPH |  |  |  |  |  | 100% | 100% | 823A_AB |  |  |
| 823A-KTRD-S4-1090 |  | Removal strut at +8.5mPD near side A | 2d | 2012-11-27 A | 2012-11-28 A | 823A-KTRD-S4-1080, 823A-KTRD-S4-1070 | 100% |  |  |  |  |  | 823-6dPH |  |  |  |  |  | 100% | 100% | 823A_AB |  |  |
| 823A-KTRD-S4-1100 |  | Concrete fill up to +11.0mPD near side A mass concrete wall | 7d | 2012-11-29 A | 2012-12-06 A | 823A-KTRD-S4-1090 | 100% |  |  |  |  |  | 823-6dPH |  |  |  |  |  | 100% | 100% | 823A_AB |  |  |
| 823A-KTRD-S4-1110 |  | Placing concrete block at side A from +8.0mPD to +11.0mpd at side A (4 bay CH A80~A120) | 7d | 2012-11-29 A | 2012-12-06 A | 823A-KTRD-S4-1100 FF, 823A-KTRD-S4-1090 | 100% |  |  |  |  |  | 823-6dPH |  |  |  |  |  | 100% | 100% | 823A_AB |  |  |
| 823A-KTRD-S4-1120 |  | Soil backfill at side A from +8.0mPD to +11.0mPD | 6d | 2012-12-07 A | 2012-12-13 A | 823A-KTRD-S4-1110 | 100% |  | 2013-06-07 | 2013-06-14 |  |  | 823-6dPH |  |  |  |  |  | 100% | 100% | 823A_AB |  |  |
| 823A-KTRD-S4-1130 |  | Removal strut at +8.5mPD near side B | 4d | 2012-12-14 A | 2012-12-18 A | 823A-KTRD-S4-1120 | 100% |  | 2013-06-15 | 2013-06-19 |  |  | 823-6dPH |  |  |  |  |  | 100% | 100% | 823A_AB |  |  |
| 823A-KTRD-S4-1140 |  | Placing concrete block at side B from +8.0mPD to +11.0mPD (4 bay CH B60~B90) | 7d | 2012-12-19 A | 2013-01-07 A | 823A-KTRD-S4-1130 | 100% |  | 2013-06-20 | 2013-06-27 |  |  | 823-6dPH |  |  |  |  |  | 100% | 100% | 823A_AB |  |  |
| 823A-KTRD-S4-1150 |  | Concrete backfill at side B from +8.0mPD to +11.0mPD | 1d | 2013-01-08 A | 2013-01-08 A | 823A-NT-7B-BF-1010 FF, 823A-KTRD-S4-1140 | 100% |  | 2013-06-28 | 2013-06-28 |  |  | 823-6dPH |  |  |  |  |  | 100% | 100% | 823A_AB |  |  |

| ID | WBS | Activity | Duration | Start | Finish | Predecessors | Complete | Planned start | Planned finish | Calendar | Resources | % Planned | % Actual | 823A_As-built |
| --- | --- | --- | --- | --- | --- | --- | --- | --- | --- | --- | --- | --- | --- | --- |
|  | 3 | **Stage 5** |  | 2012-11-01 | 2013-01-19 |  |  |  |  |  |  |  |  |  |
| 823A-KTRD-S5-1010 |  | Placing temporary concrete block to Up stream at CH30 | 4d | 2012-11-01 A | 2012-11-05 A | 823A-KTRD-S4-1020 SS | 100% |  |  | 823-6dPH |  | 100% | 100% | 823A_AB |
| 823A-KTRD-S5-1020 |  | Placing temporary concrete block to Up stream at CH160 | 4d | 2012-11-06 A | 2012-11-09 A | 823A-KTRD-S5-1010 | 100% |  |  | 823-6dPH |  | 100% | 100% | 823A_AB |
| 823A-KTRD-S5-1030 |  | Excavation from GL to FL +5.0mPD Up stream (Low flow channel CH 30~60) | 16d | 2012-11-06 A | 2012-11-23 A | 823A-KTRD-S5-1010 | 100% |  |  | 823-6dPH |  | 100% | 100% | 823A_AB |
| 823A-KTRD-S5-1040 |  | Excavation from GL to FL +5.0mPD Down stream (Low flow channel CH 130~160) | 16d | 2012-11-10 A | 2012-11-28 A | 823A-KTRD-S5-1020 | 100% |  |  | 823-6dPH |  | 100% | 100% | 823A_AB |
| 823A-KTRD-S5-1050 |  | Construction of T-shaped retaining wall at Up stream of side B (2 Bay CH B30~B50) | 14d | 2012-11-24 A | 2012-12-05 A | 823A-KTRD-S5-1030 | 100% | 2012-11-24 | 2012-12-10 | 823-6dPH |  | 100% | 100% | 823A_AB |
| 823A-KTRD-S5-1070 |  | Construction of Up stream base slab lining and low flow channel (6 Bay A1~A4, B3~B4; Low flow channel CH 30~50) | 16d | 2012-11-24 A | 2012-12-12 A | 823A-KTRD-S5-1030 | 100% |  |  | 823-6dPH |  | 100% | 100% | 823A_AB |
| 823A-KTRD-S5-1060 |  | Construction of mass concrete wall to +11.0mPD at Down stream of side B (3 bay CH B90~B120) | 12d | 2012-11-29 A | 2012-12-10 A | 823A-KTRD-S5-1040 | 100% | 2012-11-29 | 2012-12-12 | 823-6dPH |  | 100% | 100% | 823A_AB |
| 823A-KTRD-S5-1080 |  | Construction of Down stream base slab lining and low flow channel (5 Bay A14~A16, B14~B15; LFC CH 140~170) | 16d | 2012-11-29 A | 2012-12-12 A | 823A-KTRD-S5-1040 | 100% | 2012-11-29 | 2012-12-17 | 823-6dPH |  | 100% | 100% | 823A_AB |
| 823A-KTRD-S5-1090 |  | Remaining excavation from GL to FL +5.0mPD Up stream and saw cut D-wall | 11d | 2012-12-14 A | 2012-12-27 A | 823A-KTRD-S4-1130, 823A-KTRD-S5-1050, 823A-KTRD-S5-1070 | 100% | 2013-06-14 | 2013-06-26 | 823-6dPH |  | 100% | 100% | 823A_AB |
| 823A-KTRD-S5-1100 |  | Remaining excavation from GL to FL +5.0mPD Down stream and saw cut D-wall | 11d | 2012-12-20 A | 2013-01-03 A | 823A-KTRD-S5-1060, 823A-KTRD-S5-1090 SS, 823A-KTRD-S5-1080 | 100% | 2013-06-19 | 2013-07-02 | 823-6dPH |  | 100% | 100% | 823A_AB |
| 823A-KTRD-S5-1110 |  | Construction of remaining Up stream base slab lining and low flow channel (7 bay A5~A8, B5~B7; LFC CH 50~80) | 15d | 2013-01-04 A | 2013-01-10 A | 823A-KTRD-S4-1150 FF+14d, 823A-KTRD-S5-1090 | 100% | 2013-06-27 | 2013-07-15 | 823-6dPH |  | 100% | 100% | 823A_AB |
| 823A-KTRD-S5-1120 |  | Construction of remaining Down stream base slab lining and low flow channel (7 bay A11~A13, B10~B13; LFC CH 110~140) | 15d | 2013-01-11 A | 2013-01-19 A | 823A-KTRD-S5-1100 | 100% | 2013-07-03 | 2013-07-19 | 823-6dPH |  | 100% | 100% | 823A_AB |
|  | 4 | **Stage 6** |  | 2012-12-27 | 2013-01-19 |  |  |  |  |  |  |  |  |  |
| 823A-KTRD-S6-1010 |  | Relocation of temporary concrete block at Up stream for construction of mass concrete wall at side B | 2d | 2012-12-27 A | 2012-12-29 A | 823A-KTRD-S5-1120, 823A-KTRD-S5-1110 | 100% | 2013-07-20 | 2013-07-22 | 823-6dPH |  | 100% | 100% | 823A_AB |
| 823A-KTRD-S6-1030 |  | Construction of mass concrete wall to +11.0mPD at Up stream of side B (3 bay CH B0~B30) | 18d | 2012-12-27 A | 2013-01-10 A | 823A-KTRD-S6-1010 | 100% | 2013-07-23 | 2013-08-12 | 823-6dPH |  | 100% | 100% | 823A_AB |
| 823A-KTRD-S6-1020 |  | Relocation of temporary concrete block at Down stream for construction of mass concrete wall at side B | 2d | 2012-12-31 A | 2013-01-03 A | 823A-KTRD-S6-1010 | 100% | 2013-07-23 | 2013-07-24 | 823-6dPH |  | 100% | 100% | 823A_AB |
| 823A-KTRD-S6-1040 |  | Construction of mass concrete wall to +11.0mPD at Down stream of side B (4 bay CH B0~B30) | 20d | 2013-01-11 A | 2013-01-19 A | 823A-KTRD-S6-1030 FF, 823A-KTRD-S6-1020 | 100% | 2013-07-25 | 2013-08-16 | 823-6dPH |  | 100% | 100% | 823A_AB |
|  | 4 | **Kam Tin River Reinstatement** |  |  |  |  |  |  |  |  |  |  |  |  |
|  | 5 | **TBM Bored Tunnel (ERS to Tai Kong Po)** |  | 2010-07-19 | 2016-05-24 |  |  |  |  |  |  |  |  |  |
|  | 1 | **Preliminaries** |  | 2010-07-19 | 2013-12-02 |  |  |  |  |  |  |  |  |  |
| 823A-NT-TBM-PR-1010 |  | Application of power supply, environmental permits and construction substation | 434d | 2010-07-19 A | 2011-12-31 A | KD-1 | 100% |  |  |  |  | 100% | 100% | 823A_AB |
| 823A-NT-TBM-PR-1020 |  | Procurement and Confirmation of the order of 1st tunnel boring machine | 53d | 2010-07-19 A | 2010-09-17 A | KD-1 | 100% |  |  |  |  | 100% | 100% | 823A_AB |
| 823A-NT-TBM-PR-1030 |  | Prepare on-demand bond or bank guarantee for the procurement of TBM and submit to Engineer for approval | 104d | 2010-07-19 A | 2010-11-19 A | KD-1 | 100% |  |  |  |  | 100% | 100% | 823A_AB |
| 823A-NT-TBM-PR-1040 |  | TBM design and submission for approval | 24d | 2010-09-16 A | 2010-10-15 A | 823A-NT-TBM-PR-1020 | 100% |  |  |  |  | 100% | 100% | 823A_AB |
| 823A-NT-TBM-PR-1050 |  | TBM materials order and delivery to factory | 98d | 2010-10-18 A | 2011-02-15 A | 823A-NT-TBM-PR-1040 | 100% |  |  |  |  | 100% | 100% | 823A_AB |
| 823A-NT-TBM-PR-1060 |  | TBM equipments order and delivery to factory | 169d | 2010-12-01 A | 2011-06-30 A | 823A-NT-TBM-PR-1050 SS+38d | 100% |  |  |  |  | 100% | 100% | 823A_AB |
| 823A-NT-TBM-PR-1070 |  | TBM Fabrication | 67d | 2011-01-04 A | 2011-03-25 A | 823A-NT-TBM-PR-1050 SS+64d, 823A-NT-TBM-PR-1050 FF | 100% |  |  |  |  | 100% | 100% | 823A_AB |
| 823A-NT-TBM-PR-1160 |  | Fabrication of tunnel segment mould | 100d | 2011-02-15 A | 2011-06-18 A | 823A-D-TBM-ML-1070, 823A-D-TBM-TSM-1040 | 100% |  |  |  |  | 100% | 100% | 823A_AB |
| 823A-NT-TBM-PR-1080 |  | Final assembly for tunnel boring machine at the factory | 92d | 2011-03-26 A | 2011-07-20 A | 823A-NT-TBM-PR-1060 FF, 823A-NT-TBM-PR-1070 | 100% |  |  |  |  | 100% | 100% | 823A_AB |
| 823A-NT-TBM-PR-1120 |  | Ground treatment for TBM lanching shaft | 92d | 2011-07-05 A | 2011-10-22 A | 823A-NT-NLS-DW-1020 FS+100d | 100% |  |  |  |  | 100% | 100% | 823A_AB |
| 823A-NT-TBM-PR-1090 |  | TBM test Run | 18d | 2011-07-21 A | 2011-08-10 A | 823A-NT-TBM-PR-1080 | 100% |  |  |  |  | 100% | 100% | 823A_AB |
| 823A-NT-TBM-PR-1100 |  | TBM disassembly and packing for shipping to HK | 26d | 2011-08-11 A | 2011-09-09 A | 823A-NT-TBM-PR-1090 | 100% |  |  |  |  | 100% | 100% | 823A_AB |
| 823A-NT-TBM-PR-1170 |  | Fabrication 50% of North Tunnel South Bound (Downtrack) Precast Lining | 135d | 2011-09-01 A | 2012-02-15 A | 823A-NT-TBM-PR-1160 FS+62d | 100% |  |  |  | Segment [220 NO]; Concrete 50/20A [2190.4 Cu m] | 100% | 100% | 823A_AB |
| 823A-NT-TBM-PR-1110 |  | TBM Shipping to HK and delivery to site | 166d | 2011-09-10 A | 2012-03-31 A | 823A-NT-TBM-PR-1100 | 100% |  |  |  |  | 100% | 100% | 823A_AB |
| 823A-NT-TBM-PR-1130 |  | Ground treatment for Cross Passage Tunnel | 254d | 2011-10-24 A | 2012-08-30 A | 823A-NT-TBM-PR-1120 | 100% |  |  |  |  | 100% | 100% | 823A_AB |
| 823A-NT-TBM-PR-1180 |  | Fabrication 100% of North Tunnel South Bound (Downtrack) Precast Lining | 135d | 2012-02-16 A | 2012-07-31 A | 823A-NT-TBM-PR-1170 | 100% |  |  |  | Segment [220 NO]; Concrete 50/20A [2190.4 Cu m] | 100% | 100% | 823A_AB |
| 823A-NT-TBM-PR-1140 |  | Box7A Setup TBM facilities, install noise enclosure and CNP application | 198d | 2012-06-01 A | 2013-01-29 A | 823A-D-LS-NE-1050, 823A-NT-TBM-PR-1110, 823A-NT-NLS-ELS-1120 | 100% | 2012-06-01 | 2013-01-26 |  |  | 100% | 100% | 823A_AB |
| 823A-NT-TBM-PR-1190 |  | Fabrication 30% of North Tunnel North Bound (Uptrack) Precast Lining | 65d | 2012-08-01 A | 2012-10-17 A | 823A-NT-TBM-PR-1180 | 100% |  |  |  | Concrete 50/20A [1314.2 Cu m]; Segment [132 NO] | 100% | 100% | 823A_AB |
| 823A-NT-TBM-PR-1200 |  | Fabrication 60% of North Tunnel North Bound (Uptrack) Precast Lining | 102d | 2012-10-18 A | 2012-12-03 A | 823A-NT-TBM-PR-1190 | 100% | 2012-10-18 | 2013-02-21 |  | Segment [132 NO]; Concrete 50/20A [1314.2 Cu m] | 100% | 100% | 823A_AB |
| 823A-NT-TBM-PR-1210 |  | Fabrication 100% of North Tunnel North Bound (Uptrack) Precast Lining | 89d | 2012-12-03 A | 2013-02-22 A | 823A-NT-TBM-PR-1200 | 100% | 2013-08-19 | 2013-12-03 |  | Segment [176 NO]; Concrete 50/20A [1752.3 Cu m] | 100% | 100% | 823A_AB |
| 823A-NT-TBM-PR-1150 |  | Notice to Contract 824 the anticipated dates of break out TBM Shaft | 54d | 2013-05-02 A | 2013-12-02 A | 823A-NT-TBM-SB-1020 SS | 100% | 2013-06-01 | 2013-08-05 | 823-6dPH |  | 100% | 100% | 823A_AB |

| ID | WBS | Activity | Duration | Start | Finish | Predecessors | Complete | Planned start | Planned finish | Calendar | Resources | % Planned | % Actual | 823A_As-built | Actual Up to Date | UNITS | Total Quantity | Planned Up to Date | 823A_As-built-verified | TIme Gain/Loss |
| --- | --- | --- | --- | --- | --- | --- | --- | --- | --- | --- | --- | --- | --- | --- | --- | --- | --- | --- | --- | --- |
|  | 2 | **Southbound CH122+369 to CH123+340 (Down track) 878m** |  | 2012-06-01 | 2015-07-17 |  |  |  |  |  |  |  |  |  |  |  |  |  |  |  |
| 823A-NT-TBM-SB-1010 |  | Assemble, T&C of TBM | 128d | 2012-06-01 A | 2012-10-16 A | 823A-NT-NLS-ELS-1120, 823A-NT-TBM-PR-1010 | 100% | 2012-06-01 | 2012-11-02 |  | General Worker [3072 h] | 100% | 100% | 823A_AB |  |  |  |  |  |  |
| 823A-NT-TBM-SB-1020 |  | TBM drive & lining installation CH123+369 to CH123+283 Initial Drive (86m) | 49d | 2012-10-17 A | 2013-01-02 A | 823A-NT-TBM-SB-1010, 823A-NT-TBM-PR-1130 | 100% | 2012-11-03 | 2013-01-02 |  | General Worker [8640 h] | 100% | 100% | 823A_AB | 86 | m | 86 | 86 | 823A_ABV |  |
| 823A-NT-TBM-SB-1030 |  | Change Plant (Back-up cars) | 21d | 2013-01-03 A | 2013-01-29 A | 823A-NT-TBM-SB-1020 | 100% | 2013-06-01 | 2013-06-26 |  |  | 100% | 100% | 823A_AB |  |  |  |  |  |  |
| 823A-NT-TBM-SB-1040 |  | TBM drive & lining installation CH123+283 to CH123+183 | 4d | 2013-01-30 A | 2013-03-08 A | 823A-NT-TBM-PR-1140, 823A-NT-TBM-SB-1030 | 100% | 2013-06-27 | 2013-07-02 | 823-6dPH |  | 100% | 100% | 823A_AB | 100 | m | 100 | 100 |  |  |
| 823A-NT-TBM-SB-1050 |  | TBM drive & lining installation CH123+183 to CH123+083 | 4d | 2013-03-09 A | 2013-03-18 A | 823A-NT-TBM-SB-1040 | 100% | 2013-07-03 | 2013-07-06 | 823-6dPH |  | 100% | 100% | 823A_AB | 100 | m | 100 | 100 |  |  |
| 823A-NT-TBM-SB-1060 |  | TBM drive & lining installation CH123+083 to CH122+983 | 3d | 2013-03-19 A | 2013-03-30 A | 823A-NT-TBM-SB-1050 | 100% | 2013-06-01 | 2013-06-04 | 823-6dPH |  | 100% | 100% | 823A_AB | 100 | m | 100 | 100 |  |  |
| 823A-NT-TBM-SB-1070 |  | TBM drive & lining installation CH122+983 to CH122+883 | 3d | 2013-04-01 A | 2013-06-11 A | 823A-NT-TBM-SB-1060 | 100% | 2013-06-05 | 2013-06-07 | 823-6dPH |  | 100% | 100% | 823A_AB | 100 | m | 100 | 100 |  |  |
| 823A-NT-TBM-SB-1080 |  | TBM drive & lining installation CH122+883 to CH122+783 | 3d | 2013-06-13 A | 2013-11-14 A | 823A-NT-TBM-SB-1070 | 100% | 2013-06-03 | 2013-06-05 | 823-6dPH |  | 100% | 100% | 823A_AB | 100 | m | 100 | 100 |  | -23 |
| 823A-NT-TBM-SB-1090 |  | TBM drive & lining installation CH122+783 to CH122+683 | 3d | 2013-11-15 A | 2013-12-11 A | 823A-NT-TBM-SB-1080 | 100% | 2013-11-02 | 2013-11-05 | 823-6dPH |  | 100% | 100% | 823A_AB | 100 | m | 100 | 100 |  | -38 |
| 823A-NT-TBM-SB-1100 |  | TBM drive & lining installation CH122+683 to CH122+583 | 4d | 2013-12-12 A | 2014-02-26 A | 823A-NT-TBM-SB-1090 | 100% | 2013-12-03 | 2013-12-06 | 823-6dPH |  | 100% | 100% | 823A_AB | 100 | m | 100 | 100 |  | -24 |
| 823A-NT-TBM-SB-1110 |  | TBM drive & lining installation CH122+583 to CH122+491 | 3d | 2014-02-27 A | 2014-08-16 A | 823A-NT-TBM-PR-1150 FF, 823A-NT-TBM-SB-1100 | 100% | 2014-02-05 | 2014-02-07 | 823-6dPH |  | 100% | 100% | 823A_AB | 92 | m | 92 | 92 | 823A_ABV | -25 |
| 823A-NT-TBM-SB-1120 |  | Position crane for TBM retrieval at Tai Kong Po Shaft | 21d | 2014-08-01 A | 2014-08-25 A | 823A-NT-TBM-SB-1090 | 100% |  |  |  |  | 100% | 100% | 823A_AB |  |  |  |  |  | -38 |
| 823A-NT-TBM-SB-1130 |  | Dis-assemble TBM | 25d | 2014-08-26 A | 2014-10-17 A | 823A-NT-TBM-SB-1120, 823A-NT-TBM-SB-1110, 823A-IFC-824-1020 FF | 100% | 2014-08-26 | 2014-09-24 |  |  | 100% | 100% | 823A_AB |  |  |  |  |  | -25 |
| 823A-NT-TBM-SB-1150 |  | Installation of cable bracket | 12d | 2014-09-12 A | 2015-07-17 A | 823A-NT-CP28-1050 FS+13d, 823A-NT-CP27-1080, 823A-NT-CP28-1080, 823A-NT-CP26-1080 FF, 823A-NT-CP27-1050 FS+13d, 823A-NT-CP26-1050 FS+13d, 823A-NT-TBM-SB-1140 FS+15d | 100% | 2014-12-30 | 2015-01-13 |  |  | 100% | 100% | 823A_AB |  |  |  |  |  |  |
| 823A-NT-TBM-SB-1140 |  | Invert slab, side walkway | 51d | 2014-09-15 A | 2015-07-07 A | 823A-NT-TBM-SB-1160, 823A-NT-TBM-SB-1110 | 100% | 2014-10-04 | 2014-12-02 |  |  | 100% | 100% | 823A_AB | 800 | m3 | 800 | 800 |  | -25 |
| 823A-NT-TBM-SB-1160 |  | Provision of assess open for DC and modify of strut S1 and S2 at north bound | 26d | 2014-10-01 A | 2014-10-18 A | 823A-NT-TBM-SB-1130 SS | 100% | 2014-11-04 | 2014-12-04 | 823-6dPH |  | 100% | 100% | 823A_AB |  |  |  |  |  | -25 |
|  | 3 | **Northbound CH122+506 to CH123+384 (Up track) 878m** |  | 2014-10-04 | 2016-05-24 |  |  |  |  |  |  |  |  |  |  |  |  |  |  |  |
| 823A-NT-TBM-NB-1010 |  | Assemble, T&C of TBM | 50d | 2014-10-04 A | 2014-11-28 A | 823A-NT-TBM-SB-1160 | 100% | 2014-11-03 | 2015-01-02 |  |  | 100% | 100% | 823A_AB |  |  |  |  |  | -25 |
| 823A-NT-TBM-NB-1020 |  | Setup back-up plant for final drive | 30d | 2014-10-04 A | 2014-10-23 A | 823A-NT-TBM-NB-1010 SS+11d | 100% | 2014-11-15 | 2014-12-19 |  |  | 100% | 100% | 823A_AB |  |  |  |  |  | -25 |
| 823A-NT-TBM-NB-1005 |  | Removal of Roof of Noise Enclosure | 12d | 2014-10-06 A | 2014-10-09 A | 823A-NT-TBM-SB-1130 | 100% | 2014-10-06 | 2014-10-20 | 823-6dPH |  | 100% | 100% | 823A_AB |  |  |  |  |  | -25 |
| 823A-NT-TBM-NB-1030 |  | Reinstate of noise enclosure | 18d | 2014-11-29 A | 2015-01-09 A | 823A-NT-TBM-NB-1005, 823A-NT-TBM-NB-1010 | 100% | 2014-12-06 | 2014-12-29 |  |  | 100% | 100% | 823A_AB |  |  |  |  |  | -26 |
| 823A-NT-TBM-NB-1040 |  | TBM drive & lining installation CH123+384 to CH123+284 (Initial Drive) | 38d | 2014-12-02 A | 2015-01-20 A | 823A-NT-TBM-NB-1010, 823A-NT-TBM-NB-1030 FF, 823A-NT-TBM-NB-1020 | 100% | 2014-12-06 | 2015-01-22 |  |  | 100% | 100% | 823A_AB | 100 | m | 100 | 100 | 823A_ABV | -26 |
| 823A-NT-TBM-NB-1050 |  | TBM drive & lining installation CH123+184 to CH123+084 | 7d | 2015-01-21 A | 2015-02-11 A | 823A-NT-TBM-NB-1040, 823A-NT-TBM-PR-1210 | 100% | 2015-01-21 | 2015-01-28 | 823-6dPH |  | 100% | 100% | 823A_AB | 120 | m | 100 | 120 |  |  |
| 823A-NT-TBM-NB-1060 |  | TBM drive & lining installation CH123+084 to CH122+984 | 7d | 2015-02-12 A | 2015-02-26 A | 823A-NT-TBM-NB-1050 | 100% | 2015-02-04 | 2015-02-11 | 823-6dPH |  | 100% | 100% | 823A_AB | 120 | m | 100 | 120 |  |  |
| 823A-NT-TBM-NB-1070 |  | TBM drive & lining installation CH122+984 to CH122+884 | 8d | 2015-02-27 A | 2015-03-20 A | 823A-NT-TBM-NB-1060 | 100% | 2015-02-12 | 2015-02-24 | 823-6dPH |  | 100% | 100% | 823A_AB | 120 | m | 100 | 120 |  |  |
| 823A-NT-TBM-NB-1080 |  | TBM drive & lining installation CH122+884 to CH122+784 | 8d | 2015-03-21 A | 2015-05-27 A | 823A-NT-TBM-NB-1070 | 100% | 2015-03-10 | 2015-03-18 | 823-6dPH |  | 100% | 100% | 823A_AB | 120 | m | 100 | 120 |  |  |
| 823A-NT-TBM-NB-1090 |  | TBM drive & lining installation CH122+784 to CH122+684 | 8d | 2015-05-28 A | 2015-07-11 A | 823A-NT-TBM-NB-1080 | 100% | 2015-05-06 | 2015-05-14 | 823-6dPH |  | 100% | 100% | 823A_AB | 120 | m | 100 | 120 |  |  |
| 823A-NT-TBM-NB-1150 |  | Installation of cable bracket | 12d | 2015-07-02 A | 2016-03-15 A | 823A-NT-CP26-1140 FS+11d, 823A-NT-CP27-1140 FS+11d, 823A-NT-CP28-1140 FS+11d | 100% | 2015-09-07 | 2015-09-19 |  |  | 100% | 100% | 823A_AB |  |  |  |  |  |  |
| 823A-NT-TBM-NB-1100 |  | TBM drive & lining installation CH122+684 to CH122+584 | 7d | 2015-07-13 A | 2015-11-14 A | 823A-NT-TBM-NB-1090 | 100% | 2015-07-03 | 2015-07-10 | 823-6dPH |  | 100% | 100% | 823A_AB | 100 | m | 100 | 100 |  |  |
| 823A-NT-TBM-NB-1110 |  | TBM drive & lining installation CH122+584 to CH122+506 | 6d | 2015-11-16 A | 2015-12-12 A | 823A-NT-TBM-NB-1100 | 100% | 2015-11-03 | 2015-11-09 | 823-6dPH |  | 100% | 100% | 823A_AB | 78 | m | 78 | 78 | 823A_ABV |  |
| 823A-NT-TBM-NB-1120 |  | Position crane for TBM retrieval at Tai Kong Po Shaft | 6d | 2015-12-01 A | 2015-12-07 A | 823A-NT-TBM-NB-1110 SS | 100% |  |  |  |  | 100% | 100% | 823A_AB |  |  |  |  |  |  |
| 823A-NT-TBM-NB-1130 |  | Dis-assemble TBM | 30d | 2015-12-13 A | 2016-03-13 A | 823A-IFC-824-1040 FF, 823A-NT-TBM-NB-1110, 823A-NT-TBM-NB-1120 | 100% | 2015-12-16 | 2016-01-22 |  |  | 100% | 100% | 823A_AB |  |  |  |  |  |  |
| 823A-NT-TBM-NB-1170 |  | Demobilization of TBM facilities and noise enclosure | 31d | 2016-02-01 A | 2016-02-22 A | 823A-NT-TBM-NB-1130 SS | 100% | 2016-02-01 | 2016-03-10 |  |  | 100% | 100% | 823A_AB |  |  |  |  |  |  |
| 823A-NT-TBM-NB-1140 |  | Invert slab, side walkway | 39d | 2016-03-14 A | 2016-05-24 A | 823A-NT-TBM-NB-1110 FS+14d, 823A-NT-TBM-NB-1130 FF | 100% | 2016-04-01 | 2016-05-19 |  |  | 100% | 100% | 823A_AB | 800 | m3 | 800 | 800 |  |  |

| ID | WBS | Activity | Duration | Start | Finish | Predecessors | Complete | Planned start | Planned finish | TIme Gain/Loss | % Planned | % Actual | 823A_As-built |
| --- | --- | --- | --- | --- | --- | --- | --- | --- | --- | --- | --- | --- | --- |
|  | 4 | **Cross Passenges** |  | 2014-01-02 | 2016-02-06 |  |  |  |  |  |  |  |  |
|  | 1 | **CP26** |  | 2014-02-04 | 2016-02-06 |  |  |  |  |  |  |  |  |
| 823A-NT-CP26-1000 |  | Install temporary support inside Main Tunnel for CP26 Stage 1 (From Downtrack to Centre of CP) | 14d | 2014-02-04 A | 2014-06-28 A | 823A-D-TBM-TS-1050, 823A-NT-TBM-SB-1140 SS+8d | 100% | 2014-04-10 | 2014-04-29 | -25 | 100% | 100% | 823A_AB |
| 823A-NT-CP26-1010 |  | Probe/Grout | 9d | 2014-11-04 A | 2014-11-09 A | 823A-NT-CP26-1000 | 100% | 2014-11-04 | 2014-11-14 | -25 | 100% | 100% | 823A_AB |
| 823A-NT-CP26-1020 |  | Coring of Segment | 4d | 2014-11-10 A | 2014-11-13 A | 823A-NT-CP26-1010 | 100% | 2014-11-14 | 2014-11-19 | -24 | 100% | 100% | 823A_AB |
| 823A-NT-CP26-1030 |  | Removal of segment | 3d | 2014-11-14 A | 2014-11-17 A | 823A-NT-CP26-1020 | 100% | 2014-11-19 | 2014-11-22 | -24 | 100% | 100% | 823A_AB |
| 823A-NT-CP26-1040 |  | Excavation 0-4mts with Shotcrete | 14d | 2015-02-23 A | 2015-03-30 A | 823A-NT-CP26-1030 | 100% | 2015-02-02 | 2015-02-17 | -24 | 100% | 100% | 823A_AB |
| 823A-NT-CP26-1050 |  | Invert Concrete | 9d | 2015-04-01 A | 2015-04-15 A | 823A-NT-CP26-1040 | 100% |  |  |  | 100% | 100% | 823A_AB |
| 823A-NT-CP26-1100 |  | Probe/Grout | 9d | 2015-04-01 A | 2015-04-10 A | 823A-NT-CP26-1090 | 100% | 2015-06-25 | 2015-07-06 |  | 100% | 100% | 823A_AB |
| 823A-NT-CP26-1110 |  | Coring of Segment | 4d | 2015-04-11 A | 2015-04-15 A | 823A-NT-CP26-1100 | 100% | 2015-07-07 | 2015-07-10 |  | 100% | 100% | 823A_AB |
| 823A-NT-CP26-1060 |  | Wall and Roof concrete | 14d | 2015-04-16 A | 2015-05-06 A | 823A-NT-CP26-1050 | 100% | 2015-04-16 | 2015-05-02 |  | 100% | 100% | 823A_AB |
| 823A-NT-CP26-1120 |  | Removal of segment | 3d | 2015-04-16 A | 2015-04-18 A | 823A-NT-CP26-1110 | 100% | 2015-07-11 | 2015-07-14 |  | 100% | 100% | 823A_AB |
| 823A-NT-CP26-1130 |  | Excavation 0-4mts with Shotcrete | 10d | 2015-04-20 A | 2015-04-30 A | 823A-NT-CP26-1120 | 100% | 2015-07-15 | 2015-07-25 |  | 100% | 100% | 823A_AB |
| 823A-NT-CP26-1140 |  | Invert Concrete | 9d | 2015-05-07 A | 2015-05-12 A | 823A-NT-CP26-1130 | 100% | 2015-07-18 | 2015-07-28 |  | 100% | 100% | 823A_AB |
| 823A-NT-CP26-1150 |  | Wall and Roof concrete | 12d | 2015-05-13 A | 2015-05-21 A | 823A-NT-CP26-1140 | 100% | 2015-07-29 | 2015-08-11 |  | 100% | 100% | 823A_AB |
| 823A-NT-CP26-1070 |  | Dismantle Temporary frame | 7d | 2015-07-02 A | 2015-07-09 A | 823A-NT-CP26-1060 | 100% |  |  |  | 100% | 100% | 823A_AB |
| 823A-NT-CP26-1080 |  | Install Door to Cross Passage (By contract 827) | 4d | 2015-07-10 A | 2015-07-14 A | 823A-NT-CP26-1070 | 100% |  |  |  | 100% | 100% | 823A_AB |
| 823A-NT-CP26-1090 |  | Install temporary support inside Main Tunnel for CP26 Stage 2 (From Centre of CP to Uptrack) | 11d | 2015-09-07 A | 2015-12-01 A | 823A-NT-TBM-NB-1140 SS+14d | 100% | 2015-10-17 | 2015-10-30 |  | 100% | 100% | 823A_AB |
| 823A-NT-CP26-1160 |  | Dismantle Temporary frame | 7d | 2016-01-26 A | 2016-02-04 A | 823A-NT-CP26-1150 | 100% | 2016-01-19 | 2016-01-26 |  | 100% | 100% | 823A_AB |
| 823A-NT-CP26-1170 |  | Install Door to Cross Passage (By contract 827) | 4d | 2016-02-05 A | 2016-02-06 A | 823A-NT-CP26-1160 | 100% | 2016-02-22 | 2016-02-25 |  | 100% | 100% | 823A_AB |
|  | 2 | **CP27** |  | 2014-01-02 | 2015-11-05 |  |  |  |  |  |  |  |  |
| 823A-NT-CP27-1000 |  | Install temporary support inside Main Tunnel for CP27 Stage 1 (From Downtrack to Centre of CP) | 14d | 2014-01-02 A | 2014-07-31 A | 823A-NT-TBM-SB-1140 SS+8d, 823A-D-TBM-TS-1050 | 100% | 2014-03-11 | 2014-03-26 | -25 | 100% | 100% | 823A_AB |
| 823A-NT-CP27-1010 |  | Probe/Grout | 9d | 2014-11-04 A | 2014-11-12 A | 823A-NT-CP27-1000 | 100% | 2014-11-04 | 2014-11-14 | -25 | 100% | 100% | 823A_AB |
| 823A-NT-CP27-1020 |  | Coring of Segment | 4d | 2014-11-13 A | 2014-11-17 A | 823A-NT-CP27-1010 | 100% | 2014-11-14 | 2014-11-19 | -24 | 100% | 100% | 823A_AB |
| 823A-NT-CP27-1030 |  | Removal of segment | 3d | 2014-11-18 A | 2014-11-20 A | 823A-NT-CP27-1020 | 100% | 2014-11-19 | 2014-11-22 | -24 | 100% | 100% | 823A_AB |
| 823A-NT-CP27-1040 |  | Excavation 0-4mts with Shotcrete | 14d | 2014-11-22 A | 2014-12-02 A | 823A-NT-CP27-1030 | 100% | 2014-11-22 | 2014-12-09 | -24 | 100% | 100% | 823A_AB |
| 823A-NT-CP27-1050 |  | Invert Concrete | 9d | 2014-12-03 A | 2014-12-12 A | 823A-NT-CP27-1040 | 100% |  |  |  | 100% | 100% | 823A_AB |
| 823A-NT-CP27-1060 |  | Wall and Roof concrete | 14d | 2014-12-13 A | 2014-12-31 A | 823A-NT-CP27-1050 | 100% |  |  |  | 100% | 100% | 823A_AB |
| 823A-NT-CP27-1070 |  | Dismantle Temporary frame | 7d | 2015-01-02 A | 2015-01-09 A | 823A-NT-CP27-1060 | 100% |  |  |  | 100% | 100% | 823A_AB |
| 823A-NT-CP27-1080 |  | Install Door to Cross Passage (By contract 827) | 4d | 2015-01-10 A | 2015-01-14 A | 823A-NT-CP27-1070 | 100% |  |  |  | 100% | 100% | 823A_AB |
| 823A-NT-CP27-1090 |  | Install temporary support inside Main Tunnel for CP27 Stage 2 (From Centre of CP to Uptrack) | 11d | 2015-03-09 A | 2015-03-20 A | 823A-NT-TBM-NB-1140 SS+14d | 100% | 2015-05-21 | 2015-06-03 |  | 100% | 100% | 823A_AB |
| 823A-NT-CP27-1100 |  | Probe/Grout | 9d | 2015-05-04 A | 2015-05-13 A | 823A-NT-CP27-1090 | 100% | 2015-07-06 | 2015-07-15 |  | 100% | 100% | 823A_AB |
| 823A-NT-CP27-1110 |  | Coring of Segment | 4d | 2015-05-14 A | 2015-05-18 A | 823A-NT-CP27-1100 | 100% | 2015-07-16 | 2015-07-20 |  | 100% | 100% | 823A_AB |
| 823A-NT-CP27-1120 |  | Removal of segment | 3d | 2015-05-19 A | 2015-05-21 A | 823A-NT-CP27-1110 | 100% | 2015-07-21 | 2015-07-23 |  | 100% | 100% | 823A_AB |
| 823A-NT-CP27-1130 |  | Excavation 0-4mts with Shotcrete | 10d | 2015-05-22 A | 2015-06-29 A | 823A-NT-CP27-1120 | 100% | 2015-07-24 | 2015-08-04 |  | 100% | 100% | 823A_AB |
| 823A-NT-CP27-1140 |  | Invert Concrete | 9d | 2015-06-30 A | 2015-07-08 A | 823A-NT-CP27-1130 | 100% | 2015-08-08 | 2015-08-18 |  | 100% | 100% | 823A_AB |
| 823A-NT-CP27-1150 |  | Wall and Roof concrete | 12d | 2015-07-09 A | 2015-08-15 A | 823A-NT-CP27-1140 | 100% | 2015-08-25 | 2015-09-07 |  | 100% | 100% | 823A_AB |
| 823A-NT-CP27-1160 |  | Dismantle Temporary frame | 7d | 2015-08-17 A | 2015-09-02 A | 823A-NT-CP27-1150 | 100% | 2015-09-22 | 2015-09-30 |  | 100% | 100% | 823A_AB |
| 823A-NT-CP27-1170 |  | Install Door to Cross Passage (By contract 827) | 4d | 2015-11-02 A | 2015-11-05 A | 823A-NT-CP27-1160 | 100% | 2015-12-12 | 2015-12-16 |  | 100% | 100% | 823A_AB |

| ID | WBS | Activity | Duration | Start | Finish | Predecessors | Complete | Planned start | Planned finish | Resources | TIme Gain/Loss | % Planned | % Actual | 823A_As-built | Actual Up to Date | UNITS | Total Quantity | Planned Up to Date |
| --- | --- | --- | --- | --- | --- | --- | --- | --- | --- | --- | --- | --- | --- | --- | --- | --- | --- | --- |
|  | 3 | **CP28** |  | 2014-01-02 | 2015-11-05 |  |  |  |  |  |  |  |  |  |  |  |  |  |
| 823A-NT-CP28-1000 |  | Install temporary support inside Main Tunnel for CP28 Stage 1 (From Downtrack to Centre of CP) | 14d | 2014-01-02 A | 2014-05-24 A | 823A-NT-TBM-SB-1140 SS+8d, 823A-D-TBM-TS-1050 | 100% | 2014-01-02 | 2014-01-17 |  | -25 | 100% | 100% | 823A_AB |  |  |  |  |
| 823A-NT-CP28-1010 |  | Probe/Grout | 9d | 2014-11-01 A | 2014-11-08 A | 823A-NT-CP28-1000 | 100% | 2014-11-04 | 2014-11-14 |  | -25 | 100% | 100% | 823A_AB |  |  |  |  |
| 823A-NT-CP28-1020 |  | Coring of Segment | 4d | 2014-11-10 A | 2014-11-13 A | 823A-NT-CP28-1010 | 100% | 2014-11-14 | 2014-11-19 |  | -24 | 100% | 100% | 823A_AB |  |  |  |  |
| 823A-NT-CP28-1030 |  | Removal of segment | 3d | 2014-11-14 A | 2014-11-15 A | 823A-NT-CP28-1020 | 100% | 2014-11-19 | 2014-11-22 |  | -24 | 100% | 100% | 823A_AB |  |  |  |  |
| 823A-NT-CP28-1040 |  | Excavation 0-4mts with Shotcrete | 14d | 2014-11-17 A | 2014-11-29 A | 823A-NT-CP28-1030 | 100% | 2014-11-22 | 2014-12-09 |  | -24 | 100% | 100% | 823A_AB |  |  |  |  |
| 823A-NT-CP28-1050 |  | Invert Concrete | 9d | 2014-12-01 A | 2014-12-10 A | 823A-NT-CP28-1040 | 100% |  |  |  |  | 100% | 100% | 823A_AB |  |  |  |  |
| 823A-NT-CP28-1060 |  | Wall and Roof concrete | 14d | 2014-12-11 A | 2014-12-29 A | 823A-NT-CP28-1050 | 100% |  |  |  |  | 100% | 100% | 823A_AB |  |  |  |  |
| 823A-NT-CP28-1070 |  | Dismantle Temporary frame | 7d | 2014-12-30 A | 2015-01-09 A | 823A-NT-CP28-1060 | 100% | 2014-12-30 | 2015-01-07 |  |  | 100% | 100% | 823A_AB |  |  |  |  |
| 823A-NT-CP28-1080 |  | Install Door to Cross Passage (By contract 827) | 4d | 2015-01-10 A | 2015-01-14 A | 823A-NT-CP28-1070 | 100% |  |  |  |  | 100% | 100% | 823A_AB |  |  |  |  |
| 823A-NT-CP28-1090 |  | Install temporary support inside Main Tunnel for CP28 Stage 2 (From Centre of CP to Uptrack) | 11d | 2015-02-23 A | 2015-03-06 A | 823A-NT-TBM-NB-1140 SS+14d | 100% | 2015-05-08 | 2015-05-20 |  |  | 100% | 100% | 823A_AB |  |  |  |  |
| 823A-NT-CP28-1100 |  | Probe/Grout | 9d | 2015-05-02 A | 2015-05-02 A | 823A-NT-CP28-1090 | 100% | 2015-07-06 | 2015-07-15 |  |  | 100% | 100% | 823A_AB |  |  |  |  |
| 823A-NT-CP28-1110 |  | Coring of Segment | 4d | 2015-05-02 A | 2015-05-05 A | 823A-NT-CP28-1100 | 100% | 2015-07-16 | 2015-07-20 |  |  | 100% | 100% | 823A_AB |  |  |  |  |
| 823A-NT-CP28-1120 |  | Removal of segment | 3d | 2015-05-06 A | 2015-05-07 A | 823A-NT-CP28-1110 | 100% | 2015-07-21 | 2015-07-23 |  |  | 100% | 100% | 823A_AB |  |  |  |  |
| 823A-NT-CP28-1130 |  | Excavation 0-4mts with Shotcrete | 10d | 2015-05-08 A | 2015-06-09 A | 823A-NT-CP28-1120 | 100% | 2015-07-24 | 2015-08-04 |  |  | 100% | 100% | 823A_AB |  |  |  |  |
| 823A-NT-CP28-1140 |  | Invert Concrete | 9d | 2015-06-10 A | 2015-06-19 A | 823A-NT-CP28-1130 | 100% | 2015-08-05 | 2015-08-14 |  |  | 100% | 100% | 823A_AB |  |  |  |  |
| 823A-NT-CP28-1150 |  | Wall and Roof concrete | 12d | 2015-08-01 A | 2015-08-26 A | 823A-NT-CP28-1140 | 100% | 2015-09-15 | 2015-09-29 |  |  | 100% | 100% | 823A_AB |  |  |  |  |
| 823A-NT-CP28-1160 |  | Dismantle Temporary frame | 7d | 2015-09-21 A | 2015-10-08 A | 823A-NT-CP28-1150 | 100% | 2015-10-17 | 2015-10-26 |  |  | 100% | 100% | 823A_AB |  |  |  |  |
| 823A-NT-CP28-1170 |  | Install Door to Cross Passage (By contract 827) | 4d | 2015-11-02 A | 2015-11-05 A | 823A-NT-CP28-1160 | 100% | 2015-12-12 | 2015-12-16 |  |  | 100% | 100% | 823A_AB |  |  |  |  |
|  | 5 | **South Tunnel** |  | 2011-03-21 | 2017-02-28 |  |  |  |  |  |  |  |  |  |  |  |  |  |
|  | 1 | **South Lanuching Shaft** |  | 2011-04-18 | 2016-06-01 |  |  |  |  |  |  |  |  |  |  |  |  |  |
|  | 1 | **D-Wall** |  | 2011-04-18 | 2013-03-21 |  |  |  |  |  |  |  |  |  |  |  |  |  |
| 823A-ST-SLS-DW-1010 |  | Site Possession and Site set up and Mobilization | 66d | 2011-04-18 A | 2011-07-11 A | 823A-PRE-PW-GS-1110, KD-1 | 100% |  |  |  |  | 100% | 100% | 823A_AB |  |  |  |  |
| 823A-ST-SLS-DW-1020 |  | Pre-drilling and guidewall | 55d | 2011-07-12 A | 2011-09-14 A |  | 100% |  |  | G.I Rig/Drill Rig [880 h]; Bar Bender & Fixer [880 h]; Carpenter (Formwork - Civil Construction) [880 h]; Temporary Concrete [64 Cu m]; Concrete 30/20B [63 Cu m]; General Worker [2200 h]; Plant and Equipment Operator (Crawler-mounted Mobile Crane) [1320 h]; PY Concretor [880 h]; Backhoe [440 h] |  | 100% | 100% | 823A_AB |  |  |  |  |
| 823A-ST-SLS-DW-1030 |  | D-wall construction (1192m3) | 149d | 2011-09-15 A | 2012-03-15 A | 823A-ST-SLS-DW-1020 | 100% |  |  | Concrete 45/20A [4454 Cu m]; D-Wall Grab [1192 h]; Hydrofraise Cutter [1192 h]; Crawler Crane/Mobile Crane [1192 h]; Temporary Concrete [1192 Cu m]; D-Wall [19 NO]; Backhoe [1192 h]; Bar Bender & Fixer [14304 h]; General Worker [4768 h]; Plant and Equipment Operator (Crawler-mounted Mobile Crane) [4768 h]; Rigger/Metal Formwork Erector [7152 h] |  | 100% | 100% | 823A_AB | 1192 | m3 | 1192 | 1192 |
| 823A-ST-SLS-DW-1040 |  | Sonic test, shear pin, toe grout and pumping test | 48d | 2012-03-16 A | 2012-05-17 A | 823A-ST-SLS-DW-1030 | 100% |  |  | Shear Pin [40 NO]; Toe Grout [69 NO]; G.I Rig/Drill Rig [544 h]; Grouting Machine [272 h]; General Worker [1088 h]; Plant and Equipment Operator (Crawler-mounted Mobile Crane) [1088 h]; Crawler Crane/Mobile Crane [272 h]; Air Compressor [544 h] |  | 100% | 100% | 823A_AB |  |  |  |  |
| 823A-ST-SLS-DW-1050 |  | Construct capping beam, cobble, etc. (including bay 6 and 5) | 91d | 2012-10-27 A | 2013-03-21 A | 823A-ST-SLS-ELS-1150 | 100% | 2012-10-27 | 2013-02-16 |  |  | 100% | 100% | 823A_AB | 67 | m3 | 67 | 67 |

| ID | WBS | Activity | Type | Duration | Start | Finish | Predecessors | Complete | Planned start | Planned finish | Constraint | Resources | Actual Up to Date | UNITS | Total Quantity | Planned Up to Date | % Planned | % Actual | 823A_As-built |
| --- | --- | --- | --- | --- | --- | --- | --- | --- | --- | --- | --- | --- | --- | --- | --- | --- | --- | --- | --- |
|  | 2 | **Excavation and Lateral Support** |  |  | 2012-05-18 | 2013-04-24 |  |  |  |  |  |  |  |  |  |  |  |  |  |
| 823A-ST-SLS-ELS-1010 |  | Excavate up to +22.0mPD (1860m3) |  | 12d | 2012-05-18 A | 2012-05-31 A | 823A-ST-SLS-DW-1040 | 100% |  |  |  | Backhoe [96 h]; Excavation Materials [1860 Cu m]; Soil Excavation [1860 Cu m]; Plant and Equipment Operator (Crawler-mounted Mobile Crane) [96 h]; General Worker [192 h]; Truck Driver (Heavy Goods Vehicles) [576 h]; Dump Truck [576 h] | 1860 | m3 | 1860 | 1860 | 100% | 100% | 823A_AB |
| 823A-ST-SLS-ELS-1020 |  | Install Strut S1 +22.5mPD |  | 4d | 2012-06-01 A | 2012-06-05 A | 823A-ST-SLS-ELS-1010 | 100% |  |  |  | Crawler Crane/Mobile Crane [32 h]; Weld Set [128 h]; Plant and Equipment Operator (Crawler-mounted Mobile Crane) [32 h]; Rigger/Metal Formwork Erector [128 h]; General Welder [128 h] |  |  |  |  | 100% | 100% | 823A_AB |
| 823A-ST-SLS-ELS-1030 |  | Excavate up to +16.5mPD (3410m3) |  | 22d | 2012-06-06 A | 2012-07-03 A | 823A-ST-SLS-ELS-1020 | 100% |  |  |  | Backhoe [264 h]; Crawler Crane/Mobile Crane [88 h]; Excavation Materials [3410 Cu m]; Soil Excavation [3410 Cu m]; Plant and Equipment Operator (Crawler-mounted Mobile Crane) [352 h]; Truck Driver (Heavy Goods Vehicles) [1056 h]; General Worker [352 h]; Dump Truck [1056 h] | 3410 | m3 | 3410 | 3410 | 100% | 100% | 823A_AB |
| 823A-ST-SLS-ELS-1040 |  | Install Strut S2 +17.0mPD |  | 4d | 2012-07-04 A | 2012-07-07 A | 823A-ST-SLS-ELS-1030 FS-2d | 100% |  |  |  | Weld Set [128 h]; Plant and Equipment Operator (Crawler-mounted Mobile Crane) [32 h]; Rigger/Metal Formwork Erector [128 h]; General Welder [128 h]; Crawler Crane/Mobile Crane [32 h] |  |  |  |  | 100% | 100% | 823A_AB |
| 823A-ST-SLS-ELS-1050 |  | Excavate up to +11.0mPD (3410m3) |  | 22d | 2012-07-09 A | 2012-08-02 A | 823A-ST-SLS-ELS-1040 | 100% |  |  |  | Crawler Crane/Mobile Crane [88 h]; Backhoe [264 h]; Excavation Materials [3410 Cu m]; Soil Excavation [3410 Cu m]; Plant and Equipment Operator (Crawler-mounted Mobile Crane) [352 h]; Truck Driver (Heavy Goods Vehicles) [1056 h]; General Worker [352 h]; Dump Truck [1056 h] | 3410 | m3 | 3410 | 3410 | 100% | 100% | 823A_AB |
| 823A-ST-SLS-ELS-1060 |  | Install Strut S3 +11.5mPD |  | 4d | 2012-08-03 A | 2012-08-07 A | 823A-ST-SLS-ELS-1050 FS-2d | 100% |  |  |  | Weld Set [128 h]; Plant and Equipment Operator (Crawler-mounted Mobile Crane) [32 h]; Rigger/Metal Formwork Erector [128 h]; General Welder [128 h]; Crawler Crane/Mobile Crane [32 h] |  |  |  |  | 100% | 100% | 823A_AB |
| 823A-ST-SLS-ELS-1070 |  | Excavate up to +7.0mPD (2480m3) |  | 16d | 2012-08-08 A | 2012-08-25 A | 823A-ST-SLS-ELS-1060 FS-2d | 100% |  |  |  | Backhoe [192 h]; Crawler Crane/Mobile Crane [64 h]; Excavation Materials [2480 Cu m]; Soil Excavation [2480 Cu m]; Plant and Equipment Operator (Crawler-mounted Mobile Crane) [256 h]; Truck Driver (Heavy Goods Vehicles) [768 h]; General Worker [256 h]; Dump Truck [768 h] | 2480 | m3 | 2480 | 2480 | 100% | 100% | 823A_AB |
| 823A-ST-SLS-ELS-1080 |  | Install Strut S4 +7.5mPD |  | 4d | 2012-08-27 A | 2012-08-30 A | 823A-ST-SLS-ELS-1070 FS-2d | 100% |  |  |  | Crawler Crane/Mobile Crane [32 h]; Weld Set [128 h]; Plant and Equipment Operator (Crawler-mounted Mobile Crane) [32 h]; Rigger/Metal Formwork Erector [128 h]; General Welder [128 h] |  |  |  |  | 100% | 100% | 823A_AB |
| 823A-ST-SLS-ELS-1090 |  | Excavate up to +3.5mPD (2170m3) |  | 14d | 2012-08-31 A | 2012-09-15 A | 823A-ST-SLS-ELS-1080 | 100% |  |  |  | Crawler Crane/Mobile Crane [56 h]; Excavation Materials [2170 Cu m]; Soil Excavation [2170 Cu m]; Backhoe [168 h]; Plant and Equipment Operator (Crawler-mounted Mobile Crane) [224 h]; General Worker [224 h]; Dump Truck [672 h]; Truck Driver (Heavy Goods Vehicles) [672 h] | 2170 | m3 | 2170 | 2170 | 100% | 100% | 823A_AB |
| 823A-ST-SLS-ELS-1100 |  | Install Strut S5 +4.0mPD |  | 4d | 2012-09-17 A | 2012-09-20 A | 823A-ST-SLS-ELS-1090 | 100% |  |  |  | Crawler Crane/Mobile Crane [32 h]; Weld Set [128 h]; Plant and Equipment Operator (Crawler-mounted Mobile Crane) [32 h]; Rigger/Metal Formwork Erector [128 h]; General Welder [128 h] |  |  |  |  | 100% | 100% | 823A_AB |
| 823A-ST-SLS-ELS-1110 |  | Excavate up to formation (2294m3) |  | 21d | 2012-09-21 A | 2012-10-17 A |  | 100% |  |  |  | Excavation Materials [2294 Cu m]; Soil Excavation [2294 Cu m]; Backhoe [192 h]; Crawler Crane/Mobile Crane [64 h]; Plant and Equipment Operator (Crawler-mounted Mobile Crane) [256 h]; Truck Driver (Heavy Goods Vehicles) [768 h]; General Worker [256 h]; Dump Truck [768 h] | 2294 | m3 | 2294 | 2294 | 100% | 100% | 823A_AB |
| 823A-ST-SLS-ELS-1120 |  | Construct temp. 500mm thick plain concrete base slab |  | 2d | 2012-10-18 A | 2012-10-20 A | 823A-ST-SCC-ELS-1120 | 100% | 2012-10-18 | 2012-10-19 |  |  |  |  |  |  | 100% | 100% | 823A_AB |
| 823A-ST-SLS-ELS-1130 |  | Removal of South Bound strut to +9.50mPD |  | 3d | 2012-10-22 A | 2012-10-25 A | 823A-ST-SLS-ELS-1120 | 100% |  |  |  |  |  |  |  |  | 100% | 100% | 823A_AB |
| 823A-ST-SLS-ELS-1140 |  | Removal of North Bound strut to +9.50mPD |  | 3d | 2012-10-26 A | 2012-10-29 A |  | 100% |  |  |  |  |  |  |  |  | 100% | 100% | 823A_AB |
| 823A-ST-SLS-ELS-1150 |  | Construct temp. 500mm thick TBM concrete base slab |  | 14d | 2012-10-26 A | 2012-11-10 A | 823A-ST-SLS-ELS-1130 | 100% |  |  |  |  |  |  |  |  | 100% | 100% | 823A_AB |
| 823A-ST-SLS-ELS-1160 |  | Construction entrance seal for TBM at South Bound |  | 28d | 2012-11-16 A | 2012-12-12 A | 823A-ST-SLS-ELS-1150, 823A-ST-SLS-ELS-1140 | 100% | 2012-11-12 | 2012-12-13 |  |  |  |  |  |  | 100% | 100% | 823A_AB |
| 823A-ST-SLS-ELS-1180 |  | Saw cut South Bound diaphragm wall |  | 29d | 2012-11-26 A | 2012-12-24 A | 823A-ST-SLS-ELS-1150 | 100% | 2012-11-26 | 2012-12-31 |  |  |  |  |  |  | 100% | 100% | 823A_AB |
| 823A-ST-SLS-ELS-1200 |  | Handover to TBM's Team | milestone | 0d | 2012-12-11 A | 2012-12-11 A |  | 100% | 2013-06-01 | 2013-06-01 | start on 2012-12-11 |  |  |  |  |  | 100% | 100% | 823A_AB |
| 823A-ST-SLS-ELS-1190 |  | Saw cut North Bound diaphragm wall |  | 26d | 2012-12-15 A | 2013-01-14 A | 823A-ST-SLS-ELS-1180 | 100% | 2013-07-02 | 2013-07-31 |  |  |  |  |  |  | 100% | 100% | 823A_AB |
| 823A-ST-SLS-ELS-1170 |  | Construction entrance seal for TBM at North Bound |  | 24d | 2013-03-14 A | 2013-04-24 A | 823A-ST-SLS-ELS-1160, 823A-ST-TBM-NB-1010 | 100% | 2013-07-20 | 2013-08-16 |  |  |  |  |  |  | 100% | 100% | 823A_AB |
|  | 3 | **Structure (Bay 21)** |  |  | 2014-07-17 | 2016-02-01 |  |  |  |  |  |  |  |  |  |  |  |  |  |
|  | 1 | **Southbound (Down Track)** |  |  | 2014-07-17 | 2014-12-02 |  |  |  |  |  |  |  |  |  |  |  |  |  |
| 823A-ST-SLS-SB-1010 |  | Placing of waterproof member T-lock & testing (Base Slab) |  | 2d | 2014-07-17 A | 2014-07-18 A | 823A-ST-TBM-NB-1020 | 100% | 2014-09-04 | 2014-09-05 |  | Skill Labour [32 h] |  |  |  |  | 100% | 100% | 823A_AB |
| 823A-ST-SLS-SB-1020 |  | Erect external formwork (Base Slab) |  | 2d | 2014-07-19 A | 2014-07-21 A | 823A-ST-SLS-SB-1010 | 100% | 2014-09-06 | 2014-09-08 |  | Carpenter (Formwork - Civil Construction) [96 h]; Plant and Equipment Operator (Crawler-mounted Mobile Crane) [16 h]; Crawler Crane/Mobile Crane [16 h] |  |  |  |  | 100% | 100% | 823A_AB |
| 823A-ST-SLS-SB-1030 |  | Rebar fixing (Base Slab) |  | 4d | 2014-07-22 A | 2014-07-26 A | 823A-ST-SLS-SB-1020 | 100% | 2014-09-10 | 2014-09-13 |  | Reinforcement [34071 kg]; Crawler Crane/Mobile Crane [32 h]; Plant and Equipment Operator (Crawler-mounted Mobile Crane) [32 h]; Bar Bender & Fixer [256 h] |  |  |  |  | 100% | 100% | 823A_AB |
| 823A-ST-SLS-SB-1040 |  | Erect internal kicker formwork (Base Slab) |  | 3d | 2014-07-27 A | 2014-07-31 A | 823A-ST-SLS-SB-1030 | 100% | 2014-09-15 | 2014-09-17 |  | Carpenter (Formwork - Civil Construction) [144 h]; Plant and Equipment Operator (Crawler-mounted Mobile Crane) [24 h]; Crawler Crane/Mobile Crane [24 h] |  |  |  |  | 100% | 100% | 823A_AB |
| 823A-ST-SLS-SB-1050 |  | Clearing and inspection (Base Slab) |  | 1d | 2014-08-14 A | 2014-08-14 A | 823A-ST-SLS-SB-1040 | 100% | 2014-08-08 | 2014-08-08 |  | General Worker [16 h]; Air Compressor [8 h] |  |  |  |  | 100% | 100% | 823A_AB |
| 823A-ST-SLS-SB-1060 |  | Concreting (Base Slab) (225m3) |  | 1d | 2014-08-15 A | 2014-08-15 A | 823A-ST-SLS-SB-1050 | 100% | 2014-08-09 | 2014-08-09 |  | Concrete Pump [8 h]; Crawler Crane/Mobile Crane [8 h]; Permanent Concrete [225 Cu m]; Concrete 45/20A [225 Cu m]; PY Concretor [48 h]; General Worker [64 h]; Plant and Equipment Operator (Crawler-mounted Mobile Crane) [16 h]; Rigger/Metal Formwork Erector [32 h] | 225 | m3 | 225 | 225 | 100% | 100% | 823A_AB |
| 823A-ST-SLS-SB-1070 |  | Curing (Base Slab) |  | 7d | 2014-08-16 A | 2014-08-23 A | 823A-ST-SLS-SB-1060 | 100% | 2014-08-11 | 2014-08-18 |  | General Worker [112 h] |  |  |  |  | 100% | 100% | 823A_AB |
| 823A-ST-SLS-SB-1080 |  | Removal of formwork (Base Slab) |  | 1d | 2014-08-25 A | 2014-08-25 A | 823A-ST-SLS-SB-1060 FS+1d | 100% | 2014-08-12 | 2014-08-12 |  | Crawler Crane/Mobile Crane [8 h]; Carpenter (Formwork - Civil Construction) [48 h]; Plant and Equipment Operator (Crawler-mounted Mobile Crane) [8 h] |  |  |  |  | 100% | 100% | 823A_AB |
| 823A-ST-SLS-SB-1090 |  | Erect internal formwork & Falsework (Wall & Roof) |  | 7d | 2014-08-26 A | 2014-09-15 A | 823A-ST-SLS-SB-1080, 823A-ST-SLS-SB-1070 FF | 100% | 2014-08-13 | 2014-08-20 |  | Crawler Crane/Mobile Crane [56 h]; Plant and Equipment Operator (Crawler-mounted Mobile Crane) [56 h]; Carpenter (Formwork - Civil Construction) [448 h]; Rigger/Metal Formwork Erector [224 h] |  |  |  |  | 100% | 100% | 823A_AB |
| 823A-ST-SLS-SB-1170 |  | Side walkway and cable bracket (102m3) |  | 10d | 2014-09-01 A | 2014-12-02 A | 823A-ST-SLS-SB-1160 | 100% | 2014-10-18 | 2014-10-29 |  | Permanent Concrete [102 Cu m]; Concrete 20/20C [102 Cu m]; Crawler Crane/Mobile Crane [80 h]; Concrete Pump [80 h]; Carpenter (Formwork - Civil Construction) [320 h]; PY Concretor [160 h]; General Worker [320 h]; Plant and Equipment Operator (Crawler-mounted Mobile Crane) [160 h]; Rigger/Metal Formwork Erector [320 h] | 102 | m3 | 102 | 102 | 100% | 100% | 823A_AB |
| 823A-ST-SLS-SB-1100 |  | Rebar fixing (Wall & Roof) |  | 4d | 2014-09-16 A | 2014-09-19 A | 823A-ST-SLS-SB-1090 | 100% |  |  |  | Crawler Crane/Mobile Crane [32 h]; Bar Bender & Fixer [256 h]; Plant and Equipment Operator (Crawler-mounted Mobile Crane) [32 h]; Reinforcement [67234 kg] |  |  |  |  | 100% | 100% | 823A_AB |
| 823A-ST-SLS-SB-1110 |  | Erect external formwork (Wall & Roof) |  | 4d | 2014-09-20 A | 2014-09-24 A | 823A-ST-SLS-SB-1100 | 100% |  |  |  | Crawler Crane/Mobile Crane [24 h]; Rigger/Metal Formwork Erector [96 h]; Carpenter (Formwork - Civil Construction) [192 h]; Plant and Equipment Operator (Crawler-mounted Mobile Crane) [24 h] |  |  |  |  | 100% | 100% | 823A_AB |
| 823A-ST-SLS-SB-1120 |  | Clearing and inspection (Wall & Roof) |  | 1d | 2014-09-25 A | 2014-09-25 A | 823A-ST-SLS-SB-1110 | 100% |  |  |  | General Worker [16 h]; Air Compressor [8 h] |  |  |  |  | 100% | 100% | 823A_AB |
| 823A-ST-SLS-SB-1130 |  | Concreting (Wall & Roof) (450m3) |  | 1d | 2014-10-25 A | 2014-10-25 A | 823A-ST-SLS-SB-1120 | 100% | 2014-10-10 | 2014-10-10 |  | Permanent Concrete [444 Cu m]; Crawler Crane/Mobile Crane [8 h]; Concrete Pump [8 h]; PY Concretor [48 h]; General Worker [64 h]; Plant and Equipment Operator (Crawler-mounted Mobile Crane) [16 h]; Rigger/Metal Formwork Erector [32 h]; Concrete 45/20A [444 Cu m] | 450 | m3 | 450 | 450 | 100% | 100% | 823A_AB |
| 823A-ST-SLS-SB-1140 |  | Curing (Wall & Roof) |  | 14d | 2014-10-27 A | 2014-11-07 A | 823A-ST-SLS-SB-1130 | 100% | 2014-10-11 | 2014-10-27 |  | General Worker [112 h] |  |  |  |  | 100% | 100% | 823A_AB |
| 823A-ST-SLS-SB-1150 |  | Removal external formwork (Wall) |  | 2d | 2014-10-30 A | 2014-10-31 A | 823A-ST-SLS-SB-1130 FS+2d | 100% | 2014-10-14 | 2014-10-15 |  | Crawler Crane/Mobile Crane [16 h]; Carpenter (Formwork - Civil Construction) [96 h]; Plant and Equipment Operator (Crawler-mounted Mobile Crane) [16 h] |  |  |  |  | 100% | 100% | 823A_AB |
| 823A-ST-SLS-SB-1160 |  | Removal internal falsework (Wall & Roof) |  | 2d | 2014-11-08 A | 2014-11-10 A | 823A-ST-SLS-SB-1140, 823A-ST-SLS-SB-1150 | 100% |  |  |  | Crawler Crane/Mobile Crane [168 h]; Plant and Equipment Operator (Crawler-mounted Mobile Crane) [168 h]; Carpenter (Formwork - Civil Construction) [1008 h]; Rigger/Metal Formwork Erector [672 h] |  |  |  |  | 100% | 100% | 823A_AB |

| ID | WBS | Activity | Duration | Start | Finish | Predecessors | Complete | Planned start | Planned finish | Resources | % Planned | % Actual | 823A_As-built | Actual Up to Date | UNITS | Total Quantity | Planned Up to Date |
| --- | --- | --- | --- | --- | --- | --- | --- | --- | --- | --- | --- | --- | --- | --- | --- | --- | --- |
|  | 2 | **Northbound (Up Track)** |  | 2015-10-19 | 2016-02-01 |  |  |  |  |  |  |  |  |  |  |  |  |
| 823A-ST-SLS-NB-1010 |  | Placing of waterproof member T-lock & testing (Base Slab) | 2d | 2015-10-19 A | 2015-10-23 A | 823A-ST-TBM-NB-1080 | 100% | 2015-11-11 | 2015-11-12 | Skill Labour [32 h] | 100% | 100% | 823A_AB |  |  |  |  |
| 823A-ST-SLS-NB-1020 |  | Erect external formwork (Base Slab) | 2d | 2015-10-24 A | 2015-10-26 A | 823A-ST-SLS-NB-1010 | 100% | 2015-11-13 | 2015-11-14 | Crawler Crane/Mobile Crane [16 h]; Carpenter (Formwork - Civil Construction) [96 h]; Plant and Equipment Operator (Crawler-mounted Mobile Crane) [16 h] | 100% | 100% | 823A_AB |  |  |  |  |
| 823A-ST-SLS-NB-1030 |  | Rebar fixing (Base Slab) | 4d | 2015-10-27 A | 2015-10-30 A | 823A-ST-SLS-NB-1020 | 100% | 2015-11-16 | 2015-11-19 | Reinforcement [34071 kg]; Crawler Crane/Mobile Crane [32 h]; Plant and Equipment Operator (Crawler-mounted Mobile Crane) [32 h]; Bar Bender & Fixer [256 h] | 100% | 100% | 823A_AB |  |  |  |  |
| 823A-ST-SLS-NB-1040 |  | Erect internal kicker formwork (Base Slab) | 3d | 2015-10-31 A | 2015-11-09 A | 823A-ST-SLS-NB-1030 | 100% | 2015-11-20 | 2015-11-23 | Crawler Crane/Mobile Crane [24 h]; Carpenter (Formwork - Civil Construction) [144 h]; Plant and Equipment Operator (Crawler-mounted Mobile Crane) [24 h] | 100% | 100% | 823A_AB |  |  |  |  |
| 823A-ST-SLS-NB-1050 |  | Clearing and inspection (Base Slab) | 1d | 2015-11-10 A | 2015-11-10 A | 823A-ST-SLS-NB-1040 | 100% |  |  | General Worker [16 h]; Air Compressor [8 h] | 100% | 100% | 823A_AB |  |  |  |  |
| 823A-ST-SLS-NB-1060 |  | Concreting (Base Slab) (225m3) | 1d | 2015-11-11 A | 2015-11-11 A | 823A-ST-SLS-NB-1050 | 100% |  |  | General Worker [64 h]; Rigger/Metal Formwork Erector [32 h]; Crawler Crane/Mobile Crane [8 h]; Concrete Pump [8 h]; Permanent Concrete [225 Cu m]; Concrete 45/20A [225 Cu m]; Plant and Equipment Operator (Crawler-mounted Mobile Crane) [16 h]; PY Concretor [48 h] | 100% | 100% | 823A_AB | 225 | m3 | 225 | 225 |
| 823A-ST-SLS-NB-1170 |  | Side walkway and cable bracket (102m3) | 10d | 2015-11-11 A | 2016-02-01 A | 823A-ST-SLS-NB-1160 | 100% | 2015-12-23 | 2016-01-06 | Permanent Concrete [102 Cu m]; Concrete 20/20C [102 Cu m]; Crawler Crane/Mobile Crane [96 h]; Concrete Pump [96 h]; Carpenter (Formwork - Civil Construction) [384 h]; PY Concretor [192 h]; Plant and Equipment Operator (Crawler-mounted Mobile Crane) [192 h]; General Worker [384 h] | 100% | 100% | 823A_AB | 102 | m3 | 102 | 102 |
| 823A-ST-SLS-NB-1070 |  | Curing (Base Slab) | 7d | 2015-11-12 A | 2015-11-19 A | 823A-ST-SLS-NB-1060 | 100% |  |  | General Worker [112 h] | 100% | 100% | 823A_AB |  |  |  |  |
| 823A-ST-SLS-NB-1080 |  | Removal of formwork (Base Slab) | 1d | 2015-11-13 A | 2015-11-13 A | 823A-ST-SLS-NB-1060 FS+1d | 100% |  |  | Crawler Crane/Mobile Crane [8 h]; Carpenter (Formwork - Civil Construction) [48 h]; Plant and Equipment Operator (Crawler-mounted Mobile Crane) [8 h] | 100% | 100% | 823A_AB |  |  |  |  |
| 823A-ST-SLS-NB-1090 |  | Erect internal formwork & Falsework (Wall & Roof) | 7d | 2015-12-01 A | 2015-12-24 A | 823A-ST-SLS-NB-1080, 823A-ST-SLS-NB-1070 FF | 100% | 2015-12-01 | 2015-12-08 | Crawler Crane/Mobile Crane [56 h]; Carpenter (Formwork - Civil Construction) [448 h]; Plant and Equipment Operator (Crawler-mounted Mobile Crane) [56 h]; Rigger/Metal Formwork Erector [224 h] | 100% | 100% | 823A_AB |  |  |  |  |
| 823A-ST-SLS-NB-1100 |  | Rebar fixing (Wall & Roof) | 4d | 2015-12-28 A | 2016-01-02 A | 823A-ST-SLS-NB-1090 | 100% | 2015-12-09 | 2015-12-12 | Reinforcement [67234 kg]; Crawler Crane/Mobile Crane [32 h]; Bar Bender & Fixer [256 h]; Plant and Equipment Operator (Crawler-mounted Mobile Crane) [32 h] | 100% | 100% | 823A_AB |  |  |  |  |
| 823A-ST-SLS-NB-1110 |  | Erect external formwork (Wall & Roof) | 4d | 2016-01-04 A | 2016-01-07 A | 823A-ST-SLS-NB-1100 | 100% | 2016-01-05 | 2016-01-08 | Plant and Equipment Operator (Crawler-mounted Mobile Crane) [24 h]; Carpenter (Formwork - Civil Construction) [144 h]; Crawler Crane/Mobile Crane [24 h] | 100% | 100% | 823A_AB |  |  |  |  |
| 823A-ST-SLS-NB-1120 |  | Clearing and inspection (Wall & Roof) | 1d | 2016-01-08 A | 2016-01-08 A | 823A-ST-SLS-NB-1110 | 100% | 2016-01-09 | 2016-01-09 | General Worker [16 h]; Air Compressor [8 h] | 100% | 100% | 823A_AB |  |  |  |  |
| 823A-ST-SLS-NB-1130 |  | Concreting (Wall & Roof) (450m3) | 1d | 2016-01-09 A | 2016-01-09 A | 823A-ST-SLS-NB-1120 | 100% | 2016-01-11 | 2016-01-11 | PY Concretor [48 h]; General Worker [32 h]; Rigger/Metal Formwork Erector [16 h]; Crawler Crane/Mobile Crane [8 h]; Concrete Pump [8 h]; Permanent Concrete [444 Cu m]; Concrete 45/20A [444 Cu m]; Plant and Equipment Operator (Crawler-mounted Mobile Crane) [16 h] | 100% | 100% | 823A_AB | 450 | m3 | 450 | 450 |
| 823A-ST-SLS-NB-1140 |  | Curing (Wall & Roof) | 14d | 2016-01-11 A | 2016-01-23 A | 823A-ST-SLS-NB-1130 | 100% | 2016-01-12 | 2016-01-27 | General Worker [56 h] | 100% | 100% | 823A_AB |  |  |  |  |
| 823A-ST-SLS-NB-1150 |  | Removal external formwork (Wall ) | 2d | 2016-01-13 A | 2016-01-14 A | 823A-ST-SLS-NB-1130 FS+2d | 100% | 2016-01-14 | 2016-01-15 | Plant and Equipment Operator (Crawler-mounted Mobile Crane) [16 h]; Carpenter (Formwork - Civil Construction) [64 h]; Crawler Crane/Mobile Crane [16 h] | 100% | 100% | 823A_AB |  |  |  |  |
| 823A-ST-SLS-NB-1160 |  | Removal internal falsework, formwork and reproping (Wall & Roof) | 2d | 2016-01-25 A | 2016-01-26 A | 823A-ST-SLS-NB-1140, 823A-ST-SLS-NB-1150 | 100% | 2016-01-28 | 2016-01-29 | Crawler Crane/Mobile Crane [168 h]; Carpenter (Formwork - Civil Construction) [672 h]; Plant and Equipment Operator (Crawler-mounted Mobile Crane) [168 h] | 100% | 100% | 823A_AB |  |  |  |  |
|  | 4 | **Backfilling** |  | 2016-02-02 | 2016-06-01 |  |  |  |  |  |  |  |  |  |  |  |  |
| 823A-ST-SLS-BF-1010 |  | Spray waterproofing member & testing (Wall & Roof) | 2d | 2016-02-02 A | 2016-02-03 A | 823A-ST-SLS-NB-1170 | 100% |  |  | Skill Labour [64 h] | 100% | 100% | 823A_AB |  |  |  |  |
| 823A-ST-SLS-BF-1020 |  | Protection screening to waterproofing member (Wall & Roof) | 10d | 2016-02-04 A | 2016-02-18 A | 823A-ST-SLS-BF-1010 | 100% |  |  | Crawler Crane/Mobile Crane [80 h]; Plant and Equipment Operator (Crawler-mounted Mobile Crane) [80 h]; Carpenter (Formwork - Civil Construction) [640 h]; PY Concretor [320 h]; General Worker [640 h] | 100% | 100% | 823A_AB |  |  |  |  |
| 823A-ST-SLS-BF-1030 |  | Backfilling to 0.5m below S3 (+11.0mPD) (3486m3) | 18d | 2016-02-19 A | 2016-03-10 A | 823A-ST-SLS-BF-1020 | 100% |  |  | Backfilling Materials [3486 Cu m]; Soil Fill [3486 Cu m]; Crawler Crane/Mobile Crane [144 h]; Backhoe [288 h]; Vibration Roller [144 h]; Plant and Equipment Operator (Crawler-mounted Mobile Crane) [576 h]; General Worker [864 h] | 100% | 100% | 823A_AB | 3486 | m3 | 3486 | 3486 |
| 823A-ST-SLS-BF-1040 |  | Removal strut S3 | 2d | 2016-03-11 A | 2016-03-12 A | 823A-ST-SLS-BF-1030 | 100% |  |  | Crawler Crane/Mobile Crane [8 h]; Plant and Equipment Operator (Crawler-mounted Mobile Crane) [8 h]; Rigger/Metal Formwork Erector [64 h] | 100% | 100% | 823A_AB |  |  |  |  |
| 823A-ST-SLS-BF-1050 |  | Backfilling to 0.5m below S2 (+16.5mPD) (3410m3) | 17d | 2016-03-16 A | 2016-04-12 A | 823A-ST-SLS-BF-1040 FS+2d | 100% | 2016-03-16 | 2016-04-08 | Backfilling Materials [3410 Cu m]; Soil Fill [3410 Cu m]; Backhoe [272 h]; Crawler Crane/Mobile Crane [136 h]; Vibration Roller [136 h]; Plant and Equipment Operator (Crawler-mounted Mobile Crane) [544 h]; General Worker [816 h] | 100% | 100% | 823A_AB | 3410 | m3 | 3410 | 3410 |
| 823A-ST-SLS-BF-1060 |  | Removal strut S2 | 2d | 2016-04-13 A | 2016-04-14 A | 823A-ST-SLS-BF-1050 | 100% |  |  | Crawler Crane/Mobile Crane [8 h]; Plant and Equipment Operator (Crawler-mounted Mobile Crane) [8 h]; Rigger/Metal Formwork Erector [64 h] | 100% | 100% | 823A_AB |  |  |  |  |
| 823A-ST-SLS-BF-1070 |  | Backfilling to 0.5m below S1 (+22.0mPD) (3410m3) | 17d | 2016-04-15 A | 2016-04-30 A | 823A-ST-SLS-BF-1060 | 100% | 2016-04-15 | 2016-05-05 | Soil Fill [3410 Cu m]; Backhoe [272 h]; Crawler Crane/Mobile Crane [136 h]; Vibration Roller [136 h]; Plant and Equipment Operator (Crawler-mounted Mobile Crane) [544 h]; General Worker [816 h]; Backfilling Materials [3410 Cu m] | 100% | 100% | 823A_AB | 3410 | m3 | 3410 | 3410 |
| 823A-ST-SLS-BF-1080 |  | Removal strut S1 | 2d | 2016-05-03 A | 2016-05-04 A | 823A-ST-SLS-BF-1070 | 100% |  |  | Crawler Crane/Mobile Crane [8 h]; Plant and Equipment Operator (Crawler-mounted Mobile Crane) [8 h]; Rigger/Metal Formwork Erector [64 h] | 100% | 100% | 823A_AB |  |  |  |  |
| 823A-ST-SLS-BF-1090 |  | Backfilling to original ground level (approx. +25.0mPD) (1860m3) | 10d | 2016-05-05 A | 2016-06-01 A | 823A-ST-SLS-BF-1080 | 100% | 2016-05-05 | 2016-05-17 | Backfilling Materials [1860 Cu m]; Soil Fill [1860 Cu m]; Vibration Roller [80 h]; Plant and Equipment Operator (Crawler-mounted Mobile Crane) [240 h]; General Worker [480 h]; Backhoe [160 h] | 100% | 100% | 823A_AB | 1860 | m3 | 1860 | 1860 |

| ID | WBS | Activity | Duration | Start | Finish | Predecessors | Complete | Planned start | Planned finish | Calendar | Resources | % Planned | % Actual | 823A_As-built | Actual Up to Date | UNITS | Total Quantity | Planned Up to Date |
| --- | --- | --- | --- | --- | --- | --- | --- | --- | --- | --- | --- | --- | --- | --- | --- | --- | --- | --- |
|  | 2 | **South Cut and Cover Tunnel** |  | 2011-07-12 | 2015-10-13 |  |  |  |  |  |  |  |  |  |  |  |  |  |
|  | 1 | **D-Wall** |  | 2011-07-12 | 2012-05-17 |  |  |  |  |  |  |  |  |  |  |  |  |  |
| 823A-ST-SCC-DW-1010 |  | Pre-drilling and guidewall | 55d | 2011-07-12 A | 2011-09-14 A | 823A-ST-SLS-DW-1010 | 100% |  |  |  | G.I Rig/Drill Rig [880 h]; Backhoe [440 h]; Bar Bender & Fixer [880 h]; Carpenter (Formwork - Civil Construction) [880 h]; Temporary Concrete [52 Cu m]; Concrete 30/20B [52 Cu m]; PY Concretor [880 h]; General Worker [2200 h]; Plant and Equipment Operator (Crawler-mounted Mobile Crane) [1320 h] | 100% | 100% | 823A_AB |  |  |  |  |
| 823A-ST-SCC-DW-1020 |  | D-wall construction (2844m3) | 111d | 2011-09-15 A | 2012-01-31 A | 823A-ST-SCC-DW-1010 | 100% |  |  |  | Concrete 45/20A [2844 Cu m]; Temporary Concrete [2844 Cu m]; D-Wall Grab [888 h]; Hydrofraise Cutter [888 h]; Crawler Crane/Mobile Crane [888 h]; Backhoe [888 h]; Bar Bender & Fixer [10656 h]; General Worker [3552 h]; Plant and Equipment Operator (Crawler-mounted Mobile Crane) [3552 h]; Rigger/Metal Formwork Erector [5328 h]; D-Wall [15 NO] | 100% | 100% | 823A_AB | 3844 | m3 | 3844 | 3844 |
| 823A-ST-SCC-DW-1030 |  | Sonic test, shear pin, toe grout and pumping Test | 86d | 2012-02-01 A | 2012-05-17 A | 823A-ST-SCC-DW-1020 | 100% |  |  |  | Air Compressor [960 h]; Shear Pin [57 NO]; Toe Grout [94 NO]; G.I Rig/Drill Rig [960 h]; Grouting Machine [480 h]; Plant and Equipment Operator (Crawler-mounted Mobile Crane) [1920 h]; General Worker [1920 h]; Crawler Crane/Mobile Crane [480 h] | 100% | 100% | 823A_AB |  |  |  |  |
|  | 2 | **Excavation and Lateral Support** |  | 2012-05-18 | 2013-02-16 |  |  |  |  |  |  |  |  |  |  |  |  |  |
| 823A-ST-SCC-ELS-1010 |  | Excavate up to +22.0mPD (3720m3) | 12d | 2012-05-18 A | 2012-05-31 A | 823A-ST-SCC-DW-1030 | 100% |  |  |  | Excavation Materials [3720 Cu m]; Soil Excavation [3720 Cu m]; Backhoe [120 h]; Plant and Equipment Operator (Crawler-mounted Mobile Crane) [120 h]; General Worker [160 h]; Truck Driver (Heavy Goods Vehicles) [640 h]; Dump Truck [640 h] | 100% | 100% | 823A_AB | 3720 | m3 | 3720 | 3720 |
| 823A-ST-SCC-ELS-1020 |  | Install Strut S1 +22.5mPD | 6d | 2012-06-01 A | 2012-06-07 A | 823A-ST-SCC-ELS-1010 | 100% |  |  |  | Weld Set [192 h]; Plant and Equipment Operator (Crawler-mounted Mobile Crane) [48 h]; Rigger/Metal Formwork Erector [192 h]; General Welder [192 h]; Crawler Crane/Mobile Crane [48 h] | 100% | 100% | 823A_AB |  |  |  |  |
| 823A-ST-SCC-ELS-1030 |  | Excavate up to +16.5mPD (4880m3) | 16d | 2012-06-08 A | 2012-06-27 A | 823A-ST-SCC-ELS-1020 | 100% |  |  |  | Excavation Materials [4880 Cu m]; Soil Excavation [4880 Cu m]; Plant and Equipment Operator (Crawler-mounted Mobile Crane) [320 h]; Truck Driver (Heavy Goods Vehicles) [1440 h]; General Worker [320 h]; Dump Truck [1440 h]; Backhoe [240 h]; Crawler Crane/Mobile Crane [80 h] | 100% | 100% | 823A_AB | 4880 | m3 | 4880 | 4880 |
| 823A-ST-SCC-ELS-1040 |  | Install Strut S2 +17.0mPD | 6d | 2012-06-28 A | 2012-07-05 A | 823A-ST-SCC-ELS-1030 | 100% |  |  |  | Crawler Crane/Mobile Crane [48 h]; Weld Set [192 h]; Plant and Equipment Operator (Crawler-mounted Mobile Crane) [48 h]; Rigger/Metal Formwork Erector [192 h]; General Welder [192 h] | 100% | 100% | 823A_AB |  |  |  |  |
| 823A-ST-SCC-ELS-1050 |  | Excavate up to +11.0mPD (6820m3) | 23d | 2012-07-06 A | 2012-08-01 A | 823A-ST-SCC-ELS-1040 | 100% |  |  |  | Excavation Materials [6820 Cu m]; Soil Excavation [6820 Cu m]; Crawler Crane/Mobile Crane [80 h]; Backhoe [240 h]; Plant and Equipment Operator (Crawler-mounted Mobile Crane) [320 h]; Truck Driver (Heavy Goods Vehicles) [1920 h]; General Worker [320 h]; Dump Truck [1920 h] | 100% | 100% | 823A_AB | 6820 | m3 | 6820 | 6820 |
| 823A-ST-SCC-ELS-1060 |  | Install Strut S3 +11.5mPD | 6d | 2012-08-02 A | 2012-08-08 A | 823A-ST-SCC-ELS-1050 | 100% |  |  |  | Crawler Crane/Mobile Crane [48 h]; Weld Set [192 h]; Plant and Equipment Operator (Crawler-mounted Mobile Crane) [48 h]; Rigger/Metal Formwork Erector [192 h]; General Welder [192 h] | 100% | 100% | 823A_AB |  |  |  |  |
| 823A-ST-SCC-ELS-1070 |  | Excavate up to +7.0mPD (4960m3) | 17d | 2012-08-09 A | 2012-08-28 A | 823A-ST-SCC-ELS-1060 | 100% |  |  |  | Backhoe [192 h]; Plant and Equipment Operator (Crawler-mounted Mobile Crane) [256 h]; Truck Driver (Heavy Goods Vehicles) [1536 h]; General Worker [256 h]; Dump Truck [1536 h]; Excavation Materials [4960 Cu m]; Soil Excavation [4960 Cu m]; Crawler Crane/Mobile Crane [64 h] | 100% | 100% | 823A_AB | 4960 | m3 | 4960 | 4960 |
| 823A-ST-SCC-ELS-1080 |  | Install Strut S4 +7.5mPD | 6d | 2012-08-29 A | 2012-09-04 A | 823A-ST-SCC-ELS-1070 | 100% |  |  |  | Crawler Crane/Mobile Crane [48 h]; Weld Set [192 h]; Plant and Equipment Operator (Crawler-mounted Mobile Crane) [48 h]; Rigger/Metal Formwork Erector [192 h]; General Welder [192 h] | 100% | 100% | 823A_AB |  |  |  |  |
| 823A-ST-SCC-ELS-1090 |  | Excavate up to +3.5mPD (4340m3) | 14d | 2012-09-05 A | 2012-09-20 A | 823A-ST-SCC-ELS-1080 | 100% |  |  |  | Excavation Materials [4340 Cu m]; Soil Excavation [4340 Cu m]; Backhoe [168 h]; Crawler Crane/Mobile Crane [56 h]; Plant and Equipment Operator (Crawler-mounted Mobile Crane) [224 h]; Truck Driver (Heavy Goods Vehicles) [1344 h]; General Worker [224 h]; Dump Truck [1344 h] | 100% | 100% | 823A_AB | 4340 | m3 | 4340 | 4340 |
| 823A-ST-SCC-ELS-1100 |  | Install Strut S5 +4.0mPD | 6d | 2012-09-21 A | 2012-09-27 A | 823A-ST-SCC-ELS-1090 | 100% |  |  |  | Crawler Crane/Mobile Crane [48 h]; Weld Set [192 h]; Plant and Equipment Operator (Crawler-mounted Mobile Crane) [48 h]; Rigger/Metal Formwork Erector [192 h]; General Welder [192 h] | 100% | 100% | 823A_AB |  |  |  |  |
| 823A-ST-SCC-ELS-1110 |  | Excavate up to formation (4960m3) | 12d | 2012-09-28 A | 2012-10-13 A | 823A-ST-SCC-ELS-1100 | 100% |  |  |  | Plant and Equipment Operator (Crawler-mounted Mobile Crane) [56 h]; Truck Driver (Heavy Goods Vehicles) [1456 h]; General Worker [224 h]; Dump Truck [1456 h]; Excavation Materials [4960 Cu m]; Soil Excavation [4960 Cu m]; Crawler Crane/Mobile Crane [56 h]; Backhoe [168 h] | 100% | 100% | 823A_AB | 4960 | m3 | 4960 | 4960 |
| 823A-ST-SCC-ELS-1120 |  | Construct temp. 500mm thick plain concrete base slab at Bay 5 & 6 | 3d | 2012-10-15 A | 2012-10-17 A | 823A-ST-SCC-ELS-1110 | 100% |  |  |  |  | 100% | 100% | 823A_AB |  |  |  |  |
| 823A-ST-SCC-ELS-1130 |  | Excavation to formation and place blinding Bay 4a | 53d | 2012-10-18 A | 2012-12-18 A | 823A-ST-SCC-ELS-1120 | 100% | 2012-10-18 | 2012-12-19 |  |  | 100% | 100% | 823A_AB |  |  |  |  |
| 823A-ST-SCC-ELS-1140 |  | Excavation to formation and place blinding Bay 4b | 18d | 2012-12-27 A | 2013-01-12 A | 823A-ST-SCC-ELS-1130 | 100% | 2013-06-21 | 2013-07-12 | 823-6dPH |  | 100% | 100% | 823A_AB |  |  |  |  |
| 823A-ST-SCC-ELS-1150 |  | Excavation to formation and place blinding Bay3 | 9d | 2013-01-09 A | 2013-01-24 A | 823A-ST-SCC-ELS-1140 | 100% | 2013-07-13 | 2013-07-23 | 823-6dPH |  | 100% | 100% | 823A_AB |  |  |  |  |
| 823A-ST-SCC-ELS-1160 |  | Excavation to formation and place blinding Bay2 to Bay1 | 15d | 2013-02-07 A | 2013-02-16 A | 823A-ST-SCC-ELS-1150 | 100% | 2013-07-24 | 2013-08-09 | 823-6dPH |  | 100% | 100% | 823A_AB |  |  |  |  |
|  | 3 | **Structure** |  | 2012-11-12 | 2015-10-13 |  |  |  |  |  |  |  |  |  |  |  |  |  |
|  | 1 | **Bay 6a** |  | 2012-11-12 | 2015-10-13 |  |  |  |  |  |  |  |  |  |  |  |  |  |
|  | 1 | **Southbound** |  | 2012-11-12 | 2014-12-05 |  |  |  |  |  |  |  |  |  |  |  |  |  |
| 823A-ST-SCCT-6a-1010 |  | Placing of waterproof member T-lock & testing for base slab | 1d | 2012-11-12 A | 2012-11-12 A | 823A-ST-SLS-ELS-1150 | 100% |  |  |  | Skill Labour [64 h] | 100% | 100% | 823A_AB |  |  |  |  |
| 823A-ST-SCCT-6a-1020 |  | Erect external formwork for base slab | 2d | 2012-11-13 A | 2012-11-14 A | 823A-ST-SCCT-6a-1010 | 100% |  |  |  | Crawler Crane/Mobile Crane [8 h]; Carpenter (Formwork - Civil Construction) [96 h]; Plant and Equipment Operator (Crawler-mounted Mobile Crane) [8 h] | 100% | 100% | 823A_AB |  |  |  |  |
| 823A-ST-SCCT-6a-1030 |  | Rebar fixing for base slab | 2d | 2012-11-15 A | 2012-11-16 A | 823A-ST-SCCT-6a-1020 | 100% |  |  |  | Reinforcement [68142 kg]; Crawler Crane/Mobile Crane [16 h]; Plant and Equipment Operator (Crawler-mounted Mobile Crane) [16 h]; Bar Bender & Fixer [256 h] | 100% | 100% | 823A_AB |  |  |  |  |
| 823A-ST-SCCT-6a-1040 |  | Erect internal kicker formwork for base slab | 1d | 2012-11-17 A | 2012-11-17 A | 823A-ST-SCCT-6a-1030 | 100% |  |  |  | Crawler Crane/Mobile Crane [16 h]; Plant and Equipment Operator (Crawler-mounted Mobile Crane) [96 h]; Carpenter (Formwork - Civil Construction) [192 h] | 100% | 100% | 823A_AB |  |  |  |  |
| 823A-ST-SCCT-6a-1050 |  | Concreting for base slab (363m3) | 1d | 2012-11-19 A | 2012-11-19 A | 823A-ST-SCCT-6a-1040 | 100% |  |  |  | Permanent Concrete [363 Cu m]; Concrete 45/20A [363 Cu m]; Crawler Crane/Mobile Crane [8 h]; Concrete Pump [8 h]; PY Concretor [64 h]; General Worker [96 h]; Plant and Equipment Operator (Crawler-mounted Mobile Crane) [16 h]; Rigger/Metal Formwork Erector [32 h] | 100% | 100% | 823A_AB | 363 | m3 | 363 | 363 |
| 823A-ST-SCCT-6a-1060 |  | Curing for base slab | 7d | 2012-11-20 A | 2012-11-26 A | 823A-ST-SCCT-6a-1050 | 100% |  |  | 823-7d | General Worker [224 h] | 100% | 100% | 823A_AB |  |  |  |  |
| 823A-ST-SCCT-6a-1070 |  | Preparation of construction joint for base slab | 1d | 2012-11-20 A | 2012-11-20 A | 823A-ST-SCCT-6a-1050 | 100% |  |  | 823-6dPH |  | 100% | 100% | 823A_AB |  |  |  |  |
| 823A-ST-SCCT-6a-1080 |  | Removal of formwork for base slab | 1d | 2012-11-21 A | 2012-11-21 A | 823A-ST-SCCT-6a-1070 | 100% |  |  |  | Crawler Crane/Mobile Crane [8 h]; Carpenter (Formwork - Civil Construction) [64 h]; Plant and Equipment Operator (Crawler-mounted Mobile Crane) [8 h] | 100% | 100% | 823A_AB |  |  |  |  |
| 823A-ST-SCCT-6a-1090 |  | Erect internal formwork & Falsework for wall and roof | 5d | 2012-12-21 A | 2012-12-27 A | 823A-ST-SCCT-6a-2150 | 100% | 2013-06-21 | 2013-06-26 |  | Crawler Crane/Mobile Crane [48 h]; Plant and Equipment Operator (Crawler-mounted Mobile Crane) [48 h]; Carpenter (Formwork - Civil Construction) [384 h]; Rigger/Metal Formwork Erector [192 h] | 100% | 100% | 823A_AB |  |  |  |  |
| 823A-ST-SCCT-6a-1100 |  | Rebar fixing for wall and roof | 5d | 2012-12-28 A | 2013-01-03 A | 823A-ST-SCCT-6a-1090 | 100% | 2013-06-27 | 2013-07-03 |  | Reinforcement [67234 kg]; Crawler Crane/Mobile Crane [32 h]; Bar Bender & Fixer [512 h]; Plant and Equipment Operator (Crawler-mounted Mobile Crane) [32 h] | 100% | 100% | 823A_AB |  |  |  |  |
| 823A-ST-SCCT-6a-1110 |  | Erect external formwork for wall and roof | 3d | 2013-01-04 A | 2013-01-07 A | 823A-ST-SCCT-6a-1100 | 100% | 2013-07-04 | 2013-07-06 |  | Crawler Crane/Mobile Crane [16 h]; Plant and Equipment Operator (Crawler-mounted Mobile Crane) [16 h]; Carpenter (Formwork - Civil Construction) [192 h] | 100% | 100% | 823A_AB |  |  |  |  |
| 823A-ST-SCCT-6a-1120 |  | Concreting for wall and roof (450m3) | 1d | 2013-01-08 A | 2013-01-08 A | 823A-ST-SCCT-6a-1110 | 100% | 2013-07-08 | 2013-07-08 |  | Permanent Concrete [444 Cu m]; Concrete 45/20A [444 Cu m]; Crawler Crane/Mobile Crane [8 h]; Concrete Pump [8 h]; Plant and Equipment Operator (Crawler-mounted Mobile Crane) [16 h]; PY Concretor [64 h]; General Worker [96 h]; Rigger/Metal Formwork Erector [32 h] | 100% | 100% | 823A_AB | 450 | m3 | 450 | 450 |
| 823A-ST-SCCT-6a-1130 |  | Curing for wall and roof | 10d | 2013-01-09 A | 2013-01-19 A | 823A-ST-SCCT-6a-1120 | 100% | 2013-07-09 | 2013-07-18 | 823-7d | General Worker [224 h] | 100% | 100% | 823A_AB |  |  |  |  |
| 823A-ST-SCCT-6a-1140 |  | Preparation of construction joint for wall and roof | 1d | 2013-01-21 A | 2013-01-21 A | 823A-ST-SCCT-6a-1120 | 100% | 2013-07-09 | 2013-07-09 | 823-6dPH |  | 100% | 100% | 823A_AB |  |  |  |  |
| 823A-ST-SCCT-6a-1150 |  | Removal external and internal formwork for wall | 2d | 2013-01-22 A | 2013-01-23 A | 823A-ST-SCCT-6a-1140 | 100% | 2013-07-10 | 2013-07-11 |  | Crawler Crane/Mobile Crane [16 h]; Plant and Equipment Operator (Crawler-mounted Mobile Crane) [16 h]; Carpenter (Formwork - Civil Construction) [128 h] | 100% | 100% | 823A_AB |  |  |  |  |
| 823A-ST-SCCT-6a-1160 |  | Removal internal falsework and formwork for roof | 1d | 2013-01-24 A | 2013-01-25 A | 823A-ST-SCCT-6a-1150, 823A-ST-SCCT-6a-1130 | 100% | 2013-07-19 | 2013-07-19 |  | Crawler Crane/Mobile Crane [32 h]; Carpenter (Formwork - Civil Construction) [256 h]; Plant and Equipment Operator (Crawler-mounted Mobile Crane) [32 h]; Rigger/Metal Formwork Erector [128 h] | 100% | 100% | 823A_AB |  |  |  |  |
| 823A-ST-SCCT-6a-1170 |  | Side walkway and cable bracket (204m3) | 5d | 2014-12-01 A | 2014-12-05 A | 823A-ST-SCCT-6b-1170, 823A-ST-SCCT-6a-1160 | 100% | 2015-01-08 | 2015-01-13 |  | General Worker [320 h]; Plant and Equipment Operator (Crawler-mounted Mobile Crane) [80 h]; Rigger/Metal Formwork Erector [160 h]; Permanent Concrete [204 Cu m]; Concrete 20/20C [204 Cu m]; Crawler Crane/Mobile Crane [40 h]; Concrete Pump [40 h]; Carpenter (Formwork - Civil Construction) [320 h]; PY Concretor [160 h] | 100% | 100% | 823A_AB | 204 | m3 | 204 | 204 |

| ID | WBS | Activity | Duration | Start | Finish | Predecessors | Complete | Planned start | Planned finish | Calendar | Resources | % Planned | % Actual | 823A_As-built | Actual Up to Date | UNITS | Total Quantity | Planned Up to Date |
| --- | --- | --- | --- | --- | --- | --- | --- | --- | --- | --- | --- | --- | --- | --- | --- | --- | --- | --- |
|  | 2 | **Northbound** |  | 2012-11-13 | 2015-10-13 |  |  |  |  |  |  |  |  |  |  |  |  |  |
| 823A-ST-SCCT-6a-2010 |  | Placing of waterproof member T-lock & testing for base slab | 1d | 2012-11-13 A | 2012-11-13 A | 823A-ST-SCCT-6a-1010 | 100% |  |  |  | Skill Labour [64 h] | 100% | 100% | 823A_AB |  |  |  |  |
| 823A-ST-SCCT-6a-2020 |  | Erect external formwork for base slab | 3d | 2012-11-14 A | 2012-11-16 A | 823A-ST-SCCT-6a-2010 | 100% |  |  |  | Crawler Crane/Mobile Crane [8 h]; Carpenter (Formwork - Civil Construction) [96 h]; Plant and Equipment Operator (Crawler-mounted Mobile Crane) [8 h] | 100% | 100% | 823A_AB |  |  |  |  |
| 823A-ST-SCCT-6a-2030 |  | Rebar fixing for base slab | 3d | 2012-11-19 A | 2012-11-21 A | 823A-ST-SCCT-6a-2020, 823A-ST-SCCT-6a-1040 | 100% |  |  |  | Reinforcement [68142 kg]; Crawler Crane/Mobile Crane [16 h]; Plant and Equipment Operator (Crawler-mounted Mobile Crane) [16 h]; Bar Bender & Fixer [256 h] | 100% | 100% | 823A_AB |  |  |  |  |
| 823A-ST-SCCT-6a-2040 |  | Erect internal kicker formwork for base slab | 1d | 2012-11-22 A | 2012-11-22 A | 823A-ST-SCCT-6a-2030 | 100% |  |  |  | Crawler Crane/Mobile Crane [16 h]; Plant and Equipment Operator (Crawler-mounted Mobile Crane) [96 h]; Carpenter (Formwork - Civil Construction) [192 h] | 100% | 100% | 823A_AB |  |  |  |  |
| 823A-ST-SCCT-6a-2050 |  | Concreting for base slab (363m3) | 1d | 2012-11-23 A | 2012-11-23 A | 823A-ST-SCCT-6a-2040 | 100% |  |  |  | Permanent Concrete [450 Cu m]; Concrete 45/20A [450 Cu m]; Crawler Crane/Mobile Crane [8 h]; Concrete Pump [8 h]; PY Concretor [64 h]; General Worker [96 h]; Plant and Equipment Operator (Crawler-mounted Mobile Crane) [16 h]; Rigger/Metal Formwork Erector [32 h] | 100% | 100% | 823A_AB | 363 | m3 | 363 | 363 |
| 823A-ST-SCCT-6a-2060 |  | Curing for base slab | 7d | 2012-11-23 A | 2012-11-29 A | 823A-ST-SCCT-6a-2050, 823A-ST-SCCT-6a-1060 FF | 100% |  |  | 823-7d | General Worker [224 h] | 100% | 100% | 823A_AB |  |  |  |  |
| 823A-ST-SCCT-6a-2070 |  | Preparation of construction joint for base slab | 1d | 2012-11-24 A | 2012-11-24 A | 823A-ST-SCCT-6a-2050 | 100% |  |  | 823-6dPH |  | 100% | 100% | 823A_AB |  |  |  |  |
| 823A-ST-SCCT-6a-2080 |  | Removal of formwork for base slab | 1d | 2012-11-24 A | 2012-11-24 A | 823A-ST-SCCT-6a-2070 SS | 100% |  |  |  | Crawler Crane/Mobile Crane [8 h]; Carpenter (Formwork - Civil Construction) [64 h]; Plant and Equipment Operator (Crawler-mounted Mobile Crane) [8 h] | 100% | 100% | 823A_AB |  |  |  |  |
| 823A-ST-SCCT-6a-2090 |  | Rebar fixing for central slab | 1d | 2012-11-24 A | 2012-11-24 A | 823A-ST-SCCT-6a-1080, 823A-ST-SCCT-6a-2080 SS | 100% |  |  |  | Plant and Equipment Operator (Crawler-mounted Mobile Crane) [16 h]; Bar Bender & Fixer [256 h]; Reinforcement [68142 kg]; Crawler Crane/Mobile Crane [16 h] | 100% | 100% | 823A_AB |  |  |  |  |
| 823A-ST-SCCT-6a-2100 |  | Erect external formwork for central slab | 1d | 2012-11-26 A | 2012-11-26 A | 823A-ST-SCCT-6a-2090 | 100% |  |  |  | Carpenter (Formwork - Civil Construction) [96 h]; Plant and Equipment Operator (Crawler-mounted Mobile Crane) [8 h]; Crawler Crane/Mobile Crane [8 h] | 100% | 100% | 823A_AB |  |  |  |  |
| 823A-ST-SCCT-6a-2110 |  | Concreting for central slab (450m3) | 1d | 2012-11-26 A | 2012-11-26 A | 823A-ST-SCCT-6a-2100 SS | 100% |  |  |  | Permanent Concrete [450 Cu m]; Concrete 45/20A [450 Cu m]; Crawler Crane/Mobile Crane [8 h]; Concrete Pump [8 h]; PY Concretor [64 h]; General Worker [96 h]; Plant and Equipment Operator (Crawler-mounted Mobile Crane) [16 h]; Rigger/Metal Formwork Erector [32 h] | 100% | 100% | 823A_AB | 450 | m3 | 450 | 450 |
| 823A-ST-SCCT-6a-2120 |  | Curing for central slab | 7d | 2012-11-27 A | 2012-12-03 A | 823A-ST-SCCT-6a-2110 | 100% |  |  | 823-7d | General Worker [224 h] | 100% | 100% | 823A_AB |  |  |  |  |
| 823A-ST-SCCT-6a-2130 |  | Preparation of construction joint for central slab | 1d | 2012-11-27 A | 2012-11-27 A | 823A-ST-SCCT-6a-2110 | 100% |  |  | 823-6dPH |  | 100% | 100% | 823A_AB |  |  |  |  |
| 823A-ST-SCCT-6a-2140 |  | Removal of formwork for central slab | 1d | 2012-11-28 A | 2012-11-28 A | 823A-ST-SCCT-6a-2130 | 100% |  |  |  | Crawler Crane/Mobile Crane [8 h]; Carpenter (Formwork - Civil Construction) [64 h]; Plant and Equipment Operator (Crawler-mounted Mobile Crane) [8 h] | 100% | 100% | 823A_AB |  |  |  |  |
| 823A-ST-SCCT-6a-2150 |  | Removal strut S5 and S4 | 18d | 2012-11-29 A | 2012-12-10 A | 823A-ST-SCCT-6a-2120 FF, 823A-ST-SCCT-6a-2140, 823A-ST-SCCT-6a-2060 FF | 100% | 2012-11-29 | 2012-12-19 |  | Crawler Crane/Mobile Crane [16 h]; Plant and Equipment Operator (Crawler-mounted Mobile Crane) [16 h]; Rigger/Metal Formwork Erector [128 h] | 100% | 100% | 823A_AB |  |  |  |  |
| 823A-ST-SCCT-6a-2160 |  | Erect internal formwork & Falsework for wall and roof | 4d | 2012-12-20 A | 2012-12-24 A | 823A-ST-SCCT-6a-2120, 823A-ST-SCCT-6a-2150 | 100% | 2013-06-21 | 2013-06-25 |  | Crawler Crane/Mobile Crane [48 h]; Plant and Equipment Operator (Crawler-mounted Mobile Crane) [48 h]; Carpenter (Formwork - Civil Construction) [384 h]; Rigger/Metal Formwork Erector [192 h] | 100% | 100% | 823A_AB |  |  |  |  |
| 823A-ST-SCCT-6a-2170 |  | Rebar fixing for wall and roof | 4d | 2012-12-27 A | 2012-12-31 A | 823A-ST-SCCT-6a-2160 | 100% | 2013-06-26 | 2013-06-29 |  | Reinforcement [67234 kg]; Crawler Crane/Mobile Crane [32 h]; Bar Bender & Fixer [512 h]; Plant and Equipment Operator (Crawler-mounted Mobile Crane) [32 h] | 100% | 100% | 823A_AB |  |  |  |  |
| 823A-ST-SCCT-6a-2180 |  | Erect external formwork for wall and roof | 3d | 2013-01-02 A | 2013-01-04 A | 823A-ST-SCCT-6a-2170 | 100% | 2013-07-02 | 2013-07-04 |  | Crawler Crane/Mobile Crane [16 h]; Plant and Equipment Operator (Crawler-mounted Mobile Crane) [16 h]; Carpenter (Formwork - Civil Construction) [192 h] | 100% | 100% | 823A_AB |  |  |  |  |
| 823A-ST-SCCT-6a-2190 |  | Concreting for wall and roof (450m3) | 1d | 2013-01-05 A | 2013-01-05 A | 823A-ST-SCCT-6a-2180 | 100% | 2013-07-05 | 2013-07-05 |  | Permanent Concrete [444 Cu m]; Concrete 45/20A [444 Cu m]; Crawler Crane/Mobile Crane [8 h]; Concrete Pump [8 h]; Plant and Equipment Operator (Crawler-mounted Mobile Crane) [16 h]; PY Concretor [64 h]; General Worker [96 h]; Rigger/Metal Formwork Erector [32 h] | 100% | 100% | 823A_AB | 450 | m3 | 450 | 450 |
| 823A-ST-SCCT-6a-2200 |  | Curing for wall and roof | 10d | 2013-01-07 A | 2013-01-16 A | 823A-ST-SCCT-6a-2190 | 100% | 2013-07-06 | 2013-07-15 | 823-7d | General Worker [224 h] | 100% | 100% | 823A_AB |  |  |  |  |
| 823A-ST-SCCT-6a-2210 |  | Preparation of construction joint for wall and roof | 1d | 2013-01-17 A | 2013-01-17 A | 823A-ST-SCCT-6a-2190 | 100% | 2013-07-06 | 2013-07-06 | 823-6dPH |  | 100% | 100% | 823A_AB |  |  |  |  |
| 823A-ST-SCCT-6a-2220 |  | Removal external and internal formwork for wall | 2d | 2013-01-18 A | 2013-01-19 A | 823A-ST-SCCT-6a-2210 | 100% | 2013-07-08 | 2013-07-09 |  | Crawler Crane/Mobile Crane [16 h]; Plant and Equipment Operator (Crawler-mounted Mobile Crane) [16 h]; Carpenter (Formwork - Civil Construction) [128 h] | 100% | 100% | 823A_AB |  |  |  |  |
| 823A-ST-SCCT-6a-2230 |  | Removal internal falsework and formwork for roof | 1d | 2013-01-21 A | 2013-01-21 A | 823A-ST-SCCT-6a-2220, 823A-ST-SCCT-6a-2200 | 100% | 2013-07-16 | 2013-07-16 |  | Crawler Crane/Mobile Crane [32 h]; Carpenter (Formwork - Civil Construction) [256 h]; Plant and Equipment Operator (Crawler-mounted Mobile Crane) [32 h]; Rigger/Metal Formwork Erector [128 h] | 100% | 100% | 823A_AB |  |  |  |  |
| 823A-ST-SCCT-6a-2240 |  | Side walkway and cable bracket (204m3) | 5d | 2015-10-08 A | 2015-10-13 A | 823A-ST-SCCT-6a-2230, 823A-ST-SCCT-6b-2240 | 100% | 2015-11-19 | 2015-11-24 |  | Permanent Concrete [204 Cu m]; Concrete 20/20C [204 Cu m]; Crawler Crane/Mobile Crane [40 h]; Concrete Pump [40 h]; Carpenter (Formwork - Civil Construction) [320 h]; PY Concretor [160 h]; General Worker [320 h]; Plant and Equipment Operator (Crawler-mounted Mobile Crane) [80 h]; Rigger/Metal Formwork Erector [160 h] | 100% | 100% | 823A_AB | 204 | m3 | 204 | 204 |

| ID | WBS | Activity | Duration | Start | Finish | Predecessors | Complete | Planned start | Planned finish | Calendar | Resources | % Planned | % Actual | 823A_As-built | Actual Up to Date | UNITS | Total Quantity | Planned Up to Date |
| --- | --- | --- | --- | --- | --- | --- | --- | --- | --- | --- | --- | --- | --- | --- | --- | --- | --- | --- |
|  | 2 | **Bay 6b** |  | 2012-11-27 | 2015-10-10 |  |  |  |  |  |  |  |  |  |  |  |  |  |
|  | 1 | **Southbound** |  | 2012-11-27 | 2014-12-05 |  |  |  |  |  |  |  |  |  |  |  |  |  |
| 823A-ST-SCCT-6b-1010 |  | Placing of waterproof member T-lock & testing for base slab | 1d | 2012-11-27 A | 2012-11-27 A | 823A-ST-SCCT-6a-2080 | 100% |  |  |  | Skill Labour [64 h] | 100% | 100% | 823A_AB |  |  |  |  |
| 823A-ST-SCCT-6b-1020 |  | Erect external formwork for base slab | 4d | 2012-11-28 A | 2012-12-01 A | 823A-ST-SCCT-6b-1010 | 100% |  |  |  | Carpenter (Formwork - Civil Construction) [96 h]; Plant and Equipment Operator (Crawler-mounted Mobile Crane) [8 h]; Crawler Crane/Mobile Crane [8 h] | 100% | 100% | 823A_AB |  |  |  |  |
| 823A-ST-SCCT-6b-1030 |  | Rebar fixing for base slab | 3d | 2012-12-03 A | 2012-12-05 A | 823A-ST-SCCT-6b-1020 | 100% | 2013-06-03 | 2013-06-05 |  | Reinforcement [68142 kg]; Crawler Crane/Mobile Crane [16 h]; Plant and Equipment Operator (Crawler-mounted Mobile Crane) [16 h]; Bar Bender & Fixer [256 h] | 100% | 100% | 823A_AB |  |  |  |  |
| 823A-ST-SCCT-6b-1040 |  | Erect internal kicker formwork for base slab | 1d | 2012-12-06 A | 2012-12-06 A | 823A-ST-SCCT-6b-1030 | 100% | 2013-06-06 | 2013-06-06 |  | Crawler Crane/Mobile Crane [16 h]; Plant and Equipment Operator (Crawler-mounted Mobile Crane) [96 h]; Carpenter (Formwork - Civil Construction) [192 h] | 100% | 100% | 823A_AB |  |  |  |  |
| 823A-ST-SCCT-6b-1050 |  | Concreting for base slab (363m3) | 1d | 2012-12-07 A | 2012-12-07 A | 823A-ST-SCCT-6b-1040 | 100% | 2013-06-07 | 2013-06-07 |  | Permanent Concrete [363 Cu m]; Concrete 45/20A [363 Cu m]; Crawler Crane/Mobile Crane [8 h]; Concrete Pump [8 h]; PY Concretor [64 h]; General Worker [96 h]; Plant and Equipment Operator (Crawler-mounted Mobile Crane) [16 h]; Rigger/Metal Formwork Erector [32 h] | 100% | 100% | 823A_AB | 363 | m3 | 363 | 363 |
| 823A-ST-SCCT-6b-1060 |  | Curing for base slab | 7d | 2012-12-08 A | 2012-12-15 A | 823A-ST-SCCT-6b-1050 | 100% | 2013-06-08 | 2013-06-14 | 823-7d | General Worker [224 h] | 100% | 100% | 823A_AB |  |  |  |  |
| 823A-ST-SCCT-6b-1070 |  | Preparation of construction joint for base slab | 1d | 2012-12-17 A | 2012-12-17 A | 823A-ST-SCCT-6b-1050 | 100% | 2013-06-08 | 2013-06-08 | 823-6dPH |  | 100% | 100% | 823A_AB |  |  |  |  |
| 823A-ST-SCCT-6b-1080 |  | Removal of formwork for base slab | 1d | 2012-12-18 A | 2012-12-18 A | 823A-ST-SCCT-6b-1070 | 100% | 2013-06-10 | 2013-06-10 |  | Crawler Crane/Mobile Crane [8 h]; Carpenter (Formwork - Civil Construction) [64 h]; Plant and Equipment Operator (Crawler-mounted Mobile Crane) [8 h] | 100% | 100% | 823A_AB |  |  |  |  |
| 823A-ST-SCCT-6b-1090 |  | Erect internal formwork & Falsework for wall and roof | 6d | 2012-12-29 A | 2013-01-03 A | 823A-ST-SCCT-6b-2150, 823A-ST-SCCT-6b-1060 | 100% | 2013-06-26 | 2013-07-03 |  | Rigger/Metal Formwork Erector [192 h]; Crawler Crane/Mobile Crane [48 h]; Plant and Equipment Operator (Crawler-mounted Mobile Crane) [48 h]; Carpenter (Formwork - Civil Construction) [384 h] | 100% | 100% | 823A_AB |  |  |  |  |
| 823A-ST-SCCT-6b-1100 |  | Rebar fixing for wall and roof | 5d | 2013-01-04 A | 2013-01-09 A | 823A-ST-SCCT-6b-1090 | 100% | 2013-07-04 | 2013-07-09 |  | Reinforcement [67234 kg]; Crawler Crane/Mobile Crane [32 h]; Bar Bender & Fixer [512 h]; Plant and Equipment Operator (Crawler-mounted Mobile Crane) [32 h] | 100% | 100% | 823A_AB |  |  |  |  |
| 823A-ST-SCCT-6b-1110 |  | Erect external formwork for wall and roof | 4d | 2013-01-10 A | 2013-01-14 A | 823A-ST-SCCT-6b-1100 | 100% | 2013-07-10 | 2013-07-13 |  | Crawler Crane/Mobile Crane [16 h]; Plant and Equipment Operator (Crawler-mounted Mobile Crane) [16 h]; Carpenter (Formwork - Civil Construction) [192 h] | 100% | 100% | 823A_AB |  |  |  |  |
| 823A-ST-SCCT-6b-1120 |  | Concreting for wall and roof (450m3) | 1d | 2013-01-15 A | 2013-01-15 A | 823A-ST-SCCT-6b-1110 | 100% | 2013-07-15 | 2013-07-15 |  | Permanent Concrete [444 Cu m]; Concrete 45/20A [444 Cu m]; Crawler Crane/Mobile Crane [8 h]; Concrete Pump [8 h]; Plant and Equipment Operator (Crawler-mounted Mobile Crane) [16 h]; PY Concretor [64 h]; General Worker [96 h]; Rigger/Metal Formwork Erector [32 h] | 100% | 100% | 823A_AB | 450 | m3 | 450 | 450 |
| 823A-ST-SCCT-6b-1130 |  | Curing for wall and roof | 10d | 2013-01-16 A | 2013-01-28 A | 823A-ST-SCCT-6b-1120 | 100% | 2013-07-16 | 2013-07-25 | 823-7d | General Worker [224 h] | 100% | 100% | 823A_AB |  |  |  |  |
| 823A-ST-SCCT-6b-1140 |  | Preparation of construction joint for wall and roof | 1d | 2013-01-29 A | 2013-01-29 A | 823A-ST-SCCT-6b-1120 | 100% | 2013-07-16 | 2013-07-16 | 823-6dPH |  | 100% | 100% | 823A_AB |  |  |  |  |
| 823A-ST-SCCT-6b-1150 |  | Removal external and internal formwork for wall | 2d | 2013-01-30 A | 2013-01-31 A | 823A-ST-SCCT-6b-1140 | 100% | 2013-07-17 | 2013-07-18 |  | Crawler Crane/Mobile Crane [16 h]; Plant and Equipment Operator (Crawler-mounted Mobile Crane) [16 h]; Carpenter (Formwork - Civil Construction) [128 h] | 100% | 100% | 823A_AB |  |  |  |  |
| 823A-ST-SCCT-6b-1160 |  | Removal internal falsework and formwork for roof | 1d | 2013-02-01 A | 2013-02-01 A | 823A-ST-SCCT-6b-1130, 823A-ST-SCCT-6a-1160, 823A-ST-SCCT-6b-1150 | 100% | 2013-07-26 | 2013-07-26 |  | Crawler Crane/Mobile Crane [32 h]; Carpenter (Formwork - Civil Construction) [256 h]; Plant and Equipment Operator (Crawler-mounted Mobile Crane) [32 h]; Rigger/Metal Formwork Erector [128 h] | 100% | 100% | 823A_AB |  |  |  |  |
| 823A-ST-SCCT-6b-1170 |  | Side walkway and cable bracket | 5d | 2014-12-01 A | 2014-12-05 A | 823A-ST-SCCT-5a-2090, 823A-ST-SCCT-6b-1160 | 100% | 2015-01-02 | 2015-01-07 |  | Permanent Concrete [204 Cu m]; Concrete 20/20C [204 Cu m]; Crawler Crane/Mobile Crane [40 h]; Concrete Pump [40 h]; Carpenter (Formwork - Civil Construction) [320 h]; PY Concretor [160 h]; General Worker [320 h]; Plant and Equipment Operator (Crawler-mounted Mobile Crane) [80 h]; Rigger/Metal Formwork Erector [160 h] | 100% | 100% | 823A_AB | 204 | m3 | 204 | 204 |
|  | 2 | **Northbound** |  | 2012-11-27 | 2015-10-07 |  |  |  |  |  |  |  |  |  |  |  |  |  |
| 823A-ST-SCCT-6b-2010 |  | Placing of waterproof member T-lock & testing for base slab | 1d | 2012-11-27 A | 2012-11-27 A | 823A-ST-SCCT-6b-1010 SS | 100% |  |  |  | Skill Labour [64 h] | 100% | 100% | 823A_AB |  |  |  |  |
| 823A-ST-SCCT-6b-2020 |  | Erect external formwork for base slab | 4d | 2012-11-28 A | 2012-12-01 A | 823A-ST-SCCT-6b-2010 | 100% |  |  |  | Crawler Crane/Mobile Crane [8 h]; Carpenter (Formwork - Civil Construction) [96 h]; Plant and Equipment Operator (Crawler-mounted Mobile Crane) [8 h] | 100% | 100% | 823A_AB |  |  |  |  |
| 823A-ST-SCCT-6b-2030 |  | Rebar fixing for base slab | 3d | 2012-12-03 A | 2012-12-05 A | 823A-ST-SCCT-6b-2020 | 100% | 2013-06-03 | 2013-06-05 |  | Reinforcement [68142 kg]; Crawler Crane/Mobile Crane [16 h]; Plant and Equipment Operator (Crawler-mounted Mobile Crane) [16 h]; Bar Bender & Fixer [256 h] | 100% | 100% | 823A_AB |  |  |  |  |
| 823A-ST-SCCT-6b-2040 |  | Erect internal kicker formwork for base slab | 1d | 2012-12-06 A | 2012-12-06 A | 823A-ST-SCCT-6b-2030 | 100% | 2013-06-06 | 2013-06-06 |  | Crawler Crane/Mobile Crane [16 h]; Plant and Equipment Operator (Crawler-mounted Mobile Crane) [96 h]; Carpenter (Formwork - Civil Construction) [192 h] | 100% | 100% | 823A_AB |  |  |  |  |
| 823A-ST-SCCT-6b-2050 |  | Concreting for base slab (363m3) | 1d | 2012-12-07 A | 2012-12-07 A | 823A-ST-SCCT-6b-2040 | 100% | 2013-06-07 | 2013-06-07 |  | Permanent Concrete [363 Cu m]; Concrete 45/20A [363 Cu m]; Crawler Crane/Mobile Crane [8 h]; Concrete Pump [8 h]; PY Concretor [64 h]; General Worker [96 h]; Plant and Equipment Operator (Crawler-mounted Mobile Crane) [16 h]; Rigger/Metal Formwork Erector [32 h] | 100% | 100% | 823A_AB | 363 | m3 | 363 | 363 |
| 823A-ST-SCCT-6b-2060 |  | Curing for base slab | 7d | 2012-12-08 A | 2012-12-15 A | 823A-ST-SCCT-6b-2050 | 100% | 2013-06-08 | 2013-06-14 | 823-7d | General Worker [224 h] | 100% | 100% | 823A_AB |  |  |  |  |
| 823A-ST-SCCT-6b-2090 |  | Rebar fixing for central slab | 1d | 2012-12-10 A | 2012-12-11 A | 823A-ST-SCCT-6b-1080, 823A-ST-SCCT-6b-2080 | 100% | 2013-06-11 | 2013-06-11 |  | Reinforcement [68142 kg]; Crawler Crane/Mobile Crane [16 h]; Plant and Equipment Operator (Crawler-mounted Mobile Crane) [16 h]; Bar Bender & Fixer [256 h] | 100% | 100% | 823A_AB |  |  |  |  |
| 823A-ST-SCCT-6b-2100 |  | Erect external formwork for central slab | 1d | 2012-12-11 A | 2012-12-11 A | 823A-ST-SCCT-6b-2090 SS | 100% | 2013-06-11 | 2013-06-11 |  | Carpenter (Formwork - Civil Construction) [96 h]; Crawler Crane/Mobile Crane [8 h]; Plant and Equipment Operator (Crawler-mounted Mobile Crane) [8 h] | 100% | 100% | 823A_AB |  |  |  |  |
| 823A-ST-SCCT-6b-2110 |  | Concreting for central slab | 1d | 2012-12-12 A | 2012-12-12 A | 823A-ST-SCCT-6b-2090, 823A-ST-SCCT-6b-2100 | 100% | 2013-06-13 | 2013-06-13 |  | Permanent Concrete [450 Cu m]; Concrete 45/20A [450 Cu m]; Crawler Crane/Mobile Crane [8 h]; Concrete Pump [8 h]; PY Concretor [64 h]; General Worker [96 h]; Rigger/Metal Formwork Erector [32 h]; Plant and Equipment Operator (Crawler-mounted Mobile Crane) [16 h] | 100% | 100% | 823A_AB | 450 | m3 | 450 | 450 |
| 823A-ST-SCCT-6b-2120 |  | Curing for central slab | 7d | 2012-12-13 A | 2012-12-19 A | 823A-ST-SCCT-6b-2110 | 100% | 2013-06-14 | 2013-06-20 | 823-7d | General Worker [224 h] | 100% | 100% | 823A_AB |  |  |  |  |
| 823A-ST-SCCT-6b-2070 |  | Preparation of construction joint for base slab | 1d | 2012-12-17 A | 2012-12-17 A | 823A-ST-SCCT-6b-2050 | 100% | 2013-06-08 | 2013-06-08 | 823-6dPH |  | 100% | 100% | 823A_AB |  |  |  |  |
| 823A-ST-SCCT-6b-2080 |  | Removal of formwork for base slab | 1d | 2012-12-18 A | 2012-12-18 A | 823A-ST-SCCT-6b-2070 | 100% | 2013-06-10 | 2013-06-10 |  | Crawler Crane/Mobile Crane [8 h]; Carpenter (Formwork - Civil Construction) [64 h]; Plant and Equipment Operator (Crawler-mounted Mobile Crane) [8 h] | 100% | 100% | 823A_AB |  |  |  |  |
| 823A-ST-SCCT-6b-2130 |  | Preparation of construction joint for central slab | 1d | 2012-12-20 A | 2012-12-20 A | 823A-ST-SCCT-6b-2110 | 100% | 2013-06-14 | 2013-06-14 | 823-6dPH |  | 100% | 100% | 823A_AB |  |  |  |  |
| 823A-ST-SCCT-6b-2140 |  | Removal of formwork for central slab | 1d | 2012-12-21 A | 2012-12-21 A | 823A-ST-SCCT-6b-2130 | 100% | 2013-06-15 | 2013-06-15 |  | Crawler Crane/Mobile Crane [8 h]; Carpenter (Formwork - Civil Construction) [64 h]; Plant and Equipment Operator (Crawler-mounted Mobile Crane) [8 h] | 100% | 100% | 823A_AB |  |  |  |  |
| 823A-ST-SCCT-6b-2150 |  | Removal strut S5 and S4 | 8d | 2012-12-22 A | 2012-12-31 A | 823A-ST-SCCT-6b-2140, 823A-ST-SCCT-6b-2060 | 100% | 2013-06-17 | 2013-06-25 |  | Crawler Crane/Mobile Crane [16 h]; Plant and Equipment Operator (Crawler-mounted Mobile Crane) [16 h]; Rigger/Metal Formwork Erector [128 h] | 100% | 100% | 823A_AB |  |  |  |  |
| 823A-ST-SCCT-6b-2160 |  | Erect internal formwork & Falsework for wall and roof | 6d | 2012-12-27 A | 2013-01-03 A | 823A-ST-SCCT-6b-2150, 823A-ST-SCCT-6b-2120 | 100% | 2013-06-26 | 2013-07-03 |  | Crawler Crane/Mobile Crane [48 h]; Plant and Equipment Operator (Crawler-mounted Mobile Crane) [48 h]; Carpenter (Formwork - Civil Construction) [384 h]; Rigger/Metal Formwork Erector [192 h] | 100% | 100% | 823A_AB |  |  |  |  |
| 823A-ST-SCCT-6b-2170 |  | Rebar fixing for wall and roof | 9d | 2013-01-10 A | 2013-01-21 A | 823A-ST-SCCT-6b-1100, 823A-ST-SCCT-6b-2160 | 100% | 2013-07-04 | 2013-07-13 |  | Plant and Equipment Operator (Crawler-mounted Mobile Crane) [32 h]; Bar Bender & Fixer [512 h]; Reinforcement [67234 kg]; Crawler Crane/Mobile Crane [32 h] | 100% | 100% | 823A_AB |  |  |  |  |
| 823A-ST-SCCT-6b-2180 |  | Erect external formwork for wall | 5d | 2013-01-21 A | 2013-01-25 A | 823A-ST-SCCT-6b-2170 | 100% | 2013-07-15 | 2013-07-19 |  | Crawler Crane/Mobile Crane [16 h]; Plant and Equipment Operator (Crawler-mounted Mobile Crane) [16 h]; Carpenter (Formwork - Civil Construction) [192 h] | 100% | 100% | 823A_AB |  |  |  |  |
| 823A-ST-SCCT-6b-2190 |  | Concreting for wall and roof (450m3) | 1d | 2013-01-26 A | 2013-01-26 A | 823A-ST-SCCT-6b-2180 | 100% | 2013-07-20 | 2013-07-20 |  | Permanent Concrete [444 Cu m]; Concrete 45/20A [444 Cu m]; Crawler Crane/Mobile Crane [8 h]; Concrete Pump [8 h]; Plant and Equipment Operator (Crawler-mounted Mobile Crane) [16 h]; General Worker [96 h]; Rigger/Metal Formwork Erector [32 h]; PY Concretor [64 h] | 100% | 100% | 823A_AB | 450 | m3 | 450 | 450 |
| 823A-ST-SCCT-6b-2200 |  | Curing for wall and roof | 10d | 2013-01-28 A | 2013-02-07 A | 823A-ST-SCCT-6b-2190 | 100% | 2013-07-21 | 2013-07-30 | 823-7d | General Worker [224 h] | 100% | 100% | 823A_AB |  |  |  |  |
| 823A-ST-SCCT-6b-2210 |  | Preparation of construction joint for wall and roof | 1d | 2013-02-08 A | 2013-02-08 A | 823A-ST-SCCT-6b-2190 | 100% | 2013-07-22 | 2013-07-22 | 823-6dPH |  | 100% | 100% | 823A_AB |  |  |  |  |
| 823A-ST-SCCT-6b-2220 |  | Removal external and internal formwork for wall | 2d | 2013-02-08 A | 2013-02-08 A | 823A-ST-SCCT-6b-2210 SS | 100% | 2013-07-22 | 2013-07-23 |  | Crawler Crane/Mobile Crane [16 h]; Plant and Equipment Operator (Crawler-mounted Mobile Crane) [16 h]; Carpenter (Formwork - Civil Construction) [128 h] | 100% | 100% | 823A_AB |  |  |  |  |
| 823A-ST-SCCT-6b-2230 |  | Removal internal falsework and formwork for roof | 1d | 2013-02-08 A | 2013-02-08 A | 823A-ST-SCCT-6a-2230, 823A-ST-SCCT-6b-2200, 823A-ST-SCCT-6b-1160, 823A-ST-SCCT-6b-2220 | 100% | 2013-07-31 | 2013-07-31 |  | Crawler Crane/Mobile Crane [32 h]; Carpenter (Formwork - Civil Construction) [256 h]; Plant and Equipment Operator (Crawler-mounted Mobile Crane) [32 h]; Rigger/Metal Formwork Erector [128 h] | 100% | 100% | 823A_AB |  |  |  |  |
| 823A-ST-SCCT-6b-2240 |  | Side walkway and cable bracket (204m3) | 5d | 2015-07-02 A | 2015-10-07 A | 823A-ST-SCCT-6b-2230, 823A-ST-SCCT-6b-3190 | 100% | 2015-09-16 | 2015-09-21 |  | Permanent Concrete [204 Cu m]; Concrete 20/20C [204 Cu m]; Crawler Crane/Mobile Crane [40 h]; Concrete Pump [40 h]; Carpenter (Formwork - Civil Construction) [320 h]; PY Concretor [160 h]; General Worker [320 h]; Plant and Equipment Operator (Crawler-mounted Mobile Crane) [80 h]; Rigger/Metal Formwork Erector [160 h] | 100% | 100% | 823A_AB | 204 | m3 | 204 | 204 |

| ID | WBS | Activity | Duration | Start | Finish | Predecessors | Complete | Planned start | Planned finish | Calendar | Resources | % Planned | % Actual | 823A_As-built | Actual Up to Date | UNITS | Total Quantity | Planned Up to Date |
| --- | --- | --- | --- | --- | --- | --- | --- | --- | --- | --- | --- | --- | --- | --- | --- | --- | --- | --- |
|  | 3 | **Cross Passage** |  | 2012-11-27 | 2015-10-10 |  |  |  |  |  |  |  |  |  |  |  |  |  |
| 823A-ST-SCCT-6b-3010 |  | Placing of waterproof member T-lock & testing for base slab | 1d | 2012-11-27 A | 2012-11-27 A | 823A-ST-SCCT-6b-2170, 823A-ST-SCCT-6b-2160 | 100% | 2013-06-01 | 2013-06-01 |  | Skill Labour [64 h] | 100% | 100% | 823A_AB |  |  |  |  |
| 823A-ST-SCCT-6b-3020 |  | Erect external formwork for base slab | 1d | 2012-11-28 A | 2012-12-01 A | 823A-ST-SCCT-6b-3010, 823A-ST-SCCT-6b-2150 | 100% | 2013-06-03 | 2013-06-03 |  | Crawler Crane/Mobile Crane [8 h]; Carpenter (Formwork - Civil Construction) [96 h]; Plant and Equipment Operator (Crawler-mounted Mobile Crane) [8 h] | 100% | 100% | 823A_AB |  |  |  |  |
| 823A-ST-SCCT-6b-3030 |  | Rebar fixing for base slab | 2d | 2012-12-03 A | 2012-12-05 A | 823A-ST-SCCT-6b-3020 | 100% | 2013-06-04 | 2013-06-05 |  | Reinforcement [68142 kg]; Crawler Crane/Mobile Crane [16 h]; Plant and Equipment Operator (Crawler-mounted Mobile Crane) [16 h]; Bar Bender & Fixer [256 h] | 100% | 100% | 823A_AB |  |  |  |  |
| 823A-ST-SCCT-6b-3040 |  | Erect internal kicker formwork for base slab | 1d | 2012-12-06 A | 2012-12-06 A | 823A-ST-SCCT-6b-3030 | 100% | 2013-06-06 | 2013-06-06 |  | Crawler Crane/Mobile Crane [16 h]; Plant and Equipment Operator (Crawler-mounted Mobile Crane) [96 h]; Carpenter (Formwork - Civil Construction) [192 h] | 100% | 100% | 823A_AB |  |  |  |  |
| 823A-ST-SCCT-6b-3050 |  | Concreting for base slab (363m3) | 1d | 2012-12-07 A | 2012-12-07 A | 823A-ST-SCCT-6b-3040 | 100% | 2013-06-07 | 2013-06-07 |  | General Worker [96 h]; Plant and Equipment Operator (Crawler-mounted Mobile Crane) [16 h]; Rigger/Metal Formwork Erector [32 h]; Permanent Concrete [363 Cu m]; Concrete 45/20A [363 Cu m]; Crawler Crane/Mobile Crane [8 h]; Concrete Pump [8 h]; PY Concretor [64 h] | 100% | 100% | 823A_AB | 363 | m3 | 363 | 363 |
| 823A-ST-SCCT-6b-3060 |  | Curing for base slab | 7d | 2012-12-08 A | 2012-12-14 A | 823A-ST-SCCT-6b-3050 | 100% | 2013-06-08 | 2013-06-14 | 823-7d | General Worker [224 h] | 100% | 100% | 823A_AB |  |  |  |  |
| 823A-ST-SCCT-6b-3070 |  | Preparation of construction joint for base slab | 1d | 2012-12-15 A | 2012-12-17 A | 823A-ST-SCCT-6b-3050 | 100% | 2013-06-08 | 2013-06-08 | 823-6dPH |  | 100% | 100% | 823A_AB |  |  |  |  |
| 823A-ST-SCCT-6b-3080 |  | Removal of formwork for base slab | 1d | 2012-12-18 A | 2012-12-18 A | 823A-ST-SCCT-6b-3070 | 100% | 2013-06-10 | 2013-06-10 |  | Crawler Crane/Mobile Crane [8 h]; Carpenter (Formwork - Civil Construction) [64 h]; Plant and Equipment Operator (Crawler-mounted Mobile Crane) [8 h] | 100% | 100% | 823A_AB |  |  |  |  |
| 823A-ST-SCCT-6b-3110 |  | Erect internal formwork & Falsework for wall and roof | 3d | 2012-12-27 A | 2013-01-03 A | 823A-ST-SCCT-6b-3080 | 100% | 2013-06-11 | 2013-06-14 |  | Crawler Crane/Mobile Crane [48 h]; Plant and Equipment Operator (Crawler-mounted Mobile Crane) [48 h]; Carpenter (Formwork - Civil Construction) [384 h]; Rigger/Metal Formwork Erector [192 h] | 100% | 100% | 823A_AB |  |  |  |  |
| 823A-ST-SCCT-6b-3120 |  | Rebar fixing for wall and roof | 2d | 2013-01-10 A | 2013-01-21 A | 823A-ST-SCCT-6b-3110 | 100% | 2013-06-15 | 2013-06-17 |  | Reinforcement [67234 kg]; Crawler Crane/Mobile Crane [32 h]; Bar Bender & Fixer [512 h]; Plant and Equipment Operator (Crawler-mounted Mobile Crane) [32 h] | 100% | 100% | 823A_AB |  |  |  |  |
| 823A-ST-SCCT-6b-3130 |  | Erect external formwork for wall | 1d | 2013-01-21 A | 2013-01-25 A | 823A-ST-SCCT-6b-3120 | 100% | 2013-06-18 | 2013-06-18 |  | Crawler Crane/Mobile Crane [16 h]; Plant and Equipment Operator (Crawler-mounted Mobile Crane) [16 h]; Carpenter (Formwork - Civil Construction) [192 h] | 100% | 100% | 823A_AB |  |  |  |  |
| 823A-ST-SCCT-6b-3140 |  | Concreting for wall and roof (444m3) | 1d | 2013-01-26 A | 2013-01-26 A | 823A-ST-SCCT-6b-3130 | 100% | 2013-06-19 | 2013-06-19 |  | Permanent Concrete [444 Cu m]; Concrete 45/20A [444 Cu m]; Crawler Crane/Mobile Crane [8 h]; Concrete Pump [8 h]; Plant and Equipment Operator (Crawler-mounted Mobile Crane) [16 h]; PY Concretor [64 h]; General Worker [96 h]; Rigger/Metal Formwork Erector [32 h] | 100% | 100% | 823A_AB | 444 | m3 | 444 | 444 |
| 823A-ST-SCCT-6b-3150 |  | Curing for wall and roof | 10d | 2013-01-26 A | 2013-02-06 A | 823A-ST-SCCT-6b-3140 | 100% | 2013-06-20 | 2013-06-29 | 823-7d | General Worker [224 h] | 100% | 100% | 823A_AB |  |  |  |  |
| 823A-ST-SCCT-6b-3170 |  | Removal external and internal formwork for wall | 2d | 2013-02-05 A | 2013-02-07 A | 823A-ST-SCCT-6b-3140 FS+1d | 100% | 2013-06-21 | 2013-06-22 |  | Crawler Crane/Mobile Crane [16 h]; Plant and Equipment Operator (Crawler-mounted Mobile Crane) [16 h]; Carpenter (Formwork - Civil Construction) [128 h] | 100% | 100% | 823A_AB |  |  |  |  |
| 823A-ST-SCCT-6b-3180 |  | Removal internal falsework and formwork for roof | 1d | 2013-02-08 A | 2013-02-09 A | 823A-ST-SCCT-6b-3150, 823A-ST-SCCT-6b-3170 | 100% | 2013-07-02 | 2013-07-02 |  | Crawler Crane/Mobile Crane [32 h]; Carpenter (Formwork - Civil Construction) [256 h]; Plant and Equipment Operator (Crawler-mounted Mobile Crane) [32 h]; Rigger/Metal Formwork Erector [128 h] | 100% | 100% | 823A_AB |  |  |  |  |
| 823A-ST-SCCT-6b-3190 |  | Side walkway and cable bracket (204m3) | 5d | 2015-10-06 A | 2015-10-10 A | 823A-ST-SCCT-6b-3180, 823A-ST-SCCT-5a-3090 | 100% | 2015-11-09 | 2015-11-13 |  | Crawler Crane/Mobile Crane [40 h]; Carpenter (Formwork - Civil Construction) [320 h]; PY Concretor [160 h]; General Worker [320 h]; Plant and Equipment Operator (Crawler-mounted Mobile Crane) [80 h]; Rigger/Metal Formwork Erector [160 h]; Concrete Pump [40 h]; Permanent Concrete [204 Cu m]; Concrete 20/20C [204 Cu m] | 100% | 100% | 823A_AB | 204 | m3 | 204 | 204 |
|  | 3 | **Bay 5a** |  | 2012-12-13 | 2015-10-05 |  |  |  |  |  |  |  |  |  |  |  |  |  |
|  | 1 | **Base Slab** |  | 2012-12-13 | 2013-01-07 |  |  |  |  |  |  |  |  |  |  |  |  |  |
| 823A-ST-SCCT-5a-1010 |  | Placing of waterproof member T-lock & testing for base slab | 1d | 2012-12-13 A | 2012-12-13 A | 823A-ST-SCCT-6b-1080, 823A-ST-SCCT-6b-2130 SS | 100% | 2013-06-01 | 2013-06-01 |  | Skill Labour [64 h] | 100% | 100% | 823A_AB |  |  |  |  |
| 823A-ST-SCCT-5a-1020 |  | Erect external formwork for base slab | 1d | 2012-12-14 A | 2012-12-15 A | 823A-ST-SCCT-5a-1010 | 100% | 2013-06-03 | 2013-06-03 |  | Crawler Crane/Mobile Crane [8 h]; Carpenter (Formwork - Civil Construction) [96 h]; Plant and Equipment Operator (Crawler-mounted Mobile Crane) [8 h] | 100% | 100% | 823A_AB |  |  |  |  |
| 823A-ST-SCCT-5a-1030 |  | Rebar fixing for base slab | 2d | 2012-12-15 A | 2012-12-17 A | 823A-ST-SCCT-5a-1020 | 100% | 2013-06-04 | 2013-06-05 |  | Reinforcement [68142 kg]; Crawler Crane/Mobile Crane [16 h]; Plant and Equipment Operator (Crawler-mounted Mobile Crane) [16 h]; Bar Bender & Fixer [256 h] | 100% | 100% | 823A_AB |  |  |  |  |
| 823A-ST-SCCT-5a-1040 |  | Erect internal kicker formwork for base slab | 2d | 2012-12-17 A | 2012-12-17 A | 823A-ST-SCCT-5a-1030 SS | 100% | 2013-06-04 | 2013-06-05 |  | Carpenter (Formwork - Civil Construction) [192 h]; Crawler Crane/Mobile Crane [16 h]; Plant and Equipment Operator (Crawler-mounted Mobile Crane) [96 h] | 100% | 100% | 823A_AB |  |  |  |  |
| 823A-ST-SCCT-5a-1050 |  | Concreting for base slab (363m3) | 1d | 2012-12-18 A | 2012-12-18 A | 823A-ST-SCCT-5a-1030, 823A-ST-SCCT-5a-1040 | 100% | 2013-06-06 | 2013-06-06 |  | Permanent Concrete [363 Cu m]; Concrete 45/20A [363 Cu m]; Crawler Crane/Mobile Crane [8 h]; PY Concretor [64 h]; General Worker [96 h]; Plant and Equipment Operator (Crawler-mounted Mobile Crane) [16 h]; Rigger/Metal Formwork Erector [32 h]; Concrete Pump [8 h] | 100% | 100% | 823A_AB | 363 | m3 | 363 | 363 |
| 823A-ST-SCCT-5a-1060 |  | Curing for base slab | 7d | 2012-12-19 A | 2012-12-27 A | 823A-ST-SCCT-5a-1050 | 100% | 2013-06-07 | 2013-06-13 | 823-7d | General Worker [224 h] | 100% | 100% | 823A_AB |  |  |  |  |
| 823A-ST-SCCT-5a-1070 |  | Preparation of construction joint for base slab | 1d | 2012-12-28 A | 2012-12-28 A | 823A-ST-SCCT-5a-1050 | 100% | 2013-06-07 | 2013-06-07 | 823-6dPH |  | 100% | 100% | 823A_AB |  |  |  |  |
| 823A-ST-SCCT-5a-1080 |  | Removal of formwork for base slab | 1d | 2012-12-29 A | 2012-12-29 A | 823A-ST-SCCT-5a-1070 | 100% | 2013-06-08 | 2013-06-08 |  | Crawler Crane/Mobile Crane [8 h]; Carpenter (Formwork - Civil Construction) [64 h]; Plant and Equipment Operator (Crawler-mounted Mobile Crane) [8 h] | 100% | 100% | 823A_AB |  |  |  |  |
| 823A-ST-SCCT-5a-1090 |  | Shear beam | 2d | 2012-12-31 A | 2013-01-02 A | 823A-ST-SCCT-5a-1080 | 100% | 2013-06-10 | 2013-06-11 |  | Temporary Concrete [204 Cu m]; Concrete 20/20C [204 Cu m]; Crawler Crane/Mobile Crane [8 h]; Concrete Pump [8 h]; PY Concretor [32 h]; Plant and Equipment Operator (Crawler-mounted Mobile Crane) [16 h]; General Worker [64 h]; Rigger/Metal Formwork Erector [16 h] | 100% | 100% | 823A_AB |  |  |  |  |
| 823A-ST-SCCT-5a-1100 |  | Curing | 1d | 2013-01-03 A | 2013-01-03 A | 823A-ST-SCCT-5a-1090 | 100% | 2013-06-12 | 2013-06-12 | 823-7d | General Worker [224 h] | 100% | 100% | 823A_AB |  |  |  |  |
| 823A-ST-SCCT-5a-1110 |  | Removal strut S5 and S4 | 3d | 2013-01-04 A | 2013-01-07 A | 823A-ST-SCCT-5a-1100, 823A-ST-SCCT-5a-1060 FF | 100% | 2013-06-13 | 2013-06-15 |  | Crawler Crane/Mobile Crane [16 h]; Plant and Equipment Operator (Crawler-mounted Mobile Crane) [16 h]; Rigger/Metal Formwork Erector [128 h] | 100% | 100% | 823A_AB |  |  |  |  |

| ID | WBS | Activity | Duration | Start | Finish | Predecessors | Complete | Planned start | Planned finish | Calendar | Resources | % Planned | % Actual | 823A_As-built | Actual Up to Date | UNITS | Total Quantity | Planned Up to Date |
| --- | --- | --- | --- | --- | --- | --- | --- | --- | --- | --- | --- | --- | --- | --- | --- | --- | --- | --- |
|  | 2 | **Southbound** |  | 2012-12-29 | 2014-12-31 |  |  |  |  |  |  |  |  |  |  |  |  |  |
| 823A-ST-SCCT-5a-2010 |  | Erect internal formwork & Falsework for wall and roof | 4d | 2012-12-29 A | 2013-01-03 A | 823A-ST-SCCT-5a-1110 | 100% | 2013-06-01 | 2013-06-05 |  | Crawler Crane/Mobile Crane [48 h]; Plant and Equipment Operator (Crawler-mounted Mobile Crane) [48 h]; Rigger/Metal Formwork Erector [192 h]; Carpenter (Formwork - Civil Construction) [384 h] | 100% | 100% | 823A_AB |  |  |  |  |
| 823A-ST-SCCT-5a-2020 |  | Rebar fixing for wall and roof | 5d | 2013-01-04 A | 2013-01-09 A | 823A-ST-SCCT-5a-2010 | 100% | 2013-06-06 | 2013-06-11 |  | Reinforcement [67234 kg]; Crawler Crane/Mobile Crane [32 h]; Bar Bender & Fixer [512 h]; Plant and Equipment Operator (Crawler-mounted Mobile Crane) [32 h] | 100% | 100% | 823A_AB |  |  |  |  |
| 823A-ST-SCCT-5a-2030 |  | Erect external formwork for wall and roof | 4d | 2013-01-10 A | 2013-01-14 A | 823A-ST-SCCT-5a-2020 | 100% | 2013-06-13 | 2013-06-17 |  | Crawler Crane/Mobile Crane [16 h]; Plant and Equipment Operator (Crawler-mounted Mobile Crane) [16 h]; Carpenter (Formwork - Civil Construction) [192 h] | 100% | 100% | 823A_AB |  |  |  |  |
| 823A-ST-SCCT-5a-2040 |  | Concreting for wall and roof (450m3) | 1d | 2013-01-15 A | 2013-01-15 A | 823A-ST-SCCT-5a-2030 | 100% | 2013-06-18 | 2013-06-18 |  | Permanent Concrete [444 Cu m]; Concrete 45/20A [444 Cu m]; Crawler Crane/Mobile Crane [8 h]; Concrete Pump [8 h]; Plant and Equipment Operator (Crawler-mounted Mobile Crane) [16 h]; PY Concretor [64 h]; General Worker [96 h]; Rigger/Metal Formwork Erector [32 h] | 100% | 100% | 823A_AB | 450 | m3 | 450 | 450 |
| 823A-ST-SCCT-5a-2050 |  | Curing for wall and roof | 10d | 2013-01-16 A | 2013-01-26 A | 823A-ST-SCCT-5a-2040 | 100% | 2013-06-19 | 2013-06-28 | 823-7d | General Worker [224 h] | 100% | 100% | 823A_AB |  |  |  |  |
| 823A-ST-SCCT-5a-2060 |  | Preparation of construction joint for wall and roof | 1d | 2013-01-28 A | 2013-01-28 A | 823A-ST-SCCT-5a-2040 | 100% | 2013-06-19 | 2013-06-19 | 823-6dPH |  | 100% | 100% | 823A_AB |  |  |  |  |
| 823A-ST-SCCT-5a-2070 |  | Removal external and internal formwork for wall | 2d | 2013-01-29 A | 2013-01-30 A | 823A-ST-SCCT-5a-2060 | 100% | 2013-06-20 | 2013-06-21 |  | Crawler Crane/Mobile Crane [16 h]; Plant and Equipment Operator (Crawler-mounted Mobile Crane) [16 h]; Carpenter (Formwork - Civil Construction) [128 h] | 100% | 100% | 823A_AB |  |  |  |  |
| 823A-ST-SCCT-5a-2080 |  | Removal internal falsework and formwork for roof | 1d | 2013-01-31 A | 2013-01-31 A | 823A-ST-SCCT-5a-2050, 823A-ST-SCCT-5a-2070 | 100% | 2013-06-29 | 2013-06-29 |  | Crawler Crane/Mobile Crane [32 h]; Carpenter (Formwork - Civil Construction) [256 h]; Plant and Equipment Operator (Crawler-mounted Mobile Crane) [32 h]; Rigger/Metal Formwork Erector [128 h] | 100% | 100% | 823A_AB |  |  |  |  |
| 823A-ST-SCCT-5a-2090 |  | Side walkway and cable bracket | 5d | 2014-12-24 A | 2014-12-31 A | 823A-ST-SCCT-5b-2090, 823A-ST-SCCT-5a-2080 | 100% |  |  |  | Concrete 20/20C [204 Cu m]; Crawler Crane/Mobile Crane [40 h]; Concrete Pump [40 h]; Carpenter (Formwork - Civil Construction) [320 h]; PY Concretor [160 h]; General Worker [320 h]; Plant and Equipment Operator (Crawler-mounted Mobile Crane) [80 h]; Rigger/Metal Formwork Erector [160 h]; Permanent Concrete [204 Cu m] | 100% | 100% | 823A_AB | 204 | m3 | 204 | 204 |
|  | 3 | **Northbound** |  | 2012-12-27 | 2015-10-05 |  |  |  |  |  |  |  |  |  |  |  |  |  |
| 823A-ST-SCCT-5a-3010 |  | Erect internal formwork & Falsework for wall and roof | 4d | 2012-12-27 A | 2013-01-03 A | 823A-ST-SCCT-5a-2010 SS | 100% | 2013-06-01 | 2013-06-05 |  | Crawler Crane/Mobile Crane [48 h]; Plant and Equipment Operator (Crawler-mounted Mobile Crane) [48 h]; Carpenter (Formwork - Civil Construction) [384 h]; Rigger/Metal Formwork Erector [192 h] | 100% | 100% | 823A_AB |  |  |  |  |
| 823A-ST-SCCT-5a-3020 |  | Rebar fixing for wall and roof | 10d | 2013-01-10 A | 2013-01-21 A | 823A-ST-SCCT-5a-3010, 823A-ST-SCCT-5a-2020 | 100% | 2013-06-06 | 2013-06-18 |  | Crawler Crane/Mobile Crane [32 h]; Bar Bender & Fixer [512 h]; Plant and Equipment Operator (Crawler-mounted Mobile Crane) [32 h]; Reinforcement [67234 kg] | 100% | 100% | 823A_AB |  |  |  |  |
| 823A-ST-SCCT-5a-3030 |  | Erect external formwork for wall and roof | 4d | 2013-01-21 A | 2013-01-25 A | 823A-ST-SCCT-5a-3020 | 100% | 2013-06-19 | 2013-06-22 |  | Crawler Crane/Mobile Crane [16 h]; Plant and Equipment Operator (Crawler-mounted Mobile Crane) [16 h]; Carpenter (Formwork - Civil Construction) [192 h] | 100% | 100% | 823A_AB |  |  |  |  |
| 823A-ST-SCCT-5a-3040 |  | Concreting for wall and roof (450m3) | 1d | 2013-01-26 A | 2013-01-26 A | 823A-ST-SCCT-5a-3030 | 100% | 2013-06-24 | 2013-06-24 |  | Permanent Concrete [444 Cu m]; Concrete 45/20A [444 Cu m]; Crawler Crane/Mobile Crane [8 h]; Concrete Pump [8 h]; Plant and Equipment Operator (Crawler-mounted Mobile Crane) [16 h]; PY Concretor [64 h]; General Worker [96 h]; Rigger/Metal Formwork Erector [32 h] | 100% | 100% | 823A_AB | 450 | m3 | 450 | 450 |
| 823A-ST-SCCT-5a-3050 |  | Curing for wall and roof | 10d | 2013-01-28 A | 2013-02-07 A | 823A-ST-SCCT-5a-3040 | 100% | 2013-06-25 | 2013-07-04 | 823-7d | General Worker [224 h] | 100% | 100% | 823A_AB |  |  |  |  |
| 823A-ST-SCCT-5a-3060 |  | Preparation of construction joint for wall and roof | 1d | 2013-02-07 A | 2013-02-08 A | 823A-ST-SCCT-5a-3040 | 100% | 2013-06-25 | 2013-06-25 | 823-6dPH |  | 100% | 100% | 823A_AB |  |  |  |  |
| 823A-ST-SCCT-5a-3070 |  | Removal external wall formwork for wall | 2d | 2013-02-08 A | 2013-02-08 A | 823A-ST-SCCT-5a-3060 | 100% | 2013-06-26 | 2013-06-27 |  | Crawler Crane/Mobile Crane [16 h]; Plant and Equipment Operator (Crawler-mounted Mobile Crane) [16 h]; Carpenter (Formwork - Civil Construction) [128 h] | 100% | 100% | 823A_AB |  |  |  |  |
| 823A-ST-SCCT-5a-3080 |  | Removal internal falsework and formwork for roof | 1d | 2013-02-15 A | 2013-02-15 A | 823A-ST-SCCT-5a-3070, 823A-ST-SCCT-5a-3050 | 100% | 2013-07-05 | 2013-07-05 |  | Crawler Crane/Mobile Crane [32 h]; Carpenter (Formwork - Civil Construction) [256 h]; Plant and Equipment Operator (Crawler-mounted Mobile Crane) [32 h]; Rigger/Metal Formwork Erector [128 h] | 100% | 100% | 823A_AB |  |  |  |  |
| 823A-ST-SCCT-5a-3090 |  | Side walkway and cable bracket | 5d | 2015-07-02 A | 2015-10-05 A | 823A-ST-SCCT-5b-3090, 823A-ST-SCCT-5a-3080 | 100% | 2015-09-04 | 2015-09-09 |  | Concrete 20/20C [204 Cu m]; Crawler Crane/Mobile Crane [40 h]; Concrete Pump [40 h]; Carpenter (Formwork - Civil Construction) [320 h]; PY Concretor [160 h]; General Worker [320 h]; Plant and Equipment Operator (Crawler-mounted Mobile Crane) [80 h]; Rigger/Metal Formwork Erector [160 h]; Permanent Concrete [204 Cu m] | 100% | 100% | 823A_AB | 204 | m3 | 204 | 204 |
|  | 4 | **Bay 5b** |  | 2012-11-21 | 2015-10-03 |  |  |  |  |  |  |  |  |  |  |  |  |  |
|  | 1 | **Base Slab** |  | 2012-11-21 | 2012-12-20 |  |  |  |  |  |  |  |  |  |  |  |  |  |
| 823A-ST-SCCT-5b-1010 |  | Placing of waterproof member T-lock & testing for base slab | 1d | 2012-11-21 A | 2012-11-21 A | 823A-ST-SCCT-6a-1080 SS | 100% |  |  |  | Skill Labour [64 h] | 100% | 100% | 823A_AB |  |  |  |  |
| 823A-ST-SCCT-5b-1020 |  | Erect external formwork for base slab | 3d | 2012-11-22 A | 2012-11-24 A | 823A-ST-SCCT-5b-1010 | 100% |  |  |  | Crawler Crane/Mobile Crane [8 h]; Carpenter (Formwork - Civil Construction) [96 h]; Plant and Equipment Operator (Crawler-mounted Mobile Crane) [8 h] | 100% | 100% | 823A_AB |  |  |  |  |
| 823A-ST-SCCT-5b-1030 |  | Rebar fixing for base slab | 3d | 2012-11-26 A | 2012-11-28 A | 823A-ST-SCCT-5b-1020 | 100% |  |  |  | Crawler Crane/Mobile Crane [16 h]; Plant and Equipment Operator (Crawler-mounted Mobile Crane) [16 h]; Bar Bender & Fixer [256 h]; Reinforcement [68142 kg] | 100% | 100% | 823A_AB |  |  |  |  |
| 823A-ST-SCCT-5b-1040 |  | Erect internal kicker formwork for base slab | 1d | 2012-11-29 A | 2012-11-29 A | 823A-ST-SCCT-5b-1030 | 100% |  |  |  | Crawler Crane/Mobile Crane [16 h]; Plant and Equipment Operator (Crawler-mounted Mobile Crane) [96 h]; Carpenter (Formwork - Civil Construction) [192 h] | 100% | 100% | 823A_AB |  |  |  |  |
| 823A-ST-SCCT-5b-1050 |  | Concreting for base slab (363m3) | 1d | 2012-11-30 A | 2012-11-30 A | 823A-ST-SCCT-5b-1040 | 100% |  |  |  | Permanent Concrete [363 Cu m]; Concrete 45/20A [363 Cu m]; Crawler Crane/Mobile Crane [8 h]; Concrete Pump [8 h]; PY Concretor [64 h]; General Worker [96 h]; Plant and Equipment Operator (Crawler-mounted Mobile Crane) [16 h]; Rigger/Metal Formwork Erector [32 h] | 100% | 100% | 823A_AB | 363 | m3 | 363 | 363 |
| 823A-ST-SCCT-5b-1060 |  | Curing for base slab | 7d | 2012-12-01 A | 2012-12-08 A | 823A-ST-SCCT-5b-1050 | 100% | 2013-06-01 | 2013-06-07 | 823-7d | General Worker [224 h] | 100% | 100% | 823A_AB |  |  |  |  |
| 823A-ST-SCCT-5b-1070 |  | Preparation of construction joint for base slab | 1d | 2012-12-10 A | 2012-12-10 A | 823A-ST-SCCT-5b-1050 | 100% | 2013-06-01 | 2013-06-01 | 823-6dPH |  | 100% | 100% | 823A_AB |  |  |  |  |
| 823A-ST-SCCT-5b-1080 |  | Removal of formwork for base slab | 1d | 2012-12-11 A | 2012-12-11 A | 823A-ST-SCCT-5b-1070 | 100% | 2013-06-03 | 2013-06-03 |  | Crawler Crane/Mobile Crane [8 h]; Carpenter (Formwork - Civil Construction) [64 h]; Plant and Equipment Operator (Crawler-mounted Mobile Crane) [8 h] | 100% | 100% | 823A_AB |  |  |  |  |
| 823A-ST-SCCT-5b-1090 |  | Shear beam | 7d | 2012-12-12 A | 2012-12-12 A | 823A-ST-SCCT-5b-1060, 823A-ST-SCCT-5b-1080 | 100% | 2013-06-08 | 2013-06-17 |  | Temporary Concrete [204 Cu m]; Concrete 20/20C [204 Cu m]; Crawler Crane/Mobile Crane [8 h]; Concrete Pump [8 h]; PY Concretor [32 h]; Plant and Equipment Operator (Crawler-mounted Mobile Crane) [16 h]; General Worker [64 h]; Rigger/Metal Formwork Erector [16 h] | 100% | 100% | 823A_AB |  |  |  |  |
| 823A-ST-SCCT-5b-1100 |  | Curing | 1d | 2012-12-13 A | 2012-12-13 A | 823A-ST-SCCT-5b-1090 | 100% | 2013-06-18 | 2013-06-18 | 823-7d | General Worker [224 h] | 100% | 100% | 823A_AB |  |  |  |  |
| 823A-ST-SCCT-5b-1110 |  | Removal strut S5 and S4 | 6d | 2012-12-14 A | 2012-12-20 A | 823A-ST-SCCT-5b-1100 | 100% | 2013-06-19 | 2013-06-25 |  | Crawler Crane/Mobile Crane [16 h]; Plant and Equipment Operator (Crawler-mounted Mobile Crane) [16 h]; Rigger/Metal Formwork Erector [128 h] | 100% | 100% | 823A_AB |  |  |  |  |

| ID | WBS | Activity | Duration | Start | Finish | Predecessors | Complete | Planned start | Planned finish | Calendar | Resources | % Planned | % Actual | 823A_As-built | Actual Up to Date | UNITS | Total Quantity | Planned Up to Date |
| --- | --- | --- | --- | --- | --- | --- | --- | --- | --- | --- | --- | --- | --- | --- | --- | --- | --- | --- |
|  | 2 | **Southbound** |  | 2012-12-24 | 2014-12-23 |  |  |  |  |  |  |  |  |  |  |  |  |  |
| 823A-ST-SCCT-5b-2010 |  | Erect internal formwork & Falsework for wall and roof | 4d | 2012-12-24 A | 2012-12-29 A | 823A-ST-SCCT-5b-1110 | 100% | 2013-06-01 | 2013-06-05 |  | Crawler Crane/Mobile Crane [48 h]; Plant and Equipment Operator (Crawler-mounted Mobile Crane) [48 h]; Carpenter (Formwork - Civil Construction) [384 h]; Rigger/Metal Formwork Erector [192 h] | 100% | 100% | 823A_AB |  |  |  |  |
| 823A-ST-SCCT-5b-2020 |  | Rebar fixing for wall and roof | 5d | 2012-12-31 A | 2013-01-05 A | 823A-ST-SCCT-5b-2010 | 100% | 2013-06-06 | 2013-06-11 |  | Reinforcement [67234 kg]; Crawler Crane/Mobile Crane [32 h]; Bar Bender & Fixer [512 h]; Plant and Equipment Operator (Crawler-mounted Mobile Crane) [32 h] | 100% | 100% | 823A_AB |  |  |  |  |
| 823A-ST-SCCT-5b-2030 |  | Erect external formwork for wall and roof | 3d | 2013-01-07 A | 2013-01-09 A | 823A-ST-SCCT-5b-2020 | 100% | 2013-06-13 | 2013-06-15 |  | Crawler Crane/Mobile Crane [16 h]; Plant and Equipment Operator (Crawler-mounted Mobile Crane) [16 h]; Carpenter (Formwork - Civil Construction) [192 h] | 100% | 100% | 823A_AB |  |  |  |  |
| 823A-ST-SCCT-5b-2040 |  | Concreting for wall and roof (450m3) | 1d | 2013-01-10 A | 2013-01-10 A | 823A-ST-SCCT-5b-2030 | 100% | 2013-06-17 | 2013-06-17 |  | General Worker [96 h]; Rigger/Metal Formwork Erector [32 h]; PY Concretor [64 h]; Permanent Concrete [444 Cu m]; Concrete 45/20A [444 Cu m]; Crawler Crane/Mobile Crane [8 h]; Concrete Pump [8 h]; Plant and Equipment Operator (Crawler-mounted Mobile Crane) [16 h] | 100% | 100% | 823A_AB | 450 | m3 | 450 | 450 |
| 823A-ST-SCCT-5b-2050 |  | Curing for wall and roof | 10d | 2013-01-11 A | 2013-01-22 A | 823A-ST-SCCT-5b-2040 | 100% | 2013-06-18 | 2013-06-27 | 823-7d | General Worker [224 h] | 100% | 100% | 823A_AB |  |  |  |  |
| 823A-ST-SCCT-5b-2060 |  | Preparation of construction joint for wall and roof | 1d | 2013-01-23 A | 2013-01-24 A | 823A-ST-SCCT-5b-2040 | 100% | 2013-06-18 | 2013-06-18 | 823-6dPH |  | 100% | 100% | 823A_AB |  |  |  |  |
| 823A-ST-SCCT-5b-2070 |  | Removal external and internal formwork for wall | 2d | 2013-01-25 A | 2013-01-26 A | 823A-ST-SCCT-5b-2060 | 100% | 2013-06-19 | 2013-06-20 |  | Crawler Crane/Mobile Crane [16 h]; Plant and Equipment Operator (Crawler-mounted Mobile Crane) [16 h]; Carpenter (Formwork - Civil Construction) [128 h] | 100% | 100% | 823A_AB |  |  |  |  |
| 823A-ST-SCCT-5b-2080 |  | Removal internal falsework and formwork for roof | 1d | 2013-01-28 A | 2013-01-28 A | 823A-ST-SCCT-5b-2070, 823A-ST-SCCT-5a-2080, 823A-ST-SCCT-5b-2050 | 100% | 2013-06-28 | 2013-06-28 |  | Crawler Crane/Mobile Crane [32 h]; Carpenter (Formwork - Civil Construction) [256 h]; Plant and Equipment Operator (Crawler-mounted Mobile Crane) [32 h]; Rigger/Metal Formwork Erector [128 h] | 100% | 100% | 823A_AB |  |  |  |  |
| 823A-ST-SCCT-5b-2090 |  | Side walkway and cable bracket (204m3) | 5d | 2014-12-18 A | 2014-12-23 A | 823A-ST-SCCT-5b-2080, 823A-ST-SCCT-4a-2090 | 100% |  |  |  | Permanent Concrete [204 Cu m]; Concrete 20/20C [204 Cu m]; Concrete Pump [40 h]; Carpenter (Formwork - Civil Construction) [320 h]; PY Concretor [160 h]; General Worker [320 h]; Plant and Equipment Operator (Crawler-mounted Mobile Crane) [80 h]; Rigger/Metal Formwork Erector [160 h]; Crawler Crane/Mobile Crane [40 h] | 100% | 100% | 823A_AB | 204 | m3 | 204 | 204 |
|  | 3 | **Northbound** |  | 2013-01-05 | 2015-10-03 |  |  |  |  |  |  |  |  |  |  |  |  |  |
| 823A-ST-SCCT-5b-3010 |  | Erect internal formwork & Falsework for wall and roof | 8d | 2013-01-05 A | 2013-01-09 A | 823A-ST-SCCT-5b-2010 | 100% | 2013-06-01 | 2013-06-10 |  | Crawler Crane/Mobile Crane [48 h]; Plant and Equipment Operator (Crawler-mounted Mobile Crane) [48 h]; Carpenter (Formwork - Civil Construction) [384 h]; Rigger/Metal Formwork Erector [192 h] | 100% | 100% | 823A_AB |  |  |  |  |
| 823A-ST-SCCT-5b-3020 |  | Rebar fixing for wall and roof | 7d | 2013-01-10 A | 2013-01-17 A | 823A-ST-SCCT-5b-3010 | 100% | 2013-06-11 | 2013-06-19 |  | Reinforcement [67234 kg]; Crawler Crane/Mobile Crane [32 h]; Bar Bender & Fixer [512 h]; Plant and Equipment Operator (Crawler-mounted Mobile Crane) [32 h] | 100% | 100% | 823A_AB |  |  |  |  |
| 823A-ST-SCCT-5b-3030 |  | Erect external formwork for wall and roof | 2d | 2013-01-17 A | 2013-01-19 A | 823A-ST-SCCT-5b-3020 | 100% | 2013-06-20 | 2013-06-21 |  | Crawler Crane/Mobile Crane [16 h]; Plant and Equipment Operator (Crawler-mounted Mobile Crane) [16 h]; Carpenter (Formwork - Civil Construction) [192 h] | 100% | 100% | 823A_AB |  |  |  |  |
| 823A-ST-SCCT-5b-3040 |  | Concreting for wall and roof (450m3) | 1d | 2013-01-21 A | 2013-01-21 A | 823A-ST-SCCT-5b-3030 | 100% | 2013-06-22 | 2013-06-22 |  | Permanent Concrete [444 Cu m]; Concrete 45/20A [444 Cu m]; Crawler Crane/Mobile Crane [8 h]; Concrete Pump [8 h]; Plant and Equipment Operator (Crawler-mounted Mobile Crane) [16 h]; PY Concretor [64 h]; General Worker [96 h]; Rigger/Metal Formwork Erector [32 h] | 100% | 100% | 823A_AB | 450 | m3 | 450 | 450 |
| 823A-ST-SCCT-5b-3050 |  | Curing for wall and roof | 10d | 2013-01-22 A | 2013-02-01 A | 823A-ST-SCCT-5b-3040 | 100% | 2013-06-23 | 2013-07-02 | 823-7d | General Worker [224 h] | 100% | 100% | 823A_AB |  |  |  |  |
| 823A-ST-SCCT-5b-3060 |  | Preparation of construction joint for wall and roof | 1d | 2013-02-02 A | 2013-02-02 A | 823A-ST-SCCT-5b-3040 | 100% | 2013-06-24 | 2013-06-24 | 823-6dPH |  | 100% | 100% | 823A_AB |  |  |  |  |
| 823A-ST-SCCT-5b-3070 |  | Removal external and internal formwork for wall | 2d | 2013-02-04 A | 2013-02-05 A | 823A-ST-SCCT-5b-3060 | 100% | 2013-06-25 | 2013-06-26 |  | Crawler Crane/Mobile Crane [16 h]; Plant and Equipment Operator (Crawler-mounted Mobile Crane) [16 h]; Carpenter (Formwork - Civil Construction) [128 h] | 100% | 100% | 823A_AB |  |  |  |  |
| 823A-ST-SCCT-5b-3080 |  | Removal internal falsework and formwork for roof | 1d | 2013-02-06 A | 2013-02-07 A | 823A-ST-SCCT-5a-3080, 823A-ST-SCCT-5b-3050, 823A-ST-SCCT-5b-3070 | 100% | 2013-07-03 | 2013-07-03 |  | Crawler Crane/Mobile Crane [32 h]; Carpenter (Formwork - Civil Construction) [256 h]; Plant and Equipment Operator (Crawler-mounted Mobile Crane) [32 h]; Rigger/Metal Formwork Erector [128 h] | 100% | 100% | 823A_AB |  |  |  |  |
| 823A-ST-SCCT-5b-3090 |  | Side walkway and cable bracket (204m3) | 5d | 2015-07-02 A | 2015-10-03 A | 823A-ST-SCCT-5b-3080, 823A-ST-SCCT-4a-3090 | 100% | 2015-08-29 | 2015-09-03 |  | Concrete Pump [40 h]; Carpenter (Formwork - Civil Construction) [320 h]; PY Concretor [160 h]; General Worker [320 h]; Plant and Equipment Operator (Crawler-mounted Mobile Crane) [80 h]; Rigger/Metal Formwork Erector [160 h]; Crawler Crane/Mobile Crane [40 h]; Permanent Concrete [204 Cu m]; Concrete 20/20C [204 Cu m] | 100% | 100% | 823A_AB | 204 | m3 | 204 | 204 |
|  | 5 | **Bay 4a** |  | 2012-12-20 | 2015-10-03 |  |  |  |  |  |  |  |  |  |  |  |  |  |
|  | 1 | **Base Slab** |  | 2012-12-20 | 2013-01-26 |  |  |  |  |  |  |  |  |  |  |  |  |  |
| 823A-ST-SCCT-4a-1010 |  | Placing of waterproof member T-lock & testing for base slab | 1d | 2012-12-20 A | 2012-12-20 A | 823A-ST-SCCT-5b-1100, 823A-ST-SCC-ELS-1130 | 100% | 2013-06-01 | 2013-06-01 |  | Skill Labour [64 h] | 100% | 100% | 823A_AB |  |  |  |  |
| 823A-ST-SCCT-4a-1020 |  | Erect external formwork for base slab | 1d | 2012-12-21 A | 2012-12-22 A | 823A-ST-SCCT-4a-1010 | 100% | 2013-06-03 | 2013-06-03 |  | Crawler Crane/Mobile Crane [8 h]; Carpenter (Formwork - Civil Construction) [96 h]; Plant and Equipment Operator (Crawler-mounted Mobile Crane) [8 h] | 100% | 100% | 823A_AB |  |  |  |  |
| 823A-ST-SCCT-4a-1030 |  | Rebar fixing for base slab | 2d | 2012-12-22 A | 2012-12-24 A | 823A-ST-SCCT-4a-1020 | 100% | 2013-06-04 | 2013-06-05 |  | Reinforcement [68142 kg]; Crawler Crane/Mobile Crane [16 h]; Plant and Equipment Operator (Crawler-mounted Mobile Crane) [16 h]; Bar Bender & Fixer [256 h] | 100% | 100% | 823A_AB |  |  |  |  |
| 823A-ST-SCCT-4a-1040 |  | Erect internal kicker formwork for base slab | 1d | 2012-12-27 A | 2012-12-27 A | 823A-ST-SCCT-4a-1030 | 100% | 2013-06-06 | 2013-06-06 |  | Crawler Crane/Mobile Crane [16 h]; Plant and Equipment Operator (Crawler-mounted Mobile Crane) [96 h]; Carpenter (Formwork - Civil Construction) [192 h] | 100% | 100% | 823A_AB |  |  |  |  |
| 823A-ST-SCCT-4a-1050 |  | Concreting for base slab (363m3) | 1d | 2012-12-27 A | 2012-12-27 A | 823A-ST-SCCT-4a-1040 SS | 100% | 2013-06-06 | 2013-06-06 |  | Crawler Crane/Mobile Crane [8 h]; Concrete Pump [8 h]; PY Concretor [64 h]; General Worker [96 h]; Plant and Equipment Operator (Crawler-mounted Mobile Crane) [16 h]; Rigger/Metal Formwork Erector [32 h]; Permanent Concrete [363 Cu m]; Concrete 45/20A [363 Cu m] | 100% | 100% | 823A_AB | 363 | m3 | 363 | 363 |
| 823A-ST-SCCT-4a-1060 |  | Curing for base slab | 7d | 2012-12-28 A | 2013-01-09 A | 823A-ST-SCCT-4a-1050 | 100% | 2013-06-07 | 2013-06-13 | 823-7d | General Worker [224 h] | 100% | 100% | 823A_AB |  |  |  |  |
| 823A-ST-SCCT-4a-1070 |  | Preparation of construction joint for base slab | 1d | 2013-01-10 A | 2013-01-10 A | 823A-ST-SCCT-4a-1050 | 100% | 2013-06-07 | 2013-06-07 | 823-6dPH |  | 100% | 100% | 823A_AB |  |  |  |  |
| 823A-ST-SCCT-4a-1080 |  | Removal of formwork for base slab | 1d | 2013-01-11 A | 2013-01-11 A | 823A-ST-SCCT-4a-1070 | 100% | 2013-06-08 | 2013-06-08 |  | Crawler Crane/Mobile Crane [8 h]; Carpenter (Formwork - Civil Construction) [64 h]; Plant and Equipment Operator (Crawler-mounted Mobile Crane) [8 h] | 100% | 100% | 823A_AB |  |  |  |  |
| 823A-ST-SCCT-4a-1090 |  | Shear beam | 4d | 2013-01-12 A | 2013-01-12 A | 823A-ST-SCCT-4a-1080 | 100% | 2013-06-10 | 2013-06-14 |  | Temporary Concrete [204 Cu m]; Concrete 20/20C [204 Cu m]; Crawler Crane/Mobile Crane [8 h]; Concrete Pump [8 h]; PY Concretor [32 h]; Plant and Equipment Operator (Crawler-mounted Mobile Crane) [16 h]; General Worker [64 h]; Rigger/Metal Formwork Erector [16 h] | 100% | 100% | 823A_AB |  |  |  |  |
| 823A-ST-SCCT-4a-1100 |  | Curing | 1d | 2013-01-14 A | 2013-01-14 A | 823A-ST-SCCT-4a-1090, 823A-ST-SCCT-4a-1060 | 100% | 2013-06-15 | 2013-06-15 | 823-7d | General Worker [224 h] | 100% | 100% | 823A_AB |  |  |  |  |
| 823A-ST-SCCT-4a-1110 |  | Removal strut S5 and S4 | 4d | 2013-01-15 A | 2013-01-26 A | 823A-ST-SCCT-4a-1100 | 100% | 2013-06-17 | 2013-06-20 |  | Crawler Crane/Mobile Crane [16 h]; Rigger/Metal Formwork Erector [128 h]; Plant and Equipment Operator (Crawler-mounted Mobile Crane) [16 h] | 100% | 100% | 823A_AB |  |  |  |  |

| ID | WBS | Activity | Duration | Start | Finish | Predecessors | Complete | Planned start | Planned finish | Calendar | Resources | % Planned | % Actual | 823A_As-built | Actual Up to Date | UNITS | Total Quantity | Planned Up to Date |
| --- | --- | --- | --- | --- | --- | --- | --- | --- | --- | --- | --- | --- | --- | --- | --- | --- | --- | --- |
|  | 2 | **Southbound** |  | 2013-03-06 | 2014-12-17 |  |  |  |  |  |  |  |  |  |  |  |  |  |
| 823A-ST-SCCT-4a-2010 |  | Erect internal formwork & Falsework for wall and roof | 4d | 2013-03-06 A | 2013-03-09 A | 823A-ST-TBM-SB-1030, 823A-ST-SCCT-4a-1110, 823A-ST-SCCT-5b-2070 | 100% | 2013-06-08 | 2013-06-13 |  | Crawler Crane/Mobile Crane [48 h]; Plant and Equipment Operator (Crawler-mounted Mobile Crane) [48 h]; Carpenter (Formwork - Civil Construction) [384 h]; Rigger/Metal Formwork Erector [192 h] | 100% | 100% | 823A_AB |  |  |  |  |
| 823A-ST-SCCT-4a-2020 |  | Rebar fixing for wall and roof | 3d | 2013-03-11 A | 2013-03-13 A | 823A-ST-SCCT-4a-2010 | 100% | 2013-06-14 | 2013-06-17 |  | Bar Bender & Fixer [512 h]; Plant and Equipment Operator (Crawler-mounted Mobile Crane) [32 h]; Reinforcement [67234 kg]; Crawler Crane/Mobile Crane [32 h] | 100% | 100% | 823A_AB |  |  |  |  |
| 823A-ST-SCCT-4a-2030 |  | Erect external formwork for wall and roof | 2d | 2013-03-12 A | 2013-03-13 A | 823A-ST-SCCT-4a-2020 | 100% | 2013-06-18 | 2013-06-19 |  | Crawler Crane/Mobile Crane [16 h]; Plant and Equipment Operator (Crawler-mounted Mobile Crane) [16 h]; Carpenter (Formwork - Civil Construction) [192 h] | 100% | 100% | 823A_AB |  |  |  |  |
| 823A-ST-SCCT-4a-2040 |  | Concreting for wall and roof (450m3) | 1d | 2013-03-14 A | 2013-03-14 A | 823A-ST-SCCT-4a-2030 | 100% | 2013-06-20 | 2013-06-20 |  | Permanent Concrete [444 Cu m]; Concrete 45/20A [444 Cu m]; Crawler Crane/Mobile Crane [8 h]; Concrete Pump [8 h]; Plant and Equipment Operator (Crawler-mounted Mobile Crane) [16 h]; PY Concretor [64 h]; General Worker [96 h]; Rigger/Metal Formwork Erector [32 h] | 100% | 100% | 823A_AB | 450 | m3 | 450 | 450 |
| 823A-ST-SCCT-4a-2050 |  | Curing for wall and roof | 10d | 2013-03-15 A | 2013-03-16 A | 823A-ST-SCCT-4a-2040 | 100% | 2013-06-21 | 2013-06-30 | 823-7d | General Worker [224 h] | 100% | 100% | 823A_AB |  |  |  |  |
| 823A-ST-SCCT-4a-2070 |  | Removal external and internal formwork for wall | 2d | 2013-03-16 A | 2013-03-16 A | 823A-ST-SCCT-4a-2060 | 100% | 2013-06-22 | 2013-06-24 |  | Crawler Crane/Mobile Crane [16 h]; Plant and Equipment Operator (Crawler-mounted Mobile Crane) [16 h]; Carpenter (Formwork - Civil Construction) [128 h] | 100% | 100% | 823A_AB |  |  |  |  |
| 823A-ST-SCCT-4a-2060 |  | Preparation of construction joint for wall and roof | 1d | 2013-03-18 A | 2013-03-18 A | 823A-ST-SCCT-4a-2040 | 100% | 2013-06-21 | 2013-06-21 | 823-6dPH |  | 100% | 100% | 823A_AB |  |  |  |  |
| 823A-ST-SCCT-4a-2080 |  | Removal internal falsework and formwork for roof | 1d | 2013-03-19 A | 2013-03-19 A | 823A-ST-SCCT-4a-2070, 823A-ST-SCCT-4a-2050, 823A-ST-SCCT-5b-2080 | 100% | 2013-07-02 | 2013-07-02 |  | Plant and Equipment Operator (Crawler-mounted Mobile Crane) [32 h]; Crawler Crane/Mobile Crane [32 h]; Carpenter (Formwork - Civil Construction) [256 h]; Rigger/Metal Formwork Erector [128 h] | 100% | 100% | 823A_AB |  |  |  |  |
| 823A-ST-SCCT-4a-2090 |  | Side walkway and cable bracket (204m3) | 5d | 2014-12-12 A | 2014-12-17 A | 823A-ST-SCCT-4b-2090, 823A-ST-SCCT-4a-2080 | 100% |  |  |  | Concrete 20/20C [204 Cu m]; Crawler Crane/Mobile Crane [40 h]; Concrete Pump [40 h]; PY Concretor [160 h]; General Worker [320 h]; Plant and Equipment Operator (Crawler-mounted Mobile Crane) [80 h]; Rigger/Metal Formwork Erector [160 h]; Permanent Concrete [204 Cu m]; Carpenter (Formwork - Civil Construction) [320 h] | 100% | 100% | 823A_AB | 204 | m3 | 204 | 204 |
|  | 3 | **Northbound** |  | 2013-02-18 | 2015-10-03 |  |  |  |  |  |  |  |  |  |  |  |  |  |
| 823A-ST-SCCT-4a-3010 |  | Erect internal formwork & Falsework for wall and roof | 4d | 2013-02-18 A | 2013-02-21 A | 823A-ST-SCCT-4a-2010, 823A-ST-SCCT-5b-3070 | 100% | 2013-06-08 | 2013-06-13 |  | Crawler Crane/Mobile Crane [48 h]; Plant and Equipment Operator (Crawler-mounted Mobile Crane) [48 h]; Carpenter (Formwork - Civil Construction) [384 h]; Rigger/Metal Formwork Erector [192 h] | 100% | 100% | 823A_AB |  |  |  |  |
| 823A-ST-SCCT-4a-3020 |  | Rebar fixing for wall and roof | 3d | 2013-02-21 A | 2013-02-25 A | 823A-ST-SCCT-4a-3010 | 100% | 2013-06-14 | 2013-06-17 |  | Reinforcement [67234 kg]; Crawler Crane/Mobile Crane [32 h]; Bar Bender & Fixer [512 h]; Plant and Equipment Operator (Crawler-mounted Mobile Crane) [32 h] | 100% | 100% | 823A_AB |  |  |  |  |
| 823A-ST-SCCT-4a-3030 |  | Erect external formwork for wall and roof | 2d | 2013-02-26 A | 2013-03-01 A | 823A-ST-SCCT-4a-3020 | 100% | 2013-06-18 | 2013-06-19 |  | Crawler Crane/Mobile Crane [16 h]; Plant and Equipment Operator (Crawler-mounted Mobile Crane) [16 h]; Carpenter (Formwork - Civil Construction) [192 h] | 100% | 100% | 823A_AB |  |  |  |  |
| 823A-ST-SCCT-4a-3040 |  | Concreting for wall and roof (450m3) | 1d | 2013-03-02 A | 2013-03-02 A | 823A-ST-SCCT-4a-3030 | 100% | 2013-06-20 | 2013-06-20 |  | Permanent Concrete [444 Cu m]; Concrete 45/20A [444 Cu m]; Crawler Crane/Mobile Crane [8 h]; Concrete Pump [8 h]; Plant and Equipment Operator (Crawler-mounted Mobile Crane) [16 h]; PY Concretor [64 h]; General Worker [96 h]; Rigger/Metal Formwork Erector [32 h] | 100% | 100% | 823A_AB | 450 | m3 | 450 | 450 |
| 823A-ST-SCCT-4a-3050 |  | Curing for wall and roof | 10d | 2013-03-04 A | 2013-03-06 A | 823A-ST-SCCT-4a-3040 | 100% | 2013-06-21 | 2013-06-30 | 823-7d | General Worker [224 h] | 100% | 100% | 823A_AB |  |  |  |  |
| 823A-ST-SCCT-4a-3060 |  | Preparation of construction joint for wall and roof | 1d | 2013-03-08 A | 2013-03-08 A | 823A-ST-SCCT-4a-3040 | 100% | 2013-06-21 | 2013-06-21 | 823-6dPH |  | 100% | 100% | 823A_AB |  |  |  |  |
| 823A-ST-SCCT-4a-3070 |  | Removal external and internal formwork for wall | 2d | 2013-03-08 A | 2013-03-09 A | 823A-ST-SCCT-4a-3060 | 100% | 2013-06-22 | 2013-06-24 |  | Crawler Crane/Mobile Crane [16 h]; Plant and Equipment Operator (Crawler-mounted Mobile Crane) [16 h]; Carpenter (Formwork - Civil Construction) [128 h] | 100% | 100% | 823A_AB |  |  |  |  |
| 823A-ST-SCCT-4a-3080 |  | Removal internal falsework and formwork for roof | 1d | 2013-03-11 A | 2013-03-11 A | 823A-ST-SCCT-5b-3080, 823A-ST-SCCT-4a-3050, 823A-ST-SCCT-4a-3070 | 100% | 2013-07-02 | 2013-07-02 |  | Crawler Crane/Mobile Crane [32 h]; Carpenter (Formwork - Civil Construction) [256 h]; Plant and Equipment Operator (Crawler-mounted Mobile Crane) [32 h]; Rigger/Metal Formwork Erector [128 h] | 100% | 100% | 823A_AB |  |  |  |  |
| 823A-ST-SCCT-4a-3090 |  | Side walkway and cable bracket (204m3) | 5d | 2015-07-02 A | 2015-10-03 A | 823A-ST-SCCT-4a-3080, 823A-ST-SCCT-4b-3090 | 100% | 2015-08-24 | 2015-08-28 |  | Permanent Concrete [204 Cu m]; Concrete 20/20C [204 Cu m]; Crawler Crane/Mobile Crane [40 h]; Concrete Pump [40 h]; PY Concretor [160 h]; General Worker [320 h]; Plant and Equipment Operator (Crawler-mounted Mobile Crane) [80 h]; Rigger/Metal Formwork Erector [160 h]; Carpenter (Formwork - Civil Construction) [320 h] | 100% | 100% | 823A_AB | 204 | m3 | 204 | 204 |
|  | 6 | **Bay 4b** |  | 2013-01-14 | 2015-10-02 |  |  |  |  |  |  |  |  |  |  |  |  |  |
|  | 1 | **Base Slab** |  | 2013-01-14 | 2013-01-29 |  |  |  |  |  |  |  |  |  |  |  |  |  |
| 823A-ST-SCCT-4b-1010 |  | Placing of waterproof member T-lock & testing for base slab | 1d | 2013-01-14 A | 2013-01-14 A | 823A-ST-SCC-ELS-1140, 823A-ST-SCCT-4a-1080 | 100% | 2013-06-01 | 2013-06-01 |  | Skill Labour [64 h] | 100% | 100% | 823A_AB |  |  |  |  |
| 823A-ST-SCCT-4b-1020 |  | Erect external formwork for base slab | 2d | 2013-01-15 A | 2013-01-16 A | 823A-ST-SCCT-4b-1010 | 100% | 2013-06-03 | 2013-06-04 |  | Plant and Equipment Operator (Crawler-mounted Mobile Crane) [8 h]; Carpenter (Formwork - Civil Construction) [96 h]; Crawler Crane/Mobile Crane [8 h] | 100% | 100% | 823A_AB |  |  |  |  |
| 823A-ST-SCCT-4b-1030 |  | Rebar fixing for base slab | 2d | 2013-01-17 A | 2013-01-18 A | 823A-ST-SCCT-4b-1020 | 100% | 2013-06-05 | 2013-06-06 |  | Plant and Equipment Operator (Crawler-mounted Mobile Crane) [16 h]; Reinforcement [68142 kg]; Crawler Crane/Mobile Crane [16 h]; Bar Bender & Fixer [256 h] | 100% | 100% | 823A_AB |  |  |  |  |
| 823A-ST-SCCT-4b-1040 |  | Erect internal kicker formwork for base slab | 2d | 2013-01-18 A | 2013-01-18 A | 823A-ST-SCCT-4b-1030 SS | 100% | 2013-06-05 | 2013-06-06 |  | Crawler Crane/Mobile Crane [16 h]; Plant and Equipment Operator (Crawler-mounted Mobile Crane) [96 h]; Carpenter (Formwork - Civil Construction) [192 h] | 100% | 100% | 823A_AB |  |  |  |  |
| 823A-ST-SCCT-4b-1050 |  | Concreting for base slab (363m3) | 1d | 2013-01-19 A | 2013-01-19 A | 823A-ST-SCCT-4b-1040 | 100% | 2013-06-07 | 2013-06-07 |  | Permanent Concrete [363 Cu m]; Concrete 45/20A [363 Cu m]; Crawler Crane/Mobile Crane [8 h]; Concrete Pump [8 h]; PY Concretor [64 h]; General Worker [96 h]; Plant and Equipment Operator (Crawler-mounted Mobile Crane) [16 h]; Rigger/Metal Formwork Erector [32 h] | 100% | 100% | 823A_AB | 363 | m3 | 363 | 363 |
| 823A-ST-SCCT-4b-1060 |  | Curing for base slab | 7d | 2013-01-21 A | 2013-01-28 A | 823A-ST-SCCT-4b-1050 | 100% | 2013-06-08 | 2013-06-14 | 823-7d | General Worker [224 h] | 100% | 100% | 823A_AB |  |  |  |  |
| 823A-ST-SCCT-4b-1080 |  | Removal of formwork for base slab | 1d | 2013-01-21 A | 2013-01-21 A | 823A-ST-SCCT-4b-1070 | 100% | 2013-06-10 | 2013-06-10 |  | Crawler Crane/Mobile Crane [8 h]; Carpenter (Formwork - Civil Construction) [64 h]; Plant and Equipment Operator (Crawler-mounted Mobile Crane) [8 h] | 100% | 100% | 823A_AB |  |  |  |  |
| 823A-ST-SCCT-4b-1090 |  | Infill concrete in between D-wall and base slab | 1d | 2013-01-21 A | 2013-01-21 A | 823A-ST-SCCT-4b-1080 | 100% | 2013-06-11 | 2013-06-11 |  | Temporary Concrete [204 Cu m]; Concrete 20/20C [204 Cu m]; Crawler Crane/Mobile Crane [8 h]; Concrete Pump [8 h]; PY Concretor [32 h]; Plant and Equipment Operator (Crawler-mounted Mobile Crane) [16 h]; General Worker [64 h]; Rigger/Metal Formwork Erector [16 h] | 100% | 100% | 823A_AB |  |  |  |  |
| 823A-ST-SCCT-4b-1100 |  | Curing | 1d | 2013-01-22 A | 2013-01-22 A | 823A-ST-SCCT-4b-1060, 823A-ST-SCCT-4b-1090 | 100% | 2013-06-15 | 2013-06-15 | 823-7d | General Worker [224 h] | 100% | 100% | 823A_AB |  |  |  |  |
| 823A-ST-SCCT-4b-1110 |  | Removal strut S5 and S4 | 4d | 2013-01-23 A | 2013-01-26 A | 823A-ST-SCCT-4b-1100 | 100% | 2013-06-17 | 2013-06-20 |  | Crawler Crane/Mobile Crane [16 h]; Plant and Equipment Operator (Crawler-mounted Mobile Crane) [16 h]; Rigger/Metal Formwork Erector [128 h] | 100% | 100% | 823A_AB |  |  |  |  |
| 823A-ST-SCCT-4b-1070 |  | Preparation of construction joint for base slab | 1d | 2013-01-29 A | 2013-01-29 A | 823A-ST-SCCT-4b-1050 | 100% | 2013-06-08 | 2013-06-08 | 823-6dPH |  | 100% | 100% | 823A_AB |  |  |  |  |

| ID | WBS | Activity | Duration | Start | Finish | Predecessors | Complete | Planned start | Planned finish | Calendar | Resources | % Planned | % Actual | 823A_As-built | Actual Up to Date | UNITS | Total Quantity | Planned Up to Date | TIme Gain/Loss |
| --- | --- | --- | --- | --- | --- | --- | --- | --- | --- | --- | --- | --- | --- | --- | --- | --- | --- | --- | --- |
|  | 2 | **Southbound** |  | 2013-03-06 | 2014-12-11 |  |  |  |  |  |  |  |  |  |  |  |  |  |  |
| 823A-ST-SCCT-4b-2010 |  | Erect internal formwork & Falsework for wall and roof | 4d | 2013-03-06 A | 2013-03-09 A | 823A-ST-SCCT-4a-2070, 823A-ST-SCCT-4b-1110 | 100% | 2013-06-08 | 2013-06-13 |  | Crawler Crane/Mobile Crane [48 h]; Plant and Equipment Operator (Crawler-mounted Mobile Crane) [48 h]; Carpenter (Formwork - Civil Construction) [384 h]; Rigger/Metal Formwork Erector [192 h] | 100% | 100% | 823A_AB |  |  |  |  |  |
| 823A-ST-SCCT-4b-2020 |  | Rebar fixing for wall and roof | 3d | 2013-03-11 A | 2013-03-13 A | 823A-ST-SCCT-4b-2010 | 100% | 2013-06-14 | 2013-06-17 |  | Reinforcement [67234 kg]; Crawler Crane/Mobile Crane [32 h]; Bar Bender & Fixer [512 h]; Plant and Equipment Operator (Crawler-mounted Mobile Crane) [32 h] | 100% | 100% | 823A_AB |  |  |  |  |  |
| 823A-ST-SCCT-4b-2030 |  | Erect external formwork for wall and roof | 2d | 2013-03-12 A | 2013-03-13 A | 823A-ST-SCCT-4b-2020 | 100% | 2013-06-18 | 2013-06-19 |  | Crawler Crane/Mobile Crane [16 h]; Plant and Equipment Operator (Crawler-mounted Mobile Crane) [16 h]; Carpenter (Formwork - Civil Construction) [192 h] | 100% | 100% | 823A_AB |  |  |  |  |  |
| 823A-ST-SCCT-4b-2040 |  | Concreting for wall and roof (450m3) | 1d | 2013-03-14 A | 2013-03-14 A | 823A-ST-SCCT-4b-2030 | 100% | 2013-06-20 | 2013-06-20 |  | Permanent Concrete [444 Cu m]; Concrete 45/20A [444 Cu m]; Crawler Crane/Mobile Crane [8 h]; Concrete Pump [8 h]; Plant and Equipment Operator (Crawler-mounted Mobile Crane) [16 h]; PY Concretor [64 h]; General Worker [96 h]; Rigger/Metal Formwork Erector [32 h] | 100% | 100% | 823A_AB | 450 | m3 | 450 | 450 |  |
| 823A-ST-SCCT-4b-2050 |  | Curing for wall and roof | 10d | 2013-03-15 A | 2013-03-18 A | 823A-ST-SCCT-4b-2040 | 100% | 2013-06-21 | 2013-06-30 | 823-7d | General Worker [224 h] | 100% | 100% | 823A_AB |  |  |  |  |  |
| 823A-ST-SCCT-4b-2060 |  | Preparation of construction joint for wall and roof | 1d | 2013-03-19 A | 2013-03-19 A | 823A-ST-SCCT-4b-2040 | 100% | 2013-06-21 | 2013-06-21 | 823-6dPH |  | 100% | 100% | 823A_AB |  |  |  |  |  |
| 823A-ST-SCCT-4b-2070 |  | Removal external and internal formwork for wall | 2d | 2013-03-20 A | 2013-03-21 A | 823A-ST-SCCT-4b-2060 | 100% | 2013-06-22 | 2013-06-24 |  | Crawler Crane/Mobile Crane [16 h]; Plant and Equipment Operator (Crawler-mounted Mobile Crane) [16 h]; Carpenter (Formwork - Civil Construction) [128 h] | 100% | 100% | 823A_AB |  |  |  |  |  |
| 823A-ST-SCCT-4b-2080 |  | Removal internal falsework and formwork for roof | 1d | 2013-03-21 A | 2013-03-22 A | 823A-ST-SCCT-4b-2050, 823A-ST-SCCT-4a-2080, 823A-ST-SCCT-4b-2070 | 100% | 2013-07-02 | 2013-07-02 |  | Crawler Crane/Mobile Crane [32 h]; Carpenter (Formwork - Civil Construction) [256 h]; Plant and Equipment Operator (Crawler-mounted Mobile Crane) [32 h]; Rigger/Metal Formwork Erector [128 h] | 100% | 100% | 823A_AB |  |  |  |  |  |
| 823A-ST-SCCT-4b-2090 |  | Side walkway and cable bracket (204m3) | 5d | 2014-12-06 A | 2014-12-11 A | 823A-ST-SCCT-4b-2080, 823A-ST-SCCT-3a-2090 | 100% |  |  |  | Permanent Concrete [204 Cu m]; Concrete 20/20C [204 Cu m]; Concrete Pump [40 h]; PY Concretor [160 h]; General Worker [320 h]; Plant and Equipment Operator (Crawler-mounted Mobile Crane) [80 h]; Rigger/Metal Formwork Erector [160 h]; Crawler Crane/Mobile Crane [40 h]; Carpenter (Formwork - Civil Construction) [320 h] | 100% | 100% | 823A_AB | 204 | m3 | 204 | 204 | +15 |
|  | 3 | **Northbound** |  | 2013-02-21 | 2015-10-02 |  |  |  |  |  |  |  |  |  |  |  |  |  |  |
| 823A-ST-SCCT-4b-3010 |  | Erect internal formwork & Falsework for wall and roof | 4d | 2013-02-21 A | 2013-02-26 A | 823A-ST-SCCT-4b-2010, 823A-ST-SCCT-4a-3070 | 100% | 2013-06-08 | 2013-06-13 |  | Crawler Crane/Mobile Crane [48 h]; Plant and Equipment Operator (Crawler-mounted Mobile Crane) [48 h]; Carpenter (Formwork - Civil Construction) [384 h]; Rigger/Metal Formwork Erector [192 h] | 100% | 100% | 823A_AB |  |  |  |  |  |
| 823A-ST-SCCT-4b-3020 |  | Rebar fixing for wall and roof | 3d | 2013-02-26 A | 2013-03-01 A | 823A-ST-SCCT-4b-3010 | 100% | 2013-06-14 | 2013-06-17 |  | Reinforcement [67234 kg]; Crawler Crane/Mobile Crane [32 h]; Bar Bender & Fixer [512 h]; Plant and Equipment Operator (Crawler-mounted Mobile Crane) [32 h] | 100% | 100% | 823A_AB |  |  |  |  |  |
| 823A-ST-SCCT-4b-3030 |  | Erect external formwork for wall and roof | 2d | 2013-02-27 A | 2013-03-01 A | 823A-ST-SCCT-4b-3020 | 100% | 2013-06-18 | 2013-06-19 |  | Crawler Crane/Mobile Crane [16 h]; Plant and Equipment Operator (Crawler-mounted Mobile Crane) [16 h]; Carpenter (Formwork - Civil Construction) [192 h] | 100% | 100% | 823A_AB |  |  |  |  |  |
| 823A-ST-SCCT-4b-3040 |  | Concreting for wall and roof (450m3) | 1d | 2013-03-02 A | 2013-03-02 A | 823A-ST-SCCT-4b-3030 | 100% | 2013-06-20 | 2013-06-20 |  | Permanent Concrete [444 Cu m]; Concrete 45/20A [444 Cu m]; Crawler Crane/Mobile Crane [8 h]; Concrete Pump [8 h]; Plant and Equipment Operator (Crawler-mounted Mobile Crane) [16 h]; PY Concretor [64 h]; General Worker [96 h]; Rigger/Metal Formwork Erector [32 h] | 100% | 100% | 823A_AB | 450 | m3 | 450 | 450 |  |
| 823A-ST-SCCT-4b-3050 |  | Curing for wall and roof | 10d | 2013-03-04 A | 2013-03-05 A | 823A-ST-SCCT-4b-3040 | 100% | 2013-06-21 | 2013-06-30 | 823-7d | General Worker [224 h] | 100% | 100% | 823A_AB |  |  |  |  |  |
| 823A-ST-SCCT-4b-3060 |  | Preparation of construction joint for wall and roof | 1d | 2013-03-06 A | 2013-03-07 A | 823A-ST-SCCT-4b-3040 | 100% | 2013-06-21 | 2013-06-21 | 823-6dPH |  | 100% | 100% | 823A_AB |  |  |  |  |  |
| 823A-ST-SCCT-4b-3070 |  | Removal external and internal formwork for wall | 2d | 2013-03-08 A | 2013-03-09 A | 823A-ST-SCCT-4b-3060 | 100% | 2013-06-22 | 2013-06-24 |  | Crawler Crane/Mobile Crane [16 h]; Plant and Equipment Operator (Crawler-mounted Mobile Crane) [16 h]; Carpenter (Formwork - Civil Construction) [128 h] | 100% | 100% | 823A_AB |  |  |  |  |  |
| 823A-ST-SCCT-4b-3080 |  | Removal internal falsework and formwork for roof | 1d | 2013-03-09 A | 2013-03-11 A | 823A-ST-SCCT-6b-3180, 823A-ST-SCCT-4b-3050, 823A-ST-SCCT-6b-2230, 823A-ST-SCCT-4b-3070, 823A-ST-SCCT-4a-3080 | 100% | 2013-07-02 | 2013-07-02 |  | Crawler Crane/Mobile Crane [32 h]; Carpenter (Formwork - Civil Construction) [256 h]; Plant and Equipment Operator (Crawler-mounted Mobile Crane) [32 h]; Rigger/Metal Formwork Erector [128 h] | 100% | 100% | 823A_AB |  |  |  |  |  |
| 823A-ST-SCCT-4b-3090 |  | Side walkway and cable bracket (204m3) | 5d | 2015-07-02 A | 2015-10-02 A | 823A-ST-SCCT-4b-3080, 823A-ST-SCCT-3a-3090 | 100% | 2015-08-18 | 2015-08-22 |  | PY Concretor [160 h]; General Worker [320 h]; Plant and Equipment Operator (Crawler-mounted Mobile Crane) [80 h]; Carpenter (Formwork - Civil Construction) [320 h]; Permanent Concrete [204 Cu m]; Concrete 20/20C [204 Cu m]; Crawler Crane/Mobile Crane [40 h]; Concrete Pump [40 h]; Rigger/Metal Formwork Erector [160 h] | 100% | 100% | 823A_AB | 204 | m3 | 204 | 204 |  |
|  | 7 | **Bay 3a** |  | 2013-01-25 | 2015-10-02 |  |  |  |  |  |  |  |  |  |  |  |  |  |  |
|  | 1 | **Base Slab** |  | 2013-01-25 | 2013-02-16 |  |  |  |  |  |  |  |  |  |  |  |  |  |  |
| 823A-ST-SCCT-3a-1010 |  | Placing of waterproof member T-lock & testing for base slab | 1d | 2013-01-25 A | 2013-01-25 A | 823A-ST-SCCT-4b-1080, 823A-ST-SCC-ELS-1150 | 100% | 2013-06-01 | 2013-06-01 |  | Skill Labour [64 h] | 100% | 100% | 823A_AB |  |  |  |  |  |
| 823A-ST-SCCT-3a-1020 |  | Erect external formwork for base slab | 2d | 2013-01-26 A | 2013-01-28 A | 823A-ST-SCCT-3a-1010 | 100% | 2013-06-03 | 2013-06-04 |  | Crawler Crane/Mobile Crane [8 h]; Carpenter (Formwork - Civil Construction) [96 h]; Plant and Equipment Operator (Crawler-mounted Mobile Crane) [8 h] | 100% | 100% | 823A_AB |  |  |  |  |  |
| 823A-ST-SCCT-3a-1030 |  | Rebar fixing for base slab | 3d | 2013-01-28 A | 2013-02-01 A | 823A-ST-SCCT-3a-1020 | 100% | 2013-06-05 | 2013-06-07 |  | Reinforcement [68142 kg]; Crawler Crane/Mobile Crane [16 h]; Plant and Equipment Operator (Crawler-mounted Mobile Crane) [16 h]; Bar Bender & Fixer [256 h] | 100% | 100% | 823A_AB |  |  |  |  |  |
| 823A-ST-SCCT-3a-1040 |  | Erect internal kicker formwork for base slab | 2d | 2013-02-01 A | 2013-02-01 A | 823A-ST-SCCT-3a-1030 | 100% | 2013-06-08 | 2013-06-10 |  | Crawler Crane/Mobile Crane [16 h]; Plant and Equipment Operator (Crawler-mounted Mobile Crane) [96 h]; Carpenter (Formwork - Civil Construction) [192 h] | 100% | 100% | 823A_AB |  |  |  |  |  |
| 823A-ST-SCCT-3a-1050 |  | Concreting for base slab (363m3) | 1d | 2013-02-02 A | 2013-02-02 A | 823A-ST-SCCT-3a-1040 | 100% | 2013-06-11 | 2013-06-11 |  | Permanent Concrete [363 Cu m]; Concrete 45/20A [363 Cu m]; Crawler Crane/Mobile Crane [8 h]; Concrete Pump [8 h]; PY Concretor [64 h]; General Worker [96 h]; Rigger/Metal Formwork Erector [32 h]; Plant and Equipment Operator (Crawler-mounted Mobile Crane) [16 h] | 100% | 100% | 823A_AB | 363 | m3 | 363 | 363 |  |
| 823A-ST-SCCT-3a-1060 |  | Curing for base slab | 7d | 2013-02-04 A | 2013-02-08 A | 823A-ST-SCCT-3a-1050 | 100% | 2013-06-12 | 2013-06-18 | 823-7d | General Worker [224 h] | 100% | 100% | 823A_AB |  |  |  |  |  |
| 823A-ST-SCCT-3a-1080 |  | Removal of formwork for base slab | 1d | 2013-02-04 A | 2013-02-04 A | 823A-ST-SCCT-3a-1070 | 100% | 2013-06-14 | 2013-06-14 |  | Crawler Crane/Mobile Crane [8 h]; Carpenter (Formwork - Civil Construction) [64 h]; Plant and Equipment Operator (Crawler-mounted Mobile Crane) [8 h] | 100% | 100% | 823A_AB |  |  |  |  |  |
| 823A-ST-SCCT-3a-1090 |  | Infill concrete in between D-wall and base slab | 1d | 2013-02-05 A | 2013-02-05 A | 823A-ST-SCCT-3a-1080 | 100% | 2013-06-15 | 2013-06-15 |  | Temporary Concrete [204 Cu m]; Concrete 20/20C [204 Cu m]; Crawler Crane/Mobile Crane [8 h]; Concrete Pump [8 h]; PY Concretor [32 h]; Plant and Equipment Operator (Crawler-mounted Mobile Crane) [16 h]; General Worker [64 h]; Rigger/Metal Formwork Erector [16 h] | 100% | 100% | 823A_AB |  |  |  |  |  |
| 823A-ST-SCCT-3a-1100 |  | Curing | 1d | 2013-02-06 A | 2013-02-06 A | 823A-ST-SCCT-3a-1060, 823A-ST-SCCT-3a-1090 | 100% | 2013-06-19 | 2013-06-19 | 823-7d | General Worker [224 h] | 100% | 100% | 823A_AB |  |  |  |  |  |
| 823A-ST-SCCT-3a-1110 |  | Removal strut S5 and S4 | 4d | 2013-02-07 A | 2013-02-16 A | 823A-ST-SCCT-3a-1100 | 100% | 2013-06-20 | 2013-06-24 |  | Crawler Crane/Mobile Crane [16 h]; Plant and Equipment Operator (Crawler-mounted Mobile Crane) [16 h]; Rigger/Metal Formwork Erector [128 h] | 100% | 100% | 823A_AB |  |  |  |  |  |
| 823A-ST-SCCT-3a-1070 |  | Preparation of construction joint for base slab | 1d | 2013-02-15 A | 2013-02-15 A | 823A-ST-SCCT-3a-1050 | 100% | 2013-06-13 | 2013-06-13 | 823-6dPH |  | 100% | 100% | 823A_AB |  |  |  |  |  |

| ID | WBS | Activity | Duration | Start | Finish | Predecessors | Complete | Planned start | Planned finish | Calendar | Resources | % Planned | % Actual | 823A_As-built | Actual Up to Date | UNITS | Total Quantity | Planned Up to Date |
| --- | --- | --- | --- | --- | --- | --- | --- | --- | --- | --- | --- | --- | --- | --- | --- | --- | --- | --- |
|  | 2 | **Southbound** |  | 2013-08-24 | 2013-10-12 |  |  |  |  |  |  |  |  |  |  |  |  |  |
| 823A-ST-SCCT-3a-2010 |  | Erect internal formwork & Falsework for wall and roof | 7d | 2013-08-24 A | 2013-08-31 A | 823A-ST-SCCT-3a-1110, 823A-ST-TBM-SB-1050 | 100% | 2013-06-19 | 2013-06-26 |  | Crawler Crane/Mobile Crane [48 h]; Plant and Equipment Operator (Crawler-mounted Mobile Crane) [48 h]; Carpenter (Formwork - Civil Construction) [384 h]; Rigger/Metal Formwork Erector [192 h] | 100% | 100% | 823A_AB |  |  |  |  |
| 823A-ST-SCCT-3a-2020 |  | Rebar fixing for wall and roof | 3d | 2013-09-02 A | 2013-09-05 A | 823A-ST-SCCT-3a-2010 | 100% | 2013-10-02 | 2013-10-04 |  | Reinforcement [67234 kg]; Crawler Crane/Mobile Crane [32 h]; Bar Bender & Fixer [512 h]; Plant and Equipment Operator (Crawler-mounted Mobile Crane) [32 h] | 100% | 100% | 823A_AB |  |  |  |  |
| 823A-ST-SCCT-3a-2030 |  | Erect external formwork for wall and roof | 2d | 2013-09-06 A | 2013-09-12 A | 823A-ST-SCCT-3a-2020 | 100% | 2013-10-05 | 2013-10-07 |  | Crawler Crane/Mobile Crane [16 h]; Plant and Equipment Operator (Crawler-mounted Mobile Crane) [16 h]; Carpenter (Formwork - Civil Construction) [192 h] | 100% | 100% | 823A_AB |  |  |  |  |
| 823A-ST-SCCT-3a-2040 |  | Concreting for wall and roof (450m3) | 1d | 2013-09-13 A | 2013-09-13 A | 823A-ST-SCCT-3a-2030 | 100% | 2013-10-08 | 2013-10-08 |  | Permanent Concrete [444 Cu m]; Concrete 45/20A [444 Cu m]; Crawler Crane/Mobile Crane [8 h]; Concrete Pump [8 h]; Plant and Equipment Operator (Crawler-mounted Mobile Crane) [16 h]; PY Concretor [64 h]; General Worker [96 h]; Rigger/Metal Formwork Erector [32 h] | 100% | 100% | 823A_AB | 450m3 | m3 | 450 | 450m3 |
| 823A-ST-SCCT-3a-2050 |  | Curing for wall and roof | 10d | 2013-09-14 A | 2013-09-23 A | 823A-ST-SCCT-3a-2040 | 100% | 2013-10-09 | 2013-10-18 | 823-7d | General Worker [224 h] | 100% | 100% | 823A_AB |  |  |  |  |
| 823A-ST-SCCT-3a-2060 |  | Preparation of construction joint for wall and roof | 1d | 2013-09-24 A | 2013-09-24 A | 823A-ST-SCCT-3a-2040 | 100% | 2013-10-09 | 2013-10-09 | 823-6dPH |  | 100% | 100% | 823A_AB |  |  |  |  |
| 823A-ST-SCCT-3a-2070 |  | Removal external and internal formwork for wall | 2d | 2013-09-25 A | 2013-09-25 A | 823A-ST-SCCT-3a-2060 | 100% | 2013-10-10 | 2013-10-11 |  | Carpenter (Formwork - Civil Construction) [128 h]; Crawler Crane/Mobile Crane [16 h]; Plant and Equipment Operator (Crawler-mounted Mobile Crane) [16 h] | 100% | 100% | 823A_AB |  |  |  |  |
| 823A-ST-SCCT-3a-2080 |  | Removal internal falsework and formwork for roof | 1d | 2013-09-26 A | 2013-09-26 A | 823A-ST-SCCT-3a-2050, 823A-ST-SCCT-3a-2070, 823A-ST-SCCT-4b-2080 | 100% | 2013-10-19 | 2013-10-19 |  | Crawler Crane/Mobile Crane [32 h]; Carpenter (Formwork - Civil Construction) [256 h]; Plant and Equipment Operator (Crawler-mounted Mobile Crane) [32 h]; Rigger/Metal Formwork Erector [128 h] | 100% | 100% | 823A_AB |  |  |  |  |
| 823A-ST-SCCT-3a-2090 |  | Side walkway and cable bracket (204m3) | 5d | 2013-10-05 A | 2013-10-12 A | 823A-ST-SCCT-3a-2080, 823A-ST-SCCT-3b-2090 | 100% | 2014-03-08 | 2014-03-13 |  | Concrete 20/20C [204 Cu m]; Crawler Crane/Mobile Crane [40 h]; Concrete Pump [40 h]; Carpenter (Formwork - Civil Construction) [320 h]; PY Concretor [160 h]; General Worker [320 h]; Plant and Equipment Operator (Crawler-mounted Mobile Crane) [80 h]; Rigger/Metal Formwork Erector [160 h]; Permanent Concrete [204 Cu m] | 100% | 100% | 823A_AB | 204m3 | m3 | 204 | 204m3 |
|  | 3 | **Northbound** |  | 2013-03-13 | 2015-10-02 |  |  |  |  |  |  |  |  |  |  |  |  |  |
| 823A-ST-SCCT-3a-3010 |  | Erect internal formwork & Falsework for wall and roof | 4d | 2013-03-13 A | 2013-03-20 A | 823A-ST-SCCT-4b-3070, 823A-ST-SCCT-3a-1110 | 100% | 2013-06-08 | 2013-06-13 |  | Crawler Crane/Mobile Crane [48 h]; Plant and Equipment Operator (Crawler-mounted Mobile Crane) [48 h]; Carpenter (Formwork - Civil Construction) [384 h]; Rigger/Metal Formwork Erector [192 h] | 100% | 100% | 823A_AB |  |  |  |  |
| 823A-ST-SCCT-3a-3020 |  | Rebar fixing for wall and roof | 3d | 2013-03-21 A | 2013-03-26 A | 823A-ST-SCCT-3a-3010 | 100% | 2013-06-14 | 2013-06-17 |  | Reinforcement [67234 kg]; Crawler Crane/Mobile Crane [32 h]; Bar Bender & Fixer [512 h]; Plant and Equipment Operator (Crawler-mounted Mobile Crane) [32 h] | 100% | 100% | 823A_AB |  |  |  |  |
| 823A-ST-SCCT-3a-3030 |  | Erect external formwork for wall and roof | 2d | 2013-03-27 A | 2013-04-06 A | 823A-ST-SCCT-3a-3020 | 100% | 2013-06-18 | 2013-06-19 |  | Crawler Crane/Mobile Crane [16 h]; Plant and Equipment Operator (Crawler-mounted Mobile Crane) [16 h]; Carpenter (Formwork - Civil Construction) [192 h] | 100% | 100% | 823A_AB |  |  |  |  |
| 823A-ST-SCCT-3a-3040 |  | Concreting for wall and roof (450m3) | 1d | 2013-04-13 A | 2013-04-13 A | 823A-ST-SCCT-3a-3030 | 100% | 2013-06-20 | 2013-06-20 |  | Permanent Concrete [444 Cu m]; Concrete 45/20A [444 Cu m]; Crawler Crane/Mobile Crane [8 h]; Concrete Pump [8 h]; Plant and Equipment Operator (Crawler-mounted Mobile Crane) [16 h]; PY Concretor [64 h]; General Worker [96 h]; Rigger/Metal Formwork Erector [32 h] | 100% | 100% | 823A_AB | 450 | m3 | 450 | 450 |
| 823A-ST-SCCT-3a-3050 |  | Curing for wall and roof | 10d | 2013-04-15 A | 2013-04-15 A | 823A-ST-SCCT-3a-3040 | 100% | 2013-06-21 | 2013-06-30 | 823-7d | General Worker [224 h] | 100% | 100% | 823A_AB |  |  |  |  |
| 823A-ST-SCCT-3a-3060 |  | Preparation of construction joint for wall and roof | 1d | 2013-04-16 A | 2013-04-16 A | 823A-ST-SCCT-3a-3040 | 100% | 2013-06-21 | 2013-06-21 | 823-6dPH |  | 100% | 100% | 823A_AB |  |  |  |  |
| 823A-ST-SCCT-3a-3070 |  | Removal external wall formwork for wall | 1d | 2013-04-30 A | 2013-04-30 A | 823A-ST-SCCT-3a-3060 | 100% | 2013-06-22 | 2013-06-22 |  | Crawler Crane/Mobile Crane [16 h]; Plant and Equipment Operator (Crawler-mounted Mobile Crane) [16 h]; Carpenter (Formwork - Civil Construction) [128 h] | 100% | 100% | 823A_AB |  |  |  |  |
| 823A-ST-SCCT-3a-3080 |  | Removal internal falsework and formwork for wall and roof | 2d | 2013-04-30 A | 2013-04-30 A | 823A-ST-SCCT-3a-3070, 823A-ST-SCCT-3a-3050, 823A-ST-SCCT-4b-3080 | 100% | 2013-07-02 | 2013-07-03 |  | Crawler Crane/Mobile Crane [32 h]; Carpenter (Formwork - Civil Construction) [256 h]; Plant and Equipment Operator (Crawler-mounted Mobile Crane) [32 h]; Rigger/Metal Formwork Erector [128 h] | 100% | 100% | 823A_AB |  |  |  |  |
| 823A-ST-SCCT-3a-3090 |  | Side walkway and cable bracket (204m3) | 5d | 2015-07-02 A | 2015-10-02 A | 823A-ST-SCCT-3a-3080, 823A-ST-SCCT-3b-3090 | 100% | 2015-08-12 | 2015-08-17 |  | Permanent Concrete [204 Cu m]; Concrete 20/20C [204 Cu m]; Crawler Crane/Mobile Crane [40 h]; Concrete Pump [40 h]; Carpenter (Formwork - Civil Construction) [320 h]; PY Concretor [160 h]; General Worker [320 h]; Plant and Equipment Operator (Crawler-mounted Mobile Crane) [80 h]; Rigger/Metal Formwork Erector [160 h] | 100% | 100% | 823A_AB | 204 | m3 | 204 | 204 |
|  | 8 | **Bay 3b** |  | 2013-02-04 | 2015-07-31 |  |  |  |  |  |  |  |  |  |  |  |  |  |
|  | 1 | **Base Slab** |  | 2013-02-04 | 2013-03-07 |  |  |  |  |  |  |  |  |  |  |  |  |  |
| 823A-ST-SCCT-3b-1010 |  | Placing of waterproof member T-lock & testing for base slab | 1d | 2013-02-04 A | 2013-02-04 A | 823A-ST-SCCT-3a-1080 | 100% | 2013-06-01 | 2013-06-01 |  | Skill Labour [64 h] | 100% | 100% | 823A_AB |  |  |  |  |
| 823A-ST-SCCT-3b-1020 |  | Erect external formwork for base slab | 2d | 2013-02-05 A | 2013-02-07 A | 823A-ST-SCCT-3b-1010 | 100% | 2013-06-03 | 2013-06-04 |  | Crawler Crane/Mobile Crane [8 h]; Plant and Equipment Operator (Crawler-mounted Mobile Crane) [8 h]; Carpenter (Formwork - Civil Construction) [96 h] | 100% | 100% | 823A_AB |  |  |  |  |
| 823A-ST-SCCT-3b-1030 |  | Rebar fixing for base slab | 3d | 2013-02-14 A | 2013-02-16 A | 823A-ST-SCCT-3b-1020 | 100% | 2013-06-05 | 2013-06-07 |  | Reinforcement [68142 kg]; Crawler Crane/Mobile Crane [16 h]; Plant and Equipment Operator (Crawler-mounted Mobile Crane) [16 h]; Bar Bender & Fixer [256 h] | 100% | 100% | 823A_AB |  |  |  |  |
| 823A-ST-SCCT-3b-1040 |  | Erect internal kicker formwork for base slab | 2d | 2013-02-16 A | 2013-02-16 A | 823A-ST-SCCT-3b-1030 | 100% | 2013-06-08 | 2013-06-10 |  | Crawler Crane/Mobile Crane [16 h]; Plant and Equipment Operator (Crawler-mounted Mobile Crane) [96 h]; Carpenter (Formwork - Civil Construction) [192 h] | 100% | 100% | 823A_AB |  |  |  |  |
| 823A-ST-SCCT-3b-1050 |  | Concreting for base slab (363m3) | 1d | 2013-02-18 A | 2013-02-18 A | 823A-ST-SCCT-3b-1040 | 100% | 2013-06-11 | 2013-06-11 |  | Permanent Concrete [363 Cu m]; Concrete 45/20A [363 Cu m]; Crawler Crane/Mobile Crane [8 h]; Concrete Pump [8 h]; PY Concretor [64 h]; General Worker [96 h]; Plant and Equipment Operator (Crawler-mounted Mobile Crane) [16 h]; Rigger/Metal Formwork Erector [32 h] | 100% | 100% | 823A_AB | 363 | m3 | 363 | 363 |
| 823A-ST-SCCT-3b-1060 |  | Curing for base slab | 7d | 2013-02-19 A | 2013-02-26 A | 823A-ST-SCCT-3b-1050 | 100% | 2013-06-12 | 2013-06-18 | 823-7d | General Worker [224 h] | 100% | 100% | 823A_AB |  |  |  |  |
| 823A-ST-SCCT-3b-1080 |  | Removal of formwork for base slab | 1d | 2013-02-19 A | 2013-02-19 A | 823A-ST-SCCT-3b-1070 | 100% | 2013-06-14 | 2013-06-14 |  | Crawler Crane/Mobile Crane [8 h]; Carpenter (Formwork - Civil Construction) [64 h]; Plant and Equipment Operator (Crawler-mounted Mobile Crane) [8 h] | 100% | 100% | 823A_AB |  |  |  |  |
| 823A-ST-SCCT-3b-1090 |  | Infill concrete in between D-wall and base slab | 1d | 2013-02-26 A | 2013-02-26 A | 823A-ST-SCCT-3b-1080 | 100% | 2013-06-15 | 2013-06-15 |  | Temporary Concrete [204 Cu m]; Concrete 20/20C [204 Cu m]; Crawler Crane/Mobile Crane [8 h]; Concrete Pump [8 h]; PY Concretor [32 h]; Plant and Equipment Operator (Crawler-mounted Mobile Crane) [16 h]; Rigger/Metal Formwork Erector [16 h]; General Worker [64 h] | 100% | 100% | 823A_AB |  |  |  |  |
| 823A-ST-SCCT-3b-1070 |  | Preparation of construction joint for base slab | 1d | 2013-02-27 A | 2013-02-27 A | 823A-ST-SCCT-3b-1050 | 100% | 2013-06-13 | 2013-06-13 | 823-6dPH |  | 100% | 100% | 823A_AB |  |  |  |  |
| 823A-ST-SCCT-3b-1100 |  | Curing | 1d | 2013-02-27 A | 2013-02-27 A | 823A-ST-SCCT-3b-1090, 823A-ST-SCCT-3b-1060 | 100% | 2013-06-19 | 2013-06-19 | 823-7d | General Worker [224 h] | 100% | 100% | 823A_AB |  |  |  |  |
| 823A-ST-SCCT-3b-1110 |  | Removal strut S5 and S4 | 4d | 2013-03-04 A | 2013-03-07 A | 823A-ST-SCCT-3b-1100 | 100% | 2013-06-20 | 2013-06-24 |  | Crawler Crane/Mobile Crane [16 h]; Plant and Equipment Operator (Crawler-mounted Mobile Crane) [16 h]; Rigger/Metal Formwork Erector [128 h] | 100% | 100% | 823A_AB |  |  |  |  |

| ID | WBS | Activity | Duration | Start | Finish | Predecessors | Complete | Planned start | Planned finish | Calendar | Resources | % Planned | % Actual | 823A_As-built | TIme Gain/Loss | Actual Up to Date | UNITS | Total Quantity | Planned Up to Date |
| --- | --- | --- | --- | --- | --- | --- | --- | --- | --- | --- | --- | --- | --- | --- | --- | --- | --- | --- | --- |
|  | 2 | **Southbound** |  | 2013-06-22 | 2013-10-12 |  |  |  |  |  |  |  |  |  |  |  |  |  |  |
| 823A-ST-SCCT-3b-2010 |  | Erect internal formwork & Falsework for wall and roof | 4d | 2013-06-22 A | 2013-06-26 A | 823A-ST-SCCT-3b-1110, 823A-ST-SCCT-3a-2070 | 100% | 2013-07-12 | 2013-07-16 |  | Crawler Crane/Mobile Crane [48 h]; Plant and Equipment Operator (Crawler-mounted Mobile Crane) [48 h]; Carpenter (Formwork - Civil Construction) [384 h]; Rigger/Metal Formwork Erector [192 h] | 100% | 100% | 823A_AB |  |  |  |  |  |
| 823A-ST-SCCT-3b-2020 |  | Rebar fixing for wall and roof | 3d | 2013-06-27 A | 2013-07-05 A | 823A-ST-SCCT-3b-2010 | 100% | 2013-07-17 | 2013-07-19 |  | Reinforcement [67234 kg]; Crawler Crane/Mobile Crane [32 h]; Bar Bender & Fixer [512 h]; Plant and Equipment Operator (Crawler-mounted Mobile Crane) [32 h] | 100% | 100% | 823A_AB | -12 |  |  |  |  |
| 823A-ST-SCCT-3b-2030 |  | Erect external formwork for wall and roof | 2d | 2013-07-06 A | 2013-07-10 A | 823A-ST-SCCT-3b-2020 | 100% | 2013-08-14 | 2013-08-15 |  | Crawler Crane/Mobile Crane [16 h]; Plant and Equipment Operator (Crawler-mounted Mobile Crane) [16 h]; Carpenter (Formwork - Civil Construction) [192 h] | 100% | 100% | 823A_AB |  |  |  |  |  |
| 823A-ST-SCCT-3b-2040 |  | Concreting for wall and roof (450m3) | 1d | 2013-07-11 A | 2013-07-11 A | 823A-ST-SCCT-3b-2030 | 100% | 2013-08-16 | 2013-08-16 |  | Permanent Concrete [444 Cu m]; Concrete 45/20A [444 Cu m]; Crawler Crane/Mobile Crane [8 h]; Concrete Pump [8 h]; Plant and Equipment Operator (Crawler-mounted Mobile Crane) [16 h]; PY Concretor [64 h]; General Worker [96 h]; Rigger/Metal Formwork Erector [32 h] | 100% | 100% | 823A_AB |  | 450 | m3 | 450 | 450 |
| 823A-ST-SCCT-3b-2050 |  | Curing for wall and roof | 10d | 2013-07-12 A | 2013-07-15 A | 823A-ST-SCCT-3b-2040 | 100% | 2013-08-11 | 2013-08-20 | 823-7d | General Worker [224 h] | 100% | 100% | 823A_AB |  |  |  |  |  |
| 823A-ST-SCCT-3b-2060 |  | Preparation of construction joint for wall and roof | 1d | 2013-07-16 A | 2013-07-16 A | 823A-ST-SCCT-3b-2040 | 100% | 2013-08-12 | 2013-08-12 | 823-6dPH |  | 100% | 100% | 823A_AB |  |  |  |  |  |
| 823A-ST-SCCT-3b-2070 |  | Removal external and internal formwork for wall | 2d | 2013-07-17 A | 2013-07-17 A | 823A-ST-SCCT-3b-2060 | 100% | 2013-08-13 | 2013-08-14 |  | Crawler Crane/Mobile Crane [16 h]; Plant and Equipment Operator (Crawler-mounted Mobile Crane) [16 h]; Carpenter (Formwork - Civil Construction) [128 h] | 100% | 100% | 823A_AB |  |  |  |  |  |
| 823A-ST-SCCT-3b-2080 |  | Removal internal falsework and formwork for roof | 1d | 2013-07-18 A | 2013-07-20 A | 823A-ST-SCCT-3b-2070, 823A-ST-SCCT-3b-2050, 823A-ST-SCCT-3a-2080 | 100% | 2013-08-21 | 2013-08-21 |  | Crawler Crane/Mobile Crane [32 h]; Carpenter (Formwork - Civil Construction) [256 h]; Plant and Equipment Operator (Crawler-mounted Mobile Crane) [32 h]; Rigger/Metal Formwork Erector [128 h] | 100% | 100% | 823A_AB |  |  |  |  |  |
| 823A-ST-SCCT-3b-2090 |  | Side walkway and cable bracket (204m3) | 5d | 2013-10-05 A | 2013-10-12 A | 823A-ST-SCCT-3b-4090, 823A-ST-SCCT-3b-2080 | 100% | 2014-03-03 | 2014-03-07 |  | Permanent Concrete [204 Cu m]; Concrete 20/20C [204 Cu m]; Crawler Crane/Mobile Crane [40 h]; Concrete Pump [40 h]; PY Concretor [160 h]; General Worker [320 h]; Plant and Equipment Operator (Crawler-mounted Mobile Crane) [80 h]; Rigger/Metal Formwork Erector [160 h]; Carpenter (Formwork - Civil Construction) [320 h] | 100% | 100% | 823A_AB |  | 204 | m3 | 204 | 204 |
|  | 3 | **Northbound** |  | 2013-03-21 | 2015-07-31 |  |  |  |  |  |  |  |  |  |  |  |  |  |  |
| 823A-ST-SCCT-3b-3010 |  | Erect internal formwork & Falsework for wall and roof | 4d | 2013-03-21 A | 2013-03-27 A | 823A-ST-SCCT-3a-3070, 823A-ST-SCCT-3b-1110 | 100% | 2013-06-08 | 2013-06-13 |  | Crawler Crane/Mobile Crane [48 h]; Plant and Equipment Operator (Crawler-mounted Mobile Crane) [48 h]; Carpenter (Formwork - Civil Construction) [384 h]; Rigger/Metal Formwork Erector [192 h] | 100% | 100% | 823A_AB |  |  |  |  |  |
| 823A-ST-SCCT-3b-3020 |  | Rebar fixing for wall and roof | 3d | 2013-04-02 A | 2013-04-08 A | 823A-ST-SCCT-3b-3010 | 100% | 2013-06-14 | 2013-06-17 |  | Reinforcement [67234 kg]; Crawler Crane/Mobile Crane [32 h]; Bar Bender & Fixer [512 h]; Plant and Equipment Operator (Crawler-mounted Mobile Crane) [32 h] | 100% | 100% | 823A_AB |  |  |  |  |  |
| 823A-ST-SCCT-3b-3030 |  | Erect external formwork for wall and roof | 2d | 2013-04-09 A | 2013-04-11 A | 823A-ST-SCCT-3b-3020 | 100% | 2013-06-18 | 2013-06-19 |  | Crawler Crane/Mobile Crane [16 h]; Plant and Equipment Operator (Crawler-mounted Mobile Crane) [16 h]; Carpenter (Formwork - Civil Construction) [192 h] | 100% | 100% | 823A_AB |  |  |  |  |  |
| 823A-ST-SCCT-3b-3040 |  | Concreting for wall and roof (450m3) | 1d | 2013-04-13 A | 2013-04-13 A | 823A-ST-SCCT-3b-3030 | 100% | 2013-06-20 | 2013-06-20 |  | Permanent Concrete [444 Cu m]; Concrete 45/20A [444 Cu m]; Crawler Crane/Mobile Crane [8 h]; Concrete Pump [8 h]; Plant and Equipment Operator (Crawler-mounted Mobile Crane) [16 h]; PY Concretor [64 h]; General Worker [96 h]; Rigger/Metal Formwork Erector [32 h] | 100% | 100% | 823A_AB |  | 450 | m3 | 450 | 450 |
| 823A-ST-SCCT-3b-3050 |  | Curing for wall and roof | 10d | 2013-04-15 A | 2013-04-15 A | 823A-ST-SCCT-3b-3040 | 100% | 2013-06-21 | 2013-06-30 | 823-7d | General Worker [224 h] | 100% | 100% | 823A_AB |  |  |  |  |  |
| 823A-ST-SCCT-3b-3060 |  | Preparation of construction joint for wall and roof | 1d | 2013-04-16 A | 2013-04-16 A | 823A-ST-SCCT-3b-3040 | 100% | 2013-06-08 | 2013-06-08 | 823-6dPH |  | 100% | 100% | 823A_AB |  |  |  |  |  |
| 823A-ST-SCCT-3b-3070 |  | Removal external wall formwork for wall | 1d | 2013-04-17 A | 2013-04-17 A | 823A-ST-SCCT-3b-3060 | 100% | 2013-06-10 | 2013-06-10 |  | Plant and Equipment Operator (Crawler-mounted Mobile Crane) [16 h]; Carpenter (Formwork - Civil Construction) [128 h]; Crawler Crane/Mobile Crane [16 h] | 100% | 100% | 823A_AB |  |  |  |  |  |
| 823A-ST-SCCT-3b-3080 |  | Removal internal falsework and formwork for wall and roof | 2d | 2013-04-22 A | 2013-04-23 A | 823A-ST-SCCT-3b-3050, 823A-ST-SCCT-3b-3070, 823A-ST-SCCT-3a-3080 | 100% | 2013-06-11 | 2013-06-13 |  | Crawler Crane/Mobile Crane [32 h]; Carpenter (Formwork - Civil Construction) [256 h]; Plant and Equipment Operator (Crawler-mounted Mobile Crane) [32 h]; Rigger/Metal Formwork Erector [128 h] | 100% | 100% | 823A_AB |  |  |  |  |  |
| 823A-ST-SCCT-3b-3090 |  | Side walkway and cable bracket (204m3) | 5d | 2015-07-27 A | 2015-07-31 A | 823A-ST-SCCT-2a-3090, 823A-ST-SCCT-3b-3080 | 100% | 2015-08-06 | 2015-08-11 |  | Permanent Concrete [204 Cu m]; Concrete 20/20C [204 Cu m]; Crawler Crane/Mobile Crane [40 h]; Concrete Pump [40 h]; Carpenter (Formwork - Civil Construction) [320 h]; PY Concretor [160 h]; General Worker [320 h]; Plant and Equipment Operator (Crawler-mounted Mobile Crane) [80 h]; Rigger/Metal Formwork Erector [160 h] | 100% | 100% | 823A_AB |  | 204 | m3 | 204 | 204 |
|  | 4 | **Approach Tunnel Roof** |  | 2013-06-22 | 2015-07-07 |  |  |  |  |  |  |  |  |  |  |  |  |  |  |
| 823A-ST-SCCT-3b-4010 |  | Erect internal formwork & Falsework for roof | 4d | 2013-06-22 A | 2013-06-26 A | 823A-ST-SCCT-3b-2070, 823A-ST-SCCT-3b-3070 | 100% | 2013-09-12 | 2013-09-16 |  | Crawler Crane/Mobile Crane [48 h]; Plant and Equipment Operator (Crawler-mounted Mobile Crane) [48 h]; Carpenter (Formwork - Civil Construction) [384 h]; Rigger/Metal Formwork Erector [192 h] | 100% | 100% | 823A_AB | -18 |  |  |  |  |
| 823A-ST-SCCT-3b-4020 |  | Rebar fixing for roof | 2d | 2013-06-27 A | 2013-07-05 A | 823A-ST-SCCT-3b-4010 | 100% | 2013-09-17 | 2013-09-18 |  | Reinforcement [67234 kg]; Crawler Crane/Mobile Crane [32 h]; Bar Bender & Fixer [512 h]; Plant and Equipment Operator (Crawler-mounted Mobile Crane) [32 h] | 100% | 100% | 823A_AB | -18 |  |  |  |  |
| 823A-ST-SCCT-3b-4030 |  | Erect external formwork for roof | 1d | 2013-07-06 A | 2013-07-10 A | 823A-ST-SCCT-3b-4020 | 100% | 2013-09-19 | 2013-09-19 |  | Crawler Crane/Mobile Crane [16 h]; Plant and Equipment Operator (Crawler-mounted Mobile Crane) [16 h]; Carpenter (Formwork - Civil Construction) [192 h] | 100% | 100% | 823A_AB | -18 |  |  |  |  |
| 823A-ST-SCCT-3b-4040 |  | Concreting for roof (444m3) | 1d | 2013-07-11 A | 2013-07-11 A | 823A-ST-SCCT-3b-4030 | 100% | 2013-09-21 | 2013-09-21 |  | Permanent Concrete [444 Cu m]; Concrete 45/20A [444 Cu m]; Crawler Crane/Mobile Crane [8 h]; Concrete Pump [8 h]; Plant and Equipment Operator (Crawler-mounted Mobile Crane) [16 h]; PY Concretor [64 h]; Rigger/Metal Formwork Erector [32 h]; General Worker [96 h] | 100% | 100% | 823A_AB | -18 | 444 | m3 | 444 | 444 |
| 823A-ST-SCCT-3b-4050 |  | Curing for roof | 10d | 2013-07-12 A | 2013-07-15 A | 823A-ST-SCCT-3b-4040 | 100% | 2013-09-22 | 2013-10-01 | 823-7d | General Worker [224 h] | 100% | 100% | 823A_AB | -21 |  |  |  |  |
| 823A-ST-SCCT-3b-4060 |  | Preparation of construction joint for roof | 1d | 2013-07-16 A | 2013-07-16 A | 823A-ST-SCCT-3b-4040 | 100% | 2013-09-23 | 2013-09-23 | 823-6dPH |  | 100% | 100% | 823A_AB | -18 |  |  |  |  |
| 823A-ST-SCCT-3b-4080 |  | Removal internal falsework and formwork for roof | 2d | 2013-07-18 A | 2013-07-20 A | 823A-ST-SCCT-3b-2080, 823A-ST-SCCT-3b-4050, 823A-ST-SCCT-3b-4060 | 100% | 2013-10-02 | 2013-10-03 |  | Crawler Crane/Mobile Crane [32 h]; Carpenter (Formwork - Civil Construction) [256 h]; Plant and Equipment Operator (Crawler-mounted Mobile Crane) [32 h]; Rigger/Metal Formwork Erector [128 h] | 100% | 100% | 823A_AB | -18 |  |  |  |  |
| 823A-ST-SCCT-3b-4090 |  | Side walkway and cable bracket (204m3) | 5d | 2015-07-02 A | 2015-07-07 A | 823A-ST-SCCT-3b-4080, 823A-ST-SCCT-2a-2090 | 100% |  |  |  | Permanent Concrete [204 Cu m]; Concrete 20/20C [204 Cu m]; Crawler Crane/Mobile Crane [40 h]; Concrete Pump [40 h]; Carpenter (Formwork - Civil Construction) [320 h]; PY Concretor [160 h]; General Worker [320 h]; Plant and Equipment Operator (Crawler-mounted Mobile Crane) [80 h]; Rigger/Metal Formwork Erector [160 h] | 100% | 100% | 823A_AB | +15 | 204 | m3 | 204 | 204 |

| ID | WBS | Activity | Duration | Start | Finish | Predecessors | Complete | Planned start | Planned finish | Calendar | Resources | % Planned | % Actual | 823A_As-built | Actual Up to Date | UNITS | Total Quantity | Planned Up to Date |
| --- | --- | --- | --- | --- | --- | --- | --- | --- | --- | --- | --- | --- | --- | --- | --- | --- | --- | --- |
|  | 9 | **Bay 2a** |  | 2013-02-16 | 2015-02-27 |  |  |  |  |  |  |  |  |  |  |  |  |  |
|  | 1 | **Base Slab** |  | 2013-02-16 | 2013-03-12 |  |  |  |  |  |  |  |  |  |  |  |  |  |
| 823A-ST-SCCT-2a-1010 |  | Placing of waterproof member T-lock & testing for base slab | 2d | 2013-02-16 A | 2013-02-16 A | 823A-ST-SCC-ELS-1160 | 100% | 2013-06-01 | 2013-06-03 |  | Skill Labour [64 h] | 100% | 100% | 823A_AB |  |  |  |  |
| 823A-ST-SCCT-2a-1020 |  | Erect external formwork for base slab | 2d | 2013-02-20 A | 2013-02-21 A | 823A-ST-SCCT-2a-1010 | 100% | 2013-06-04 | 2013-06-05 |  | Carpenter (Formwork - Civil Construction) [96 h]; Plant and Equipment Operator (Crawler-mounted Mobile Crane) [8 h]; Crawler Crane/Mobile Crane [8 h] | 100% | 100% | 823A_AB |  |  |  |  |
| 823A-ST-SCCT-2a-1030 |  | Rebar fixing for base slab | 3d | 2013-02-22 A | 2013-02-23 A | 823A-ST-SCCT-2a-1020 | 100% | 2013-06-06 | 2013-06-08 |  | Reinforcement [68142 kg]; Crawler Crane/Mobile Crane [16 h]; Plant and Equipment Operator (Crawler-mounted Mobile Crane) [16 h]; Bar Bender & Fixer [256 h] | 100% | 100% | 823A_AB |  |  |  |  |
| 823A-ST-SCCT-2a-1040 |  | Erect internal kicker formwork for base slab | 2d | 2013-02-26 A | 2013-02-28 A | 823A-ST-SCCT-2a-1030 | 100% | 2013-06-10 | 2013-06-11 |  | Plant and Equipment Operator (Crawler-mounted Mobile Crane) [96 h]; Carpenter (Formwork - Civil Construction) [192 h]; Crawler Crane/Mobile Crane [16 h] | 100% | 100% | 823A_AB |  |  |  |  |
| 823A-ST-SCCT-2a-1050 |  | Concreting for base slab (363m3) | 1d | 2013-03-01 A | 2013-03-01 A | 823A-ST-SCCT-2a-1040 | 100% | 2013-06-13 | 2013-06-13 |  | Permanent Concrete [363 Cu m]; Concrete 45/20A [363 Cu m]; Crawler Crane/Mobile Crane [8 h]; Concrete Pump [8 h]; PY Concretor [64 h]; General Worker [96 h]; Plant and Equipment Operator (Crawler-mounted Mobile Crane) [16 h]; Rigger/Metal Formwork Erector [32 h] | 100% | 100% | 823A_AB | 363 | m3 | 363 | 363 |
| 823A-ST-SCCT-2a-1060 |  | Curing for base slab | 7d | 2013-03-02 A | 2013-03-08 A | 823A-ST-SCCT-2a-1050 | 100% | 2013-06-14 | 2013-06-20 | 823-7d | General Worker [224 h] | 100% | 100% | 823A_AB |  |  |  |  |
| 823A-ST-SCCT-2a-1070 |  | Preparation of construction joint for base slab | 1d | 2013-03-02 A | 2013-03-02 A | 823A-ST-SCCT-2a-1050 | 100% | 2013-06-14 | 2013-06-14 | 823-6dPH |  | 100% | 100% | 823A_AB |  |  |  |  |
| 823A-ST-SCCT-2a-1080 |  | Removal of formwork for base slab | 1d | 2013-03-04 A | 2013-03-04 A | 823A-ST-SCCT-2a-1070 | 100% | 2013-06-15 | 2013-06-15 |  | Crawler Crane/Mobile Crane [8 h]; Carpenter (Formwork - Civil Construction) [64 h]; Plant and Equipment Operator (Crawler-mounted Mobile Crane) [8 h] | 100% | 100% | 823A_AB |  |  |  |  |
| 823A-ST-SCCT-2a-1090 |  | Infill concrete in between D-wall and base slab | 1d | 2013-03-05 A | 2013-03-05 A | 823A-ST-SCCT-2a-1080 | 100% | 2013-06-17 | 2013-06-17 |  | Temporary Concrete [204 Cu m]; Concrete 20/20C [204 Cu m]; Crawler Crane/Mobile Crane [8 h]; Concrete Pump [8 h]; PY Concretor [32 h]; Plant and Equipment Operator (Crawler-mounted Mobile Crane) [16 h]; General Worker [64 h]; Rigger/Metal Formwork Erector [16 h] | 100% | 100% | 823A_AB |  |  |  |  |
| 823A-ST-SCCT-2a-1100 |  | Curing | 1d | 2013-03-06 A | 2013-03-07 A | 823A-ST-SCCT-2a-1060, 823A-ST-SCCT-2a-1090 | 100% | 2013-06-21 | 2013-06-21 | 823-7d | General Worker [224 h] | 100% | 100% | 823A_AB |  |  |  |  |
| 823A-ST-SCCT-2a-1110 |  | Removal strut S5 and S4 | 4d | 2013-03-08 A | 2013-03-12 A | 823A-ST-SCCT-2a-1100 | 100% | 2013-06-01 | 2013-06-05 |  | Crawler Crane/Mobile Crane [16 h]; Plant and Equipment Operator (Crawler-mounted Mobile Crane) [16 h]; Rigger/Metal Formwork Erector [128 h] | 100% | 100% | 823A_AB |  |  |  |  |
|  | 2 | **Southbound** |  | 2013-04-20 | 2013-10-12 |  |  |  |  |  |  |  |  |  |  |  |  |  |
| 823A-ST-SCCT-2a-2010 |  | Erect internal formwork & Falsework for wall and roof | 4d | 2013-04-20 A | 2013-04-25 A | 823A-ST-SCCT-2b-1110, 823A-ST-SCCT-2a-1110 | 100% | 2013-06-25 | 2013-06-28 |  | Plant and Equipment Operator (Crawler-mounted Mobile Crane) [48 h]; Carpenter (Formwork - Civil Construction) [384 h]; Rigger/Metal Formwork Erector [192 h]; Crawler Crane/Mobile Crane [48 h] | 100% | 100% | 823A_AB |  |  |  |  |
| 823A-ST-SCCT-2a-2020 |  | Rebar fixing for wall and roof | 3d | 2013-05-03 A | 2013-05-08 A | 823A-ST-SCCT-2a-2010 | 100% | 2013-06-29 | 2013-07-03 |  | Reinforcement [67234 kg]; Crawler Crane/Mobile Crane [32 h]; Bar Bender & Fixer [512 h]; Plant and Equipment Operator (Crawler-mounted Mobile Crane) [32 h] | 100% | 100% | 823A_AB |  |  |  |  |
| 823A-ST-SCCT-2a-2030 |  | Erect external formwork for wall and roof | 2d | 2013-05-16 A | 2013-05-23 A | 823A-ST-SCCT-2a-2020 | 100% | 2013-07-04 | 2013-07-05 |  | Crawler Crane/Mobile Crane [16 h]; Plant and Equipment Operator (Crawler-mounted Mobile Crane) [16 h]; Carpenter (Formwork - Civil Construction) [192 h] | 100% | 100% | 823A_AB |  |  |  |  |
| 823A-ST-SCCT-2a-2040 |  | Concreting for wall and roof (450m3) | 1d | 2013-05-24 A | 2013-05-24 A | 823A-ST-SCCT-2a-2030 | 100% | 2013-07-06 | 2013-07-06 |  | Permanent Concrete [444 Cu m]; Concrete 45/20A [444 Cu m]; Crawler Crane/Mobile Crane [8 h]; Concrete Pump [8 h]; Plant and Equipment Operator (Crawler-mounted Mobile Crane) [16 h]; PY Concretor [64 h]; General Worker [96 h]; Rigger/Metal Formwork Erector [32 h] | 100% | 100% | 823A_AB | 450 | m3 | 450 | 450 |
| 823A-ST-SCCT-2a-2050 |  | Curing for wall and roof | 10d | 2013-05-25 A | 2013-05-25 A | 823A-ST-SCCT-2a-2040 | 100% | 2013-07-07 | 2013-07-16 | 823-7d | General Worker [224 h] | 100% | 100% | 823A_AB |  |  |  |  |
| 823A-ST-SCCT-2a-2060 |  | Preparation of construction joint for wall and roof | 1d | 2013-05-27 A | 2013-05-27 A | 823A-ST-SCCT-2a-2040 | 100% | 2013-07-08 | 2013-07-08 | 823-6dPH |  | 100% | 100% | 823A_AB |  |  |  |  |
| 823A-ST-SCCT-2a-2070 |  | Removal external and internal formwork for wall | 2d | 2013-05-29 A | 2013-05-29 A | 823A-ST-SCCT-2a-2060 | 100% | 2013-07-09 | 2013-07-10 |  | Crawler Crane/Mobile Crane [16 h]; Plant and Equipment Operator (Crawler-mounted Mobile Crane) [16 h]; Carpenter (Formwork - Civil Construction) [128 h] | 100% | 100% | 823A_AB |  |  |  |  |
| 823A-ST-SCCT-2a-2080 |  | Removal internal falsework and formwork for roof | 1d | 2013-05-30 A | 2013-05-30 A | 823A-ST-SCCT-2a-2070, 823A-ST-SCCT-2a-2050 | 100% | 2013-07-17 | 2013-07-17 |  | Crawler Crane/Mobile Crane [32 h]; Carpenter (Formwork - Civil Construction) [256 h]; Plant and Equipment Operator (Crawler-mounted Mobile Crane) [32 h]; Rigger/Metal Formwork Erector [128 h] | 100% | 100% | 823A_AB |  |  |  |  |
| 823A-ST-SCCT-2a-2090 |  | Side walkway and cable bracket (204m3) | 5d | 2013-10-05 A | 2013-10-12 A | 823A-ST-SCCT-2a-2080, 823A-ST-SCCT-2a-4090 | 100% | 2014-02-19 | 2014-02-24 |  | Concrete 20/20C [204 Cu m]; Crawler Crane/Mobile Crane [40 h]; Concrete Pump [40 h]; Carpenter (Formwork - Civil Construction) [320 h]; PY Concretor [160 h]; General Worker [320 h]; Plant and Equipment Operator (Crawler-mounted Mobile Crane) [80 h]; Rigger/Metal Formwork Erector [160 h]; Permanent Concrete [204 Cu m] | 100% | 100% | 823A_AB | 204 | m3 | 204 | 204 |
|  | 3 | **Northbound** |  | 2013-04-15 | 2015-02-27 |  |  |  |  |  |  |  |  |  |  |  |  |  |
| 823A-ST-SCCT-2a-3010 |  | Erect internal formwork & Falsework for wall and roof | 4d | 2013-04-15 A | 2013-04-19 A | 823A-ST-SCCT-3b-3070, 823A-ST-SCCT-2a-1110 | 100% | 2013-06-08 | 2013-06-13 |  | Crawler Crane/Mobile Crane [48 h]; Plant and Equipment Operator (Crawler-mounted Mobile Crane) [48 h]; Carpenter (Formwork - Civil Construction) [384 h]; Rigger/Metal Formwork Erector [192 h] | 100% | 100% | 823A_AB |  |  |  |  |
| 823A-ST-SCCT-2a-3020 |  | Rebar fixing for wall and roof | 3d | 2013-04-20 A | 2013-04-24 A | 823A-ST-SCCT-2a-3010 | 100% | 2013-06-14 | 2013-06-17 |  | Reinforcement [67234 kg]; Crawler Crane/Mobile Crane [32 h]; Bar Bender & Fixer [512 h]; Plant and Equipment Operator (Crawler-mounted Mobile Crane) [32 h] | 100% | 100% | 823A_AB |  |  |  |  |
| 823A-ST-SCCT-2a-3030 |  | Erect external formwork for wall and roof | 2d | 2013-04-25 A | 2013-04-27 A | 823A-ST-SCCT-2a-3020 | 100% | 2013-06-18 | 2013-06-19 |  | Crawler Crane/Mobile Crane [16 h]; Plant and Equipment Operator (Crawler-mounted Mobile Crane) [16 h]; Carpenter (Formwork - Civil Construction) [192 h] | 100% | 100% | 823A_AB |  |  |  |  |
| 823A-ST-SCCT-2a-3040 |  | Concreting for wall and roof (450m3) | 1d | 2013-05-24 A | 2013-05-24 A | 823A-ST-SCCT-2a-3030 | 100% | 2013-06-20 | 2013-06-20 |  | Permanent Concrete [444 Cu m]; Concrete 45/20A [444 Cu m]; Crawler Crane/Mobile Crane [8 h]; Concrete Pump [8 h]; Plant and Equipment Operator (Crawler-mounted Mobile Crane) [16 h]; PY Concretor [64 h]; General Worker [96 h]; Rigger/Metal Formwork Erector [32 h] | 100% | 100% | 823A_AB | 450 | m3 | 450 | 450 |
| 823A-ST-SCCT-2a-3050 |  | Curing for wall and roof | 10d | 2013-05-25 A | 2013-05-25 A | 823A-ST-SCCT-2a-3040 | 100% | 2013-06-21 | 2013-06-30 | 823-7d | General Worker [224 h] | 100% | 100% | 823A_AB |  |  |  |  |
| 823A-ST-SCCT-2a-3060 |  | Preparation of construction joint for wall and roof | 1d | 2013-05-27 A | 2013-05-27 A | 823A-ST-SCCT-2a-3040 | 100% | 2013-06-21 | 2013-06-21 | 823-6dPH |  | 100% | 100% | 823A_AB |  |  |  |  |
| 823A-ST-SCCT-2a-3070 |  | Removal external and internal formwork for wall | 2d | 2013-05-28 A | 2013-05-29 A | 823A-ST-SCCT-2a-3060 | 100% | 2013-06-22 | 2013-06-24 |  | Crawler Crane/Mobile Crane [16 h]; Plant and Equipment Operator (Crawler-mounted Mobile Crane) [16 h]; Carpenter (Formwork - Civil Construction) [128 h] | 100% | 100% | 823A_AB |  |  |  |  |
| 823A-ST-SCCT-2a-3080 |  | Removal internal falsework and formwork for roof | 1d | 2013-05-30 A | 2013-05-30 A | 823A-ST-SCCT-2a-3050, 823A-ST-SCCT-3b-3080, 823A-ST-SCCT-2a-3070 | 100% | 2013-07-02 | 2013-07-02 |  | Crawler Crane/Mobile Crane [32 h]; Carpenter (Formwork - Civil Construction) [256 h]; Plant and Equipment Operator (Crawler-mounted Mobile Crane) [32 h]; Rigger/Metal Formwork Erector [128 h] | 100% | 100% | 823A_AB |  |  |  |  |
| 823A-ST-SCCT-2a-3090 |  | Side walkway and cable bracket (204m3) | 5d | 2015-02-23 A | 2015-02-27 A | 823A-ST-SCCT-2a-3080, 823A-ST-SCCT-2b-3090 | 100% | 2015-04-02 | 2015-04-11 |  | Permanent Concrete [204 Cu m]; Concrete 20/20C [204 Cu m]; Crawler Crane/Mobile Crane [40 h]; Concrete Pump [40 h]; Carpenter (Formwork - Civil Construction) [320 h]; PY Concretor [160 h]; General Worker [320 h]; Rigger/Metal Formwork Erector [160 h]; Plant and Equipment Operator (Crawler-mounted Mobile Crane) [80 h] | 100% | 100% | 823A_AB | 204 | m3 | 204 | 204 |

| ID | WBS | Activity | Duration | Start | Finish | Predecessors | Complete | Planned start | Planned finish | Calendar | Resources | TIme Gain/Loss | % Planned | % Actual | 823A_As-built | Actual Up to Date | UNITS | Total Quantity | Planned Up to Date |
| --- | --- | --- | --- | --- | --- | --- | --- | --- | --- | --- | --- | --- | --- | --- | --- | --- | --- | --- | --- |
|  | 4 | **Approach Tunnel Roof** |  | 2013-05-23 | 2013-10-18 |  |  |  |  |  |  |  |  |  |  |  |  |  |  |
| 823A-ST-SCCT-2a-4010 |  | Erect internal formwork & Falsework for roof | 4d | 2013-05-23 A | 2013-05-27 A | 823A-ST-SCCT-2a-3070, 823A-ST-SCCT-2a-2070 | 100% | 2013-08-01 | 2013-08-05 |  | Crawler Crane/Mobile Crane [48 h]; Plant and Equipment Operator (Crawler-mounted Mobile Crane) [48 h]; Carpenter (Formwork - Civil Construction) [384 h]; Rigger/Metal Formwork Erector [192 h] | -20 | 100% | 100% | 823A_AB |  |  |  |  |
| 823A-ST-SCCT-2a-4020 |  | Rebar fixing for roof | 2d | 2013-05-28 A | 2013-05-29 A | 823A-ST-SCCT-2a-4010 | 100% | 2013-08-06 | 2013-08-07 |  | Reinforcement [67234 kg]; Crawler Crane/Mobile Crane [32 h]; Bar Bender & Fixer [512 h]; Plant and Equipment Operator (Crawler-mounted Mobile Crane) [32 h] | -20 | 100% | 100% | 823A_AB |  |  |  |  |
| 823A-ST-SCCT-2a-4030 |  | Erect external formwork for roof | 1d | 2013-05-30 A | 2013-05-30 A | 823A-ST-SCCT-2a-4020 | 100% | 2013-08-08 | 2013-08-08 |  | Crawler Crane/Mobile Crane [16 h]; Plant and Equipment Operator (Crawler-mounted Mobile Crane) [16 h]; Carpenter (Formwork - Civil Construction) [192 h] | -20 | 100% | 100% | 823A_AB |  |  |  |  |
| 823A-ST-SCCT-2a-4040 |  | Concreting for roof (444m3) | 1d | 2013-05-31 A | 2013-05-31 A | 823A-ST-SCCT-2a-4030 | 100% | 2013-08-09 | 2013-08-09 |  | PY Concretor [64 h]; General Worker [96 h]; Rigger/Metal Formwork Erector [32 h]; Permanent Concrete [444 Cu m]; Concrete 45/20A [444 Cu m]; Crawler Crane/Mobile Crane [8 h]; Concrete Pump [8 h]; Plant and Equipment Operator (Crawler-mounted Mobile Crane) [16 h] | -20 | 100% | 100% | 823A_AB | 444 | m3 | 444 | 444 |
| 823A-ST-SCCT-2a-4050 |  | Curing for roof | 7d | 2013-06-01 A | 2013-06-08 A | 823A-ST-SCCT-2a-4040 | 100% | 2013-08-01 | 2013-08-07 | 823-7d | General Worker [224 h] | -25 | 100% | 100% | 823A_AB |  |  |  |  |
| 823A-ST-SCCT-2a-4060 |  | Preparation of construction joint for roof | 1d | 2013-06-10 A | 2013-06-10 A | 823A-ST-SCCT-2a-4040 | 100% | 2013-08-01 | 2013-08-01 | 823-6dPH |  | -20 | 100% | 100% | 823A_AB |  |  |  |  |
| 823A-ST-SCCT-2a-4080 |  | Removal internal falsework and formwork for roof | 2d | 2013-06-11 A | 2013-06-13 A | 823A-ST-SCCT-2a-4060, 823A-ST-SCCT-2a-4050 | 100% | 2013-08-08 | 2013-08-09 |  | Crawler Crane/Mobile Crane [32 h]; Carpenter (Formwork - Civil Construction) [256 h]; Plant and Equipment Operator (Crawler-mounted Mobile Crane) [32 h]; Rigger/Metal Formwork Erector [128 h] | -20 | 100% | 100% | 823A_AB |  |  |  |  |
| 823A-ST-SCCT-2a-4090 |  | Side walkway and cable bracket (204m3) | 5d | 2013-08-23 A | 2013-10-18 A | 823A-ST-SCCT-2a-4080, 823A-ST-SCCT-2b-2090 | 100% | 2014-01-09 | 2014-01-14 |  | Concrete 20/20C [204 Cu m]; Crawler Crane/Mobile Crane [40 h]; Concrete Pump [40 h]; Carpenter (Formwork - Civil Construction) [320 h]; PY Concretor [160 h]; General Worker [320 h]; Rigger/Metal Formwork Erector [160 h]; Plant and Equipment Operator (Crawler-mounted Mobile Crane) [80 h]; Permanent Concrete [204 Cu m] | -19 | 100% | 100% | 823A_AB | 204 | m3 | 204 | 204 |
|  | 10 | **Bay 2b** |  | 2013-02-20 | 2013-10-18 |  |  |  |  |  |  |  |  |  |  |  |  |  |  |
|  | 1 | **Base Slab** |  | 2013-02-20 | 2013-06-24 |  |  |  |  |  |  |  |  |  |  |  |  |  |  |
| 823A-ST-SCCT-2b-1010 |  | Placing of waterproof member T-lock & testing for base slab | 1d | 2013-02-20 A | 2013-02-20 A | 823A-ST-SCCT-2a-1080 | 100% | 2013-06-01 | 2013-06-01 |  | Skill Labour [64 h] |  | 100% | 100% | 823A_AB |  |  |  |  |
| 823A-ST-SCCT-2b-1020 |  | Erect external formwork for base slab | 2d | 2013-02-21 A | 2013-02-22 A | 823A-ST-SCCT-2b-1010 | 100% | 2013-06-03 | 2013-06-04 |  | Crawler Crane/Mobile Crane [8 h]; Plant and Equipment Operator (Crawler-mounted Mobile Crane) [8 h]; Carpenter (Formwork - Civil Construction) [96 h] |  | 100% | 100% | 823A_AB |  |  |  |  |
| 823A-ST-SCCT-2b-1030 |  | Rebar fixing for base slab | 3d | 2013-03-04 A | 2013-03-06 A | 823A-ST-SCCT-2b-1020 | 100% | 2013-06-05 | 2013-06-07 |  | Reinforcement [68142 kg]; Crawler Crane/Mobile Crane [16 h]; Plant and Equipment Operator (Crawler-mounted Mobile Crane) [16 h]; Bar Bender & Fixer [256 h] |  | 100% | 100% | 823A_AB |  |  |  |  |
| 823A-ST-SCCT-2b-1040 |  | Erect internal kicker formwork for base slab | 2d | 2013-03-05 A | 2013-03-06 A | 823A-ST-SCCT-2b-1030 | 100% | 2013-06-08 | 2013-06-10 |  | Crawler Crane/Mobile Crane [16 h]; Plant and Equipment Operator (Crawler-mounted Mobile Crane) [96 h]; Carpenter (Formwork - Civil Construction) [192 h] |  | 100% | 100% | 823A_AB |  |  |  |  |
| 823A-ST-SCCT-2b-1050 |  | Concreting for base slab (363m3) | 1d | 2013-03-07 A | 2013-03-07 A | 823A-ST-SCCT-2b-1040 | 100% | 2013-06-11 | 2013-06-11 |  | Permanent Concrete [363 Cu m]; Concrete 45/20A [363 Cu m]; Crawler Crane/Mobile Crane [8 h]; Concrete Pump [8 h]; PY Concretor [64 h]; General Worker [96 h]; Plant and Equipment Operator (Crawler-mounted Mobile Crane) [16 h]; Rigger/Metal Formwork Erector [32 h] |  | 100% | 100% | 823A_AB | 363 | m3 | 363 | 363 |
| 823A-ST-SCCT-2b-1060 |  | Curing for base slab | 7d | 2013-03-08 A | 2013-03-11 A | 823A-ST-SCCT-2b-1050 | 100% | 2013-06-12 | 2013-06-18 | 823-7d | General Worker [224 h] |  | 100% | 100% | 823A_AB |  |  |  |  |
| 823A-ST-SCCT-2b-1080 |  | Removal of formwork for base slab | 1d | 2013-03-08 A | 2013-03-08 A | 823A-ST-SCCT-2b-1070 | 100% | 2013-06-14 | 2013-06-14 |  | Crawler Crane/Mobile Crane [8 h]; Carpenter (Formwork - Civil Construction) [64 h]; Plant and Equipment Operator (Crawler-mounted Mobile Crane) [8 h] |  | 100% | 100% | 823A_AB |  |  |  |  |
| 823A-ST-SCCT-2b-1090 |  | Infill concrete in between D-wall and base slab | 1d | 2013-03-11 A | 2013-03-11 A | 823A-ST-SCCT-2b-1080 | 100% | 2013-06-15 | 2013-06-15 |  | Concrete 20/20C [204 Cu m]; Crawler Crane/Mobile Crane [8 h]; Concrete Pump [8 h]; PY Concretor [32 h]; Plant and Equipment Operator (Crawler-mounted Mobile Crane) [16 h]; General Worker [64 h]; Rigger/Metal Formwork Erector [16 h]; Temporary Concrete [204 Cu m] |  | 100% | 100% | 823A_AB |  |  |  |  |
| 823A-ST-SCCT-2b-1070 |  | Preparation of construction joint for base slab | 1d | 2013-03-12 A | 2013-03-12 A | 823A-ST-SCCT-2b-1050 | 100% | 2013-06-13 | 2013-06-13 | 823-6dPH |  |  | 100% | 100% | 823A_AB |  |  |  |  |
| 823A-ST-SCCT-2b-1100 |  | Curing | 1d | 2013-03-13 A | 2013-03-13 A | 823A-ST-SCCT-2b-1090, 823A-ST-SCCT-2b-1060 | 100% | 2013-06-01 | 2013-06-01 | 823-7d | General Worker [224 h] |  | 100% | 100% | 823A_AB |  |  |  |  |
| 823A-ST-SCCT-2b-1110 |  | Removal strut S5 and S4 | 4d | 2013-06-22 A | 2013-06-24 A | 823A-ST-SCCT-2b-1100 | 100% | 2013-06-24 | 2013-06-27 |  | Crawler Crane/Mobile Crane [16 h]; Plant and Equipment Operator (Crawler-mounted Mobile Crane) [16 h]; Rigger/Metal Formwork Erector [128 h] |  | 100% | 100% | 823A_AB | 4 | nos | 4 | 4 |
|  | 2 | **Southbound** |  | 2013-06-26 | 2013-10-18 |  |  |  |  |  |  |  |  |  |  |  |  |  |  |
| 823A-ST-SCCT-2b-2010 |  | Erect internal formwork & Falsework for wall and roof | 4d | 2013-06-26 A | 2013-07-02 A | 823A-ST-SCCT-2b-1110, 823A-ST-SCCT-2a-2070 | 100% | 2013-08-01 | 2013-08-05 |  | Crawler Crane/Mobile Crane [48 h]; Plant and Equipment Operator (Crawler-mounted Mobile Crane) [48 h]; Carpenter (Formwork - Civil Construction) [384 h]; Rigger/Metal Formwork Erector [192 h] | -20 | 100% | 100% | 823A_AB |  |  |  |  |
| 823A-ST-SCCT-2b-2020 |  | Rebar fixing for wall and roof | 3d | 2013-07-03 A | 2013-07-15 A | 823A-ST-SCCT-2b-2010 | 100% | 2013-08-06 | 2013-08-08 |  | Reinforcement [67234 kg]; Crawler Crane/Mobile Crane [32 h]; Bar Bender & Fixer [512 h]; Plant and Equipment Operator (Crawler-mounted Mobile Crane) [32 h] |  | 100% | 100% | 823A_AB |  |  |  |  |
| 823A-ST-SCCT-2b-2030 |  | Erect external formwork for wall and roof | 2d | 2013-07-10 A | 2013-07-26 A | 823A-ST-SCCT-2b-2020 | 100% | 2013-08-09 | 2013-08-10 |  | Crawler Crane/Mobile Crane [16 h]; Plant and Equipment Operator (Crawler-mounted Mobile Crane) [16 h]; Carpenter (Formwork - Civil Construction) [192 h] |  | 100% | 100% | 823A_AB |  |  |  |  |
| 823A-ST-SCCT-2b-2040 |  | Concreting for wall and roof (450m3) | 1d | 2013-07-27 A | 2013-07-27 A | 823A-ST-SCCT-2b-2030 | 100% | 2013-08-12 | 2013-08-12 |  | Permanent Concrete [444 Cu m]; Concrete 45/20A [444 Cu m]; Crawler Crane/Mobile Crane [8 h]; Plant and Equipment Operator (Crawler-mounted Mobile Crane) [16 h]; PY Concretor [64 h]; General Worker [96 h]; Rigger/Metal Formwork Erector [32 h]; Concrete Pump [8 h] |  | 100% | 100% | 823A_AB | 450 | m3 | 450 | 450 |
| 823A-ST-SCCT-2b-2050 |  | Curing for wall and roof | 10d | 2013-07-29 A | 2013-07-31 A | 823A-ST-SCCT-2b-2040 | 100% | 2013-08-13 | 2013-08-22 | 823-7d | General Worker [224 h] |  | 100% | 100% | 823A_AB |  |  |  |  |
| 823A-ST-SCCT-2b-2060 |  | Preparation of construction joint for wall and roof | 1d | 2013-08-02 A | 2013-08-03 A | 823A-ST-SCCT-2b-2040 | 100% | 2013-09-02 | 2013-09-02 | 823-6dPH |  |  | 100% | 100% | 823A_AB |  |  |  |  |
| 823A-ST-SCCT-2b-2070 |  | Removal external and internal formwork for wall | 2d | 2013-08-05 A | 2013-08-06 A | 823A-ST-SCCT-2b-2060 | 100% | 2013-09-03 | 2013-09-04 |  | Crawler Crane/Mobile Crane [16 h]; Plant and Equipment Operator (Crawler-mounted Mobile Crane) [16 h]; Carpenter (Formwork - Civil Construction) [128 h] |  | 100% | 100% | 823A_AB |  |  |  |  |
| 823A-ST-SCCT-2b-2080 |  | Removal internal falsework and formwork for roof | 1d | 2013-08-07 A | 2013-08-08 A | 823A-ST-SCCT-2a-3080, 823A-ST-SCCT-2b-2050, 823A-ST-SCCT-2a-2080, 823A-ST-SCCT-2b-2070 | 100% | 2013-09-05 | 2013-09-05 |  | Crawler Crane/Mobile Crane [32 h]; Carpenter (Formwork - Civil Construction) [256 h]; Plant and Equipment Operator (Crawler-mounted Mobile Crane) [32 h]; Rigger/Metal Formwork Erector [128 h] |  | 100% | 100% | 823A_AB |  |  |  |  |
| 823A-ST-SCCT-2b-2090 |  | Side walkway and cable bracket (204m3) | 5d | 2013-08-23 A | 2013-10-18 A | 823A-ST-SCCT-2b-4090, 823A-ST-SCCT-2b-2080 | 100% | 2014-02-10 | 2014-02-14 |  | Permanent Concrete [204 Cu m]; Concrete 20/20C [204 Cu m]; Crawler Crane/Mobile Crane [40 h]; Concrete Pump [40 h]; PY Concretor [160 h]; General Worker [320 h]; Plant and Equipment Operator (Crawler-mounted Mobile Crane) [80 h]; Rigger/Metal Formwork Erector [160 h]; Carpenter (Formwork - Civil Construction) [320 h] | -9 | 100% | 100% | 823A_AB | 204 | m3 | 204 | 204 |

| ID | WBS | Activity | Duration | Start | Finish | Predecessors | Complete | Planned start | Planned finish | Calendar | Resources | % Planned | % Actual | 823A_As-built | TIme Gain/Loss | Actual Up to Date | UNITS | Total Quantity | Planned Up to Date |
| --- | --- | --- | --- | --- | --- | --- | --- | --- | --- | --- | --- | --- | --- | --- | --- | --- | --- | --- | --- |
|  | 3 | **Northbound** |  | 2013-07-08 | 2013-10-18 |  |  |  |  |  |  |  |  |  |  |  |  |  |  |
| 823A-ST-SCCT-2b-3010 |  | Erect internal formwork & Falsework for wall and roof | 4d | 2013-07-08 A | 2013-07-15 A | 823A-ST-SCCT-2a-1110, 823A-ST-SCCT-2a-3070 | 100% | 2013-08-01 | 2013-08-05 |  | Plant and Equipment Operator (Crawler-mounted Mobile Crane) [48 h]; Carpenter (Formwork - Civil Construction) [384 h]; Rigger/Metal Formwork Erector [192 h]; Crawler Crane/Mobile Crane [48 h] | 100% | 100% | 823A_AB |  |  |  |  |  |
| 823A-ST-SCCT-2b-3020 |  | Rebar fixing for wall and roof | 3d | 2013-07-16 A | 2013-07-29 A | 823A-ST-SCCT-2b-3010 | 100% | 2013-08-06 | 2013-08-08 |  | Reinforcement [67234 kg]; Crawler Crane/Mobile Crane [32 h]; Bar Bender & Fixer [512 h]; Plant and Equipment Operator (Crawler-mounted Mobile Crane) [32 h] | 100% | 100% | 823A_AB |  |  |  |  |  |
| 823A-ST-SCCT-2b-3030 |  | Erect external formwork for wall and roof | 2d | 2013-07-30 A | 2013-07-31 A | 823A-ST-SCCT-2b-3020 | 100% | 2013-08-09 | 2013-08-10 |  | Crawler Crane/Mobile Crane [16 h]; Plant and Equipment Operator (Crawler-mounted Mobile Crane) [16 h]; Carpenter (Formwork - Civil Construction) [192 h] | 100% | 100% | 823A_AB | -11 |  |  |  |  |
| 823A-ST-SCCT-2b-3040 |  | Concreting for wall and roof (450m3) | 1d | 2013-08-07 A | 2013-08-07 A | 823A-ST-SCCT-2b-3030 | 100% | 2013-09-03 | 2013-09-03 |  | Permanent Concrete [444 Cu m]; Crawler Crane/Mobile Crane [8 h]; Concrete Pump [8 h]; Plant and Equipment Operator (Crawler-mounted Mobile Crane) [16 h]; PY Concretor [64 h]; General Worker [96 h]; Rigger/Metal Formwork Erector [32 h]; Concrete 45/20A [444 Cu m] | 100% | 100% | 823A_AB |  | 450 | m3 | 450 | 450 |
| 823A-ST-SCCT-2b-3050 |  | Curing for wall and roof | 10d | 2013-08-08 A | 2013-08-19 A | 823A-ST-SCCT-2b-3040 | 100% | 2013-09-04 | 2013-09-13 | 823-7d | General Worker [224 h] | 100% | 100% | 823A_AB |  |  |  |  |  |
| 823A-ST-SCCT-2b-3060 |  | Preparation of construction joint for wall and roof | 1d | 2013-08-20 A | 2013-08-21 A | 823A-ST-SCCT-2b-3040 | 100% | 2013-09-04 | 2013-09-04 | 823-6dPH |  | 100% | 100% | 823A_AB |  |  |  |  |  |
| 823A-ST-SCCT-2b-3070 |  | Removal external and internal formwork for wall | 2d | 2013-08-22 A | 2013-08-23 A | 823A-ST-SCCT-2b-3060 | 100% | 2013-09-05 | 2013-09-06 |  | Crawler Crane/Mobile Crane [16 h]; Plant and Equipment Operator (Crawler-mounted Mobile Crane) [16 h]; Carpenter (Formwork - Civil Construction) [128 h] | 100% | 100% | 823A_AB |  |  |  |  |  |
| 823A-ST-SCCT-2b-3080 |  | Removal internal falsework and formwork for roof | 1d | 2013-08-24 A | 2013-08-24 A | 823A-ST-SCCT-2b-3050, 823A-ST-SCCT-2b-3070 | 100% | 2013-09-14 | 2013-09-14 |  | Crawler Crane/Mobile Crane [32 h]; Carpenter (Formwork - Civil Construction) [256 h]; Plant and Equipment Operator (Crawler-mounted Mobile Crane) [32 h]; Rigger/Metal Formwork Erector [128 h] | 100% | 100% | 823A_AB |  |  |  |  |  |
| 823A-ST-SCCT-2b-3090 |  | Side walkway and cable bracket (204m3) | 5d | 2013-08-30 A | 2013-10-18 A | 823A-ST-SCCT-1a-3090, 823A-ST-SCCT-2b-3080 | 100% | 2014-07-05 | 2014-07-10 |  | Permanent Concrete [204 Cu m]; Concrete 20/20C [204 Cu m]; Crawler Crane/Mobile Crane [40 h]; Concrete Pump [40 h]; Carpenter (Formwork - Civil Construction) [320 h]; PY Concretor [160 h]; General Worker [320 h]; Plant and Equipment Operator (Crawler-mounted Mobile Crane) [80 h]; Rigger/Metal Formwork Erector [160 h] | 100% | 100% | 823A_AB |  | 204 | m3 | 204 | 204 |
|  | 4 | **Approach Tunnel Roof** |  | 2013-08-13 | 2013-09-26 |  |  |  |  |  |  |  |  |  |  |  |  |  |  |
| 823A-ST-SCCT-2b-4090 |  | Side walkway and cable bracket (204m3) | 5d | 2013-08-13 A | 2013-08-29 A | 823A-ST-SCCT-2b-4080, 823A-ST-SCCT-1a-2090 | 100% | 2013-12-24 | 2014-01-02 |  | Permanent Concrete [204 Cu m]; Concrete 20/20C [204 Cu m]; Crawler Crane/Mobile Crane [40 h]; Carpenter (Formwork - Civil Construction) [320 h]; PY Concretor [160 h]; General Worker [320 h]; Plant and Equipment Operator (Crawler-mounted Mobile Crane) [80 h]; Rigger/Metal Formwork Erector [160 h]; Concrete Pump [40 h] | 100% | 100% | 823A_AB | -19 | 204 | m3 | 204 | 204 |
| 823A-ST-SCCT-2b-4010 |  | Erect internal formwork & Falsework for roof | 4d | 2013-08-30 A | 2013-09-03 A | 823A-ST-SCCT-2b-2070, 823A-ST-SCCT-2b-3070 | 100% | 2013-10-02 | 2013-10-05 |  | Crawler Crane/Mobile Crane [48 h]; Plant and Equipment Operator (Crawler-mounted Mobile Crane) [48 h]; Carpenter (Formwork - Civil Construction) [384 h]; Rigger/Metal Formwork Erector [192 h] | 100% | 100% | 823A_AB | -16 |  |  |  |  |
| 823A-ST-SCCT-2b-4020 |  | Rebar fixing for roof | 2d | 2013-09-10 A | 2013-09-14 A | 823A-ST-SCCT-2b-4010 | 100% | 2013-10-07 | 2013-10-08 |  | Reinforcement [67234 kg]; Crawler Crane/Mobile Crane [32 h]; Bar Bender & Fixer [512 h]; Plant and Equipment Operator (Crawler-mounted Mobile Crane) [32 h] | 100% | 100% | 823A_AB |  |  |  |  |  |
| 823A-ST-SCCT-2b-4030 |  | Erect external formwork for roof | 1d | 2013-09-16 A | 2013-09-17 A | 823A-ST-SCCT-2b-4020 | 100% | 2013-10-09 | 2013-10-09 |  | Crawler Crane/Mobile Crane [16 h]; Plant and Equipment Operator (Crawler-mounted Mobile Crane) [16 h]; Carpenter (Formwork - Civil Construction) [192 h] | 100% | 100% | 823A_AB |  |  |  |  |  |
| 823A-ST-SCCT-2b-4040 |  | Concreting for roof (363m3) | 1d | 2013-09-18 A | 2013-09-18 A | 823A-ST-SCCT-2b-4030 | 100% | 2013-10-10 | 2013-10-10 |  | Crawler Crane/Mobile Crane [8 h]; Permanent Concrete [444 Cu m]; Concrete 45/20A [444 Cu m]; Concrete Pump [8 h]; Plant and Equipment Operator (Crawler-mounted Mobile Crane) [16 h]; PY Concretor [64 h]; General Worker [96 h]; Rigger/Metal Formwork Erector [32 h] | 100% | 100% | 823A_AB |  | 363 | m3 | 363 | 363 |
| 823A-ST-SCCT-2b-4050 |  | Curing for roof | 10d | 2013-09-19 A | 2013-09-23 A | 823A-ST-SCCT-2b-4040 | 100% | 2013-10-11 | 2013-10-20 | 823-7d | General Worker [224 h] | 100% | 100% | 823A_AB |  |  |  |  |  |
| 823A-ST-SCCT-2b-4060 |  | Preparation of construction joint for roof | 1d | 2013-09-24 A | 2013-09-24 A | 823A-ST-SCCT-2b-4040 | 100% | 2013-10-11 | 2013-10-11 | 823-6dPH |  | 100% | 100% | 823A_AB |  |  |  |  |  |
| 823A-ST-SCCT-2b-4080 |  | Removal internal falsework and formwork for roof | 2d | 2013-09-25 A | 2013-09-26 A | 823A-ST-SCCT-2a-4080, 823A-ST-SCCT-2b-4060, 823A-ST-SCCT-2b-4050 | 100% | 2013-10-21 | 2013-10-22 |  | Crawler Crane/Mobile Crane [32 h]; Carpenter (Formwork - Civil Construction) [256 h]; Plant and Equipment Operator (Crawler-mounted Mobile Crane) [32 h]; Rigger/Metal Formwork Erector [128 h] | 100% | 100% | 823A_AB |  |  |  |  |  |
|  | 11 | **Bay 1a** |  | 2013-03-11 | 2014-05-09 |  |  |  |  |  |  |  |  |  |  |  |  |  |  |
|  | 1 | **Base Slab** |  | 2013-03-11 | 2013-06-24 |  |  |  |  |  |  |  |  |  |  |  |  |  |  |
| 823A-ST-SCCT-1a-1010 |  | Placing of waterproof member T-lock & testing for base slab | 2d | 2013-03-11 A | 2013-03-11 A | 823A-ST-SCCT-2b-1080 | 100% | 2013-06-01 | 2013-06-03 |  | Skill Labour [64 h] | 100% | 100% | 823A_AB |  |  |  |  |  |
| 823A-ST-SCCT-1a-1020 |  | Erect external formwork for base slab | 2d | 2013-03-12 A | 2013-03-12 A | 823A-ST-SCCT-1a-1010 | 100% | 2013-06-04 | 2013-06-05 |  | Crawler Crane/Mobile Crane [8 h]; Carpenter (Formwork - Civil Construction) [96 h]; Plant and Equipment Operator (Crawler-mounted Mobile Crane) [8 h] | 100% | 100% | 823A_AB |  |  |  |  |  |
| 823A-ST-SCCT-1a-1030 |  | Rebar fixing for base slab | 3d | 2013-04-08 A | 2013-04-15 A | 823A-ST-SCCT-1a-1020 | 100% | 2013-06-06 | 2013-06-08 |  | Reinforcement [68142 kg]; Crawler Crane/Mobile Crane [16 h]; Plant and Equipment Operator (Crawler-mounted Mobile Crane) [16 h]; Bar Bender & Fixer [256 h] | 100% | 100% | 823A_AB |  |  |  |  |  |
| 823A-ST-SCCT-1a-1040 |  | Erect internal kicker formwork for base slab | 2d | 2013-04-12 A | 2013-04-15 A | 823A-ST-SCCT-1a-1030 | 100% | 2013-06-10 | 2013-06-11 |  | Crawler Crane/Mobile Crane [16 h]; Plant and Equipment Operator (Crawler-mounted Mobile Crane) [96 h]; Carpenter (Formwork - Civil Construction) [192 h] | 100% | 100% | 823A_AB |  |  |  |  |  |
| 823A-ST-SCCT-1a-1050 |  | Concreting for base slab (363m3) | 1d | 2013-04-16 A | 2013-04-16 A | 823A-ST-SCCT-1a-1040 | 100% | 2013-06-13 | 2013-06-13 |  | Permanent Concrete [363 Cu m]; Concrete 45/20A [363 Cu m]; Crawler Crane/Mobile Crane [8 h]; Concrete Pump [8 h]; PY Concretor [64 h]; General Worker [96 h]; Plant and Equipment Operator (Crawler-mounted Mobile Crane) [16 h]; Rigger/Metal Formwork Erector [32 h] | 100% | 100% | 823A_AB |  | 363 | m3 | 363 | 363 |
| 823A-ST-SCCT-1a-1060 |  | Curing for base slab | 7d | 2013-04-17 A | 2013-04-17 A | 823A-ST-SCCT-1a-1050 | 100% | 2013-06-14 | 2013-06-20 | 823-7d | General Worker [224 h] | 100% | 100% | 823A_AB |  |  |  |  |  |
| 823A-ST-SCCT-1a-1070 |  | Preparation of construction joint for base slab | 1d | 2013-04-18 A | 2013-04-18 A | 823A-ST-SCCT-1a-1050 | 100% | 2013-06-14 | 2013-06-14 | 823-6dPH |  | 100% | 100% | 823A_AB |  |  |  |  |  |
| 823A-ST-SCCT-1a-1080 |  | Removal of formwork for base slab | 1d | 2013-04-18 A | 2013-04-18 A | 823A-ST-SCCT-1a-1070 | 100% | 2013-06-15 | 2013-06-15 |  | Crawler Crane/Mobile Crane [8 h]; Carpenter (Formwork - Civil Construction) [64 h]; Plant and Equipment Operator (Crawler-mounted Mobile Crane) [8 h] | 100% | 100% | 823A_AB |  |  |  |  |  |
| 823A-ST-SCCT-1a-1090 |  | Infill concrete in between D-wall and base slab | 1d | 2013-05-02 A | 2013-05-02 A | 823A-ST-SCCT-1a-1080 | 100% | 2013-06-17 | 2013-06-17 |  | Temporary Concrete [204 Cu m]; Concrete 20/20C [204 Cu m]; Crawler Crane/Mobile Crane [8 h]; Concrete Pump [8 h]; PY Concretor [32 h]; Plant and Equipment Operator (Crawler-mounted Mobile Crane) [16 h]; General Worker [64 h]; Rigger/Metal Formwork Erector [16 h] | 100% | 100% | 823A_AB |  |  |  |  |  |
| 823A-ST-SCCT-1a-1100 |  | Curing | 1d | 2013-05-02 A | 2013-05-02 A | 823A-ST-SCCT-1a-1090, 823A-ST-SCCT-1a-1060 | 100% | 2013-06-21 | 2013-06-21 | 823-7d | General Worker [224 h] | 100% | 100% | 823A_AB |  |  |  |  |  |
| 823A-ST-SCCT-1a-1110 |  | Removal strut S5 and S4 | 4d | 2013-06-22 A | 2013-06-24 A | 823A-ST-SCCT-1a-1100 | 100% | 2013-07-02 | 2013-07-05 |  | Crawler Crane/Mobile Crane [16 h]; Plant and Equipment Operator (Crawler-mounted Mobile Crane) [16 h]; Rigger/Metal Formwork Erector [128 h] | 100% | 100% | 823A_AB |  | 4 | nos | 4 | 4 |

| ID | WBS | Activity | Duration | Start | Finish | Predecessors | Complete | Planned start | Planned finish | Calendar | Resources | TIme Gain/Loss | % Planned | % Actual | 823A_As-built | Actual Up to Date | UNITS | Total Quantity | Planned Up to Date |
| --- | --- | --- | --- | --- | --- | --- | --- | --- | --- | --- | --- | --- | --- | --- | --- | --- | --- | --- | --- |
|  | 2 | **Southbound** |  | 2013-06-26 | 2013-10-18 |  |  |  |  |  |  |  |  |  |  |  |  |  |  |
| 823A-ST-SCCT-1a-2010 |  | Erect internal formwork & Falsework for wall and roof | 4d | 2013-06-26 A | 2013-07-02 A | 823A-ST-SCCT-1a-1110, 823A-ST-SCCT-2b-2070 | 100% | 2013-08-05 | 2013-08-08 |  | Crawler Crane/Mobile Crane [48 h]; Plant and Equipment Operator (Crawler-mounted Mobile Crane) [48 h]; Carpenter (Formwork - Civil Construction) [384 h]; Rigger/Metal Formwork Erector [192 h] | -20 | 100% | 100% | 823A_AB |  |  |  |  |
| 823A-ST-SCCT-1a-2020 |  | Rebar fixing for wall and roof | 3d | 2013-07-03 A | 2013-07-15 A | 823A-ST-SCCT-1a-2010 | 100% | 2013-08-09 | 2013-08-12 |  | Reinforcement [67234 kg]; Crawler Crane/Mobile Crane [32 h]; Bar Bender & Fixer [512 h]; Plant and Equipment Operator (Crawler-mounted Mobile Crane) [32 h] |  | 100% | 100% | 823A_AB |  |  |  |  |
| 823A-ST-SCCT-1a-2030 |  | Erect external formwork for wall and roof | 2d | 2013-07-16 A | 2013-07-26 A | 823A-ST-SCCT-1a-2020 | 100% | 2013-08-13 | 2013-08-14 |  | Crawler Crane/Mobile Crane [16 h]; Plant and Equipment Operator (Crawler-mounted Mobile Crane) [16 h]; Carpenter (Formwork - Civil Construction) [192 h] |  | 100% | 100% | 823A_AB |  |  |  |  |
| 823A-ST-SCCT-1a-2040 |  | Concreting for wall and roof (450m3) | 1d | 2013-07-27 A | 2013-07-27 A | 823A-ST-SCCT-1a-2030 | 100% | 2013-08-15 | 2013-08-15 |  | Permanent Concrete [444 Cu m]; Concrete 45/20A [444 Cu m]; Crawler Crane/Mobile Crane [8 h]; Concrete Pump [8 h]; Plant and Equipment Operator (Crawler-mounted Mobile Crane) [16 h]; PY Concretor [64 h]; General Worker [96 h]; Rigger/Metal Formwork Erector [32 h] |  | 100% | 100% | 823A_AB | 450 | m3 | 450 | 450 |
| 823A-ST-SCCT-1a-2050 |  | Curing for wall and roof | 10d | 2013-07-29 A | 2013-07-31 A | 823A-ST-SCCT-1a-2040 | 100% | 2013-08-16 | 2013-08-25 | 823-7d | General Worker [224 h] |  | 100% | 100% | 823A_AB |  |  |  |  |
| 823A-ST-SCCT-1a-2060 |  | Preparation of construction joint for wall and roof | 1d | 2013-08-01 A | 2013-08-01 A | 823A-ST-SCCT-1a-2040 | 100% | 2013-09-02 | 2013-09-02 | 823-6dPH |  |  | 100% | 100% | 823A_AB |  |  |  |  |
| 823A-ST-SCCT-1a-2070 |  | Removal external and internal formwork for wall | 2d | 2013-08-02 A | 2013-08-03 A | 823A-ST-SCCT-1a-2060 | 100% | 2013-09-03 | 2013-09-04 |  | Crawler Crane/Mobile Crane [16 h]; Plant and Equipment Operator (Crawler-mounted Mobile Crane) [16 h]; Carpenter (Formwork - Civil Construction) [128 h] |  | 100% | 100% | 823A_AB |  |  |  |  |
| 823A-ST-SCCT-1a-2080 |  | Removal internal falsework and formwork for roof | 1d | 2013-08-05 A | 2013-08-05 A | 823A-ST-SCCT-2b-2080, 823A-ST-SCCT-1a-2050, 823A-ST-SCCT-1a-2070 | 100% | 2013-09-05 | 2013-09-05 |  | Crawler Crane/Mobile Crane [32 h]; Carpenter (Formwork - Civil Construction) [256 h]; Plant and Equipment Operator (Crawler-mounted Mobile Crane) [32 h]; Rigger/Metal Formwork Erector [128 h] |  | 100% | 100% | 823A_AB |  |  |  |  |
| 823A-ST-SCCT-1a-2090 |  | Side walkway and cable bracket (204m3) | 5d | 2013-08-23 A | 2013-10-18 A | 823A-ST-SCCT-1a-2080, 823A-ST-SCCT-1a-4080 | 100% | 2014-02-04 | 2014-02-08 |  | Permanent Concrete [204 Cu m]; Concrete 20/20C [204 Cu m]; Crawler Crane/Mobile Crane [40 h]; Concrete Pump [40 h]; Carpenter (Formwork - Civil Construction) [320 h]; PY Concretor [160 h]; Plant and Equipment Operator (Crawler-mounted Mobile Crane) [80 h]; Rigger/Metal Formwork Erector [160 h]; General Worker [320 h] | -9 | 100% | 100% | 823A_AB | 204 | m3 | 204 | 204 |
|  | 3 | **Northbound** |  | 2013-07-08 | 2014-05-09 |  |  |  |  |  |  |  |  |  |  |  |  |  |  |
| 823A-ST-SCCT-1a-3010 |  | Erect internal formwork & Falsework for wall and roof | 4d | 2013-07-08 A | 2013-07-15 A | 823A-ST-SCCT-1a-1110, 823A-ST-SCCT-2b-3070 | 100% | 2013-08-07 | 2013-08-10 |  | Crawler Crane/Mobile Crane [48 h]; Plant and Equipment Operator (Crawler-mounted Mobile Crane) [48 h]; Carpenter (Formwork - Civil Construction) [384 h]; Rigger/Metal Formwork Erector [192 h] |  | 100% | 100% | 823A_AB |  |  |  |  |
| 823A-ST-SCCT-1a-3020 |  | Rebar fixing for wall and roof | 3d | 2013-07-16 A | 2013-07-29 A | 823A-ST-SCCT-1a-3010 | 100% | 2013-08-12 | 2013-08-14 |  | Reinforcement [67234 kg]; Crawler Crane/Mobile Crane [32 h]; Bar Bender & Fixer [512 h]; Plant and Equipment Operator (Crawler-mounted Mobile Crane) [32 h] |  | 100% | 100% | 823A_AB |  |  |  |  |
| 823A-ST-SCCT-1a-3030 |  | Erect external formwork for wall and roof | 2d | 2013-07-30 A | 2013-08-01 A | 823A-ST-SCCT-1a-3020 | 100% | 2013-08-15 | 2013-08-16 |  | Crawler Crane/Mobile Crane [16 h]; Plant and Equipment Operator (Crawler-mounted Mobile Crane) [16 h]; Carpenter (Formwork - Civil Construction) [192 h] | -11 | 100% | 100% | 823A_AB |  |  |  |  |
| 823A-ST-SCCT-1a-3040 |  | Concreting for wall and roof (450m3) | 1d | 2013-08-07 A | 2013-08-07 A | 823A-ST-SCCT-1a-3030 | 100% | 2013-09-04 | 2013-09-04 |  | Permanent Concrete [444 Cu m]; Concrete 45/20A [444 Cu m]; Crawler Crane/Mobile Crane [8 h]; Concrete Pump [8 h]; Plant and Equipment Operator (Crawler-mounted Mobile Crane) [16 h]; PY Concretor [64 h]; General Worker [96 h]; Rigger/Metal Formwork Erector [32 h] |  | 100% | 100% | 823A_AB | 450 | m3 | 450 | 450 |
| 823A-ST-SCCT-1a-3050 |  | Curing for wall and roof | 10d | 2013-08-08 A | 2013-08-19 A | 823A-ST-SCCT-1a-3040 | 100% | 2013-09-05 | 2013-09-14 | 823-7d | General Worker [224 h] |  | 100% | 100% | 823A_AB |  |  |  |  |
| 823A-ST-SCCT-1a-3060 |  | Preparation of construction joint for wall and roof | 1d | 2013-08-20 A | 2013-08-20 A | 823A-ST-SCCT-1a-3040 | 100% | 2013-09-05 | 2013-09-05 | 823-6dPH |  |  | 100% | 100% | 823A_AB |  |  |  |  |
| 823A-ST-SCCT-1a-3070 |  | Removal external and internal formwork for wall | 2d | 2013-08-21 A | 2013-08-22 A | 823A-ST-SCCT-1a-3060 | 100% | 2013-09-06 | 2013-09-07 |  | Crawler Crane/Mobile Crane [16 h]; Plant and Equipment Operator (Crawler-mounted Mobile Crane) [16 h]; Carpenter (Formwork - Civil Construction) [128 h] |  | 100% | 100% | 823A_AB |  |  |  |  |
| 823A-ST-SCCT-1a-3080 |  | Removal internal falsework and formwork for roof | 1d | 2013-08-23 A | 2013-08-23 A | 823A-ST-SCCT-2b-3080, 823A-ST-SCCT-1a-3070, 823A-ST-SCCT-1a-3050 | 100% | 2013-09-16 | 2013-09-16 |  | Crawler Crane/Mobile Crane [32 h]; Plant and Equipment Operator (Crawler-mounted Mobile Crane) [32 h]; Rigger/Metal Formwork Erector [128 h]; Carpenter (Formwork - Civil Construction) [256 h] |  | 100% | 100% | 823A_AB |  |  |  |  |
| 823A-ST-SCCT-1a-3090 |  | Side walkway and cable bracket (204m3) | 5d | 2014-05-02 A | 2014-05-09 A | 823A-ST-SCCT-1b-3090, 823A-ST-SCCT-1a-3080 | 100% | 2014-11-19 | 2014-11-24 |  | Permanent Concrete [204 Cu m]; Concrete 20/20C [204 Cu m]; Crawler Crane/Mobile Crane [40 h]; Concrete Pump [40 h]; Carpenter (Formwork - Civil Construction) [320 h]; PY Concretor [160 h]; General Worker [320 h]; Plant and Equipment Operator (Crawler-mounted Mobile Crane) [80 h]; Rigger/Metal Formwork Erector [160 h] |  | 100% | 100% | 823A_AB | 204 | m3 | 204 | 204 |
|  | 4 | **Approach Tunnel Roof** |  | 2013-08-13 | 2013-09-26 |  |  |  |  |  |  |  |  |  |  |  |  |  |  |
| 823A-ST-SCCT-1a-4080 |  | Side walkway and cable bracket (204m3) | 5d | 2013-08-13 A | 2013-08-29 A | 823A-ST-SCCT-1b-2090, 823A-ST-SCCT-1a-4070 | 100% | 2014-01-13 | 2014-01-17 |  | PY Concretor [160 h]; General Worker [320 h]; Plant and Equipment Operator (Crawler-mounted Mobile Crane) [80 h]; Rigger/Metal Formwork Erector [160 h]; Carpenter (Formwork - Civil Construction) [320 h]; Permanent Concrete [204 Cu m]; Concrete 20/20C [204 Cu m]; Crawler Crane/Mobile Crane [40 h]; Concrete Pump [40 h] | -20 | 100% | 100% | 823A_AB | 204 | m3 | 204 | 204 |
| 823A-ST-SCCT-1a-4010 |  | Erect internal formwork & Falsework for roof | 4d | 2013-08-30 A | 2013-09-03 A | 823A-ST-SCCT-1a-3070 | 100% | 2013-10-02 | 2013-10-05 |  | Crawler Crane/Mobile Crane [48 h]; Plant and Equipment Operator (Crawler-mounted Mobile Crane) [48 h]; Carpenter (Formwork - Civil Construction) [384 h]; Rigger/Metal Formwork Erector [192 h] | -14 | 100% | 100% | 823A_AB |  |  |  |  |
| 823A-ST-SCCT-1a-4020 |  | Rebar fixing for roof | 2d | 2013-09-10 A | 2013-09-14 A | 823A-ST-SCCT-1a-4010 | 100% | 2013-10-07 | 2013-10-08 |  | Reinforcement [67234 kg]; Crawler Crane/Mobile Crane [32 h]; Bar Bender & Fixer [512 h]; Plant and Equipment Operator (Crawler-mounted Mobile Crane) [32 h] |  | 100% | 100% | 823A_AB |  |  |  |  |
| 823A-ST-SCCT-1a-4030 |  | Erect external formwork for roof | 1d | 2013-09-16 A | 2013-09-17 A | 823A-ST-SCCT-1a-4020 | 100% | 2013-10-09 | 2013-10-09 |  | Crawler Crane/Mobile Crane [16 h]; Plant and Equipment Operator (Crawler-mounted Mobile Crane) [16 h]; Carpenter (Formwork - Civil Construction) [192 h] |  | 100% | 100% | 823A_AB |  |  |  |  |
| 823A-ST-SCCT-1a-4040 |  | Concreting for roof (450m3) | 1d | 2013-09-18 A | 2013-09-18 A | 823A-ST-SCCT-1a-4030 | 100% | 2013-10-10 | 2013-10-10 |  | Permanent Concrete [444 Cu m]; Concrete 45/20A [444 Cu m]; Crawler Crane/Mobile Crane [8 h]; Concrete Pump [8 h]; Plant and Equipment Operator (Crawler-mounted Mobile Crane) [16 h]; PY Concretor [64 h]; General Worker [96 h]; Rigger/Metal Formwork Erector [32 h] |  | 100% | 100% | 823A_AB | 450 | m3 | 450 | 450 |
| 823A-ST-SCCT-1a-4050 |  | Curing for roof | 7d | 2013-09-19 A | 2013-09-23 A | 823A-ST-SCCT-1a-4040 | 100% | 2013-10-11 | 2013-10-17 | 823-7d | General Worker [224 h] |  | 100% | 100% | 823A_AB |  |  |  |  |
| 823A-ST-SCCT-1a-4060 |  | Preparation of construction joint for roof | 1d | 2013-09-24 A | 2013-09-24 A | 823A-ST-SCCT-1a-4040 | 100% | 2013-10-11 | 2013-10-11 | 823-6dPH |  |  | 100% | 100% | 823A_AB |  |  |  |  |
| 823A-ST-SCCT-1a-4070 |  | Removal internal falsework and formwork for roof | 2d | 2013-09-25 A | 2013-09-26 A | 823A-ST-SCCT-1a-4050, 823A-ST-SCCT-2b-4080, 823A-ST-SCCT-1a-4060 | 100% | 2013-10-18 | 2013-10-19 |  | Crawler Crane/Mobile Crane [32 h]; Carpenter (Formwork - Civil Construction) [256 h]; Plant and Equipment Operator (Crawler-mounted Mobile Crane) [32 h]; Rigger/Metal Formwork Erector [128 h] |  | 100% | 100% | 823A_AB |  |  |  |  |

| ID | WBS | Activity | Duration | Start | Finish | Predecessors | Complete | Planned start | Planned finish | Calendar | Resources | % Planned | % Actual | 823A_As-built | Actual Up to Date | UNITS | Total Quantity | Planned Up to Date | TIme Gain/Loss |
| --- | --- | --- | --- | --- | --- | --- | --- | --- | --- | --- | --- | --- | --- | --- | --- | --- | --- | --- | --- |
|  | 12 | **Bay 1b** |  | 2013-02-21 | 2014-05-09 |  |  |  |  |  |  |  |  |  |  |  |  |  |  |
|  | 1 | **Base Slab** |  | 2013-02-21 | 2013-03-11 |  |  |  |  |  |  |  |  |  |  |  |  |  |  |
| 823A-ST-SCCT-1b-1010 |  | Placing of waterproof member T-lock & testing for base slab | 2d | 2013-02-21 A | 2013-02-21 A | 823A-ST-SCCT-1a-1080 | 100% | 2013-06-01 | 2013-06-03 |  | Skill Labour [64 h] | 100% | 100% | 823A_AB |  |  |  |  |  |
| 823A-ST-SCCT-1b-1020 |  | Erect external formwork for base slab | 2d | 2013-02-22 A | 2013-02-23 A | 823A-ST-SCCT-1b-1010 | 100% | 2013-06-04 | 2013-06-05 |  | Crawler Crane/Mobile Crane [8 h]; Carpenter (Formwork - Civil Construction) [96 h]; Plant and Equipment Operator (Crawler-mounted Mobile Crane) [8 h] | 100% | 100% | 823A_AB |  |  |  |  |  |
| 823A-ST-SCCT-1b-1030 |  | Rebar fixing for base slab | 3d | 2013-02-25 A | 2013-02-27 A | 823A-ST-SCCT-1b-1020 | 100% | 2013-06-06 | 2013-06-08 |  | Crawler Crane/Mobile Crane [16 h]; Plant and Equipment Operator (Crawler-mounted Mobile Crane) [16 h]; Bar Bender & Fixer [256 h]; Reinforcement [68142 kg] | 100% | 100% | 823A_AB |  |  |  |  |  |
| 823A-ST-SCCT-1b-1040 |  | Erect internal kicker formwork for base slab | 2d | 2013-02-27 A | 2013-02-27 A | 823A-ST-SCCT-1b-1030 | 100% | 2013-06-10 | 2013-06-11 |  | Crawler Crane/Mobile Crane [16 h]; Plant and Equipment Operator (Crawler-mounted Mobile Crane) [96 h]; Carpenter (Formwork - Civil Construction) [192 h] | 100% | 100% | 823A_AB |  |  |  |  |  |
| 823A-ST-SCCT-1b-1050 |  | Concreting for base slab (363m3) | 1d | 2013-02-28 A | 2013-02-28 A | 823A-ST-SCCT-1b-1040 | 100% | 2013-06-13 | 2013-06-13 |  | Permanent Concrete [363 Cu m]; Concrete 45/20A [363 Cu m]; Crawler Crane/Mobile Crane [8 h]; Concrete Pump [8 h]; PY Concretor [64 h]; General Worker [96 h]; Plant and Equipment Operator (Crawler-mounted Mobile Crane) [16 h]; Rigger/Metal Formwork Erector [32 h] | 100% | 100% | 823A_AB | 363 | m3 | 363 | 363 |  |
| 823A-ST-SCCT-1b-1060 |  | Curing for base slab | 7d | 2013-03-01 A | 2013-03-04 A | 823A-ST-SCCT-1b-1050 | 100% | 2013-06-14 | 2013-06-20 | 823-7d | General Worker [224 h] | 100% | 100% | 823A_AB |  |  |  |  |  |
| 823A-ST-SCCT-1b-1070 |  | Preparation of construction joint for base slab | 1d | 2013-03-05 A | 2013-03-06 A | 823A-ST-SCCT-1b-1050 | 100% | 2013-06-14 | 2013-06-14 | 823-6dPH |  | 100% | 100% | 823A_AB |  |  |  |  |  |
| 823A-ST-SCCT-1b-1080 |  | Removal of formwork for base slab | 1d | 2013-03-06 A | 2013-03-07 A | 823A-ST-SCCT-1b-1070 | 100% | 2013-06-15 | 2013-06-15 |  | Crawler Crane/Mobile Crane [8 h]; Carpenter (Formwork - Civil Construction) [64 h]; Plant and Equipment Operator (Crawler-mounted Mobile Crane) [8 h] | 100% | 100% | 823A_AB |  |  |  |  |  |
| 823A-ST-SCCT-1b-1090 |  | Infill concrete in between D-wall and base slab | 1d | 2013-03-08 A | 2013-03-08 A | 823A-ST-SCCT-1b-1080 | 100% | 2013-06-17 | 2013-06-17 |  | Temporary Concrete [204 Cu m]; Concrete 20/20C [204 Cu m]; Crawler Crane/Mobile Crane [8 h]; Concrete Pump [8 h]; PY Concretor [32 h]; Plant and Equipment Operator (Crawler-mounted Mobile Crane) [16 h]; General Worker [64 h]; Rigger/Metal Formwork Erector [16 h] | 100% | 100% | 823A_AB |  |  |  |  |  |
| 823A-ST-SCCT-1b-1100 |  | Curing | 1d | 2013-03-09 A | 2013-03-09 A | 823A-ST-SCCT-1b-1090, 823A-ST-SCCT-1b-1060 | 100% | 2013-06-21 | 2013-06-21 | 823-7d | General Worker [224 h] | 100% | 100% | 823A_AB |  |  |  |  |  |
| 823A-ST-SCCT-1b-1110 |  | Removal strut S5 and S4 | 4d | 2013-03-11 A | 2013-03-11 A | 823A-ST-SCCT-1b-1100 | 100% | 2013-06-22 | 2013-06-26 |  | Crawler Crane/Mobile Crane [16 h]; Plant and Equipment Operator (Crawler-mounted Mobile Crane) [16 h]; Rigger/Metal Formwork Erector [128 h] | 100% | 100% | 823A_AB |  |  |  |  |  |
|  | 2 | **Southbound** |  | 2013-03-01 | 2013-10-18 |  |  |  |  |  |  |  |  |  |  |  |  |  |  |
| 823A-ST-SCCT-1b-2010 |  | Erect internal formwork & Falsework for wall and roof | 10d | 2013-03-01 A | 2013-03-06 A | 823A-ST-SCCT-1b-1110, 823A-ST-SCCT-1a-2070 | 100% | 2013-07-09 | 2013-07-19 |  | Crawler Crane/Mobile Crane [48 h]; Plant and Equipment Operator (Crawler-mounted Mobile Crane) [48 h]; Carpenter (Formwork - Civil Construction) [384 h]; Rigger/Metal Formwork Erector [192 h] | 100% | 100% | 823A_AB |  |  |  |  |  |
| 823A-ST-SCCT-1b-2020 |  | Rebar fixing for wall and roof | 3d | 2013-03-07 A | 2013-03-14 A | 823A-ST-SCCT-1b-2010 | 100% | 2013-07-20 | 2013-07-23 |  | Reinforcement [67234 kg]; Crawler Crane/Mobile Crane [32 h]; Bar Bender & Fixer [512 h]; Plant and Equipment Operator (Crawler-mounted Mobile Crane) [32 h] | 100% | 100% | 823A_AB |  |  |  |  |  |
| 823A-ST-SCCT-1b-2030 |  | Erect external formwork for wall and roof | 2d | 2013-03-12 A | 2013-03-14 A | 823A-ST-SCCT-1b-2020 | 100% | 2013-07-24 | 2013-07-25 |  | Crawler Crane/Mobile Crane [16 h]; Plant and Equipment Operator (Crawler-mounted Mobile Crane) [16 h]; Carpenter (Formwork - Civil Construction) [192 h] | 100% | 100% | 823A_AB |  |  |  |  |  |
| 823A-ST-SCCT-1b-2040 |  | Concreting for wall and roof (450m3) | 1d | 2013-03-15 A | 2013-03-15 A | 823A-ST-SCCT-1b-2030 | 100% | 2013-07-26 | 2013-07-26 |  | Permanent Concrete [444 Cu m]; Concrete 45/20A [444 Cu m]; Crawler Crane/Mobile Crane [8 h]; Concrete Pump [8 h]; Plant and Equipment Operator (Crawler-mounted Mobile Crane) [16 h]; PY Concretor [64 h]; General Worker [96 h]; Rigger/Metal Formwork Erector [32 h] | 100% | 100% | 823A_AB | 450 | m3 | 450 | 450 |  |
| 823A-ST-SCCT-1b-2050 |  | Curing for wall and roof | 10d | 2013-03-16 A | 2013-03-18 A | 823A-ST-SCCT-1b-2040 | 100% | 2013-07-27 | 2013-08-05 | 823-7d | General Worker [224 h] | 100% | 100% | 823A_AB |  |  |  |  |  |
| 823A-ST-SCCT-1b-2060 |  | Preparation of construction joint for wall and roof | 1d | 2013-03-19 A | 2013-03-19 A | 823A-ST-SCCT-1b-2040 | 100% | 2013-07-27 | 2013-07-27 | 823-6dPH |  | 100% | 100% | 823A_AB |  |  |  |  |  |
| 823A-ST-SCCT-1b-2070 |  | Removal external and internal formwork for wall | 2d | 2013-03-20 A | 2013-03-21 A | 823A-ST-SCCT-1b-2060 | 100% | 2013-07-29 | 2013-07-30 |  | Crawler Crane/Mobile Crane [16 h]; Plant and Equipment Operator (Crawler-mounted Mobile Crane) [16 h]; Carpenter (Formwork - Civil Construction) [128 h] | 100% | 100% | 823A_AB |  |  |  |  |  |
| 823A-ST-SCCT-1b-2080 |  | Removal internal falsework and formwork for roof | 1d | 2013-03-22 A | 2013-03-22 A | 823A-ST-SCCT-1b-2050, 823A-ST-SCCT-1b-2070, 823A-ST-SCCT-1a-2080 | 100% | 2013-08-06 | 2013-08-06 |  | Crawler Crane/Mobile Crane [32 h]; Carpenter (Formwork - Civil Construction) [256 h]; Plant and Equipment Operator (Crawler-mounted Mobile Crane) [32 h]; Rigger/Metal Formwork Erector [128 h] | 100% | 100% | 823A_AB |  |  |  |  |  |
| 823A-ST-SCCT-1b-2090 |  | Side walkway and cable bracket (204m3) | 5d | 2013-08-30 A | 2013-10-18 A | 823A-ST-SCCT-1b-2080, 823A-ST-SCCT-1b-4080 | 100% | 2014-01-25 | 2014-01-30 |  | Crawler Crane/Mobile Crane [40 h]; Concrete Pump [40 h]; PY Concretor [160 h]; General Worker [320 h]; Plant and Equipment Operator (Crawler-mounted Mobile Crane) [80 h]; Rigger/Metal Formwork Erector [160 h]; Carpenter (Formwork - Civil Construction) [320 h]; Permanent Concrete [204 Cu m]; Concrete 20/20C [204 Cu m] | 100% | 100% | 823A_AB | 204 | m3 | 204 | 204 | -9 |
|  | 3 | **Northbound** |  | 2013-03-08 | 2014-05-09 |  |  |  |  |  |  |  |  |  |  |  |  |  |  |
| 823A-ST-SCCT-1b-3010 |  | Erect internal formwork & Falsework for wall and roof | 4d | 2013-03-08 A | 2013-03-12 A | 823A-ST-SCCT-1b-1110, 823A-ST-SCCT-1a-3070 | 100% | 2013-07-11 | 2013-07-15 |  | Crawler Crane/Mobile Crane [48 h]; Plant and Equipment Operator (Crawler-mounted Mobile Crane) [48 h]; Carpenter (Formwork - Civil Construction) [384 h]; Rigger/Metal Formwork Erector [192 h] | 100% | 100% | 823A_AB |  |  |  |  |  |
| 823A-ST-SCCT-1b-3020 |  | Rebar fixing for wall and roof | 3d | 2013-03-14 A | 2013-03-18 A | 823A-ST-SCCT-1b-3010 | 100% | 2013-07-16 | 2013-07-18 |  | Reinforcement [67234 kg]; Crawler Crane/Mobile Crane [32 h]; Bar Bender & Fixer [512 h]; Plant and Equipment Operator (Crawler-mounted Mobile Crane) [32 h] | 100% | 100% | 823A_AB |  |  |  |  |  |
| 823A-ST-SCCT-1b-3030 |  | Erect external formwork for wall and roof | 2d | 2013-03-19 A | 2013-03-21 A | 823A-ST-SCCT-1b-3020 | 100% | 2013-07-19 | 2013-07-20 |  | Crawler Crane/Mobile Crane [16 h]; Plant and Equipment Operator (Crawler-mounted Mobile Crane) [16 h]; Carpenter (Formwork - Civil Construction) [192 h] | 100% | 100% | 823A_AB |  |  |  |  |  |
| 823A-ST-SCCT-1b-3040 |  | Concreting for wall and roof (450m3) | 1d | 2013-03-27 A | 2013-03-27 A | 823A-ST-SCCT-1b-3030 | 100% | 2013-07-22 | 2013-07-22 |  | Permanent Concrete [444 Cu m]; Concrete 45/20A [444 Cu m]; Crawler Crane/Mobile Crane [8 h]; Concrete Pump [8 h]; Plant and Equipment Operator (Crawler-mounted Mobile Crane) [16 h]; PY Concretor [64 h]; General Worker [96 h]; Rigger/Metal Formwork Erector [32 h] | 100% | 100% | 823A_AB | 450 | m3 | 450 | 450 |  |
| 823A-ST-SCCT-1b-3050 |  | Curing for wall and roof | 10d | 2013-03-28 A | 2013-03-28 A | 823A-ST-SCCT-1b-3040 | 100% | 2013-07-23 | 2013-08-01 | 823-7d | General Worker [224 h] | 100% | 100% | 823A_AB |  |  |  |  |  |
| 823A-ST-SCCT-1b-3060 |  | Preparation of construction joint for wall and roof | 1d | 2013-03-29 A | 2013-03-29 A | 823A-ST-SCCT-1b-3040 | 100% | 2013-07-23 | 2013-07-23 | 823-6dPH |  | 100% | 100% | 823A_AB |  |  |  |  |  |
| 823A-ST-SCCT-1b-3070 |  | Removal external and internal formwork for wall | 2d | 2013-03-30 A | 2013-03-30 A | 823A-ST-SCCT-1b-3060 | 100% | 2013-07-24 | 2013-07-25 |  | Crawler Crane/Mobile Crane [16 h]; Plant and Equipment Operator (Crawler-mounted Mobile Crane) [16 h]; Carpenter (Formwork - Civil Construction) [128 h] | 100% | 100% | 823A_AB |  |  |  |  |  |
| 823A-ST-SCCT-1b-3080 |  | Removal internal falsework and formwork for roof | 1d | 2013-04-01 A | 2013-04-01 A | 823A-ST-SCCT-1b-3070, 823A-ST-SCCT-1a-3080, 823A-ST-SCCT-1b-3050 | 100% | 2013-08-02 | 2013-08-02 |  | Crawler Crane/Mobile Crane [32 h]; Carpenter (Formwork - Civil Construction) [256 h]; Plant and Equipment Operator (Crawler-mounted Mobile Crane) [32 h]; Rigger/Metal Formwork Erector [128 h] | 100% | 100% | 823A_AB |  |  |  |  |  |
| 823A-ST-SCCT-1b-3090 |  | Side walkway and cable bracket | 5d | 2014-05-02 A | 2014-05-09 A | 823A-ST-TBM-NB-1065, 823A-ST-SCCT-1b-3080 | 100% | 2014-11-13 | 2014-11-18 |  | Permanent Concrete [204 Cu m]; Concrete 20/20C [204 Cu m]; Crawler Crane/Mobile Crane [40 h]; Concrete Pump [40 h]; PY Concretor [160 h]; General Worker [320 h]; Plant and Equipment Operator (Crawler-mounted Mobile Crane) [80 h]; Rigger/Metal Formwork Erector [160 h]; Carpenter (Formwork - Civil Construction) [320 h] | 100% | 100% | 823A_AB | 204 | m3 | 204 | 204 |  |

| ID | WBS | Activity | Duration | Start | Finish | Predecessors | Complete | Planned start | Planned finish | Calendar | Resources | TIme Gain/Loss | % Planned | % Actual | 823A_As-built | Actual Up to Date | UNITS | Total Quantity | Planned Up to Date | Time Gain / Loss |
| --- | --- | --- | --- | --- | --- | --- | --- | --- | --- | --- | --- | --- | --- | --- | --- | --- | --- | --- | --- | --- |
|  | 4 | **Approach Tunnel Roof** |  | 2013-07-13 | 2013-10-12 |  |  |  |  |  |  |  |  |  |  |  |  |  |  |  |
| 823A-ST-SCCT-1b-4010 |  | Erect internal formwork & Falsework for roof | 4d | 2013-07-13 A | 2013-07-17 A | 823A-ST-SCCT-1b-2070, 823A-ST-SCCT-1b-3070 | 100% | 2013-09-02 | 2013-09-05 |  | Crawler Crane/Mobile Crane [48 h]; Plant and Equipment Operator (Crawler-mounted Mobile Crane) [48 h]; Carpenter (Formwork - Civil Construction) [384 h]; Rigger/Metal Formwork Erector [192 h] | -11 | 100% | 100% | 823A_AB |  |  |  |  |  |
| 823A-ST-SCCT-1b-4020 |  | Rebar fixing for roof | 2d | 2013-07-18 A | 2013-07-19 A | 823A-ST-SCCT-1b-4010 | 100% | 2013-09-06 | 2013-09-07 |  | Reinforcement [67234 kg]; Crawler Crane/Mobile Crane [32 h]; Bar Bender & Fixer [512 h]; Plant and Equipment Operator (Crawler-mounted Mobile Crane) [32 h] | -11 | 100% | 100% | 823A_AB |  |  |  |  |  |
| 823A-ST-SCCT-1b-4030 |  | Erect shutter formwork for roof | 1d | 2013-07-20 A | 2013-07-20 A | 823A-ST-SCCT-1b-4020 | 100% | 2013-09-09 | 2013-09-09 |  | Crawler Crane/Mobile Crane [16 h]; Carpenter (Formwork - Civil Construction) [192 h]; Plant and Equipment Operator (Crawler-mounted Mobile Crane) [16 h] | -11 | 100% | 100% | 823A_AB |  |  |  |  |  |
| 823A-ST-SCCT-1b-4040 |  | Concreting for roof (450m3) | 1d | 2013-07-22 A | 2013-07-22 A | 823A-ST-SCCT-1b-4030 | 100% | 2013-09-10 | 2013-09-10 |  | Permanent Concrete [444 Cu m]; Concrete 45/20A [444 Cu m]; Crawler Crane/Mobile Crane [8 h]; Concrete Pump [8 h]; Plant and Equipment Operator (Crawler-mounted Mobile Crane) [16 h]; PY Concretor [64 h]; General Worker [96 h]; Rigger/Metal Formwork Erector [32 h] | -11 | 100% | 100% | 823A_AB | 450 | m3 | 450 | 450 |  |
| 823A-ST-SCCT-1b-4050 |  | Curing for roof | 10d | 2013-07-23 A | 2013-08-02 A | 823A-ST-SCCT-1b-4040 | 100% | 2013-09-11 | 2013-09-20 | 823-7d | General Worker [224 h] | -13 | 100% | 100% | 823A_AB |  |  |  |  |  |
| 823A-ST-SCCT-1b-4060 |  | Preparation of construction joint for roof | 1d | 2013-08-03 A | 2013-08-03 A | 823A-ST-SCCT-1b-4040 | 100% | 2013-09-11 | 2013-09-11 | 823-6dPH |  |  | 100% | 100% | 823A_AB |  |  |  |  |  |
| 823A-ST-SCCT-1b-4080 |  | Side walkway and cable bracket (204m3) | 5d | 2013-08-13 A | 2013-10-12 A | 823A-ST-SCCT-1b-4070, 823A-ST-TBM-SB-1070 | 100% | 2013-12-06 | 2013-12-11 |  | Permanent Concrete [204 Cu m]; Concrete 20/20C [204 Cu m]; Crawler Crane/Mobile Crane [40 h]; Concrete Pump [40 h]; Carpenter (Formwork - Civil Construction) [320 h]; PY Concretor [160 h]; General Worker [320 h]; Plant and Equipment Operator (Crawler-mounted Mobile Crane) [80 h]; Rigger/Metal Formwork Erector [160 h] | -20 | 100% | 100% | 823A_AB | 204 | m3 | 204 | 204 |  |
| 823A-ST-SCCT-1b-4070 |  | Removal internal falsework and formwork for roof | 2d | 2013-08-19 A | 2013-09-02 A | 823A-ST-SCCT-3b-4080, 823A-ST-SCCT-1b-3080, 823A-ST-SCCT-1b-4050, 823A-ST-SCCT-1b-4060, 823A-ST-SCCT-1b-2080, 823A-ST-SCCT-1a-4070 | 100% | 2013-09-26 | 2013-09-27 |  | Crawler Crane/Mobile Crane [32 h]; Carpenter (Formwork - Civil Construction) [256 h]; Plant and Equipment Operator (Crawler-mounted Mobile Crane) [32 h]; Rigger/Metal Formwork Erector [128 h] | -14 | 100% | 100% | 823A_AB |  |  |  |  |  |
|  | 4 | **Backfilling** |  | 2013-01-26 | 2013-10-21 |  |  |  |  |  |  |  |  |  |  |  |  |  |  |  |
| 823A-ST-SCCT-BF-1060 |  | Water proofing and concrete backfilling to top of Tunnel Bay 6 | 10d | 2013-01-26 A | 2013-02-15 A | 823A-ST-SCCT-6a-2220, 823A-ST-SCCT-6b-3170, 823A-ST-SCCT-6b-1150, 823A-ST-SCCT-6a-1150, 823A-ST-SCCT-6b-2220 | 100% | 2013-06-01 | 2013-06-13 |  |  |  | 100% | 100% | 823A_AB |  |  |  |  |  |
| 823A-ST-SCCT-BF-1050 |  | Water proofing and concrete backfilling to top of Tunnel Bay 5 and remove S3 & S2 | 10d | 2013-01-28 A | 2013-02-15 A | 823A-ST-SCCT-5a-2070, 823A-ST-SCCT-5b-2070, 823A-ST-SCCT-5b-3070, 823A-ST-SCCT-5a-3070 | 100% | 2013-06-01 | 2013-06-13 | 823-6dPH |  |  | 100% | 100% | 823A_AB |  |  |  |  |  |
| 823A-ST-SCCT-BF-1040 |  | Water proofing and concrete backfilling to top of Tunnel Bay 4 | 10d | 2013-05-02 A | 2013-05-18 A | 823A-ST-SCCT-4a-2070, 823A-ST-SCCT-4b-2070, 823A-ST-SCCT-4b-3070, 823A-ST-SCCT-4a-3070 | 100% | 2013-06-08 | 2013-06-20 |  |  |  | 100% | 100% | 823A_AB |  |  |  |  |  |
| 823A-ST-SCCT-BF-1020 |  | Mass infill between D-wall and tunnel wall | 4d | 2013-09-20 A | 2013-10-17 A | 823A-ST-SCCT-1b-4070, 823A-ST-SCCT-BF-1010 | 100% | 2013-10-11 | 2013-10-16 | 823-6dPH |  |  | 100% | 100% | 823A_AB |  |  |  |  |  |
| 823A-ST-SCCT-BF-1010 |  | Water proofing and soil backfilling to 0.5m below top of Tunnel Bay 3 to Bay 1 | 14d | 2013-09-24 A | 2013-10-17 A | 823A-ST-SCCT-3a-2070, 823A-ST-SCCT-1b-3070, 823A-ST-SCCT-1a-2070, 823A-ST-SCCT-1a-4060, 823A-ST-SCCT-2a-3070, 823A-ST-SCCT-1a-3070, 823A-ST-SCCT-2b-2070, 823A-ST-SCCT-2a-4060, 823A-ST-SCCT-1b-4060, 823A-ST-SCCT-3a-3070, 823A-ST-SCCT-1b-2070, 823A-ST-SCCT-3b-3070, 823A-ST-SCCT-3b-4060, 823A-ST-SCCT-2b-4060, 823A-ST-SCCT-2a-2070, 823A-ST-SCCT-3b-2070, 823A-ST-SCCT-2b-3070 | 100% | 2013-10-02 | 2013-10-18 | 823-6dPH |  |  | 100% | 100% | 823A_AB |  |  |  |  |  |
| 823A-ST-SCCT-BF-1030 |  | Removal S3 and S2 | 10d | 2013-10-11 A | 2013-10-21 A | 823A-ST-SCCT-BF-1020 | 100% | 2013-11-13 | 2013-11-23 | 823-6dPH |  |  | 100% | 100% | 823A_AB |  |  |  |  |  |
|  | 3 | **Shunt Tunnel** |  | 2011-11-24 | 2017-02-28 |  |  |  |  |  |  |  |  |  |  |  |  |  |  |  |
|  | 1 | **D-wall** |  | 2011-11-24 | 2012-12-08 |  |  |  |  |  |  |  |  |  |  |  |  |  |  |  |
| 823A-ST-SN-DW-1010 |  | Pre-drilling and guidewall | 53d | 2011-11-24 A | 2012-01-31 A | 823A-ST-SLS-DW-1030 SS | 100% |  |  |  | G.I Rig/Drill Rig [848 h]; Backhoe [424 h]; Plant and Equipment Operator (Crawler-mounted Mobile Crane) [1272 h]; PY Concretor [848 h]; Carpenter (Formwork - Civil Construction) [848 h]; General Worker [2120 h]; Temporary Concrete [150 Cu m]; Concrete 30/20B [150 Cu m]; Bar Bender & Fixer [848 h] |  | 100% | 100% | 823A_AB |  |  |  |  |  |
| 823A-ST-SN-DW-1020 |  | D-wall design review | 13d | 2012-02-01 A | 2012-02-15 A | 823A-ST-SN-DW-1010 | 100% |  |  | 823-6dPH |  |  | 100% | 100% | 823A_AB |  |  |  |  |  |
| 823A-ST-SN-DW-1030 |  | D-wall construction (4741m3) | 98d | 2012-02-16 A | 2012-06-15 A | 823A-ST-SN-DW-1020 | 100% |  |  |  | Crawler Crane/Mobile Crane [784 h]; D-Wall Grab [784 h]; Hydrofraise Cutter [784 h]; Concrete 45/20A [4741 Cu m]; Temporary Concrete [4741 Cu m]; D-Wall [40 NO]; Plant and Equipment Operator (Crawler-mounted Mobile Crane) [3136 h]; Rigger/Metal Formwork Erector [4704 h]; Bar Bender & Fixer [9408 h]; General Worker [3136 h]; Backhoe [784 h] |  | 100% | 100% | 823A_AB | 4741 | m3 | 4741 | 4741 |  |
| 823A-ST-SN-DW-1040 |  | Shear pin and pumping test | 152d | 2012-06-16 A | 2012-12-08 A | 823A-ST-SN-DW-1030 | 100% | 2012-06-16 | 2012-12-15 |  | Air Compressor [800 h]; G.I Rig/Drill Rig [800 h]; Crawler Crane/Mobile Crane [400 h]; Grouting Machine [400 h]; Shear Pin [83 NO]; Plant and Equipment Operator (Crawler-mounted Mobile Crane) [1600 h]; Toe Grout [83 NO]; General Worker [1600 h] |  | 100% | 100% | 823A_AB |  |  |  |  |  |
|  | 2 | **Excavation and Lateral Support** |  | 2013-01-03 | 2015-06-23 |  |  |  |  |  |  |  |  |  |  |  |  |  |  |  |
| 823A-ST-SN-ELS-1030 |  | Application of tree transplant | 119d | 2013-01-03 A | 2014-09-01 A | 823A-ST-SN-DW-1040 FS+12d | 100% | 2013-06-01 | 2013-10-23 |  |  |  | 100% | 100% | 823A_AB |  |  |  |  |  |
| 823A-ST-SN-ELS-1010 |  | ELS works to formation level from SN16 to SN19 (soil: 8,700m3 @350m3/day, Install S1 to S3 strut 5 days/layer) | 41d | 2013-05-08 A | 2013-10-18 A | 823A-ST-TBM-SB-1040, 823A-ST-SN-DW-1040 | 100% | 2013-09-25 | 2013-11-13 |  | Soil Excavation [8700 Cu m]; Backhoe [2624 h]; Crawler Crane/Mobile Crane [2624 h]; General Worker [328 h]; Truck Driver (Heavy Goods Vehicles) [2624 h]; Plant and Equipment Operator (Excavator) [328 h] |  | 100% | 100% | 823A_AB | 8700 | m3 | 8700 | 8700 |  |
| 823A-ST-SN-ELS-1020 |  | Design temporary bridge and approval | 60d | 2014-08-01 A | 2014-09-01 A | 823A-ST-SN-DW-1040 FS+58d | 100% | 2014-09-01 | 2014-11-12 |  |  | -27 | 100% | 100% | 823A_AB |  |  |  |  |  |
| 823A-ST-SN-ELS-1040 |  | Tree transplant | 24d | 2014-09-02 A | 2014-09-30 A | 823A-ST-SN-ELS-1020, 823A-ST-SN-ELS-1030 | 100% | 2014-10-14 | 2014-11-10 |  |  | -27 | 100% | 100% | 823A_AB |  |  |  |  |  |
| 823A-ST-SN-ELS-1050 |  | Erection temporary bridge deck | 55d | 2014-10-03 A | 2014-10-31 A | 823A-ST-SN-ELS-1040 | 100% | 2014-10-03 | 2014-12-05 |  |  | -24 | 100% | 100% | 823A_AB |  |  |  |  |  |
| 823A-ST-SN-ELS-1060 |  | ELS works to formation level from SN10 to SN15 (soil: 9,455m3 @330m3/day, install S1 to S3 strut 5 days/layer) | 45d | 2014-11-24 A | 2015-06-23 A | 823A-ST-TBM-NB-1040, 823A-ST-SN-ELS-1050 | 100% | 2014-11-24 | 2015-01-17 |  | Soil Excavation [9455 Cu m]; Truck Driver (Heavy Goods Vehicles) [2880 h]; Backhoe [2880 h]; General Worker [360 h]; Crawler Crane/Mobile Crane [2880 h]; Plant and Equipment Operator (Excavator) [360 h] |  | 100% | 100% | 823A_AB | 9455 | m3 | 9455 | 9455 | -6 |

| ID | WBS | Activity | Duration | Start | Finish | Predecessors | Complete | Planned start | Planned finish | Calendar | Resources | TIme Gain/Loss | % Planned | % Actual | 823A_As-built | Actual Up to Date | UNITS | Total Quantity | Planned Up to Date | Time Gain / Loss |
| --- | --- | --- | --- | --- | --- | --- | --- | --- | --- | --- | --- | --- | --- | --- | --- | --- | --- | --- | --- | --- |
|  | 3 | **Structure** |  | 2013-02-15 | 2015-11-11 |  |  |  |  |  |  |  |  |  |  |  |  |  |  |  |
|  | 1 | **Bay SN1** |  | 2013-10-26 | 2014-03-28 |  |  |  |  |  |  |  |  |  |  |  |  |  |  |  |
| 823A-ST-SNT1-1010 |  | Erect internal formwork & Falsework for wall and roof | 4d | 2013-10-26 A | 2013-11-04 A | 823A-ST-SCCT-BF-1030 | 100% | 2013-11-01 | 2013-11-05 |  | Crawler Crane/Mobile Crane [48 h]; Plant and Equipment Operator (Crawler-mounted Mobile Crane) [48 h]; Carpenter (Formwork - Civil Construction) [384 h]; Rigger/Metal Formwork Erector [192 h] | -1 | 100% | 100% | 823A_AB |  |  |  |  |  |
| 823A-ST-SNT1-1020 |  | Rebar fixing for wall and roof | 3d | 2013-11-05 A | 2013-12-07 A | 823A-ST-SNT1-1010 | 100% | 2013-11-05 | 2013-11-07 |  | Reinforcement [67234 kg]; Crawler Crane/Mobile Crane [32 h]; Bar Bender & Fixer [512 h]; Plant and Equipment Operator (Crawler-mounted Mobile Crane) [32 h] | -1 | 100% | 100% | 823A_AB |  |  |  |  |  |
| 823A-ST-SNT1-1030 |  | Erect external formwork for wall and roof | 2d | 2013-12-09 A | 2013-12-11 A | 823A-ST-SNT1-1020 | 100% | 2013-12-05 | 2013-12-06 |  | Crawler Crane/Mobile Crane [16 h]; Plant and Equipment Operator (Crawler-mounted Mobile Crane) [16 h]; Carpenter (Formwork - Civil Construction) [192 h] | -1 | 100% | 100% | 823A_AB |  |  |  |  |  |
| 823A-ST-SNT1-1040 |  | Concreting for wall and roof (215m3) | 1d | 2013-12-12 A | 2013-12-12 A | 823A-ST-SNT1-1030 | 100% | 2013-12-07 | 2013-12-07 |  | Permanent Concrete [215 Cu m]; Concrete 45/20A [215 Cu m]; Crawler Crane/Mobile Crane [8 h]; Concrete Pump [8 h]; Plant and Equipment Operator (Crawler-mounted Mobile Crane) [16 h]; PY Concretor [64 h]; General Worker [96 h]; Rigger/Metal Formwork Erector [32 h] | -1 | 100% | 100% | 823A_AB | 215 | m3 | 215 | 215 |  |
| 823A-ST-SNT1-1050 |  | Curing for wall and roof | 10d | 2013-12-13 A | 2013-12-24 A | 823A-ST-SNT1-1040 | 100% | 2013-12-08 | 2013-12-17 | 823-7d | General Worker [224 h] | -5 | 100% | 100% | 823A_AB |  |  |  |  |  |
| 823A-ST-SNT1-1060 |  | Preparation of construction joint for wall and roof | 1d | 2013-12-13 A | 2013-12-13 A | 823A-ST-SNT1-1040 | 100% | 2013-12-09 | 2013-12-09 | 823-6dPH |  | -1 | 100% | 100% | 823A_AB |  |  |  |  |  |
| 823A-ST-SNT1-1070 |  | Removal external and internal formwork for wall | 1d | 2013-12-14 A | 2013-12-14 A | 823A-ST-SNT1-1060 | 100% | 2013-12-10 | 2013-12-10 |  | Crawler Crane/Mobile Crane [16 h]; Plant and Equipment Operator (Crawler-mounted Mobile Crane) [16 h]; Carpenter (Formwork - Civil Construction) [128 h] | -1 | 100% | 100% | 823A_AB |  |  |  |  |  |
| 823A-ST-SNT1-1080 |  | Removal internal falsework and formwork for roof | 2d | 2013-12-27 A | 2013-12-28 A | 823A-ST-SNT1-1070, 823A-ST-SNT1-1050 | 100% | 2013-12-18 | 2013-12-19 |  | Crawler Crane/Mobile Crane [32 h]; Carpenter (Formwork - Civil Construction) [256 h]; Rigger/Metal Formwork Erector [128 h]; Plant and Equipment Operator (Crawler-mounted Mobile Crane) [32 h] | -4 | 100% | 100% | 823A_AB |  |  |  |  |  |
| 823A-ST-SNT1-1090 |  | Side walkway and cable bracket (204m3) | 5d | 2014-03-24 A | 2014-03-28 A | 823A-ST-SNT1-1080, 823A-ST-SNT2-1090 | 100% | 2014-04-03 | 2014-04-09 |  | Permanent Concrete [204 Cu m]; Concrete 20/20C [204 Cu m]; Crawler Crane/Mobile Crane [40 h]; Concrete Pump [40 h]; Carpenter (Formwork - Civil Construction) [320 h]; PY Concretor [160 h]; General Worker [320 h]; Plant and Equipment Operator (Crawler-mounted Mobile Crane) [80 h]; Rigger/Metal Formwork Erector [160 h] |  | 100% | 100% | 823A_AB | 204 | m3 | 204 | 204 |  |
|  | 2 | **Bay SN2** |  | 2013-11-14 | 2015-06-05 |  |  |  |  |  |  |  |  |  |  |  |  |  |  |  |
| 823A-ST-SNT2-1010 |  | Erect internal formwork & Falsework for wall and roof | 4d | 2013-11-14 A | 2013-12-02 A | 823A-ST-SNT1-1070 | 100% | 2013-11-14 | 2013-11-18 |  | Crawler Crane/Mobile Crane [48 h]; Plant and Equipment Operator (Crawler-mounted Mobile Crane) [48 h]; Carpenter (Formwork - Civil Construction) [384 h]; Rigger/Metal Formwork Erector [192 h] | -1 | 100% | 100% | 823A_AB |  |  |  |  |  |
| 823A-ST-SNT2-1020 |  | Rebar fixing for wall and roof | 3d | 2013-12-03 A | 2013-12-07 A | 823A-ST-SNT2-1010 | 100% | 2013-12-13 | 2013-12-16 |  | Reinforcement [67234 kg]; Crawler Crane/Mobile Crane [32 h]; Bar Bender & Fixer [512 h]; Plant and Equipment Operator (Crawler-mounted Mobile Crane) [32 h] | -1 | 100% | 100% | 823A_AB |  |  |  |  |  |
| 823A-ST-SNT2-1030 |  | Erect external formwork for wall and roof | 2d | 2013-12-09 A | 2013-12-13 A | 823A-ST-SNT2-1020 | 100% | 2013-12-17 | 2013-12-18 |  | Crawler Crane/Mobile Crane [16 h]; Plant and Equipment Operator (Crawler-mounted Mobile Crane) [16 h]; Carpenter (Formwork - Civil Construction) [192 h] | -1 | 100% | 100% | 823A_AB |  |  |  |  |  |
| 823A-ST-SNT2-1040 |  | Concreting for wall and roof (215m3) | 1d | 2013-12-14 A | 2013-12-14 A | 823A-ST-SNT2-1030 | 100% | 2013-12-19 | 2013-12-19 |  | Permanent Concrete [215 Cu m]; Concrete 45/20A [215 Cu m]; Crawler Crane/Mobile Crane [8 h]; Concrete Pump [8 h]; Plant and Equipment Operator (Crawler-mounted Mobile Crane) [16 h]; PY Concretor [64 h]; General Worker [96 h]; Rigger/Metal Formwork Erector [32 h] | -1 | 100% | 100% | 823A_AB | 215 | m3 | 215 | 215 |  |
| 823A-ST-SNT2-1050 |  | Curing for wall and roof | 10d | 2013-12-16 A | 2013-12-28 A | 823A-ST-SNT2-1040 | 100% | 2013-12-20 | 2013-12-29 | 823-7d | General Worker [224 h] | -5 | 100% | 100% | 823A_AB |  |  |  |  |  |
| 823A-ST-SNT2-1060 |  | Preparation of construction joint for wall and roof | 1d | 2013-12-16 A | 2013-12-16 A | 823A-ST-SNT2-1040 | 100% | 2013-12-20 | 2013-12-20 | 823-6dPH |  | -1 | 100% | 100% | 823A_AB |  |  |  |  |  |
| 823A-ST-SNT2-1070 |  | Removal external and internal formwork for wall | 1d | 2013-12-17 A | 2013-12-17 A | 823A-ST-SNT2-1060 | 100% | 2013-12-21 | 2013-12-21 |  | Crawler Crane/Mobile Crane [16 h]; Plant and Equipment Operator (Crawler-mounted Mobile Crane) [16 h]; Carpenter (Formwork - Civil Construction) [128 h] | -1 | 100% | 100% | 823A_AB |  |  |  |  |  |
| 823A-ST-SNT2-1080 |  | Removal internal falsework and formwork for roof | 2d | 2013-12-30 A | 2013-12-31 A | 823A-ST-SNT2-1050, 823A-ST-SNT2-1070 | 100% |  |  |  | Crawler Crane/Mobile Crane [32 h]; Carpenter (Formwork - Civil Construction) [256 h]; Plant and Equipment Operator (Crawler-mounted Mobile Crane) [32 h]; Rigger/Metal Formwork Erector [128 h] | -4 | 100% | 100% | 823A_AB |  |  |  |  |  |
| 823A-ST-SNT2-1090 |  | Side walkway and cable bracket (204m3) | 5d | 2015-06-01 A | 2015-06-05 A | 823A-ST-SNT3-1090, 823A-ST-SNT2-1080 | 100% |  |  |  | Permanent Concrete [204 Cu m]; Concrete 20/20C [204 Cu m]; Concrete Pump [40 h]; Carpenter (Formwork - Civil Construction) [320 h]; PY Concretor [160 h]; General Worker [320 h]; Plant and Equipment Operator (Crawler-mounted Mobile Crane) [80 h]; Rigger/Metal Formwork Erector [160 h]; Crawler Crane/Mobile Crane [40 h] |  | 100% | 100% | 823A_AB | 204 | m3 | 204 | 204 | -24 |
|  | 3 | **Bay SN3** |  | 2013-11-28 | 2014-03-27 |  |  |  |  |  |  |  |  |  |  |  |  |  |  |  |
| 823A-ST-SNT3-1010 |  | Erect internal formwork & Falsework for wall and roof | 4d | 2013-11-28 A | 2013-12-11 A | 823A-ST-SNT2-1070 | 100% | 2013-11-28 | 2013-12-02 |  | Crawler Crane/Mobile Crane [48 h]; Plant and Equipment Operator (Crawler-mounted Mobile Crane) [48 h]; Carpenter (Formwork - Civil Construction) [384 h]; Rigger/Metal Formwork Erector [192 h] | -1 | 100% | 100% | 823A_AB |  |  |  |  |  |
| 823A-ST-SNT3-1020 |  | Rebar fixing for wall and roof | 3d | 2013-12-12 A | 2013-12-21 A | 823A-ST-SNT3-1010 | 100% | 2013-12-28 | 2013-12-31 |  | Reinforcement [67234 kg]; Crawler Crane/Mobile Crane [32 h]; Bar Bender & Fixer [512 h]; Plant and Equipment Operator (Crawler-mounted Mobile Crane) [32 h] | -1 | 100% | 100% | 823A_AB |  |  |  |  |  |
| 823A-ST-SNT3-1030 |  | Erect external formwork for wall and roof | 2d | 2013-12-23 A | 2013-12-30 A | 823A-ST-SNT3-1020 | 100% | 2014-01-02 | 2014-01-03 |  | Crawler Crane/Mobile Crane [16 h]; Plant and Equipment Operator (Crawler-mounted Mobile Crane) [16 h]; Carpenter (Formwork - Civil Construction) [192 h] | -1 | 100% | 100% | 823A_AB |  |  |  |  |  |
| 823A-ST-SNT3-1040 |  | Concreting for wall and roof (215m3) | 1d | 2013-12-31 A | 2013-12-31 A | 823A-ST-SNT3-1030 | 100% | 2014-01-04 | 2014-01-04 |  | Permanent Concrete [215 Cu m]; Concrete 45/20A [215 Cu m]; Crawler Crane/Mobile Crane [8 h]; Concrete Pump [8 h]; PY Concretor [64 h]; General Worker [96 h]; Rigger/Metal Formwork Erector [32 h]; Plant and Equipment Operator (Crawler-mounted Mobile Crane) [16 h] | -1 | 100% | 100% | 823A_AB | 215 | m3 | 215 | 215 |  |
| 823A-ST-SNT3-1050 |  | Curing for wall and roof | 10d | 2014-01-02 A | 2014-01-10 A | 823A-ST-SNT3-1040 | 100% | 2014-01-01 | 2014-01-10 | 823-7d | General Worker [224 h] | -5 | 100% | 100% | 823A_AB |  |  |  |  |  |
| 823A-ST-SNT3-1060 |  | Preparation of construction joint for wall and roof | 1d | 2014-01-02 A | 2014-01-02 A | 823A-ST-SNT3-1040 | 100% |  |  | 823-6dPH |  | -1 | 100% | 100% | 823A_AB |  |  |  |  |  |
| 823A-ST-SNT3-1070 |  | Removal external and internal formwork for wall | 1d | 2014-01-03 A | 2014-01-03 A | 823A-ST-SNT3-1060 | 100% |  |  |  | Crawler Crane/Mobile Crane [16 h]; Plant and Equipment Operator (Crawler-mounted Mobile Crane) [16 h]; Carpenter (Formwork - Civil Construction) [128 h] | -1 | 100% | 100% | 823A_AB |  |  |  |  |  |
| 823A-ST-SNT3-1080 |  | Removal internal falsework and formwork for roof | 2d | 2014-01-11 A | 2014-01-13 A | 823A-ST-SNT3-1050, 823A-ST-SNT3-1070 | 100% |  |  |  | Crawler Crane/Mobile Crane [32 h]; Carpenter (Formwork - Civil Construction) [256 h]; Plant and Equipment Operator (Crawler-mounted Mobile Crane) [32 h]; Rigger/Metal Formwork Erector [128 h] | -4 | 100% | 100% | 823A_AB |  |  |  |  |  |
| 823A-ST-SNT3-1090 |  | Side walkway and cable bracket (204m3) | 5d | 2014-03-22 A | 2014-03-27 A | 823A-ST-SNT3-1080, 823A-ST-SNT4-1090 | 100% |  |  |  | Permanent Concrete [204 Cu m]; Concrete 20/20C [204 Cu m]; Crawler Crane/Mobile Crane [40 h]; Concrete Pump [40 h]; Carpenter (Formwork - Civil Construction) [320 h]; PY Concretor [160 h]; General Worker [320 h]; Plant and Equipment Operator (Crawler-mounted Mobile Crane) [80 h]; Rigger/Metal Formwork Erector [160 h] |  | 100% | 100% | 823A_AB | 204 | m3 | 204 | 204 |  |

| ID | WBS | Activity | Duration | Start | Finish | Predecessors | Complete | Planned start | Planned finish | Calendar | Resources | TIme Gain/Loss | % Planned | % Actual | 823A_As-built | Actual Up to Date | UNITS | Total Quantity | Planned Up to Date |
| --- | --- | --- | --- | --- | --- | --- | --- | --- | --- | --- | --- | --- | --- | --- | --- | --- | --- | --- | --- |
|  | 4 | **Bay SN4** |  | 2013-10-24 | 2014-03-21 |  |  |  |  |  |  |  |  |  |  |  |  |  |  |
| 823A-ST-SNT4-1010 |  | Erect internal formwork & Falsework for wall and roof | 4d | 2013-10-24 A | 2013-11-16 A | 823A-ST-SNT3-1070 | 100% | 2013-12-13 | 2013-12-17 |  | Crawler Crane/Mobile Crane [48 h]; Plant and Equipment Operator (Crawler-mounted Mobile Crane) [48 h]; Carpenter (Formwork - Civil Construction) [384 h]; Rigger/Metal Formwork Erector [192 h] | -1 | 100% | 100% | 823A_AB |  |  |  |  |
| 823A-ST-SNT4-1020 |  | Rebar fixing for wall and roof | 3d | 2013-11-18 A | 2013-11-20 A | 823A-ST-SNT4-1010 | 100% | 2013-12-14 | 2013-12-17 |  | Reinforcement [67234 kg]; Crawler Crane/Mobile Crane [32 h]; Bar Bender & Fixer [512 h]; Plant and Equipment Operator (Crawler-mounted Mobile Crane) [32 h] | -1 | 100% | 100% | 823A_AB |  |  |  |  |
| 823A-ST-SNT4-1030 |  | Erect external formwork for wall and roof | 2d | 2013-11-21 A | 2013-11-22 A | 823A-ST-SNT4-1020 | 100% | 2013-12-18 | 2013-12-19 |  | Crawler Crane/Mobile Crane [16 h]; Plant and Equipment Operator (Crawler-mounted Mobile Crane) [16 h]; Carpenter (Formwork - Civil Construction) [192 h] | -1 | 100% | 100% | 823A_AB |  |  |  |  |
| 823A-ST-SNT4-1040 |  | Concreting for wall and roof (215m3) | 1d | 2013-11-23 A | 2013-11-23 A | 823A-ST-SNT4-1030 | 100% | 2013-12-20 | 2013-12-20 |  | Permanent Concrete [215 Cu m]; Concrete 45/20A [215 Cu m]; Crawler Crane/Mobile Crane [8 h]; Concrete Pump [8 h]; Plant and Equipment Operator (Crawler-mounted Mobile Crane) [16 h]; PY Concretor [64 h]; General Worker [96 h]; Rigger/Metal Formwork Erector [32 h] | -1 | 100% | 100% | 823A_AB | 215 | m3 | 215 | 215 |
| 823A-ST-SNT4-1050 |  | Curing for wall and roof | 10d | 2013-11-25 A | 2013-12-05 A | 823A-ST-SNT4-1040 | 100% | 2013-12-21 | 2013-12-30 | 823-7d | General Worker [224 h] | -2 | 100% | 100% | 823A_AB |  |  |  |  |
| 823A-ST-SNT4-1060 |  | Preparation of construction joint for wall and roof | 1d | 2013-11-25 A | 2013-11-25 A | 823A-ST-SNT4-1040 | 100% | 2013-12-21 | 2013-12-21 | 823-6dPH |  | -1 | 100% | 100% | 823A_AB |  |  |  |  |
| 823A-ST-SNT4-1070 |  | Removal external and internal formwork for wall | 1d | 2013-11-26 A | 2013-11-26 A | 823A-ST-SNT4-1060 | 100% | 2013-12-23 | 2013-12-23 |  | Crawler Crane/Mobile Crane [16 h]; Plant and Equipment Operator (Crawler-mounted Mobile Crane) [16 h]; Carpenter (Formwork - Civil Construction) [128 h] | -1 | 100% | 100% | 823A_AB |  |  |  |  |
| 823A-ST-SNT4-1080 |  | Removal internal falsework and formwork for roof | 2d | 2013-12-06 A | 2013-12-07 A | 823A-ST-SNT4-1070, 823A-ST-SNT4-1050 | 100% | 2014-01-13 | 2014-01-14 |  | Crawler Crane/Mobile Crane [32 h]; Carpenter (Formwork - Civil Construction) [256 h]; Plant and Equipment Operator (Crawler-mounted Mobile Crane) [32 h]; Rigger/Metal Formwork Erector [128 h] | -1 | 100% | 100% | 823A_AB |  |  |  |  |
| 823A-ST-SNT4-1090 |  | Side walkway and cable bracket (204m3) | 5d | 2014-03-17 A | 2014-03-21 A | 823A-ST-SNT5-1090, 823A-ST-SNT4-1080 | 100% |  |  |  | Permanent Concrete [204 Cu m]; Concrete 20/20C [204 Cu m]; Crawler Crane/Mobile Crane [40 h]; Concrete Pump [40 h]; Carpenter (Formwork - Civil Construction) [320 h]; PY Concretor [160 h]; General Worker [320 h]; Plant and Equipment Operator (Crawler-mounted Mobile Crane) [80 h]; Rigger/Metal Formwork Erector [160 h] |  | 100% | 100% | 823A_AB | 204 | m3 | 204 | 204 |
|  | 5 | **Bay SN5** |  | 2013-10-24 | 2014-03-15 |  |  |  |  |  |  |  |  |  |  |  |  |  |  |
| 823A-ST-SNT5-1010 |  | Erect internal formwork & Falsework for wall and roof | 4d | 2013-10-24 A | 2013-11-16 A | 823A-ST-SNT4-1070 | 100% | 2013-12-30 | 2014-01-03 |  | Crawler Crane/Mobile Crane [48 h]; Plant and Equipment Operator (Crawler-mounted Mobile Crane) [48 h]; Carpenter (Formwork - Civil Construction) [384 h]; Rigger/Metal Formwork Erector [192 h] | -1 | 100% | 100% | 823A_AB |  |  |  |  |
| 823A-ST-SNT5-1020 |  | Rebar fixing for wall and roof | 3d | 2013-11-18 A | 2013-11-20 A | 823A-ST-SNT5-1010 | 100% | 2013-12-30 | 2014-01-02 |  | Reinforcement [67234 kg]; Crawler Crane/Mobile Crane [32 h]; Bar Bender & Fixer [512 h]; Plant and Equipment Operator (Crawler-mounted Mobile Crane) [32 h] | -1 | 100% | 100% | 823A_AB |  |  |  |  |
| 823A-ST-SNT5-1030 |  | Erect external formwork for wall and roof | 2d | 2013-11-21 A | 2013-11-22 A | 823A-ST-SNT5-1020 | 100% | 2014-01-03 | 2014-01-04 |  | Crawler Crane/Mobile Crane [16 h]; Plant and Equipment Operator (Crawler-mounted Mobile Crane) [16 h]; Carpenter (Formwork - Civil Construction) [192 h] | -1 | 100% | 100% | 823A_AB |  |  |  |  |
| 823A-ST-SNT5-1040 |  | Concreting for wall and roof (215m3) | 1d | 2013-11-23 A | 2013-11-23 A | 823A-ST-SNT5-1030 | 100% | 2014-01-06 | 2014-01-06 |  | Permanent Concrete [215 Cu m]; Concrete 45/20A [215 Cu m]; Crawler Crane/Mobile Crane [8 h]; Concrete Pump [8 h]; Plant and Equipment Operator (Crawler-mounted Mobile Crane) [16 h]; PY Concretor [64 h]; General Worker [96 h]; Rigger/Metal Formwork Erector [32 h] | -1 | 100% | 100% | 823A_AB | 215 | m3 | 215 | 215 |
| 823A-ST-SNT5-1050 |  | Curing for wall and roof | 10d | 2013-11-25 A | 2013-12-05 A | 823A-ST-SNT5-1040 | 100% | 2014-01-07 | 2014-01-16 | 823-7d | General Worker [224 h] | -2 | 100% | 100% | 823A_AB |  |  |  |  |
| 823A-ST-SNT5-1060 |  | Preparation of construction joint for wall and roof | 1d | 2013-11-25 A | 2013-11-25 A | 823A-ST-SNT5-1040 | 100% | 2014-01-07 | 2014-01-07 | 823-6dPH |  | -1 | 100% | 100% | 823A_AB |  |  |  |  |
| 823A-ST-SNT5-1070 |  | Removal external and internal formwork for wall | 1d | 2013-11-26 A | 2013-11-26 A | 823A-ST-SNT5-1060 | 100% | 2014-01-08 | 2014-01-08 |  | Crawler Crane/Mobile Crane [16 h]; Plant and Equipment Operator (Crawler-mounted Mobile Crane) [16 h]; Carpenter (Formwork - Civil Construction) [128 h] | -1 | 100% | 100% | 823A_AB |  |  |  |  |
| 823A-ST-SNT5-1080 |  | Removal internal falsework and formwork for roof | 2d | 2013-12-06 A | 2013-12-07 A | 823A-ST-SNT5-1070, 823A-ST-SNT5-1050 | 100% | 2014-01-13 | 2014-01-14 |  | Crawler Crane/Mobile Crane [32 h]; Carpenter (Formwork - Civil Construction) [256 h]; Rigger/Metal Formwork Erector [128 h]; Plant and Equipment Operator (Crawler-mounted Mobile Crane) [32 h] | -2 | 100% | 100% | 823A_AB |  |  |  |  |
| 823A-ST-SNT5-1090 |  | Side walkway and cable bracket (204m3) | 5d | 2014-03-11 A | 2014-03-15 A | 823A-ST-SNT5-1080, 823A-ST-SNT6-1090 | 100% |  |  |  | Concrete 20/20C [204 Cu m]; Crawler Crane/Mobile Crane [40 h]; Concrete Pump [40 h]; Carpenter (Formwork - Civil Construction) [320 h]; PY Concretor [160 h]; General Worker [320 h]; Plant and Equipment Operator (Crawler-mounted Mobile Crane) [80 h]; Rigger/Metal Formwork Erector [160 h]; Permanent Concrete [204 Cu m] | -2 | 100% | 100% | 823A_AB | 204 | m3 | 204 | 204 |
|  | 6 | **Bay SN6** |  | 2013-10-24 | 2014-03-10 |  |  |  |  |  |  |  |  |  |  |  |  |  |  |
| 823A-ST-SNT6-1010 |  | Erect internal formwork & Falsework for wall and roof | 4d | 2013-10-24 A | 2013-11-16 A | 823A-ST-SCCT-4a-3070, 823A-ST-SCCT-4b-2070, 823A-ST-SNT7-1070, 823A-ST-SCCT-4b-3070, 823A-ST-SCCT-4a-2070 | 100% | 2013-11-01 | 2013-11-05 |  | Crawler Crane/Mobile Crane [48 h]; Plant and Equipment Operator (Crawler-mounted Mobile Crane) [48 h]; Carpenter (Formwork - Civil Construction) [384 h]; Rigger/Metal Formwork Erector [192 h] | -19 | 100% | 100% | 823A_AB |  |  |  |  |
| 823A-ST-SNT6-1020 |  | Rebar fixing for wall and roof | 3d | 2013-11-18 A | 2013-11-20 A | 823A-ST-SNT6-1010 | 100% | 2013-11-05 | 2013-11-07 |  | Reinforcement [67234 kg]; Crawler Crane/Mobile Crane [32 h]; Bar Bender & Fixer [512 h]; Plant and Equipment Operator (Crawler-mounted Mobile Crane) [32 h] | -19 | 100% | 100% | 823A_AB |  |  |  |  |
| 823A-ST-SNT6-1030 |  | Erect external formwork for wall and roof | 2d | 2013-11-21 A | 2013-11-22 A | 823A-ST-SNT6-1020 | 100% | 2013-11-08 | 2013-11-09 |  | Crawler Crane/Mobile Crane [16 h]; Plant and Equipment Operator (Crawler-mounted Mobile Crane) [16 h]; Carpenter (Formwork - Civil Construction) [192 h] | -19 | 100% | 100% | 823A_AB |  |  |  |  |
| 823A-ST-SNT6-1040 |  | Concreting for wall and roof (215m3) | 1d | 2013-11-23 A | 2013-11-23 A | 823A-ST-SNT6-1030 | 100% | 2013-11-11 | 2013-11-11 |  | Permanent Concrete [215 Cu m]; Concrete 45/20A [215 Cu m]; Crawler Crane/Mobile Crane [8 h]; Concrete Pump [8 h]; Plant and Equipment Operator (Crawler-mounted Mobile Crane) [16 h]; PY Concretor [64 h]; General Worker [96 h]; Rigger/Metal Formwork Erector [32 h] | -19 | 100% | 100% | 823A_AB | 215 | m3 | 215 | 215 |
| 823A-ST-SNT6-1050 |  | Curing for wall and roof | 10d | 2013-11-25 A | 2013-12-05 A | 823A-ST-SNT6-1040 | 100% | 2013-11-12 | 2013-11-21 | 823-7d | General Worker [224 h] | -30 | 100% | 100% | 823A_AB |  |  |  |  |
| 823A-ST-SNT6-1060 |  | Preparation of construction joint for wall and roof | 1d | 2013-11-25 A | 2013-11-25 A | 823A-ST-SNT6-1040 | 100% | 2013-11-12 | 2013-11-12 | 823-6dPH |  | -19 | 100% | 100% | 823A_AB |  |  |  |  |
| 823A-ST-SNT6-1070 |  | Removal external and internal formwork for wall | 1d | 2013-11-26 A | 2013-11-26 A | 823A-ST-SNT6-1060 | 100% | 2013-11-13 | 2013-11-13 |  | Crawler Crane/Mobile Crane [16 h]; Plant and Equipment Operator (Crawler-mounted Mobile Crane) [16 h]; Carpenter (Formwork - Civil Construction) [128 h] | -19 | 100% | 100% | 823A_AB |  |  |  |  |
| 823A-ST-SNT6-1080 |  | Removal internal falsework and formwork for roof | 2d | 2013-12-06 A | 2013-12-07 A | 823A-ST-SNT6-1050, 823A-ST-SNT7-1080, 823A-ST-SNT6-1070 | 100% | 2013-12-05 | 2013-12-06 |  | Carpenter (Formwork - Civil Construction) [256 h]; Plant and Equipment Operator (Crawler-mounted Mobile Crane) [32 h]; Rigger/Metal Formwork Erector [128 h]; Crawler Crane/Mobile Crane [32 h] | -26 | 100% | 100% | 823A_AB |  |  |  |  |
| 823A-ST-SNT6-1090 |  | Side walkway and cable bracket (204m3) | 5d | 2014-03-05 A | 2014-03-10 A | 823A-ST-SNT7-1090, 823A-ST-SNT6-1080 | 100% |  |  |  | Permanent Concrete [204 Cu m]; Concrete 20/20C [204 Cu m]; Crawler Crane/Mobile Crane [40 h]; Concrete Pump [40 h]; Carpenter (Formwork - Civil Construction) [320 h]; PY Concretor [160 h]; General Worker [320 h]; Plant and Equipment Operator (Crawler-mounted Mobile Crane) [80 h]; Rigger/Metal Formwork Erector [160 h] | -2 | 100% | 100% | 823A_AB | 204 | m3 | 204 | 204 |

| ID | WBS | Activity | Duration | Start | Finish | Predecessors | Complete | Planned start | Planned finish | Calendar | Resources | % Planned | % Actual | 823A_As-built | TIme Gain/Loss | Actual Up to Date | UNITS | Total Quantity | Planned Up to Date |
| --- | --- | --- | --- | --- | --- | --- | --- | --- | --- | --- | --- | --- | --- | --- | --- | --- | --- | --- | --- |
|  | 7 | **Bay SN7** |  | 2013-05-23 | 2014-03-04 |  |  |  |  |  |  |  |  |  |  |  |  |  |  |
| 823A-ST-SNT7-1010 |  | Erect internal formwork & Falsework for wall and roof | 4d | 2013-05-23 A | 2013-05-29 A | 823A-ST-SNT8-1070 | 100% | 2013-06-17 | 2013-06-20 |  | Crawler Crane/Mobile Crane [48 h]; Plant and Equipment Operator (Crawler-mounted Mobile Crane) [48 h]; Carpenter (Formwork - Civil Construction) [384 h]; Rigger/Metal Formwork Erector [192 h] | 100% | 100% | 823A_AB |  |  |  |  |  |
| 823A-ST-SNT7-1020 |  | Rebar fixing for wall and roof | 3d | 2013-05-30 A | 2013-06-03 A | 823A-ST-SNT7-1010 | 100% | 2013-06-21 | 2013-06-24 |  | Reinforcement [67234 kg]; Crawler Crane/Mobile Crane [32 h]; Bar Bender & Fixer [512 h]; Plant and Equipment Operator (Crawler-mounted Mobile Crane) [32 h] | 100% | 100% | 823A_AB |  |  |  |  |  |
| 823A-ST-SNT7-1030 |  | Erect external formwork for wall and roof | 2d | 2013-06-04 A | 2013-06-07 A | 823A-ST-SNT7-1020 | 100% | 2013-07-04 | 2013-07-05 |  | Crawler Crane/Mobile Crane [16 h]; Plant and Equipment Operator (Crawler-mounted Mobile Crane) [16 h]; Carpenter (Formwork - Civil Construction) [192 h] | 100% | 100% | 823A_AB | -64 |  |  |  |  |
| 823A-ST-SNT7-1040 |  | Concreting for wall and roof (333m3) | 1d | 2013-06-08 A | 2013-06-08 A | 823A-ST-SNT7-1030 | 100% | 2013-07-06 | 2013-07-06 |  | General Worker [96 h]; Rigger/Metal Formwork Erector [32 h]; Permanent Concrete [333 Cu m]; Concrete 45/20A [333 Cu m]; Crawler Crane/Mobile Crane [8 h]; Concrete Pump [8 h]; Plant and Equipment Operator (Crawler-mounted Mobile Crane) [16 h]; PY Concretor [64 h] | 100% | 100% | 823A_AB | -64 | 333 | m3 | 333 | 333 |
| 823A-ST-SNT7-1050 |  | Curing for wall and roof | 10d | 2013-06-10 A | 2013-06-11 A | 823A-ST-SNT7-1040 | 100% | 2013-07-07 | 2013-07-16 | 823-7d | General Worker [224 h] | 100% | 100% | 823A_AB | -56 |  |  |  |  |
| 823A-ST-SNT7-1060 |  | Preparation of construction joint for wall and roof | 1d | 2013-06-12 A | 2013-06-13 A | 823A-ST-SNT7-1040 | 100% | 2013-07-08 | 2013-07-08 | 823-6dPH |  | 100% | 100% | 823A_AB | -66 |  |  |  |  |
| 823A-ST-SNT7-1070 |  | Removal external and internal formwork for wall | 1d | 2013-06-15 A | 2013-06-17 A | 823A-ST-SNT7-1060 | 100% | 2013-07-09 | 2013-07-09 |  | Crawler Crane/Mobile Crane [16 h]; Plant and Equipment Operator (Crawler-mounted Mobile Crane) [16 h]; Carpenter (Formwork - Civil Construction) [128 h] | 100% | 100% | 823A_AB | -68 |  |  |  |  |
| 823A-ST-SNT7-1080 |  | Removal internal falsework and formwork for roof | 2d | 2013-06-19 A | 2013-06-22 A | 823A-ST-SNT7-1050, 823A-ST-SNT8-1080, 823A-ST-SNT7-1070 | 100% | 2013-07-17 | 2013-07-18 |  | Crawler Crane/Mobile Crane [32 h]; Carpenter (Formwork - Civil Construction) [256 h]; Plant and Equipment Operator (Crawler-mounted Mobile Crane) [32 h]; Rigger/Metal Formwork Erector [128 h] | 100% | 100% | 823A_AB | -62 |  |  |  |  |
| 823A-ST-SNT7-1090 |  | Side walkway and cable bracket (204m3) | 5d | 2013-07-29 A | 2014-03-04 A | 823A-ST-SNT8-1090, 823A-ST-SNT7-1080 | 100% | 2014-02-05 | 2014-02-10 |  | Rigger/Metal Formwork Erector [160 h]; Plant and Equipment Operator (Crawler-mounted Mobile Crane) [80 h]; Permanent Concrete [204 Cu m]; Concrete 20/20C [204 Cu m]; Crawler Crane/Mobile Crane [40 h]; Concrete Pump [40 h]; Carpenter (Formwork - Civil Construction) [320 h]; PY Concretor [160 h]; General Worker [320 h] | 100% | 100% | 823A_AB |  | 204 | m3 | 204 | 204 |
|  | 8 | **Bay SN8** |  | 2013-02-15 | 2014-03-03 |  |  |  |  |  |  |  |  |  |  |  |  |  |  |
| 823A-ST-SNT8-1010 |  | Erect internal formwork & Falsework for wall and roof | 4d | 2013-02-15 A | 2013-02-19 A | 823A-ST-SCCT-BF-1050 | 100% | 2013-06-01 | 2013-06-05 |  | Crawler Crane/Mobile Crane [48 h]; Plant and Equipment Operator (Crawler-mounted Mobile Crane) [48 h]; Carpenter (Formwork - Civil Construction) [384 h]; Rigger/Metal Formwork Erector [192 h] | 100% | 100% | 823A_AB |  |  |  |  |  |
| 823A-ST-SNT8-1020 |  | Rebar fixing for wall and roof | 3d | 2013-03-11 A | 2013-03-15 A | 823A-ST-SNT8-1010 | 100% | 2013-06-06 | 2013-06-08 |  | Reinforcement [67234 kg]; Crawler Crane/Mobile Crane [32 h]; Bar Bender & Fixer [512 h]; Plant and Equipment Operator (Crawler-mounted Mobile Crane) [32 h] | 100% | 100% | 823A_AB |  |  |  |  |  |
| 823A-ST-SNT8-1030 |  | Erect external formwork for wall and roof | 2d | 2013-03-16 A | 2013-03-21 A | 823A-ST-SNT8-1020 | 100% | 2013-06-10 | 2013-06-11 |  | Crawler Crane/Mobile Crane [16 h]; Carpenter (Formwork - Civil Construction) [192 h]; Plant and Equipment Operator (Crawler-mounted Mobile Crane) [16 h] | 100% | 100% | 823A_AB |  |  |  |  |  |
| 823A-ST-SNT8-1040 |  | Concreting for wall and roof (412m3) | 1d | 2013-03-22 A | 2013-03-22 A | 823A-ST-SNT8-1030 | 100% | 2013-06-13 | 2013-06-13 |  | Permanent Concrete [412 Cu m]; Concrete 45/20A [412 Cu m]; Crawler Crane/Mobile Crane [8 h]; Concrete Pump [8 h]; Plant and Equipment Operator (Crawler-mounted Mobile Crane) [16 h]; PY Concretor [64 h]; General Worker [96 h]; Rigger/Metal Formwork Erector [32 h] | 100% | 100% | 823A_AB |  | 412 | m3 | 412 | 412 |
| 823A-ST-SNT8-1050 |  | Curing for wall and roof | 10d | 2013-03-23 A | 2013-03-23 A | 823A-ST-SNT8-1040 | 100% | 2013-06-14 | 2013-06-23 | 823-7d | General Worker [224 h] | 100% | 100% | 823A_AB |  |  |  |  |  |
| 823A-ST-SNT8-1060 |  | Preparation of construction joint for wall and roof | 1d | 2013-03-25 A | 2013-03-25 A | 823A-ST-SNT8-1040 | 100% | 2013-06-14 | 2013-06-14 | 823-6dPH |  | 100% | 100% | 823A_AB |  |  |  |  |  |
| 823A-ST-SNT8-1070 |  | Removal external and internal formwork for wall | 1d | 2013-03-26 A | 2013-03-26 A | 823A-ST-SNT8-1060 | 100% | 2013-06-15 | 2013-06-15 |  | Crawler Crane/Mobile Crane [16 h]; Plant and Equipment Operator (Crawler-mounted Mobile Crane) [16 h]; Carpenter (Formwork - Civil Construction) [128 h] | 100% | 100% | 823A_AB |  |  |  |  |  |
| 823A-ST-SNT8-1080 |  | Removal internal falsework and formwork for roof | 2d | 2013-03-27 A | 2013-03-28 A | 823A-ST-SNT8-1050, 823A-ST-SNT8-1070 | 100% | 2013-06-24 | 2013-06-25 |  | Crawler Crane/Mobile Crane [32 h]; Carpenter (Formwork - Civil Construction) [256 h]; Rigger/Metal Formwork Erector [128 h]; Plant and Equipment Operator (Crawler-mounted Mobile Crane) [32 h] | 100% | 100% | 823A_AB |  |  |  |  |  |
| 823A-ST-SNT8-1090 |  | Side walkway and cable bracket (204m3) | 5d | 2013-07-29 A | 2014-03-03 A | 823A-ST-SNT9-1090, 823A-ST-SNT8-1080 | 100% | 2014-01-27 | 2014-02-04 |  | Permanent Concrete [204 Cu m]; Concrete 20/20C [204 Cu m]; Crawler Crane/Mobile Crane [40 h]; Concrete Pump [40 h]; Carpenter (Formwork - Civil Construction) [320 h]; PY Concretor [160 h]; General Worker [320 h]; Plant and Equipment Operator (Crawler-mounted Mobile Crane) [80 h]; Rigger/Metal Formwork Erector [160 h] | 100% | 100% | 823A_AB |  | 204 | m3 | 204 | 204 |
|  | 9 | **Bay SN9** |  | 2013-02-22 | 2014-03-01 |  |  |  |  |  |  |  |  |  |  |  |  |  |  |
| 823A-ST-SNT9-1010 |  | Erect internal formwork & Falsework for wall and roof | 4d | 2013-02-22 A | 2013-02-26 A | 823A-ST-SCCT-BF-1060, 823A-ST-SNT8-1010 | 100% | 2013-06-01 | 2013-06-05 |  | Crawler Crane/Mobile Crane [48 h]; Carpenter (Formwork - Civil Construction) [384 h]; Rigger/Metal Formwork Erector [192 h]; Plant and Equipment Operator (Crawler-mounted Mobile Crane) [48 h] | 100% | 100% | 823A_AB |  |  |  |  |  |
| 823A-ST-SNT9-1020 |  | Rebar fixing for wall and roof | 2d | 2013-03-23 A | 2013-03-28 A | 823A-ST-SNT9-1010 | 100% | 2013-06-06 | 2013-06-07 |  | Reinforcement [67234 kg]; Crawler Crane/Mobile Crane [32 h]; Bar Bender & Fixer [512 h]; Plant and Equipment Operator (Crawler-mounted Mobile Crane) [32 h] | 100% | 100% | 823A_AB |  |  |  |  |  |
| 823A-ST-SNT9-1030 |  | Erect external formwork for wall and roof | 1d | 2013-04-01 A | 2013-04-02 A | 823A-ST-SNT9-1020 | 100% | 2013-06-08 | 2013-06-08 |  | Crawler Crane/Mobile Crane [16 h]; Plant and Equipment Operator (Crawler-mounted Mobile Crane) [16 h]; Carpenter (Formwork - Civil Construction) [192 h] | 100% | 100% | 823A_AB |  |  |  |  |  |
| 823A-ST-SNT9-1040 |  | Concreting for wall and roof (320m3) | 1d | 2013-04-05 A | 2013-04-05 A | 823A-ST-SNT9-1030 | 100% | 2013-06-10 | 2013-06-10 |  | Concrete 45/20A [320 Cu m]; Crawler Crane/Mobile Crane [8 h]; Concrete Pump [8 h]; Plant and Equipment Operator (Crawler-mounted Mobile Crane) [16 h]; PY Concretor [64 h]; General Worker [96 h]; Rigger/Metal Formwork Erector [32 h]; Permanent Concrete [320 Cu m] | 100% | 100% | 823A_AB |  | 320 | m3 | 320 | 320 |
| 823A-ST-SNT9-1050 |  | Curing for wall and roof | 10d | 2013-04-06 A | 2013-04-06 A | 823A-ST-SNT9-1040 | 100% | 2013-06-11 | 2013-06-20 | 823-7d | General Worker [224 h] | 100% | 100% | 823A_AB |  |  |  |  |  |
| 823A-ST-SNT9-1060 |  | Preparation of construction joint for wall and roof | 1d | 2013-04-08 A | 2013-04-08 A | 823A-ST-SNT9-1040 | 100% | 2013-06-11 | 2013-06-11 | 823-6dPH |  | 100% | 100% | 823A_AB |  |  |  |  |  |
| 823A-ST-SNT9-1070 |  | Removal external and internal formwork for wall | 1d | 2013-04-10 A | 2013-04-10 A | 823A-ST-SNT8-1070, 823A-ST-SNT9-1060 | 100% | 2013-06-13 | 2013-06-13 |  | Crawler Crane/Mobile Crane [16 h]; Plant and Equipment Operator (Crawler-mounted Mobile Crane) [16 h]; Carpenter (Formwork - Civil Construction) [128 h] | 100% | 100% | 823A_AB |  |  |  |  |  |
| 823A-ST-SNT9-1080 |  | Removal internal falsework and formwork for roof | 2d | 2013-04-10 A | 2013-04-10 A | 823A-ST-SNT9-1050, 823A-ST-SNT8-1080, 823A-ST-SNT9-1070 | 100% | 2013-06-21 | 2013-06-22 |  | Carpenter (Formwork - Civil Construction) [256 h]; Plant and Equipment Operator (Crawler-mounted Mobile Crane) [32 h]; Rigger/Metal Formwork Erector [128 h]; Crawler Crane/Mobile Crane [32 h] | 100% | 100% | 823A_AB |  |  |  |  |  |
| 823A-ST-SNT9-1090 |  | Side walkway and cable bracket (204m3) | 5d | 2013-07-29 A | 2014-03-01 A | 823A-ST-SNT5-1080, 823A-ST-SNT9-1080 | 100% | 2014-01-21 | 2014-01-25 |  | Permanent Concrete [204 Cu m]; Concrete 20/20C [204 Cu m]; Crawler Crane/Mobile Crane [40 h]; Concrete Pump [40 h]; Carpenter (Formwork - Civil Construction) [320 h]; PY Concretor [160 h]; General Worker [320 h]; Plant and Equipment Operator (Crawler-mounted Mobile Crane) [80 h]; Rigger/Metal Formwork Erector [160 h] | 100% | 100% | 823A_AB |  | 204 | m3 | 204 | 204 |

| ID | WBS | Activity | Duration | Start | Finish | Predecessors | Complete | Planned start | Planned finish | Calendar | Resources | % Planned | % Actual | 823A_As-built | Actual Up to Date | UNITS | Total Quantity | Planned Up to Date |
| --- | --- | --- | --- | --- | --- | --- | --- | --- | --- | --- | --- | --- | --- | --- | --- | --- | --- | --- |
|  | 10 | **Bay SN10** |  | 2015-02-23 | 2015-10-30 |  |  |  |  |  |  |  |  |  |  |  |  |  |
| 823A-ST-SN10-1010 |  | Excavation and saw cut D-wall | 34d | 2015-02-23 A | 2015-07-25 A | 823A-ST-TBM-NB-1065 | 100% | 2015-04-02 | 2015-05-16 | 823-6dPH |  | 100% | 100% | 823A_AB |  |  |  |  |
| 823A-ST-SNT10-1010 |  | Placing of waterproof member T-lock & testing for base slab | 1d | 2015-07-13 A | 2015-07-13 A | 823A-ST-SN10-1010 | 100% | 2015-08-08 | 2015-08-10 |  | Skill Labour [64 h] | 100% | 100% | 823A_AB |  |  |  |  |
| 823A-ST-SNT10-1020 |  | Erect external formwork for base slab | 2d | 2015-07-14 A | 2015-07-15 A | 823A-ST-SNT10-1010 | 100% | 2015-08-10 | 2015-08-12 |  | Crawler Crane/Mobile Crane [8 h]; Carpenter (Formwork - Civil Construction) [96 h]; Plant and Equipment Operator (Crawler-mounted Mobile Crane) [8 h] | 100% | 100% | 823A_AB |  |  |  |  |
| 823A-ST-SNT10-1030 |  | Rebar fixing for base slab | 2d | 2015-07-15 A | 2015-08-10 A | 823A-ST-SNT10-1020 | 100% | 2015-08-12 | 2015-08-14 |  | Reinforcement [68142 kg]; Crawler Crane/Mobile Crane [16 h]; Plant and Equipment Operator (Crawler-mounted Mobile Crane) [16 h]; Bar Bender & Fixer [256 h] | 100% | 100% | 823A_AB |  |  |  |  |
| 823A-ST-SNT10-1040 |  | Erect internal kicker formwork for base slab | 2d | 2015-07-20 A | 2015-08-12 A | 823A-ST-SNT10-1030 | 100% | 2015-08-14 | 2015-08-17 |  | Crawler Crane/Mobile Crane [16 h]; Plant and Equipment Operator (Crawler-mounted Mobile Crane) [96 h]; Carpenter (Formwork - Civil Construction) [192 h] | 100% | 100% | 823A_AB |  |  |  |  |
| 823A-ST-SNT10-1050 |  | Concreting for base slab (90m3) | 1d | 2015-08-13 A | 2015-08-13 A | 823A-ST-SNT10-1040 | 100% | 2015-09-02 | 2015-09-02 |  | Permanent Concrete [90 Cu m]; Concrete 45/20A [90 Cu m]; Crawler Crane/Mobile Crane [8 h]; Concrete Pump [8 h]; PY Concretor [64 h]; General Worker [96 h]; Plant and Equipment Operator (Crawler-mounted Mobile Crane) [16 h]; Rigger/Metal Formwork Erector [32 h] | 100% | 100% | 823A_AB | 90 | m3 | 90 | 90 |
| 823A-ST-SNT10-1060 |  | Curing for base slab | 7d | 2015-08-14 A | 2015-08-20 A | 823A-ST-SNT10-1050 | 100% | 2015-09-03 | 2015-09-09 | 823-7d | General Worker [224 h] | 100% | 100% | 823A_AB |  |  |  |  |
| 823A-ST-SNT10-1070 |  | Preparation of construction joint for base slab | 1d | 2015-08-21 A | 2015-08-21 A | 823A-ST-SNT10-1050 | 100% | 2015-09-03 | 2015-09-03 | 823-6dPH |  | 100% | 100% | 823A_AB |  |  |  |  |
| 823A-ST-SNT10-1080 |  | Removal of formwork for base slab | 1d | 2015-08-22 A | 2015-08-22 A | 823A-ST-SNT10-1070 | 100% | 2015-09-04 | 2015-09-04 |  | Crawler Crane/Mobile Crane [8 h]; Carpenter (Formwork - Civil Construction) [64 h]; Plant and Equipment Operator (Crawler-mounted Mobile Crane) [8 h] | 100% | 100% | 823A_AB |  |  |  |  |
| 823A-ST-SNT10-1090 |  | Infill concrete in between D-wall and base slab | 1d | 2015-08-24 A | 2015-08-24 A | 823A-ST-SNT10-1080 | 100% | 2015-09-05 | 2015-09-05 |  | Temporary Concrete [204 Cu m]; Concrete 20/20C [204 Cu m]; Crawler Crane/Mobile Crane [8 h]; Concrete Pump [8 h]; PY Concretor [32 h]; Plant and Equipment Operator (Crawler-mounted Mobile Crane) [16 h]; General Worker [64 h]; Rigger/Metal Formwork Erector [16 h] | 100% | 100% | 823A_AB |  |  |  |  |
| 823A-ST-SNT10-1100 |  | Curing | 1d | 2015-08-25 A | 2015-08-25 A | 823A-ST-SNT10-1090, 823A-ST-SNT10-1060 | 100% | 2015-09-10 | 2015-09-10 | 823-7d | General Worker [224 h] | 100% | 100% | 823A_AB |  |  |  |  |
| 823A-ST-SNT10-1110 |  | Removal strut S3 | 4d | 2015-09-16 A | 2015-09-19 A | 823A-ST-SNT10-1100 | 100% | 2015-09-19 | 2015-09-23 |  | Crawler Crane/Mobile Crane [16 h]; Plant and Equipment Operator (Crawler-mounted Mobile Crane) [16 h]; Rigger/Metal Formwork Erector [128 h] | 100% | 100% | 823A_AB |  |  |  |  |
| 823A-ST-SNT10-1120 |  | Erect internal formwork & Falsework for wall and roof | 4d | 2015-09-21 A | 2015-09-24 A | 823A-ST-SNT10-1110 | 100% | 2015-09-24 | 2015-09-29 |  | Crawler Crane/Mobile Crane [48 h]; Plant and Equipment Operator (Crawler-mounted Mobile Crane) [48 h]; Carpenter (Formwork - Civil Construction) [384 h]; Rigger/Metal Formwork Erector [192 h] | 100% | 100% | 823A_AB |  |  |  |  |
| 823A-ST-SNT10-1130 |  | Rebar fixing for wall and roof | 3d | 2015-09-25 A | 2015-09-30 A | 823A-ST-SNT10-1120 | 100% | 2015-09-30 | 2015-10-03 |  | Plant and Equipment Operator (Crawler-mounted Mobile Crane) [32 h]; Reinforcement [67234 kg]; Crawler Crane/Mobile Crane [32 h]; Bar Bender & Fixer [512 h] | 100% | 100% | 823A_AB |  |  |  |  |
| 823A-ST-SNT10-1140 |  | Erect external formwork for wall and roof | 2d | 2015-10-05 A | 2015-10-06 A | 823A-ST-SNT10-1130 | 100% | 2015-10-15 | 2015-10-16 |  | Crawler Crane/Mobile Crane [16 h]; Plant and Equipment Operator (Crawler-mounted Mobile Crane) [16 h]; Carpenter (Formwork - Civil Construction) [192 h] | 100% | 100% | 823A_AB |  |  |  |  |
| 823A-ST-SNT10-1150 |  | Concreting for wall and roof (260m3) | 1d | 2015-10-07 A | 2015-10-07 A | 823A-ST-SNT10-1140 | 100% | 2015-10-17 | 2015-10-17 |  | Permanent Concrete [260 Cu m]; Concrete 45/20A [260 Cu m]; Crawler Crane/Mobile Crane [8 h]; Concrete Pump [8 h]; Plant and Equipment Operator (Crawler-mounted Mobile Crane) [16 h]; PY Concretor [64 h]; General Worker [96 h]; Rigger/Metal Formwork Erector [32 h] | 100% | 100% | 823A_AB | 260 | m3 | 260 | 260 |
| 823A-ST-SNT10-1160 |  | Curing for wall and roof | 10d | 2015-10-08 A | 2015-10-17 A | 823A-ST-SNT10-1150 | 100% | 2015-10-18 | 2015-10-27 | 823-7d | General Worker [224 h] | 100% | 100% | 823A_AB |  |  |  |  |
| 823A-ST-SNT10-1170 |  | Preparation of construction joint for wall and roof | 1d | 2015-10-19 A | 2015-10-19 A | 823A-ST-SNT10-1150 | 100% |  |  | 823-6dPH |  | 100% | 100% | 823A_AB |  |  |  |  |
| 823A-ST-SNT10-1180 |  | Removal external and internal formwork for wall | 1d | 2015-10-20 A | 2015-10-20 A | 823A-ST-SNT10-1170 | 100% |  |  |  | Crawler Crane/Mobile Crane [16 h]; Plant and Equipment Operator (Crawler-mounted Mobile Crane) [16 h]; Carpenter (Formwork - Civil Construction) [128 h] | 100% | 100% | 823A_AB |  |  |  |  |
| 823A-ST-SNT10-1190 |  | Removal internal falsework and formwork for roof | 2d | 2015-10-22 A | 2015-10-23 A | 823A-ST-SNT10-1180, 823A-ST-SNT10-1160 | 100% | 2015-10-28 | 2015-10-29 |  | Crawler Crane/Mobile Crane [32 h]; Carpenter (Formwork - Civil Construction) [256 h]; Plant and Equipment Operator (Crawler-mounted Mobile Crane) [32 h]; Rigger/Metal Formwork Erector [128 h] | 100% | 100% | 823A_AB |  |  |  |  |
| 823A-ST-SNT10-1200 |  | Side walkway and cable bracket (204m3) | 5d | 2015-10-24 A | 2015-10-30 A | 823A-ST-SNT10-1190 | 100% | 2015-10-30 | 2015-11-04 |  | Permanent Concrete [204 Cu m]; Concrete 20/20C [204 Cu m]; Crawler Crane/Mobile Crane [40 h]; Concrete Pump [40 h]; Carpenter (Formwork - Civil Construction) [320 h]; PY Concretor [160 h]; General Worker [320 h]; Plant and Equipment Operator (Crawler-mounted Mobile Crane) [80 h]; Rigger/Metal Formwork Erector [160 h] | 100% | 100% | 823A_AB | 204 | m3 | 204 | 204 |
|  | 11 | **Bay SN11** |  | 2015-07-20 | 2015-11-11 |  |  |  |  |  |  |  |  |  |  |  |  |  |
| 823A-ST-SNT11-1010 |  | Placing of waterproof member T-lock & testing for base slab | 1d | 2015-07-20 A | 2015-07-20 A | 823A-ST-SNT12-1080 | 100% | 2015-07-02 | 2015-07-02 |  | Skill Labour [64 h] | 100% | 100% | 823A_AB |  |  |  |  |
| 823A-ST-SNT11-1020 |  | Erect external formwork for base slab | 2d | 2015-07-21 A | 2015-07-22 A | 823A-ST-SNT11-1010 | 100% | 2015-07-03 | 2015-07-04 |  | Crawler Crane/Mobile Crane [8 h]; Carpenter (Formwork - Civil Construction) [96 h]; Plant and Equipment Operator (Crawler-mounted Mobile Crane) [8 h] | 100% | 100% | 823A_AB |  |  |  |  |
| 823A-ST-SNT11-1030 |  | Rebar fixing for base slab | 2d | 2015-07-23 A | 2015-07-24 A | 823A-ST-SNT11-1020 | 100% | 2015-07-06 | 2015-07-07 |  | Plant and Equipment Operator (Crawler-mounted Mobile Crane) [16 h]; Bar Bender & Fixer [256 h]; Crawler Crane/Mobile Crane [16 h]; Reinforcement [68142 kg] | 100% | 100% | 823A_AB |  |  |  |  |
| 823A-ST-SNT11-1040 |  | Erect internal kicker formwork for base slab | 2d | 2015-07-25 A | 2015-07-27 A | 823A-ST-SNT11-1030 | 100% | 2015-07-08 | 2015-07-09 |  | Crawler Crane/Mobile Crane [16 h]; Plant and Equipment Operator (Crawler-mounted Mobile Crane) [96 h]; Carpenter (Formwork - Civil Construction) [192 h] | 100% | 100% | 823A_AB |  |  |  |  |
| 823A-ST-SNT11-1050 |  | Concreting for base slab (123m3) | 1d | 2015-07-28 A | 2015-07-28 A | 823A-ST-SNT11-1040 | 100% | 2015-07-10 | 2015-07-10 |  | Permanent Concrete [123 Cu m]; Concrete 45/20A [123 Cu m]; Crawler Crane/Mobile Crane [8 h]; Concrete Pump [8 h]; PY Concretor [64 h]; General Worker [96 h]; Plant and Equipment Operator (Crawler-mounted Mobile Crane) [16 h]; Rigger/Metal Formwork Erector [32 h] | 100% | 100% | 823A_AB | 123 | m3 | 123 | 123 |
| 823A-ST-SNT11-1060 |  | Curing for base slab | 7d | 2015-07-29 A | 2015-08-04 A | 823A-ST-SNT11-1050 | 100% | 2015-07-11 | 2015-07-17 | 823-7d | General Worker [224 h] | 100% | 100% | 823A_AB |  |  |  |  |
| 823A-ST-SNT11-1070 |  | Preparation of construction joint for base slab | 1d | 2015-08-01 A | 2015-08-01 A | 823A-ST-SNT11-1050 | 100% |  |  | 823-6dPH |  | 100% | 100% | 823A_AB |  |  |  |  |
| 823A-ST-SNT11-1080 |  | Removal of formwork for base slab | 1d | 2015-08-03 A | 2015-08-03 A | 823A-ST-SNT11-1070 | 100% |  |  |  | Crawler Crane/Mobile Crane [8 h]; Carpenter (Formwork - Civil Construction) [64 h]; Plant and Equipment Operator (Crawler-mounted Mobile Crane) [8 h] | 100% | 100% | 823A_AB |  |  |  |  |
| 823A-ST-SNT11-1090 |  | Infill concrete in between D-wall and base slab | 1d | 2015-08-04 A | 2015-08-04 A | 823A-ST-SNT11-1080 | 100% |  |  |  | Temporary Concrete [204 Cu m]; Concrete 20/20C [204 Cu m]; Concrete Pump [8 h]; PY Concretor [32 h]; Plant and Equipment Operator (Crawler-mounted Mobile Crane) [16 h]; General Worker [64 h]; Rigger/Metal Formwork Erector [16 h]; Crawler Crane/Mobile Crane [8 h] | 100% | 100% | 823A_AB |  |  |  |  |
| 823A-ST-SNT11-1100 |  | Curing | 1d | 2015-08-05 A | 2015-08-05 A | 823A-ST-SNT11-1090, 823A-ST-SNT11-1060 | 100% |  |  | 823-7d | General Worker [224 h] | 100% | 100% | 823A_AB |  |  |  |  |
| 823A-ST-SNT11-1110 |  | Removal strut S3 | 4d | 2015-08-06 A | 2015-08-10 A | 823A-ST-SNT11-1100 | 100% |  |  |  | Crawler Crane/Mobile Crane [16 h]; Plant and Equipment Operator (Crawler-mounted Mobile Crane) [16 h]; Rigger/Metal Formwork Erector [128 h] | 100% | 100% | 823A_AB |  |  |  |  |
| 823A-ST-SNT11-1120 |  | Erect internal formwork & Falsework for wall and roof | 4d | 2015-09-01 A | 2015-09-04 A | 823A-ST-SNT11-1110 | 100% |  |  |  | Crawler Crane/Mobile Crane [48 h]; Plant and Equipment Operator (Crawler-mounted Mobile Crane) [48 h]; Carpenter (Formwork - Civil Construction) [384 h]; Rigger/Metal Formwork Erector [192 h] | 100% | 100% | 823A_AB |  |  |  |  |
| 823A-ST-SNT11-1130 |  | Rebar fixing for wall and roof | 3d | 2015-09-05 A | 2015-09-08 A | 823A-ST-SNT11-1120 | 100% |  |  |  | Reinforcement [67234 kg]; Crawler Crane/Mobile Crane [32 h]; Bar Bender & Fixer [512 h]; Plant and Equipment Operator (Crawler-mounted Mobile Crane) [32 h] | 100% | 100% | 823A_AB |  |  |  |  |
| 823A-ST-SNT11-1140 |  | Erect external formwork for wall and roof | 2d | 2015-09-09 A | 2015-09-10 A | 823A-ST-SNT11-1130 | 100% |  |  |  | Crawler Crane/Mobile Crane [16 h]; Plant and Equipment Operator (Crawler-mounted Mobile Crane) [16 h]; Carpenter (Formwork - Civil Construction) [192 h] | 100% | 100% | 823A_AB |  |  |  |  |
| 823A-ST-SNT11-1150 |  | Concreting for wall and roof (260m3) | 1d | 2015-10-24 A | 2015-10-24 A | 823A-ST-SNT11-1140 | 100% | 2015-10-02 | 2015-10-02 |  | Permanent Concrete [130 Cu m]; Concrete 45/20A [130 Cu m]; Crawler Crane/Mobile Crane [8 h]; Concrete Pump [8 h]; PY Concretor [64 h]; General Worker [96 h]; Rigger/Metal Formwork Erector [32 h]; Plant and Equipment Operator (Crawler-mounted Mobile Crane) [16 h] | 100% | 100% | 823A_AB | 260 | m3 | 260 | 260 |
| 823A-ST-SNT11-1160 |  | Curing for wall and roof | 10d | 2015-10-26 A | 2015-11-03 A | 823A-ST-SNT11-1150 | 100% | 2015-10-03 | 2015-10-12 | 823-7d | General Worker [224 h] | 100% | 100% | 823A_AB |  |  |  |  |
| 823A-ST-SNT11-1170 |  | Preparation of construction joint for wall and roof | 1d | 2015-11-02 A | 2015-11-02 A | 823A-ST-SNT11-1150 | 100% |  |  | 823-6dPH |  | 100% | 100% | 823A_AB |  |  |  |  |
| 823A-ST-SNT11-1180 |  | Removal external and internal formwork for wall | 1d | 2015-11-03 A | 2015-11-03 A | 823A-ST-SNT11-1170 | 100% |  |  |  | Crawler Crane/Mobile Crane [16 h]; Plant and Equipment Operator (Crawler-mounted Mobile Crane) [16 h]; Carpenter (Formwork - Civil Construction) [128 h] | 100% | 100% | 823A_AB |  |  |  |  |
| 823A-ST-SNT11-1190 |  | Removal internal falsework and formwork for roof | 2d | 2015-11-04 A | 2015-11-05 A | 823A-ST-SNT11-1180, 823A-ST-SNT11-1160 | 100% |  |  |  | Crawler Crane/Mobile Crane [32 h]; Carpenter (Formwork - Civil Construction) [256 h]; Plant and Equipment Operator (Crawler-mounted Mobile Crane) [32 h]; Rigger/Metal Formwork Erector [128 h] | 100% | 100% | 823A_AB |  |  |  |  |
| 823A-ST-SNT11-1200 |  | Side walkway and cable bracket (204m3) | 5d | 2015-11-06 A | 2015-11-11 A | 823A-ST-SNT10-1200, 823A-ST-SNT11-1190 | 100% |  |  |  | Permanent Concrete [204 Cu m]; Concrete 20/20C [204 Cu m]; Crawler Crane/Mobile Crane [40 h]; Concrete Pump [40 h]; PY Concretor [160 h]; General Worker [320 h]; Plant and Equipment Operator (Crawler-mounted Mobile Crane) [80 h]; Rigger/Metal Formwork Erector [160 h]; Carpenter (Formwork - Civil Construction) [320 h] | 100% | 100% | 823A_AB | 204 | m3 | 204 | 204 |

| ID | WBS | Activity | Duration | Start | Finish | Predecessors | Complete | Planned start | Planned finish | Calendar | Resources | % Planned | % Actual | 823A_As-built | Actual Up to Date | UNITS | Total Quantity | Planned Up to Date |
| --- | --- | --- | --- | --- | --- | --- | --- | --- | --- | --- | --- | --- | --- | --- | --- | --- | --- | --- |
|  | 12 | **Bay SN12** |  | 2015-04-13 | 2015-10-06 |  |  |  |  |  |  |  |  |  |  |  |  |  |
| 823A-ST-SNT12-1010 |  | Placing of waterproof member T-lock & testing for base slab | 1d | 2015-04-13 A | 2015-04-13 A | 823A-ST-SNT13-1080 | 100% | 2015-06-13 | 2015-06-13 |  | Skill Labour [64 h] | 100% | 100% | 823A_AB |  |  |  |  |
| 823A-ST-SNT12-1020 |  | Erect external formwork for base slab | 2d | 2015-04-14 A | 2015-04-15 A | 823A-ST-SNT12-1010 | 100% | 2015-06-15 | 2015-06-16 |  | Crawler Crane/Mobile Crane [8 h]; Carpenter (Formwork - Civil Construction) [96 h]; Plant and Equipment Operator (Crawler-mounted Mobile Crane) [8 h] | 100% | 100% | 823A_AB |  |  |  |  |
| 823A-ST-SNT12-1030 |  | Rebar fixing for base slab | 2d | 2015-04-16 A | 2015-04-17 A | 823A-ST-SNT12-1020 | 100% | 2015-06-17 | 2015-06-18 |  | Reinforcement [68142 kg]; Crawler Crane/Mobile Crane [16 h]; Plant and Equipment Operator (Crawler-mounted Mobile Crane) [16 h]; Bar Bender & Fixer [256 h] | 100% | 100% | 823A_AB |  |  |  |  |
| 823A-ST-SNT12-1040 |  | Erect internal kicker formwork for base slab | 2d | 2015-04-18 A | 2015-04-20 A | 823A-ST-SNT12-1030 | 100% | 2015-06-19 | 2015-06-22 |  | Crawler Crane/Mobile Crane [16 h]; Plant and Equipment Operator (Crawler-mounted Mobile Crane) [96 h]; Carpenter (Formwork - Civil Construction) [192 h] | 100% | 100% | 823A_AB |  |  |  |  |
| 823A-ST-SNT12-1050 |  | Concreting for base slab (127m3) | 1d | 2015-04-21 A | 2015-04-21 A | 823A-ST-SNT12-1040 | 100% | 2015-06-23 | 2015-06-23 |  | Permanent Concrete [127 Cu m]; Concrete 45/20A [127 Cu m]; Crawler Crane/Mobile Crane [8 h]; Concrete Pump [8 h]; PY Concretor [64 h]; General Worker [96 h]; Plant and Equipment Operator (Crawler-mounted Mobile Crane) [16 h]; Rigger/Metal Formwork Erector [32 h] | 100% | 100% | 823A_AB | 127 | m3 | 127 | 127 |
| 823A-ST-SNT12-1060 |  | Curing for base slab | 7d | 2015-04-22 A | 2015-04-29 A | 823A-ST-SNT12-1050 | 100% | 2015-06-24 | 2015-06-30 | 823-7d | General Worker [224 h] | 100% | 100% | 823A_AB |  |  |  |  |
| 823A-ST-SNT12-1070 |  | Preparation of construction joint for base slab | 1d | 2015-04-30 A | 2015-04-30 A | 823A-ST-SNT12-1050 | 100% | 2015-06-24 | 2015-06-24 | 823-6dPH |  | 100% | 100% | 823A_AB |  |  |  |  |
| 823A-ST-SNT12-1080 |  | Removal of formwork for base slab | 1d | 2015-05-11 A | 2015-05-11 A | 823A-ST-SNT12-1070 | 100% | 2015-05-26 | 2015-05-26 |  | Crawler Crane/Mobile Crane [8 h]; Carpenter (Formwork - Civil Construction) [64 h]; Plant and Equipment Operator (Crawler-mounted Mobile Crane) [8 h] | 100% | 100% | 823A_AB |  |  |  |  |
| 823A-ST-SNT12-1090 |  | Infill concrete in between D-wall and base slab | 1d | 2015-05-12 A | 2015-05-12 A | 823A-ST-SNT12-1080 | 100% | 2015-05-27 | 2015-05-27 |  | Temporary Concrete [204 Cu m]; Crawler Crane/Mobile Crane [8 h]; PY Concretor [32 h]; Plant and Equipment Operator (Crawler-mounted Mobile Crane) [16 h]; General Worker [64 h]; Rigger/Metal Formwork Erector [16 h]; Concrete Pump [8 h]; Concrete 20/20C [204 Cu m] | 100% | 100% | 823A_AB |  |  |  |  |
| 823A-ST-SNT12-1100 |  | Curing | 1d | 2015-05-13 A | 2015-05-13 A | 823A-ST-SNT12-1090, 823A-ST-SNT12-1060 | 100% | 2015-05-28 | 2015-05-28 | 823-7d | General Worker [224 h] | 100% | 100% | 823A_AB |  |  |  |  |
| 823A-ST-SNT12-1110 |  | Removal strut S3 | 4d | 2015-05-14 A | 2015-05-18 A | 823A-ST-SNT12-1100 | 100% | 2015-05-29 | 2015-06-02 |  | Crawler Crane/Mobile Crane [16 h]; Plant and Equipment Operator (Crawler-mounted Mobile Crane) [16 h]; Rigger/Metal Formwork Erector [128 h] | 100% | 100% | 823A_AB |  |  |  |  |
| 823A-ST-SNT12-1120 |  | Erect internal formwork & Falsework for wall and roof | 4d | 2015-05-19 A | 2015-05-22 A | 823A-ST-SNT12-1110 | 100% | 2015-06-03 | 2015-06-06 |  | Crawler Crane/Mobile Crane [48 h]; Plant and Equipment Operator (Crawler-mounted Mobile Crane) [48 h]; Carpenter (Formwork - Civil Construction) [384 h]; Rigger/Metal Formwork Erector [192 h] | 100% | 100% | 823A_AB |  |  |  |  |
| 823A-ST-SNT12-1130 |  | Rebar fixing for wall and roof | 3d | 2015-05-23 A | 2015-06-10 A | 823A-ST-SNT12-1120 | 100% | 2015-06-08 | 2015-06-10 |  | Reinforcement [67234 kg]; Crawler Crane/Mobile Crane [32 h]; Bar Bender & Fixer [512 h]; Plant and Equipment Operator (Crawler-mounted Mobile Crane) [32 h] | 100% | 100% | 823A_AB |  |  |  |  |
| 823A-ST-SNT12-1140 |  | Erect external formwork for wall and roof | 2d | 2015-06-11 A | 2015-06-12 A | 823A-ST-SNT12-1130 | 100% | 2015-06-05 | 2015-06-06 |  | Crawler Crane/Mobile Crane [16 h]; Plant and Equipment Operator (Crawler-mounted Mobile Crane) [16 h]; Carpenter (Formwork - Civil Construction) [192 h] | 100% | 100% | 823A_AB |  |  |  |  |
| 823A-ST-SNT12-1150 |  | Concreting for wall and roof (260m3) | 1d | 2015-06-13 A | 2015-06-13 A | 823A-ST-SNT12-1140 | 100% | 2015-06-08 | 2015-06-08 |  | Permanent Concrete [141 Cu m]; Concrete 45/20A [141 Cu m]; Crawler Crane/Mobile Crane [8 h]; Plant and Equipment Operator (Crawler-mounted Mobile Crane) [16 h]; General Worker [96 h]; Rigger/Metal Formwork Erector [32 h]; PY Concretor [64 h]; Concrete Pump [8 h] | 100% | 100% | 823A_AB | 260 | m3 | 260 | 260 |
| 823A-ST-SNT12-1160 |  | Curing for wall and roof | 10d | 2015-06-15 A | 2015-06-25 A | 823A-ST-SNT12-1150 | 100% | 2015-06-09 | 2015-06-18 | 823-7d | General Worker [224 h] | 100% | 100% | 823A_AB |  |  |  |  |
| 823A-ST-SNT12-1170 |  | Preparation of construction joint for wall and roof | 1d | 2015-06-26 A | 2015-06-26 A | 823A-ST-SNT12-1150 | 100% | 2015-06-09 | 2015-06-09 | 823-6dPH |  | 100% | 100% | 823A_AB |  |  |  |  |
| 823A-ST-SNT12-1180 |  | Removal external and internal formwork for wall | 1d | 2015-06-27 A | 2015-06-27 A | 823A-ST-SNT12-1170 | 100% | 2015-06-10 | 2015-06-10 |  | Crawler Crane/Mobile Crane [16 h]; Plant and Equipment Operator (Crawler-mounted Mobile Crane) [16 h]; Carpenter (Formwork - Civil Construction) [128 h] | 100% | 100% | 823A_AB |  |  |  |  |
| 823A-ST-SNT12-1190 |  | Removal internal falsework and formwork for roof | 2d | 2015-06-29 A | 2015-06-30 A | 823A-ST-SNT12-1160, 823A-ST-SNT12-1180 | 100% | 2015-06-19 | 2015-06-22 |  | Crawler Crane/Mobile Crane [32 h]; Carpenter (Formwork - Civil Construction) [256 h]; Plant and Equipment Operator (Crawler-mounted Mobile Crane) [32 h]; Rigger/Metal Formwork Erector [128 h] | 100% | 100% | 823A_AB |  |  |  |  |
| 823A-ST-SNT12-1200 |  | Side walkway and cable bracket (204m3) | 5d | 2015-06-30 A | 2015-10-06 A | 823A-ST-SNT12-1190, 823A-ST-SNT13-1200 | 100% | 2015-07-11 | 2015-07-16 |  | Permanent Concrete [204 Cu m]; Concrete 20/20C [204 Cu m]; Crawler Crane/Mobile Crane [40 h]; Concrete Pump [40 h]; Carpenter (Formwork - Civil Construction) [320 h]; PY Concretor [160 h]; General Worker [320 h]; Plant and Equipment Operator (Crawler-mounted Mobile Crane) [80 h]; Rigger/Metal Formwork Erector [160 h] | 100% | 100% | 823A_AB | 204 | m3 | 204 | 204 |
|  | 13 | **Bay SN13** |  | 2015-04-13 | 2015-10-05 |  |  |  |  |  |  |  |  |  |  |  |  |  |
| 823A-ST-SNT13-1010 |  | Placing of waterproof member T-lock & testing for base slab | 1d | 2015-04-13 A | 2015-04-13 A | 823A-ST-SNT14-1080 | 100% | 2015-06-02 | 2015-06-02 |  | Skill Labour [64 h] | 100% | 100% | 823A_AB |  |  |  |  |
| 823A-ST-SNT13-1020 |  | Erect external formwork for base slab | 2d | 2015-04-14 A | 2015-04-15 A | 823A-ST-SNT13-1010 | 100% | 2015-06-03 | 2015-06-04 |  | Crawler Crane/Mobile Crane [8 h]; Carpenter (Formwork - Civil Construction) [96 h]; Plant and Equipment Operator (Crawler-mounted Mobile Crane) [8 h] | 100% | 100% | 823A_AB |  |  |  |  |
| 823A-ST-SNT13-1030 |  | Rebar fixing for base slab | 2d | 2015-04-16 A | 2015-04-17 A | 823A-ST-SNT13-1020 | 100% | 2015-06-05 | 2015-06-06 |  | Reinforcement [68142 kg]; Crawler Crane/Mobile Crane [16 h]; Plant and Equipment Operator (Crawler-mounted Mobile Crane) [16 h]; Bar Bender & Fixer [256 h] | 100% | 100% | 823A_AB |  |  |  |  |
| 823A-ST-SNT13-1040 |  | Erect internal kicker formwork for base slab | 2d | 2015-04-18 A | 2015-04-20 A | 823A-ST-SNT13-1030 | 100% | 2015-06-08 | 2015-06-09 |  | Crawler Crane/Mobile Crane [16 h]; Plant and Equipment Operator (Crawler-mounted Mobile Crane) [96 h]; Carpenter (Formwork - Civil Construction) [192 h] | 100% | 100% | 823A_AB |  |  |  |  |
| 823A-ST-SNT13-1050 |  | Concreting for base slab (127m3) | 1d | 2015-04-21 A | 2015-04-21 A | 823A-ST-SNT13-1040 | 100% | 2015-06-10 | 2015-06-10 |  | Permanent Concrete [127 Cu m]; Concrete 45/20A [127 Cu m]; Crawler Crane/Mobile Crane [8 h]; Concrete Pump [8 h]; PY Concretor [64 h]; General Worker [96 h]; Plant and Equipment Operator (Crawler-mounted Mobile Crane) [16 h]; Rigger/Metal Formwork Erector [32 h] | 100% | 100% | 823A_AB | 127 | m3 | 127 | 127 |
| 823A-ST-SNT13-1060 |  | Curing for base slab | 7d | 2015-04-22 A | 2015-04-29 A | 823A-ST-SNT13-1050 | 100% | 2015-06-11 | 2015-06-17 | 823-7d | General Worker [224 h] | 100% | 100% | 823A_AB |  |  |  |  |
| 823A-ST-SNT13-1070 |  | Preparation of construction joint for base slab | 1d | 2015-04-30 A | 2015-04-30 A | 823A-ST-SNT13-1050 | 100% | 2015-06-11 | 2015-06-11 | 823-6dPH |  | 100% | 100% | 823A_AB |  |  |  |  |
| 823A-ST-SNT13-1080 |  | Removal of formwork for base slab | 1d | 2015-05-11 A | 2015-05-11 A | 823A-ST-SNT13-1070 | 100% | 2015-05-23 | 2015-05-23 |  | Crawler Crane/Mobile Crane [8 h]; Carpenter (Formwork - Civil Construction) [64 h]; Plant and Equipment Operator (Crawler-mounted Mobile Crane) [8 h] | 100% | 100% | 823A_AB |  |  |  |  |
| 823A-ST-SNT13-1090 |  | Infill concrete in between D-wall and base slab | 1d | 2015-05-12 A | 2015-05-12 A | 823A-ST-SNT13-1080 | 100% | 2015-05-26 | 2015-05-26 |  | Temporary Concrete [204 Cu m]; Concrete 20/20C [204 Cu m]; Crawler Crane/Mobile Crane [8 h]; Concrete Pump [8 h]; PY Concretor [32 h]; Plant and Equipment Operator (Crawler-mounted Mobile Crane) [16 h]; General Worker [64 h]; Rigger/Metal Formwork Erector [16 h] | 100% | 100% | 823A_AB |  |  |  |  |
| 823A-ST-SNT13-1100 |  | Curing | 1d | 2015-05-13 A | 2015-05-13 A | 823A-ST-SNT13-1090, 823A-ST-SNT13-1060 | 100% | 2015-05-27 | 2015-05-27 | 823-7d | General Worker [224 h] | 100% | 100% | 823A_AB |  |  |  |  |
| 823A-ST-SNT13-1110 |  | Removal strut S3 | 4d | 2015-05-14 A | 2015-05-18 A | 823A-ST-SNT13-1100 | 100% | 2015-05-28 | 2015-06-01 |  | Crawler Crane/Mobile Crane [16 h]; Plant and Equipment Operator (Crawler-mounted Mobile Crane) [16 h]; Rigger/Metal Formwork Erector [128 h] | 100% | 100% | 823A_AB |  |  |  |  |
| 823A-ST-SNT13-1120 |  | Erect internal formwork & Falsework for wall and roof | 4d | 2015-05-19 A | 2015-05-22 A | 823A-ST-SNT13-1110 | 100% | 2015-06-02 | 2015-06-05 |  | Crawler Crane/Mobile Crane [48 h]; Plant and Equipment Operator (Crawler-mounted Mobile Crane) [48 h]; Carpenter (Formwork - Civil Construction) [384 h]; Rigger/Metal Formwork Erector [192 h] | 100% | 100% | 823A_AB |  |  |  |  |
| 823A-ST-SNT13-1130 |  | Rebar fixing for wall and roof | 3d | 2015-05-23 A | 2015-06-10 A | 823A-ST-SNT13-1120 | 100% | 2015-06-06 | 2015-06-09 |  | Reinforcement [67234 kg]; Crawler Crane/Mobile Crane [32 h]; Bar Bender & Fixer [512 h]; Plant and Equipment Operator (Crawler-mounted Mobile Crane) [32 h] | 100% | 100% | 823A_AB |  |  |  |  |
| 823A-ST-SNT13-1140 |  | Erect external formwork for wall and roof | 2d | 2015-06-11 A | 2015-06-12 A | 823A-ST-SNT13-1130 | 100% | 2015-06-05 | 2015-06-06 |  | Crawler Crane/Mobile Crane [16 h]; Carpenter (Formwork - Civil Construction) [192 h]; Plant and Equipment Operator (Crawler-mounted Mobile Crane) [16 h] | 100% | 100% | 823A_AB |  |  |  |  |
| 823A-ST-SNT13-1150 |  | Concreting for wall and roof (150m3) | 1d | 2015-06-13 A | 2015-06-13 A | 823A-ST-SNT13-1140 | 100% | 2015-06-08 | 2015-06-08 |  | Crawler Crane/Mobile Crane [8 h]; Concrete Pump [8 h]; Plant and Equipment Operator (Crawler-mounted Mobile Crane) [16 h]; PY Concretor [64 h]; General Worker [96 h]; Rigger/Metal Formwork Erector [32 h]; Permanent Concrete [148 Cu m]; Concrete 45/20A [148 Cu m] | 100% | 100% | 823A_AB | 150 | m3 | 150 | 150 |
| 823A-ST-SNT13-1160 |  | Curing for wall and roof | 10d | 2015-06-15 A | 2015-06-25 A | 823A-ST-SNT13-1150 | 100% | 2015-06-09 | 2015-06-18 | 823-7d | General Worker [224 h] | 100% | 100% | 823A_AB |  |  |  |  |
| 823A-ST-SNT13-1170 |  | Preparation of construction joint for wall and roof | 1d | 2015-06-26 A | 2015-06-26 A | 823A-ST-SNT13-1150 | 100% | 2015-06-09 | 2015-06-09 | 823-6dPH |  | 100% | 100% | 823A_AB |  |  |  |  |
| 823A-ST-SNT13-1180 |  | Removal external and internal formwork for wall | 1d | 2015-06-27 A | 2015-06-27 A | 823A-ST-SNT13-1170 | 100% | 2015-06-10 | 2015-06-10 |  | Crawler Crane/Mobile Crane [16 h]; Plant and Equipment Operator (Crawler-mounted Mobile Crane) [16 h]; Carpenter (Formwork - Civil Construction) [128 h] | 100% | 100% | 823A_AB |  |  |  |  |
| 823A-ST-SNT13-1190 |  | Removal internal falsework and formwork for roof | 2d | 2015-06-29 A | 2015-06-30 A | 823A-ST-SNT13-1180, 823A-ST-SNT13-1160 | 100% | 2015-06-19 | 2015-06-22 |  | Crawler Crane/Mobile Crane [32 h]; Carpenter (Formwork - Civil Construction) [256 h]; Plant and Equipment Operator (Crawler-mounted Mobile Crane) [32 h]; Rigger/Metal Formwork Erector [128 h] | 100% | 100% | 823A_AB |  |  |  |  |
| 823A-ST-SNT13-1200 |  | Side walkway and cable bracket (204m3) | 5d | 2015-06-30 A | 2015-10-05 A | 823A-ST-SNT14-1200 | 100% | 2015-07-06 | 2015-07-10 |  | Permanent Concrete [204 Cu m]; Concrete 20/20C [204 Cu m]; Crawler Crane/Mobile Crane [40 h]; Concrete Pump [40 h]; Carpenter (Formwork - Civil Construction) [320 h]; PY Concretor [160 h]; General Worker [320 h]; Plant and Equipment Operator (Crawler-mounted Mobile Crane) [80 h]; Rigger/Metal Formwork Erector [160 h] | 100% | 100% | 823A_AB | 204 | m3 | 204 | 204 |

| ID | WBS | Activity | Duration | Start | Finish | Predecessors | Complete | Planned start | Planned finish | Calendar | Resources | % Planned | % Actual | 823A_As-built | Actual Up to Date | UNITS | Total Quantity | Planned Up to Date |
| --- | --- | --- | --- | --- | --- | --- | --- | --- | --- | --- | --- | --- | --- | --- | --- | --- | --- | --- |
|  | 14 | **Bay SN14** |  | 2015-03-16 | 2015-10-03 |  |  |  |  |  |  |  |  |  |  |  |  |  |
| 823A-ST-SNT14-1010 |  | Placing of waterproof member T-lock & testing for base slab | 1d | 2015-03-16 A | 2015-03-16 A | 823A-ST-SNT15-1180 | 100% | 2015-05-20 | 2015-05-20 |  | Skill Labour [64 h] | 100% | 100% | 823A_AB |  |  |  |  |
| 823A-ST-SNT14-1020 |  | Erect external formwork for base slab | 2d | 2015-03-17 A | 2015-03-19 A | 823A-ST-SNT14-1010 | 100% | 2015-05-21 | 2015-05-22 |  | Crawler Crane/Mobile Crane [8 h]; Carpenter (Formwork - Civil Construction) [96 h]; Plant and Equipment Operator (Crawler-mounted Mobile Crane) [8 h] | 100% | 100% | 823A_AB |  |  |  |  |
| 823A-ST-SNT14-1030 |  | Rebar fixing for base slab | 2d | 2015-03-20 A | 2015-03-28 A | 823A-ST-SNT14-1020 | 100% | 2015-05-23 | 2015-05-26 |  | Crawler Crane/Mobile Crane [16 h]; Plant and Equipment Operator (Crawler-mounted Mobile Crane) [16 h]; Bar Bender & Fixer [256 h]; Reinforcement [68142 kg] | 100% | 100% | 823A_AB |  |  |  |  |
| 823A-ST-SNT14-1040 |  | Erect internal kicker formwork for base slab | 2d | 2015-03-30 A | 2015-04-01 A | 823A-ST-SNT14-1030 | 100% | 2015-05-27 | 2015-05-28 |  | Crawler Crane/Mobile Crane [16 h]; Plant and Equipment Operator (Crawler-mounted Mobile Crane) [96 h]; Carpenter (Formwork - Civil Construction) [192 h] | 100% | 100% | 823A_AB |  |  |  |  |
| 823A-ST-SNT14-1050 |  | Concreting for base slab (70m3) | 1d | 2015-04-02 A | 2015-04-02 A | 823A-ST-SNT14-1040 | 100% | 2015-05-29 | 2015-05-29 |  | Permanent Concrete [70 Cu m]; Concrete 45/20A [70 Cu m]; Crawler Crane/Mobile Crane [8 h]; Concrete Pump [8 h]; PY Concretor [64 h]; General Worker [96 h]; Plant and Equipment Operator (Crawler-mounted Mobile Crane) [16 h]; Rigger/Metal Formwork Erector [32 h] | 100% | 100% | 823A_AB | 70 | m3 | 70 | 70 |
| 823A-ST-SNT14-1060 |  | Curing for base slab | 7d | 2015-04-08 A | 2015-04-18 A | 823A-ST-SNT14-1050 | 100% | 2015-05-30 | 2015-06-05 | 823-7d | General Worker [224 h] | 100% | 100% | 823A_AB |  |  |  |  |
| 823A-ST-SNT14-1070 |  | Preparation of construction joint for base slab | 1d | 2015-04-20 A | 2015-04-22 A | 823A-ST-SNT14-1050 | 100% | 2015-05-30 | 2015-05-30 | 823-6dPH |  | 100% | 100% | 823A_AB |  |  |  |  |
| 823A-ST-SNT14-1080 |  | Removal of formwork for base slab | 1d | 2015-04-23 A | 2015-04-24 A | 823A-ST-SNT14-1070 | 100% | 2015-06-01 | 2015-06-01 |  | Crawler Crane/Mobile Crane [8 h]; Carpenter (Formwork - Civil Construction) [64 h]; Plant and Equipment Operator (Crawler-mounted Mobile Crane) [8 h] | 100% | 100% | 823A_AB |  |  |  |  |
| 823A-ST-SNT14-1090 |  | Infill concrete in between D-wall and base slab | 1d | 2015-04-25 A | 2015-04-27 A | 823A-ST-SNT14-1080 | 100% | 2015-06-02 | 2015-06-02 |  | Temporary Concrete [204 Cu m]; Concrete 20/20C [204 Cu m]; Crawler Crane/Mobile Crane [8 h]; Concrete Pump [8 h]; Plant and Equipment Operator (Crawler-mounted Mobile Crane) [16 h]; General Worker [64 h]; Rigger/Metal Formwork Erector [16 h]; PY Concretor [32 h] | 100% | 100% | 823A_AB |  |  |  |  |
| 823A-ST-SNT14-1100 |  | Curing | 1d | 2015-04-28 A | 2015-04-29 A | 823A-ST-SNT14-1090, 823A-ST-SNT14-1060 | 100% | 2015-06-06 | 2015-06-06 | 823-7d | General Worker [224 h] | 100% | 100% | 823A_AB |  |  |  |  |
| 823A-ST-SNT14-1110 |  | Removal strut S3 | 4d | 2015-04-30 A | 2015-05-05 A | 823A-ST-SNT14-1100 | 100% | 2015-06-08 | 2015-06-11 |  | Crawler Crane/Mobile Crane [16 h]; Plant and Equipment Operator (Crawler-mounted Mobile Crane) [16 h]; Rigger/Metal Formwork Erector [128 h] | 100% | 100% | 823A_AB |  |  |  |  |
| 823A-ST-SNT14-1120 |  | Erect internal formwork & Falsework for wall and roof | 4d | 2015-05-06 A | 2015-05-09 A | 823A-ST-SNT14-1110 | 100% | 2015-05-23 | 2015-05-28 |  | Crawler Crane/Mobile Crane [48 h]; Plant and Equipment Operator (Crawler-mounted Mobile Crane) [48 h]; Carpenter (Formwork - Civil Construction) [384 h]; Rigger/Metal Formwork Erector [192 h] | 100% | 100% | 823A_AB |  |  |  |  |
| 823A-ST-SNT14-1130 |  | Rebar fixing for wall and roof | 3d | 2015-05-11 A | 2015-05-13 A | 823A-ST-SNT14-1120 | 100% | 2015-05-29 | 2015-06-01 |  | Reinforcement [67234 kg]; Crawler Crane/Mobile Crane [32 h]; Bar Bender & Fixer [512 h]; Plant and Equipment Operator (Crawler-mounted Mobile Crane) [32 h] | 100% | 100% | 823A_AB |  |  |  |  |
| 823A-ST-SNT14-1140 |  | Erect external formwork for wall and roof | 2d | 2015-05-14 A | 2015-05-15 A | 823A-ST-SNT14-1130 | 100% | 2015-06-02 | 2015-06-03 |  | Crawler Crane/Mobile Crane [16 h]; Plant and Equipment Operator (Crawler-mounted Mobile Crane) [16 h]; Carpenter (Formwork - Civil Construction) [192 h] | 100% | 100% | 823A_AB |  |  |  |  |
| 823A-ST-SNT14-1150 |  | Concreting for wall and roof (175m3) | 1d | 2015-05-16 A | 2015-05-16 A | 823A-ST-SNT14-1140 | 100% | 2015-06-04 | 2015-06-04 |  | Permanent Concrete [131 Cu m]; Concrete 45/20A [131 Cu m]; Crawler Crane/Mobile Crane [8 h]; Concrete Pump [8 h]; Plant and Equipment Operator (Crawler-mounted Mobile Crane) [16 h]; PY Concretor [64 h]; General Worker [96 h]; Rigger/Metal Formwork Erector [32 h] | 100% | 100% | 823A_AB | 175 | m3 | 175 | 175 |
| 823A-ST-SNT14-1160 |  | Curing for wall and roof | 10d | 2015-05-18 A | 2015-05-29 A | 823A-ST-SNT14-1150 | 100% | 2015-06-05 | 2015-06-14 | 823-7d | General Worker [224 h] | 100% | 100% | 823A_AB |  |  |  |  |
| 823A-ST-SNT14-1170 |  | Preparation of construction joint for wall and roof | 1d | 2015-05-30 A | 2015-05-30 A | 823A-ST-SNT14-1150 | 100% | 2015-06-05 | 2015-06-05 | 823-6dPH |  | 100% | 100% | 823A_AB |  |  |  |  |
| 823A-ST-SNT14-1180 |  | Removal external and internal formwork for wall | 1d | 2015-06-01 A | 2015-06-01 A | 823A-ST-SNT14-1170 | 100% | 2015-06-03 | 2015-06-03 |  | Crawler Crane/Mobile Crane [16 h]; Plant and Equipment Operator (Crawler-mounted Mobile Crane) [16 h]; Carpenter (Formwork - Civil Construction) [128 h] | 100% | 100% | 823A_AB |  |  |  |  |
| 823A-ST-SNT14-1190 |  | Removal internal falsework and formwork for roof | 2d | 2015-06-02 A | 2015-06-03 A | 823A-ST-SNT14-1160, 823A-ST-SNT14-1180 | 100% | 2015-06-04 | 2015-06-05 |  | Crawler Crane/Mobile Crane [32 h]; Carpenter (Formwork - Civil Construction) [256 h]; Plant and Equipment Operator (Crawler-mounted Mobile Crane) [32 h]; Rigger/Metal Formwork Erector [128 h] | 100% | 100% | 823A_AB |  |  |  |  |
| 823A-ST-SNT14-1200 |  | Side walkway and cable bracket (204m3) | 5d | 2015-06-04 A | 2015-10-03 A | 823A-ST-SNT15-1200, 823A-ST-SNT14-1190 | 100% | 2015-06-29 | 2015-07-04 |  | Permanent Concrete [204 Cu m]; Concrete 20/20C [204 Cu m]; Crawler Crane/Mobile Crane [40 h]; Concrete Pump [40 h]; Carpenter (Formwork - Civil Construction) [320 h]; PY Concretor [160 h]; General Worker [320 h]; Plant and Equipment Operator (Crawler-mounted Mobile Crane) [80 h]; Rigger/Metal Formwork Erector [160 h] | 100% | 100% | 823A_AB | 204 | m3 | 204 | 204 |
|  | 15 | **Bay SN15** |  | 2015-03-16 | 2015-10-02 |  |  |  |  |  |  |  |  |  |  |  |  |  |
| 823A-ST-SNT15-1010 |  | Placing of waterproof member T-lock & testing for base slab | 1d | 2015-03-16 A | 2015-03-16 A | 823A-ST-SN-ELS-1060 | 100% | 2015-04-13 | 2015-04-13 |  | Skill Labour [64 h] | 100% | 100% | 823A_AB |  |  |  |  |
| 823A-ST-SNT15-1020 |  | Erect external formwork for base slab | 2d | 2015-03-17 A | 2015-03-19 A | 823A-ST-SNT15-1010 | 100% | 2015-04-14 | 2015-04-15 |  | Crawler Crane/Mobile Crane [8 h]; Carpenter (Formwork - Civil Construction) [96 h]; Plant and Equipment Operator (Crawler-mounted Mobile Crane) [8 h] | 100% | 100% | 823A_AB |  |  |  |  |
| 823A-ST-SNT15-1030 |  | Rebar fixing for base slab | 2d | 2015-03-20 A | 2015-03-28 A | 823A-ST-SNT15-1020 | 100% | 2015-04-16 | 2015-04-17 |  | Reinforcement [68142 kg]; Crawler Crane/Mobile Crane [16 h]; Plant and Equipment Operator (Crawler-mounted Mobile Crane) [16 h]; Bar Bender & Fixer [256 h] | 100% | 100% | 823A_AB |  |  |  |  |
| 823A-ST-SNT15-1040 |  | Erect internal kicker formwork for base slab | 2d | 2015-03-30 A | 2015-04-01 A | 823A-ST-SNT15-1030 | 100% | 2015-04-18 | 2015-04-20 |  | Crawler Crane/Mobile Crane [16 h]; Plant and Equipment Operator (Crawler-mounted Mobile Crane) [96 h]; Carpenter (Formwork - Civil Construction) [192 h] | 100% | 100% | 823A_AB |  |  |  |  |
| 823A-ST-SNT15-1050 |  | Concreting for base slab (70m3) | 1d | 2015-04-02 A | 2015-04-02 A | 823A-ST-SNT15-1040 | 100% | 2015-04-21 | 2015-04-21 |  | Permanent Concrete [69 Cu m]; Concrete 45/20A [69 Cu m]; Crawler Crane/Mobile Crane [8 h]; Concrete Pump [8 h]; PY Concretor [64 h]; General Worker [96 h]; Plant and Equipment Operator (Crawler-mounted Mobile Crane) [16 h]; Rigger/Metal Formwork Erector [32 h] | 100% | 100% | 823A_AB | 70 | m3 | 70 | 70 |
| 823A-ST-SNT15-1060 |  | Curing for base slab | 7d | 2015-04-08 A | 2015-04-18 A | 823A-ST-SNT15-1050 | 100% | 2015-04-22 | 2015-04-28 | 823-7d | General Worker [224 h] | 100% | 100% | 823A_AB |  |  |  |  |
| 823A-ST-SNT15-1070 |  | Preparation of construction joint for base slab | 1d | 2015-04-20 A | 2015-04-22 A | 823A-ST-SNT15-1050 | 100% | 2015-04-22 | 2015-04-22 | 823-6dPH |  | 100% | 100% | 823A_AB |  |  |  |  |
| 823A-ST-SNT15-1080 |  | Removal of formwork for base slab | 1d | 2015-04-23 A | 2015-04-24 A | 823A-ST-SNT15-1070 | 100% | 2015-04-23 | 2015-04-23 |  | Crawler Crane/Mobile Crane [8 h]; Carpenter (Formwork - Civil Construction) [64 h]; Plant and Equipment Operator (Crawler-mounted Mobile Crane) [8 h] | 100% | 100% | 823A_AB |  |  |  |  |
| 823A-ST-SNT15-1090 |  | Infill concrete in between D-wall and base slab | 1d | 2015-04-25 A | 2015-04-27 A | 823A-ST-SNT15-1080 | 100% | 2015-04-24 | 2015-04-24 |  | Temporary Concrete [204 Cu m]; Concrete 20/20C [204 Cu m]; Crawler Crane/Mobile Crane [8 h]; Concrete Pump [8 h]; PY Concretor [32 h]; Plant and Equipment Operator (Crawler-mounted Mobile Crane) [16 h]; General Worker [64 h]; Rigger/Metal Formwork Erector [16 h] | 100% | 100% | 823A_AB |  |  |  |  |
| 823A-ST-SNT15-1100 |  | Curing | 1d | 2015-04-28 A | 2015-04-29 A | 823A-ST-SNT15-1060, 823A-ST-SNT15-1090 | 100% | 2015-04-29 | 2015-04-29 | 823-7d | General Worker [224 h] | 100% | 100% | 823A_AB |  |  |  |  |
| 823A-ST-SNT15-1110 |  | Removal strut S3 | 4d | 2015-04-30 A | 2015-05-05 A | 823A-ST-SNT15-1100 | 100% |  |  |  | Crawler Crane/Mobile Crane [16 h]; Plant and Equipment Operator (Crawler-mounted Mobile Crane) [16 h]; Rigger/Metal Formwork Erector [128 h] | 100% | 100% | 823A_AB |  |  |  |  |
| 823A-ST-SNT15-1120 |  | Erect internal formwork & Falsework for wall and roof | 1d | 2015-05-06 A | 2015-05-09 A | 823A-ST-SNT15-1110 | 100% | 2015-05-06 | 2015-05-06 |  | Crawler Crane/Mobile Crane [48 h]; Plant and Equipment Operator (Crawler-mounted Mobile Crane) [48 h]; Carpenter (Formwork - Civil Construction) [384 h]; Rigger/Metal Formwork Erector [192 h] | 100% | 100% | 823A_AB |  |  |  |  |
| 823A-ST-SNT15-1130 |  | Rebar fixing for wall and roof | 3d | 2015-05-11 A | 2015-05-13 A | 823A-ST-SNT15-1120 | 100% | 2015-05-14 | 2015-05-16 |  | Reinforcement [67234 kg]; Crawler Crane/Mobile Crane [32 h]; Bar Bender & Fixer [512 h]; Plant and Equipment Operator (Crawler-mounted Mobile Crane) [32 h] | 100% | 100% | 823A_AB |  |  |  |  |
| 823A-ST-SNT15-1140 |  | Erect external formwork for wall and roof | 2d | 2015-05-14 A | 2015-05-15 A | 823A-ST-SNT15-1130 | 100% | 2015-05-18 | 2015-05-19 |  | Crawler Crane/Mobile Crane [16 h]; Plant and Equipment Operator (Crawler-mounted Mobile Crane) [16 h]; Carpenter (Formwork - Civil Construction) [192 h] | 100% | 100% | 823A_AB |  |  |  |  |
| 823A-ST-SNT15-1150 |  | Concreting for wall and roof (175m3) | 1d | 2015-05-16 A | 2015-05-16 A | 823A-ST-SNT15-1140 | 100% | 2015-05-20 | 2015-05-20 |  | Permanent Concrete [131 Cu m]; Concrete 45/20A [131 Cu m]; Crawler Crane/Mobile Crane [8 h]; Concrete Pump [8 h]; PY Concretor [64 h]; General Worker [96 h]; Rigger/Metal Formwork Erector [32 h]; Plant and Equipment Operator (Crawler-mounted Mobile Crane) [16 h] | 100% | 100% | 823A_AB | 175 | m3 | 175 | 175 |
| 823A-ST-SNT15-1160 |  | Curing for wall and roof | 10d | 2015-05-18 A | 2015-05-29 A | 823A-ST-SNT15-1150 | 100% | 2015-05-21 | 2015-05-30 | 823-7d | General Worker [224 h] | 100% | 100% | 823A_AB |  |  |  |  |
| 823A-ST-SNT15-1170 |  | Preparation of construction joint for wall and roof | 1d | 2015-05-30 A | 2015-05-30 A | 823A-ST-SNT15-1150 | 100% | 2015-05-21 | 2015-05-21 | 823-6dPH |  | 100% | 100% | 823A_AB |  |  |  |  |
| 823A-ST-SNT15-1180 |  | Removal external and internal formwork for wall | 1d | 2015-06-01 A | 2015-06-01 A | 823A-ST-SNT15-1170 | 100% | 2015-06-02 | 2015-06-02 |  | Crawler Crane/Mobile Crane [16 h]; Plant and Equipment Operator (Crawler-mounted Mobile Crane) [16 h]; Carpenter (Formwork - Civil Construction) [128 h] | 100% | 100% | 823A_AB |  |  |  |  |
| 823A-ST-SNT15-1190 |  | Removal internal falsework and formwork for roof | 2d | 2015-06-02 A | 2015-06-03 A | 823A-ST-SNT15-1160, 823A-ST-SNT15-1180 | 100% | 2015-06-03 | 2015-06-04 |  | Crawler Crane/Mobile Crane [32 h]; Carpenter (Formwork - Civil Construction) [256 h]; Plant and Equipment Operator (Crawler-mounted Mobile Crane) [32 h]; Rigger/Metal Formwork Erector [128 h] | 100% | 100% | 823A_AB |  |  |  |  |
| 823A-ST-SNT15-1200 |  | Side walkway and cable bracket (204m3) | 5d | 2015-06-04 A | 2015-10-02 A | 823A-ST-SNT13-1190, 823A-ST-SNT16-1200, 823A-ST-SNT15-1190 | 100% | 2015-06-23 | 2015-06-27 |  | Permanent Concrete [204 Cu m]; Concrete 20/20C [204 Cu m]; Crawler Crane/Mobile Crane [40 h]; Concrete Pump [40 h]; Carpenter (Formwork - Civil Construction) [320 h]; PY Concretor [160 h]; General Worker [320 h]; Plant and Equipment Operator (Crawler-mounted Mobile Crane) [80 h]; Rigger/Metal Formwork Erector [160 h] | 100% | 100% | 823A_AB | 204 | m3 | 204 | 204 |

| ID | WBS | Activity | Duration | Start | Finish | Predecessors | Complete | Planned start | Planned finish | Calendar | Resources | TIme Gain/Loss | % Planned | % Actual | 823A_As-built | Actual Up to Date | UNITS | Total Quantity | Planned Up to Date |
| --- | --- | --- | --- | --- | --- | --- | --- | --- | --- | --- | --- | --- | --- | --- | --- | --- | --- | --- | --- |
|  | 16 | **Bay SN16** |  | 2013-11-15 | 2014-12-04 |  |  |  |  |  |  |  |  |  |  |  |  |  |  |
| 823A-ST-SNT16-1010 |  | Placing of waterproof member T-lock & testing for base slab | 1d | 2013-11-15 A | 2013-11-15 A | 823A-ST-SNT17-1080 | 100% | 2013-12-11 | 2013-12-11 |  | Skill Labour [64 h] | +4 | 100% | 100% | 823A_AB |  |  |  |  |
| 823A-ST-SNT16-1020 |  | Erect external formwork for base slab | 2d | 2013-11-16 A | 2013-11-18 A | 823A-ST-SNT16-1010 | 100% | 2013-12-12 | 2013-12-13 |  | Crawler Crane/Mobile Crane [8 h]; Carpenter (Formwork - Civil Construction) [96 h]; Plant and Equipment Operator (Crawler-mounted Mobile Crane) [8 h] | +4 | 100% | 100% | 823A_AB |  |  |  |  |
| 823A-ST-SNT16-1030 |  | Rebar fixing for base slab | 2d | 2013-11-19 A | 2013-11-20 A | 823A-ST-SNT16-1020 | 100% | 2013-12-14 | 2013-12-16 |  | Reinforcement [68142 kg]; Crawler Crane/Mobile Crane [16 h]; Plant and Equipment Operator (Crawler-mounted Mobile Crane) [16 h]; Bar Bender & Fixer [256 h] | +4 | 100% | 100% | 823A_AB |  |  |  |  |
| 823A-ST-SNT16-1040 |  | Erect internal kicker formwork for base slab | 2d | 2013-11-21 A | 2013-11-22 A | 823A-ST-SNT16-1030 | 100% | 2013-12-17 | 2013-12-18 |  | Crawler Crane/Mobile Crane [16 h]; Plant and Equipment Operator (Crawler-mounted Mobile Crane) [96 h]; Carpenter (Formwork - Civil Construction) [192 h] | +4 | 100% | 100% | 823A_AB |  |  |  |  |
| 823A-ST-SNT16-1050 |  | Concreting for base slab (70m3) | 1d | 2013-11-23 A | 2013-11-23 A | 823A-ST-SNT16-1040 | 100% | 2013-12-19 | 2013-12-19 |  | Permanent Concrete [70 Cu m]; Concrete 45/20A [70 Cu m]; Crawler Crane/Mobile Crane [8 h]; Concrete Pump [8 h]; PY Concretor [64 h]; General Worker [96 h]; Plant and Equipment Operator (Crawler-mounted Mobile Crane) [16 h]; Rigger/Metal Formwork Erector [32 h] | +4 | 100% | 100% | 823A_AB | 70 | m3 | 70 | 70 |
| 823A-ST-SNT16-1060 |  | Curing for base slab | 7d | 2013-11-25 A | 2013-12-02 A | 823A-ST-SNT16-1050 | 100% | 2013-12-20 | 2013-12-26 | 823-7d | General Worker [224 h] | +5 | 100% | 100% | 823A_AB |  |  |  |  |
| 823A-ST-SNT16-1070 |  | Preparation of construction joint for base slab | 1d | 2013-12-03 A | 2013-12-03 A | 823A-ST-SNT16-1050 | 100% | 2013-12-06 | 2013-12-06 | 823-6dPH |  | +4 | 100% | 100% | 823A_AB |  |  |  |  |
| 823A-ST-SNT16-1080 |  | Removal of formwork for base slab | 1d | 2013-12-04 A | 2013-12-04 A | 823A-ST-SNT16-1070 | 100% | 2013-12-07 | 2013-12-07 |  | Crawler Crane/Mobile Crane [8 h]; Carpenter (Formwork - Civil Construction) [64 h]; Plant and Equipment Operator (Crawler-mounted Mobile Crane) [8 h] | +4 | 100% | 100% | 823A_AB |  |  |  |  |
| 823A-ST-SNT16-1090 |  | Infill concrete in between D-wall and base slab | 1d | 2013-12-05 A | 2013-12-05 A | 823A-ST-SNT16-1080 | 100% | 2013-12-09 | 2013-12-09 |  | Temporary Concrete [204 Cu m]; Concrete 20/20C [204 Cu m]; Crawler Crane/Mobile Crane [8 h]; Concrete Pump [8 h]; PY Concretor [32 h]; Plant and Equipment Operator (Crawler-mounted Mobile Crane) [16 h]; General Worker [64 h]; Rigger/Metal Formwork Erector [16 h] | +4 | 100% | 100% | 823A_AB |  |  |  |  |
| 823A-ST-SNT16-1100 |  | Curing | 1d | 2013-12-06 A | 2013-12-06 A | 823A-ST-SNT16-1090, 823A-ST-SNT16-1060 | 100% | 2013-12-10 | 2013-12-10 | 823-7d | General Worker [224 h] | +5 | 100% | 100% | 823A_AB |  |  |  |  |
| 823A-ST-SNT16-1110 |  | Removal strut S3 | 4d | 2014-01-07 A | 2014-01-10 A | 823A-ST-SNT16-1100 | 100% |  |  |  | Plant and Equipment Operator (Crawler-mounted Mobile Crane) [16 h]; Rigger/Metal Formwork Erector [128 h]; Crawler Crane/Mobile Crane [16 h] | +3 | 100% | 100% | 823A_AB |  |  |  |  |
| 823A-ST-SNT16-1120 |  | Erect internal formwork & Falsework for wall and roof | 4d | 2014-04-01 A | 2014-04-04 A | 823A-ST-SNT16-1110, 823A-ST-SNT17-1180 | 100% | 2014-04-16 | 2014-04-23 |  | Plant and Equipment Operator (Crawler-mounted Mobile Crane) [48 h]; Carpenter (Formwork - Civil Construction) [384 h]; Rigger/Metal Formwork Erector [192 h]; Crawler Crane/Mobile Crane [48 h] |  | 100% | 100% | 823A_AB |  |  |  |  |
| 823A-ST-SNT16-1130 |  | Rebar fixing for wall and roof | 3d | 2014-04-07 A | 2014-04-09 A | 823A-ST-SNT16-1120 | 100% | 2014-04-24 | 2014-04-26 |  | Reinforcement [67234 kg]; Crawler Crane/Mobile Crane [32 h]; Bar Bender & Fixer [512 h]; Plant and Equipment Operator (Crawler-mounted Mobile Crane) [32 h] |  | 100% | 100% | 823A_AB |  |  |  |  |
| 823A-ST-SNT16-1140 |  | Erect external formwork for wall and roof | 2d | 2014-04-10 A | 2014-04-11 A | 823A-ST-SNT16-1130 | 100% | 2014-04-28 | 2014-04-29 |  | Crawler Crane/Mobile Crane [16 h]; Plant and Equipment Operator (Crawler-mounted Mobile Crane) [16 h]; Carpenter (Formwork - Civil Construction) [192 h] |  | 100% | 100% | 823A_AB |  |  |  |  |
| 823A-ST-SNT16-1150 |  | Concreting for wall and roof (170m3) | 1d | 2014-04-12 A | 2014-04-12 A | 823A-ST-SNT16-1140 | 100% | 2014-04-30 | 2014-04-30 |  | Crawler Crane/Mobile Crane [8 h]; Concrete Pump [8 h]; Plant and Equipment Operator (Crawler-mounted Mobile Crane) [16 h]; PY Concretor [64 h]; General Worker [96 h]; Rigger/Metal Formwork Erector [32 h]; Permanent Concrete [131 Cu m]; Concrete 45/20A [131 Cu m] |  | 100% | 100% | 823A_AB | 170 | m3 | 170 | 170 |
| 823A-ST-SNT16-1160 |  | Curing for wall and roof | 10d | 2014-04-14 A | 2014-04-22 A | 823A-ST-SNT16-1150 | 100% | 2014-05-01 | 2014-05-10 | 823-7d | General Worker [224 h] |  | 100% | 100% | 823A_AB |  |  |  |  |
| 823A-ST-SNT16-1170 |  | Preparation of construction joint for wall and roof | 1d | 2014-04-14 A | 2014-04-14 A | 823A-ST-SNT16-1150 | 100% | 2014-05-02 | 2014-05-02 | 823-6dPH |  |  | 100% | 100% | 823A_AB |  |  |  |  |
| 823A-ST-SNT16-1180 |  | Removal external and internal formwork for wall | 1d | 2014-04-15 A | 2014-04-15 A | 823A-ST-SNT16-1170 | 100% | 2014-05-03 | 2014-05-03 |  | Crawler Crane/Mobile Crane [16 h]; Carpenter (Formwork - Civil Construction) [128 h]; Plant and Equipment Operator (Crawler-mounted Mobile Crane) [16 h] |  | 100% | 100% | 823A_AB |  |  |  |  |
| 823A-ST-SNT16-1190 |  | Removal internal falsework and formwork for roof | 2d | 2014-04-23 A | 2014-04-24 A | 823A-ST-SNT16-1160, 823A-ST-SNT16-1180 | 100% | 2014-05-12 | 2014-05-13 |  | Crawler Crane/Mobile Crane [32 h]; Carpenter (Formwork - Civil Construction) [256 h]; Plant and Equipment Operator (Crawler-mounted Mobile Crane) [32 h]; Rigger/Metal Formwork Erector [128 h] |  | 100% | 100% | 823A_AB |  |  |  |  |
| 823A-ST-SNT16-1200 |  | Side walkway and cable bracket (204m3) | 5d | 2014-05-29 A | 2014-12-04 A | 823A-ST-SNT17-1200, 823A-ST-SNT16-1190 | 100% | 2014-06-05 | 2014-06-10 |  | Permanent Concrete [204 Cu m]; Concrete 20/20C [204 Cu m]; Crawler Crane/Mobile Crane [40 h]; Concrete Pump [40 h]; Carpenter (Formwork - Civil Construction) [320 h]; PY Concretor [160 h]; General Worker [320 h]; Plant and Equipment Operator (Crawler-mounted Mobile Crane) [80 h]; Rigger/Metal Formwork Erector [160 h] |  | 100% | 100% | 823A_AB | 204 | m3 | 204 | 204 |
|  | 17 | **Bay SN17** |  | 2013-10-17 | 2014-12-03 |  |  |  |  |  |  |  |  |  |  |  |  |  |  |
| 823A-ST-SNT17-1010 |  | Placing of waterproof member T-lock & testing for base slab | 1d | 2013-10-17 A | 2013-10-21 A | 823A-ST-SNT18-1080 | 100% | 2013-12-11 | 2013-12-11 |  | Skill Labour [64 h] |  | 100% | 100% | 823A_AB |  |  |  |  |
| 823A-ST-SNT17-1020 |  | Erect external formwork for base slab | 2d | 2013-10-17 A | 2013-10-21 A | 823A-ST-SNT17-1010 | 100% | 2013-12-12 | 2013-12-13 |  | Crawler Crane/Mobile Crane [8 h]; Carpenter (Formwork - Civil Construction) [96 h]; Plant and Equipment Operator (Crawler-mounted Mobile Crane) [8 h] |  | 100% | 100% | 823A_AB |  |  |  |  |
| 823A-ST-SNT17-1030 |  | Rebar fixing for base slab | 2d | 2013-10-22 A | 2013-10-25 A | 823A-ST-SNT17-1020 | 100% | 2013-12-07 | 2013-12-09 |  | Reinforcement [68142 kg]; Crawler Crane/Mobile Crane [16 h]; Plant and Equipment Operator (Crawler-mounted Mobile Crane) [16 h]; Bar Bender & Fixer [256 h] |  | 100% | 100% | 823A_AB |  |  |  |  |
| 823A-ST-SNT17-1040 |  | Erect internal kicker formwork for base slab | 2d | 2013-11-07 A | 2013-11-08 A | 823A-ST-SNT17-1030 | 100% | 2013-12-05 | 2013-12-06 |  | Crawler Crane/Mobile Crane [16 h]; Plant and Equipment Operator (Crawler-mounted Mobile Crane) [96 h]; Carpenter (Formwork - Civil Construction) [192 h] | +4 | 100% | 100% | 823A_AB |  |  |  |  |
| 823A-ST-SNT17-1050 |  | Concreting for base slab (70m3) | 1d | 2013-11-09 A | 2013-11-09 A | 823A-ST-SNT17-1040 | 100% | 2013-12-07 | 2013-12-07 |  | Permanent Concrete [70 Cu m]; Concrete 45/20A [70 Cu m]; Crawler Crane/Mobile Crane [8 h]; PY Concretor [64 h]; General Worker [96 h]; Plant and Equipment Operator (Crawler-mounted Mobile Crane) [16 h]; Rigger/Metal Formwork Erector [32 h]; Concrete Pump [8 h] | +4 | 100% | 100% | 823A_AB | 70 | m3 | 70 | 70 |
| 823A-ST-SNT17-1060 |  | Curing for base slab | 7d | 2013-11-11 A | 2013-11-18 A | 823A-ST-SNT17-1050 | 100% | 2013-12-08 | 2013-12-14 | 823-7d | General Worker [224 h] | +5 | 100% | 100% | 823A_AB |  |  |  |  |
| 823A-ST-SNT17-1070 |  | Preparation of construction joint for base slab | 1d | 2013-11-12 A | 2013-11-12 A | 823A-ST-SNT17-1050 | 100% | 2013-12-09 | 2013-12-09 | 823-6dPH |  | +4 | 100% | 100% | 823A_AB |  |  |  |  |
| 823A-ST-SNT17-1080 |  | Removal of formwork for base slab | 1d | 2013-11-13 A | 2013-11-13 A | 823A-ST-SNT17-1070 | 100% | 2013-12-10 | 2013-12-10 |  | Crawler Crane/Mobile Crane [8 h]; Carpenter (Formwork - Civil Construction) [64 h]; Plant and Equipment Operator (Crawler-mounted Mobile Crane) [8 h] | +4 | 100% | 100% | 823A_AB |  |  |  |  |
| 823A-ST-SNT17-1090 |  | Infill concrete in between D-wall and base slab | 1d | 2013-11-14 A | 2013-11-14 A | 823A-ST-SNT17-1080 | 100% | 2013-12-11 | 2013-12-11 |  | Temporary Concrete [204 Cu m]; Concrete 20/20C [204 Cu m]; Crawler Crane/Mobile Crane [8 h]; Concrete Pump [8 h]; PY Concretor [32 h]; Plant and Equipment Operator (Crawler-mounted Mobile Crane) [16 h]; General Worker [64 h]; Rigger/Metal Formwork Erector [16 h] | +4 | 100% | 100% | 823A_AB |  |  |  |  |
| 823A-ST-SNT17-1100 |  | Curing | 1d | 2013-11-19 A | 2013-11-19 A | 823A-ST-SNT17-1090, 823A-ST-SNT17-1060 | 100% | 2013-12-15 | 2013-12-15 | 823-7d | General Worker [224 h] | +5 | 100% | 100% | 823A_AB |  |  |  |  |
| 823A-ST-SNT17-1110 |  | Removal strut S3 | 4d | 2013-12-06 A | 2013-12-10 A | 823A-ST-SNT17-1100 | 100% |  |  |  | Crawler Crane/Mobile Crane [16 h]; Plant and Equipment Operator (Crawler-mounted Mobile Crane) [16 h]; Rigger/Metal Formwork Erector [128 h] | +5 | 100% | 100% | 823A_AB |  |  |  |  |
| 823A-ST-SNT17-1120 |  | Erect internal formwork & Falsework for wall and roof | 4d | 2013-12-11 A | 2013-12-14 A | 823A-ST-SNT18-1180, 823A-ST-SNT17-1110 | 100% | 2014-02-12 | 2014-02-15 |  | Crawler Crane/Mobile Crane [48 h]; Plant and Equipment Operator (Crawler-mounted Mobile Crane) [48 h]; Carpenter (Formwork - Civil Construction) [384 h]; Rigger/Metal Formwork Erector [192 h] | -20 | 100% | 100% | 823A_AB |  |  |  |  |
| 823A-ST-SNT17-1130 |  | Rebar fixing for wall and roof | 3d | 2013-12-16 A | 2014-01-02 A | 823A-ST-SNT17-1120 | 100% | 2014-02-17 | 2014-02-19 |  | Crawler Crane/Mobile Crane [32 h]; Bar Bender & Fixer [512 h]; Plant and Equipment Operator (Crawler-mounted Mobile Crane) [32 h]; Reinforcement [67234 kg] | -20 | 100% | 100% | 823A_AB |  |  |  |  |
| 823A-ST-SNT17-1140 |  | Erect external formwork for wall and roof | 2d | 2014-01-03 A | 2014-01-10 A | 823A-ST-SNT17-1130 | 100% | 2014-02-28 | 2014-03-03 |  | Crawler Crane/Mobile Crane [16 h]; Carpenter (Formwork - Civil Construction) [192 h]; Plant and Equipment Operator (Crawler-mounted Mobile Crane) [16 h] |  | 100% | 100% | 823A_AB |  |  |  |  |
| 823A-ST-SNT17-1150 |  | Concreting for wall and roof (200m3) | 1d | 2014-01-11 A | 2014-01-11 A | 823A-ST-SNT17-1140 | 100% | 2014-03-03 | 2014-03-04 |  | Permanent Concrete [131 Cu m]; Concrete 45/20A [131 Cu m]; Crawler Crane/Mobile Crane [8 h]; Concrete Pump [8 h]; Plant and Equipment Operator (Crawler-mounted Mobile Crane) [16 h]; PY Concretor [64 h]; General Worker [96 h]; Rigger/Metal Formwork Erector [32 h] |  | 100% | 100% | 823A_AB | 200 | m3 | 200 | 200 |
| 823A-ST-SNT17-1170 |  | Preparation of construction joint for wall and roof | 1d | 2014-01-11 A | 2014-01-11 A | 823A-ST-SNT17-1150 | 100% | 2014-03-04 | 2014-03-05 | 823-6dPH |  |  | 100% | 100% | 823A_AB |  |  |  |  |
| 823A-ST-SNT17-1160 |  | Curing for wall and roof | 10d | 2014-01-13 A | 2014-01-23 A | 823A-ST-SNT17-1150 | 100% | 2014-03-04 | 2014-03-14 | 823-7d | General Worker [224 h] |  | 100% | 100% | 823A_AB |  |  |  |  |
| 823A-ST-SNT17-1180 |  | Removal external and internal formwork for wall | 1d | 2014-01-13 A | 2014-01-13 A | 823A-ST-SNT17-1170 | 100% | 2014-03-05 | 2014-03-06 |  | Crawler Crane/Mobile Crane [16 h]; Plant and Equipment Operator (Crawler-mounted Mobile Crane) [16 h]; Carpenter (Formwork - Civil Construction) [128 h] |  | 100% | 100% | 823A_AB |  |  |  |  |
| 823A-ST-SNT17-1190 |  | Removal internal falsework and formwork for roof | 2d | 2014-01-24 A | 2014-01-25 A | 823A-ST-SNT17-1180, 823A-ST-SNT17-1160 | 100% | 2014-03-14 | 2014-03-17 |  | Crawler Crane/Mobile Crane [32 h]; Carpenter (Formwork - Civil Construction) [256 h]; Plant and Equipment Operator (Crawler-mounted Mobile Crane) [32 h]; Rigger/Metal Formwork Erector [128 h] |  | 100% | 100% | 823A_AB |  |  |  |  |
| 823A-ST-SNT17-1200 |  | Side walkway and cable bracket (204m3) | 5d | 2014-05-23 A | 2014-12-03 A | 823A-ST-SNT18-1200, 823A-ST-SNT17-1190 | 100% | 2014-05-29 | 2014-06-04 |  | Permanent Concrete [204 Cu m]; Concrete 20/20C [204 Cu m]; Crawler Crane/Mobile Crane [40 h]; Concrete Pump [40 h]; Carpenter (Formwork - Civil Construction) [320 h]; PY Concretor [160 h]; General Worker [320 h]; Plant and Equipment Operator (Crawler-mounted Mobile Crane) [80 h]; Rigger/Metal Formwork Erector [160 h] |  | 100% | 100% | 823A_AB | 204 | m3 | 204 | 204 |

| ID | WBS | Activity | Duration | Start | Finish | Predecessors | Complete | Planned start | Planned finish | Calendar | Resources | % Planned | % Actual | 823A_As-built | TIme Gain/Loss | Actual Up to Date | UNITS | Total Quantity | Planned Up to Date |
| --- | --- | --- | --- | --- | --- | --- | --- | --- | --- | --- | --- | --- | --- | --- | --- | --- | --- | --- | --- |
|  | 18 | **Bay SN18** |  | 2013-10-17 | 2014-12-02 |  |  |  |  |  |  |  |  |  |  |  |  |  |  |
| 823A-ST-SNT18-1010 |  | Placing of waterproof member T-lock & testing for base slab | 1d | 2013-10-17 A | 2013-10-21 A | 823A-ST-EP-L1-1080 | 100% | 2013-11-29 | 2013-11-29 |  | Skill Labour [64 h] | 100% | 100% | 823A_AB |  |  |  |  |  |
| 823A-ST-SNT18-1020 |  | Erect external formwork for base slab | 2d | 2013-10-17 A | 2013-10-21 A | 823A-ST-SNT18-1010 | 100% | 2013-11-30 | 2013-12-02 |  | Crawler Crane/Mobile Crane [8 h]; Carpenter (Formwork - Civil Construction) [96 h]; Plant and Equipment Operator (Crawler-mounted Mobile Crane) [8 h] | 100% | 100% | 823A_AB |  |  |  |  |  |
| 823A-ST-SNT18-1030 |  | Rebar fixing for base slab | 2d | 2013-10-22 A | 2013-10-25 A | 823A-ST-SNT18-1020 | 100% | 2013-11-29 | 2013-11-30 |  | Reinforcement [68142 kg]; Crawler Crane/Mobile Crane [16 h]; Plant and Equipment Operator (Crawler-mounted Mobile Crane) [16 h]; Bar Bender & Fixer [256 h] | 100% | 100% | 823A_AB |  |  |  |  |  |
| 823A-ST-SNT18-1040 |  | Erect internal kicker formwork for base slab | 2d | 2013-11-07 A | 2013-11-08 A | 823A-ST-SNT18-1030 | 100% | 2013-11-29 | 2013-11-30 |  | Crawler Crane/Mobile Crane [16 h]; Plant and Equipment Operator (Crawler-mounted Mobile Crane) [96 h]; Carpenter (Formwork - Civil Construction) [192 h] | 100% | 100% | 823A_AB | -1 |  |  |  |  |
| 823A-ST-SNT18-1050 |  | Concreting for base slab (70m3) | 1d | 2013-11-09 A | 2013-11-09 A | 823A-ST-SNT18-1040 | 100% | 2013-12-02 | 2013-12-02 |  | Permanent Concrete [70 Cu m]; Concrete 45/20A [70 Cu m]; Crawler Crane/Mobile Crane [8 h]; Concrete Pump [8 h]; PY Concretor [64 h]; General Worker [96 h]; Plant and Equipment Operator (Crawler-mounted Mobile Crane) [16 h]; Rigger/Metal Formwork Erector [32 h] | 100% | 100% | 823A_AB | -1 | 70 | m3 | 70 | 70 |
| 823A-ST-SNT18-1060 |  | Curing for base slab | 7d | 2013-11-11 A | 2013-11-18 A | 823A-ST-SNT18-1050 | 100% | 2013-12-03 | 2013-12-09 | 823-7d | General Worker [224 h] | 100% | 100% | 823A_AB | -2 |  |  |  |  |
| 823A-ST-SNT18-1070 |  | Preparation of construction joint for base slab | 1d | 2013-11-11 A | 2013-11-11 A | 823A-ST-SNT18-1050 | 100% | 2013-12-03 | 2013-12-03 | 823-6dPH |  | 100% | 100% | 823A_AB | -1 |  |  |  |  |
| 823A-ST-SNT18-1080 |  | Removal of formwork for base slab | 1d | 2013-11-12 A | 2013-11-12 A | 823A-ST-SNT18-1070 | 100% | 2013-12-04 | 2013-12-04 |  | Crawler Crane/Mobile Crane [8 h]; Carpenter (Formwork - Civil Construction) [64 h]; Plant and Equipment Operator (Crawler-mounted Mobile Crane) [8 h] | 100% | 100% | 823A_AB | -1 |  |  |  |  |
| 823A-ST-SNT18-1100 |  | Curing | 1d | 2013-11-19 A | 2013-11-19 A | 823A-ST-SNT18-1090, 823A-ST-SNT18-1060 | 100% | 2013-12-10 | 2013-12-10 | 823-7d | General Worker [224 h] | 100% | 100% | 823A_AB | -2 |  |  |  |  |
| 823A-ST-SNT18-1090 |  | Infill concrete in between D-wall and base slab | 1d | 2013-12-06 A | 2013-12-06 A | 823A-ST-SNT18-1080 | 100% |  |  |  | Temporary Concrete [204 Cu m]; Concrete 20/20C [204 Cu m]; Crawler Crane/Mobile Crane [8 h]; Concrete Pump [8 h]; PY Concretor [32 h]; Plant and Equipment Operator (Crawler-mounted Mobile Crane) [16 h]; General Worker [64 h]; Rigger/Metal Formwork Erector [16 h] | 100% | 100% | 823A_AB | -1 |  |  |  |  |
| 823A-ST-SNT18-1110 |  | Removal strut S3 | 4d | 2013-12-07 A | 2013-12-11 A | 823A-ST-SNT18-1100 | 100% |  |  |  | Crawler Crane/Mobile Crane [16 h]; Plant and Equipment Operator (Crawler-mounted Mobile Crane) [16 h]; Rigger/Metal Formwork Erector [128 h] | 100% | 100% | 823A_AB | -2 |  |  |  |  |
| 823A-ST-SNT18-1120 |  | Erect internal formwork & Falsework for wall and roof | 4d | 2013-12-16 A | 2013-12-19 A | 823A-ST-EP-L2-1080, 823A-ST-SNT18-1110 | 100% | 2014-01-25 | 2014-01-29 |  | Crawler Crane/Mobile Crane [48 h]; Plant and Equipment Operator (Crawler-mounted Mobile Crane) [48 h]; Carpenter (Formwork - Civil Construction) [384 h]; Rigger/Metal Formwork Erector [192 h] | 100% | 100% | 823A_AB | -6 |  |  |  |  |
| 823A-ST-SNT18-1130 |  | Rebar fixing for wall and roof | 3d | 2013-12-20 A | 2014-01-08 A | 823A-ST-SNT18-1120 | 100% | 2014-01-30 | 2014-02-05 |  | Reinforcement [67234 kg]; Crawler Crane/Mobile Crane [32 h]; Bar Bender & Fixer [512 h]; Plant and Equipment Operator (Crawler-mounted Mobile Crane) [32 h] | 100% | 100% | 823A_AB | -6 |  |  |  |  |
| 823A-ST-SNT18-1140 |  | Erect external formwork for wall and roof | 2d | 2014-01-09 A | 2014-01-10 A | 823A-ST-SNT18-1130 | 100% | 2014-02-20 | 2014-02-21 |  | Crawler Crane/Mobile Crane [16 h]; Plant and Equipment Operator (Crawler-mounted Mobile Crane) [16 h]; Carpenter (Formwork - Civil Construction) [192 h] | 100% | 100% | 823A_AB | -6 |  |  |  |  |
| 823A-ST-SNT18-1150 |  | Concreting for wall and roof (200m3) | 1d | 2014-01-11 A | 2014-01-11 A | 823A-ST-SNT18-1140 | 100% | 2014-02-22 | 2014-02-22 |  | Concrete Pump [8 h]; Plant and Equipment Operator (Crawler-mounted Mobile Crane) [16 h]; PY Concretor [64 h]; General Worker [96 h]; Rigger/Metal Formwork Erector [32 h]; Permanent Concrete [200 Cu m]; Concrete 45/20A [200 Cu m]; Crawler Crane/Mobile Crane [8 h] | 100% | 100% | 823A_AB | -6 | 200 | m3 | 200 | 200 |
| 823A-ST-SNT18-1160 |  | Curing for wall and roof | 10d | 2014-01-13 A | 2014-01-23 A | 823A-ST-SNT18-1150 | 100% | 2014-02-23 | 2014-03-04 | 823-7d | General Worker [224 h] | 100% | 100% | 823A_AB | -7 |  |  |  |  |
| 823A-ST-SNT18-1170 |  | Preparation of construction joint for wall and roof | 1d | 2014-01-14 A | 2014-01-14 A | 823A-ST-SNT18-1150 | 100% | 2014-02-24 | 2014-02-24 | 823-6dPH |  | 100% | 100% | 823A_AB | -6 |  |  |  |  |
| 823A-ST-SNT18-1180 |  | Removal external and internal formwork for wall | 1d | 2014-01-15 A | 2014-01-15 A | 823A-ST-SNT18-1170 | 100% | 2014-02-25 | 2014-02-25 |  | Crawler Crane/Mobile Crane [16 h]; Plant and Equipment Operator (Crawler-mounted Mobile Crane) [16 h]; Carpenter (Formwork - Civil Construction) [128 h] | 100% | 100% | 823A_AB | -20 |  |  |  |  |
| 823A-ST-SNT18-1190 |  | Removal internal falsework and formwork for roof | 2d | 2014-01-24 A | 2014-01-25 A | 823A-ST-SNT18-1180, 823A-ST-SNT18-1160 | 100% | 2014-03-05 | 2014-03-06 |  | Crawler Crane/Mobile Crane [32 h]; Carpenter (Formwork - Civil Construction) [256 h]; Rigger/Metal Formwork Erector [128 h]; Plant and Equipment Operator (Crawler-mounted Mobile Crane) [32 h] | 100% | 100% | 823A_AB |  |  |  |  |  |
| 823A-ST-SNT18-1200 |  | Side walkway and cable bracket (204m3) | 5d | 2014-05-23 A | 2014-12-02 A | 823A-ST-SNT18-1190, 823A-ST-EP-L1-1120 | 100% | 2014-05-23 | 2014-05-28 |  | Permanent Concrete [204 Cu m]; Concrete 20/20C [204 Cu m]; Crawler Crane/Mobile Crane [40 h]; Concrete Pump [40 h]; Carpenter (Formwork - Civil Construction) [320 h]; PY Concretor [160 h]; General Worker [320 h]; Plant and Equipment Operator (Crawler-mounted Mobile Crane) [80 h]; Rigger/Metal Formwork Erector [160 h] | 100% | 100% | 823A_AB |  | 204 | m3 | 204 | 204 |
|  | 19 | **Bay SN19 (Including Emergency Exit Point)** |  | 2013-09-19 | 2015-03-19 |  |  |  |  |  |  |  |  |  |  |  |  |  |  |
|  | 1 | **Level +10.8mPD** |  | 2013-09-19 | 2014-12-01 |  |  |  |  |  |  |  |  |  |  |  |  |  |  |
| 823A-ST-EP-L1-1010 |  | Placing of waterproof member T-lock & testing for base slab | 1d | 2013-09-19 A | 2013-09-21 A | 823A-ST-SN-ELS-1010 | 100% | 2013-11-09 | 2013-11-09 |  | Skill Labour [64 h] | 100% | 100% | 823A_AB |  |  |  |  |  |
| 823A-ST-EP-L1-1020 |  | Erect external formwork for base slab | 2d | 2013-09-21 A | 2013-09-24 A | 823A-ST-EP-L1-1010 | 100% | 2013-11-11 | 2013-11-12 |  | Crawler Crane/Mobile Crane [8 h]; Carpenter (Formwork - Civil Construction) [96 h]; Plant and Equipment Operator (Crawler-mounted Mobile Crane) [8 h] | 100% | 100% | 823A_AB |  |  |  |  |  |
| 823A-ST-EP-L1-1030 |  | Rebar fixing for base slab | 2d | 2013-10-02 A | 2013-10-05 A | 823A-ST-EP-L1-1020 | 100% | 2013-12-09 | 2013-12-10 |  | Reinforcement [68142 kg]; Crawler Crane/Mobile Crane [16 h]; Plant and Equipment Operator (Crawler-mounted Mobile Crane) [16 h]; Bar Bender & Fixer [256 h] | 100% | 100% | 823A_AB |  |  |  |  |  |
| 823A-ST-EP-L1-1040 |  | Erect internal kicker formwork for base slab | 2d | 2013-10-07 A | 2013-10-10 A | 823A-ST-EP-L1-1030 | 100% | 2013-12-11 | 2013-12-12 |  | Crawler Crane/Mobile Crane [16 h]; Plant and Equipment Operator (Crawler-mounted Mobile Crane) [96 h]; Carpenter (Formwork - Civil Construction) [192 h] | 100% | 100% | 823A_AB |  |  |  |  |  |
| 823A-ST-EP-L1-1050 |  | Concreting for base slab (30m3) | 1d | 2013-10-11 A | 2013-10-11 A | 823A-ST-EP-L1-1045 | 100% | 2013-12-18 | 2013-12-18 |  | Permanent Concrete [450 Cu m]; Concrete 45/20A [31 Cu m]; Crawler Crane/Mobile Crane [8 h]; Concrete Pump [8 h]; PY Concretor [64 h]; General Worker [96 h]; Plant and Equipment Operator (Crawler-mounted Mobile Crane) [16 h]; Rigger/Metal Formwork Erector [32 h] | 100% | 100% | 823A_AB |  | 30 | m3 | 30 | 30 |
| 823A-ST-EP-L1-1060 |  | Curing for base slab | 7d | 2013-10-12 A | 2013-10-19 A | 823A-ST-EP-L1-1050 | 100% | 2013-12-13 | 2013-12-19 | 823-7d | General Worker [224 h] | 100% | 100% | 823A_AB |  |  |  |  |  |
| 823A-ST-EP-L1-1070 |  | Preparation of construction joint for base slab | 1d | 2013-10-12 A | 2013-10-12 A | 823A-ST-EP-L1-1050 | 100% | 2013-12-13 | 2013-12-13 | 823-6dPH |  | 100% | 100% | 823A_AB |  |  |  |  |  |
| 823A-ST-EP-L1-1080 |  | Removal of formwork for base slab | 1d | 2013-10-15 A | 2013-10-15 A | 823A-ST-EP-L1-1070 | 100% | 2013-12-14 | 2013-12-14 |  | Crawler Crane/Mobile Crane [8 h]; Carpenter (Formwork - Civil Construction) [64 h]; Plant and Equipment Operator (Crawler-mounted Mobile Crane) [8 h] | 100% | 100% | 823A_AB |  |  |  |  |  |
| 823A-ST-EP-L1-1090 |  | Infill concrete in between D-wall and base slab | 1d | 2013-12-06 A | 2013-12-06 A | 823A-ST-EP-L1-1080 | 100% |  |  |  | Rigger/Metal Formwork Erector [16 h]; General Worker [64 h]; Temporary Concrete [204 Cu m]; Concrete 20/20C [204 Cu m]; Crawler Crane/Mobile Crane [8 h]; Concrete Pump [8 h]; PY Concretor [32 h]; Plant and Equipment Operator (Crawler-mounted Mobile Crane) [16 h] | 100% | 100% | 823A_AB | -6 |  |  |  |  |
| 823A-ST-EP-L1-1095 |  | Mass concrete at level +12.0mPD | 2d | 2013-12-07 A | 2013-12-09 A | 823A-ST-EP-L1-1090 | 100% |  |  |  | Concrete Pump [56 h]; Permanent Concrete [40 Cu m]; Concrete 20/20C [40 Cu m]; Plant and Equipment Operator (Crawler-mounted Mobile Crane) [56 h]; Rigger/Metal Formwork Erector [112 h]; PY Concretor [112 h]; General Worker [224 h] | 100% | 100% | 823A_AB | -6 |  |  |  |  |
| 823A-ST-EP-L1-1100 |  | Curing | 1d | 2013-12-10 A | 2013-12-10 A | 823A-ST-EP-L1-1060, 823A-ST-EP-L1-1095 | 100% |  |  | 823-7d | General Worker [224 h] | 100% | 100% | 823A_AB | -6 |  |  |  |  |
| 823A-ST-EP-L1-1110 |  | Removal strut S3 | 4d | 2013-12-11 A | 2013-12-14 A | 823A-ST-EP-L1-1100 | 100% |  |  |  | Crawler Crane/Mobile Crane [16 h]; Plant and Equipment Operator (Crawler-mounted Mobile Crane) [16 h]; Rigger/Metal Formwork Erector [128 h] | 100% | 100% | 823A_AB | -5 |  |  |  |  |
| 823A-ST-EP-L1-1045 |  | Staircase construction (+12.0mPD to +14.706mPD) | 4d | 2014-01-02 A | 2014-01-06 A | 823A-ST-EP-L1-1040 | 100% | 2014-02-04 | 2014-02-07 |  | Crawler Crane/Mobile Crane [40 h]; Reinforcement [3029 kg]; Permanent Concrete [20 Cu m]; Concrete 45/20A [20 Cu m]; Plant and Equipment Operator (Crawler-mounted Mobile Crane) [40 h]; Rigger/Metal Formwork Erector [80 h]; Bar Bender & Fixer [160 h]; PY Concretor [80 h]; General Worker [160 h]; Carpenter (Formwork - Civil Construction) [160 h] | 100% | 100% | 823A_AB | -5 | 20 | m3 | 20 | 20 |
| 823A-ST-EP-L1-1120 |  | Side walkway and cable bracket (204m3) | 5d | 2014-05-17 A | 2014-12-01 A | 823A-ST-EP-L2-1080, 823A-ST-SNT16-1190 | 100% | 2014-05-17 | 2014-05-22 |  | Permanent Concrete [204 Cu m]; Concrete 20/20C [204 Cu m]; Crawler Crane/Mobile Crane [40 h]; Concrete Pump [40 h]; Carpenter (Formwork - Civil Construction) [320 h]; PY Concretor [160 h]; General Worker [320 h]; Plant and Equipment Operator (Crawler-mounted Mobile Crane) [80 h]; Rigger/Metal Formwork Erector [160 h] | 100% | 100% | 823A_AB |  | 204 | m3 | 204 | 204 |

| ID | WBS | Activity | Duration | Start | Finish | Predecessors | Complete | Planned start | Planned finish | Calendar | Resources | TIme Gain/Loss | % Planned | % Actual | 823A_As-built | Actual Up to Date | UNITS | Total Quantity | Planned Up to Date |
| --- | --- | --- | --- | --- | --- | --- | --- | --- | --- | --- | --- | --- | --- | --- | --- | --- | --- | --- | --- |
|  | 2 | **Level +21.0mPD** |  | 2014-01-02 | 2014-06-20 |  |  |  |  |  |  |  |  |  |  |  |  |  |  |
| 823A-ST-EP-L2-1010 |  | Erect working platform to +21.0mPD | 4d | 2014-01-02 A | 2014-01-06 A | 823A-ST-EP-L1-1110 | 100% | 2014-01-07 | 2014-01-10 |  | Crawler Crane/Mobile Crane [48 h]; Plant and Equipment Operator (Crawler-mounted Mobile Crane) [48 h]; Carpenter (Formwork - Civil Construction) [384 h]; Rigger/Metal Formwork Erector [192 h] | -5 | 100% | 100% | 823A_AB |  |  |  |  |
| 823A-ST-EP-L2-1020 |  | Rebar fixing for wall and roof | 3d | 2014-01-07 A | 2014-01-09 A | 823A-ST-EP-L2-1010 | 100% | 2014-01-11 | 2014-01-14 |  | Reinforcement [67234 kg]; Crawler Crane/Mobile Crane [32 h]; Bar Bender & Fixer [512 h]; Plant and Equipment Operator (Crawler-mounted Mobile Crane) [32 h] | -5 | 100% | 100% | 823A_AB |  |  |  |  |
| 823A-ST-EP-L2-1030 |  | Erect external formwork for wall and roof | 2d | 2014-01-08 A | 2014-01-09 A | 823A-ST-EP-L2-1027 | 100% | 2014-03-15 | 2014-03-17 |  | Crawler Crane/Mobile Crane [16 h]; Plant and Equipment Operator (Crawler-mounted Mobile Crane) [16 h]; Carpenter (Formwork - Civil Construction) [192 h] | -5 | 100% | 100% | 823A_AB |  |  |  |  |
| 823A-ST-EP-L2-1040 |  | Concreting for wall and roof (31m3) | 1d | 2014-01-10 A | 2014-01-10 A | 823A-ST-EP-L2-1030 | 100% | 2014-02-04 | 2014-02-04 |  | Permanent Concrete [31 Cu m]; Concrete 45/20A [31 Cu m]; Crawler Crane/Mobile Crane [8 h]; Concrete Pump [8 h]; Plant and Equipment Operator (Crawler-mounted Mobile Crane) [16 h]; PY Concretor [64 h]; General Worker [96 h]; Rigger/Metal Formwork Erector [32 h] | -5 | 100% | 100% | 823A_AB | 31 | m3 | 31 | 31 |
| 823A-ST-EP-L2-1050 |  | Curing for wall and roof | 10d | 2014-01-11 A | 2014-01-22 A | 823A-ST-EP-L2-1040 | 100% | 2014-02-05 | 2014-02-14 | 823-7d | General Worker [224 h] | -7 | 100% | 100% | 823A_AB |  |  |  |  |
| 823A-ST-EP-L2-1060 |  | Preparation of construction joint for wall and roof | 1d | 2014-01-11 A | 2014-01-11 A | 823A-ST-EP-L2-1040 | 100% | 2014-02-05 | 2014-02-05 | 823-6dPH |  | -5 | 100% | 100% | 823A_AB |  |  |  |  |
| 823A-ST-EP-L2-1070 |  | Removal external and internal formwork for wall | 2d | 2014-01-13 A | 2014-01-14 A | 823A-ST-EP-L2-1060 | 100% | 2014-02-06 | 2014-02-07 |  | Crawler Crane/Mobile Crane [16 h]; Carpenter (Formwork - Civil Construction) [128 h]; Plant and Equipment Operator (Crawler-mounted Mobile Crane) [16 h] | -5 | 100% | 100% | 823A_AB |  |  |  |  |
| 823A-ST-EP-L2-1080 |  | Removal internal falsework and formwork for roof | 1d | 2014-01-23 A | 2014-01-23 A | 823A-ST-EP-L2-1070, 823A-ST-EP-L2-1050 | 100% | 2014-02-15 | 2014-02-15 |  | Crawler Crane/Mobile Crane [32 h]; Carpenter (Formwork - Civil Construction) [256 h]; Plant and Equipment Operator (Crawler-mounted Mobile Crane) [32 h]; Rigger/Metal Formwork Erector [128 h] | -6 | 100% | 100% | 823A_AB |  |  |  |  |
| 823A-ST-EP-L2-1025 |  | Staircase construction (+14.706mPD to +16.956mPD) (20m3) | 4d | 2014-05-02 A | 2014-06-04 A | 823A-ST-EP-L2-1020 | 100% | 2014-05-02 | 2014-05-07 |  | Crawler Crane/Mobile Crane [40 h]; Reinforcement [3029 kg]; Permanent Concrete [20 Cu m]; Concrete 45/20A [20 Cu m]; Plant and Equipment Operator (Crawler-mounted Mobile Crane) [40 h]; Rigger/Metal Formwork Erector [80 h]; Bar Bender & Fixer [160 h]; PY Concretor [80 h]; Carpenter (Formwork - Civil Construction) [160 h]; General Worker [160 h] | -5 | 100% | 100% | 823A_AB | 20 | m3 | 20 | 20 |
| 823A-ST-EP-L2-1026 |  | Staircase construction (+16.956mPD to +19.206mPD) (20m3) | 4d | 2014-06-12 A | 2014-06-16 A | 823A-ST-EP-L2-1025 | 100% | 2014-06-05 | 2014-06-09 |  | Crawler Crane/Mobile Crane [40 h]; Reinforcement [3029 kg]; Permanent Concrete [20 Cu m]; Concrete 45/20A [20 Cu m]; Plant and Equipment Operator (Crawler-mounted Mobile Crane) [40 h]; Rigger/Metal Formwork Erector [80 h]; PY Concretor [80 h]; Carpenter (Formwork - Civil Construction) [160 h]; General Worker [160 h]; Bar Bender & Fixer [160 h] | -5 | 100% | 100% | 823A_AB | 20 | m3 | 20 | 20 |
| 823A-ST-EP-L2-1027 |  | Staircase construction (+19.206mPD to +21.456mPD) (20m3) | 4d | 2014-06-17 A | 2014-06-20 A | 823A-ST-EP-L2-1026 | 100% | 2014-06-10 | 2014-06-13 |  | Crawler Crane/Mobile Crane [40 h]; Reinforcement [3029 kg]; Permanent Concrete [20 Cu m]; Concrete 45/20A [20 Cu m]; Plant and Equipment Operator (Crawler-mounted Mobile Crane) [40 h]; Rigger/Metal Formwork Erector [80 h]; Bar Bender & Fixer [160 h]; PY Concretor [80 h]; General Worker [160 h]; Carpenter (Formwork - Civil Construction) [160 h] | -5 | 100% | 100% | 823A_AB | 20 | m3 | 20 | 20 |
|  | 3 | **Level +24.0mPD** |  | 2014-03-03 | 2014-07-03 |  |  |  |  |  |  |  |  |  |  |  |  |  |  |
| 823A-ST-EP-L3-1005 |  | Removal strut S2 @ SN 19 | 4d | 2014-03-03 A | 2014-03-06 A | 823A-ST-EP-L2-1080, 823A-ST-SNT-BF4-1030 | 100% | 2014-04-02 | 2014-04-07 | 823-6dPH |  |  | 100% | 100% | 823A_AB |  |  |  |  |
| 823A-ST-EP-L3-1010 |  | Erect working platform to +24.0mPD | 4d | 2014-03-07 A | 2014-03-11 A | 823A-ST-EP-L3-1005 | 100% | 2014-04-08 | 2014-04-11 |  | Crawler Crane/Mobile Crane [32 h]; Plant and Equipment Operator (Crawler-mounted Mobile Crane) [32 h]; Rigger/Metal Formwork Erector [128 h] |  | 100% | 100% | 823A_AB |  |  |  |  |
| 823A-ST-EP-L3-1020 |  | Erect internal formwork below strut S1 | 2d | 2014-03-12 A | 2014-03-13 A | 823A-ST-EP-L3-1010 | 100% | 2014-04-12 | 2014-04-14 |  | Crawler Crane/Mobile Crane [16 h]; Plant and Equipment Operator (Crawler-mounted Mobile Crane) [16 h]; Carpenter (Formwork - Civil Construction) [96 h] |  | 100% | 100% | 823A_AB |  |  |  |  |
| 823A-ST-EP-L3-1030 |  | Rebar fixing (External Wall & Internal Wall) | 2d | 2014-03-14 A | 2014-04-01 A | 823A-ST-EP-L3-1025 | 100% | 2014-04-23 | 2014-04-24 |  | Crawler Crane/Mobile Crane [16 h]; Reinforcement [67991 kg]; Plant and Equipment Operator (Crawler-mounted Mobile Crane) [16 h]; Bar Bender & Fixer [96 h] |  | 100% | 100% | 823A_AB |  |  |  |  |
| 823A-ST-EP-L3-1040 |  | Erect external wall & internal wall formwork | 2d | 2014-04-02 A | 2014-04-03 A | 823A-ST-EP-L3-1030 | 100% | 2014-05-13 | 2014-05-14 |  | Crawler Crane/Mobile Crane [16 h]; Plant and Equipment Operator (Crawler-mounted Mobile Crane) [16 h]; Rigger/Metal Formwork Erector [64 h]; Carpenter (Formwork - Civil Construction) [96 h] |  | 100% | 100% | 823A_AB |  |  |  |  |
| 823A-ST-EP-L3-1050 |  | Concreting (External Wall & Internal Wall) (264m3) | 1d | 2014-04-04 A | 2014-04-04 A | 823A-ST-EP-L3-1040 | 100% | 2014-05-15 | 2014-05-15 |  | Crawler Crane/Mobile Crane [8 h]; Concrete Pump [8 h]; Permanent Concrete [264 Cu m]; Concrete 45/20A [264 Cu m]; Plant and Equipment Operator (Crawler-mounted Mobile Crane) [16 h]; Rigger/Metal Formwork Erector [32 h]; PY Concretor [64 h]; General Worker [96 h] |  | 100% | 100% | 823A_AB | 264 | m3 | 246 | 264 |
| 823A-ST-EP-L3-1060 |  | Curing (External Wall & Internal Wall) | 7d | 2014-04-07 A | 2014-04-11 A | 823A-ST-EP-L3-1050 | 100% | 2014-05-16 | 2014-05-22 | 823-7d | General Worker [112 h] |  | 100% | 100% | 823A_AB |  |  |  |  |
| 823A-ST-EP-L3-1070 |  | Removal formwork (External Wall & Internal Wall) | 2d | 2014-04-09 A | 2014-04-10 A | 823A-ST-EP-L3-1050 FS+2d | 100% | 2014-05-19 | 2014-05-20 |  | Crawler Crane/Mobile Crane [16 h]; Plant and Equipment Operator (Crawler-mounted Mobile Crane) [16 h]; Carpenter (Formwork - Civil Construction) [96 h] |  | 100% | 100% | 823A_AB |  |  |  |  |
| 823A-ST-EP-L3-1025 |  | Staircase construction (+21.456mPD to +23.706mPD) (20m3) | 4d | 2014-06-16 A | 2014-07-03 A | 823A-ST-EP-L3-1020 | 100% | 2014-06-14 | 2014-06-18 |  | Crawler Crane/Mobile Crane [40 h]; Reinforcement [3029 kg]; Permanent Concrete [20 Cu m]; Concrete 45/20A [20 Cu m]; Plant and Equipment Operator (Crawler-mounted Mobile Crane) [40 h]; Bar Bender & Fixer [160 h]; PY Concretor [80 h]; Carpenter (Formwork - Civil Construction) [160 h]; General Worker [160 h]; Rigger/Metal Formwork Erector [80 h] |  | 100% | 100% | 823A_AB | 20 | m3 | 20 | 20 |
| 823A-ST-EP-L3-1080 |  | Waterproofing | 3d | 2014-06-19 A | 2014-06-21 A | 823A-ST-EP-L3-1070 | 100% |  |  | 823-6dPH |  |  | 100% | 100% | 823A_AB |  |  |  |  |
| 823A-ST-EP-L3-1090 |  | Backfilling | 4d | 2014-06-23 A | 2014-06-26 A | 823A-ST-EP-L3-1080 | 100% |  |  | 823-6dPH |  |  | 100% | 100% | 823A_AB |  |  |  |  |

| ID | WBS | Activity | Duration | Start | Finish | Predecessors | Complete | Planned start | Planned finish | Calendar | Resources | % Planned | % Actual | 823A_As-built | Actual Up to Date | UNITS | Total Quantity | Planned Up to Date |
| --- | --- | --- | --- | --- | --- | --- | --- | --- | --- | --- | --- | --- | --- | --- | --- | --- | --- | --- |
|  | 4 | **Level +30.406mPD** |  | 2014-06-03 | 2014-09-29 |  |  |  |  |  |  |  |  |  |  |  |  |  |
| 823A-ST-EP-L4-1005 |  | Removal strut S1 @ SN 19 | 4d | 2014-06-03 A | 2014-06-04 A | 823A-ST-EP-L3-1070 | 100% | 2014-06-19 | 2014-06-23 | 823-6dPH |  | 100% | 100% | 823A_AB |  |  |  |  |
| 823A-ST-EP-L4-1010 |  | Erect working platform to +30.406mPD | 4d | 2014-06-03 A | 2014-06-04 A | 823A-ST-EP-L3-1070, 823A-ST-EP-L3-1060, 823A-ST-EP-L4-1005 | 100% | 2014-06-24 | 2014-06-27 |  | Plant and Equipment Operator (Crawler-mounted Mobile Crane) [16 h]; Rigger/Metal Formwork Erector [64 h]; Crawler Crane/Mobile Crane [16 h] | 100% | 100% | 823A_AB |  |  |  |  |
| 823A-ST-EP-L4-1020 |  | Erect internal formwork | 1d | 2014-06-04 A | 2014-06-04 A | 823A-ST-EP-L4-1010 | 100% | 2014-06-28 | 2014-06-28 |  | Plant and Equipment Operator (Crawler-mounted Mobile Crane) [8 h]; Carpenter (Formwork - Civil Construction) [48 h]; Crawler Crane/Mobile Crane [8 h] | 100% | 100% | 823A_AB |  |  |  |  |
| 823A-ST-EP-L4-1030 |  | Rebar fixing (External Wall & Internal Wall) | 2d | 2014-06-05 A | 2014-06-06 A | 823A-ST-EP-L4-1020 | 100% | 2014-06-30 | 2014-07-02 |  | Crawler Crane/Mobile Crane [16 h]; Reinforcement [10600 kg]; Plant and Equipment Operator (Crawler-mounted Mobile Crane) [16 h]; Bar Bender & Fixer [96 h] | 100% | 100% | 823A_AB |  |  |  |  |
| 823A-ST-EP-L4-1040 |  | Erect external formwork (External Wall & Internal Wall) | 1d | 2014-06-07 A | 2014-06-07 A | 823A-ST-EP-L4-1030 | 100% | 2014-07-03 | 2014-07-03 |  | Crawler Crane/Mobile Crane [8 h]; Plant and Equipment Operator (Crawler-mounted Mobile Crane) [8 h]; Carpenter (Formwork - Civil Construction) [48 h] | 100% | 100% | 823A_AB |  |  |  |  |
| 823A-ST-EP-L4-1050 |  | Concreting (External Wall & Internal Wall) (128m3) | 1d | 2014-06-07 A | 2014-06-07 A | 823A-ST-EP-L4-1040 | 100% | 2014-07-04 | 2014-07-04 |  | Crawler Crane/Mobile Crane [8 h]; Permanent Concrete [128 Cu m]; Concrete 45/20A [128 Cu m]; Plant and Equipment Operator (Crawler-mounted Mobile Crane) [8 h]; Rigger/Metal Formwork Erector [16 h]; PY Concretor [16 h]; General Worker [32 h] | 100% | 100% | 823A_AB | 128 | m3 | 128 | 128 |
| 823A-ST-EP-L4-1060 |  | Curing (External Wall & Internal Wall) | 7d | 2014-06-09 A | 2014-06-14 A | 823A-ST-EP-L4-1050 | 100% | 2014-07-05 | 2014-07-11 | 823-7d | General Worker [112 h] | 100% | 100% | 823A_AB |  |  |  |  |
| 823A-ST-EP-L4-1070 |  | Removal formwork (External Wall & Internal Wall) | 1d | 2014-06-16 A | 2014-06-16 A | 823A-ST-EP-L4-1050 FS+2d | 100% | 2014-07-08 | 2014-07-08 |  | Crawler Crane/Mobile Crane [8 h]; Plant and Equipment Operator (Crawler-mounted Mobile Crane) [8 h]; Carpenter (Formwork - Civil Construction) [48 h] | 100% | 100% | 823A_AB |  |  |  |  |
| 823A-ST-EP-L4-1071 |  | Waterproofing | 3d | 2014-06-17 A | 2014-06-19 A | 823A-ST-EP-L4-1070 | 100% | 2014-07-09 | 2014-07-11 | 823-6dPH |  | 100% | 100% | 823A_AB |  |  |  |  |
| 823A-ST-EP-L4-1072 |  | Backfilling | 4d | 2014-06-20 A | 2014-06-24 A | 823A-ST-EP-L4-1071 | 100% | 2014-07-12 | 2014-07-16 | 823-6dPH |  | 100% | 100% | 823A_AB |  |  |  |  |
| 823A-ST-EP-L4-1080 |  | Erect falsework and soffit formwork +30.206mPD | 2d | 2014-06-25 A | 2014-06-26 A | 823A-ST-EP-L4-1072 | 100% | 2014-07-17 | 2014-07-18 |  | Crawler Crane/Mobile Crane [16 h]; Plant and Equipment Operator (Crawler-mounted Mobile Crane) [16 h]; Rigger/Metal Formwork Erector [64 h] | 100% | 100% | 823A_AB |  |  |  |  |
| 823A-ST-EP-L4-1085 |  | Staircase construction (+21.456mPD to +25.956mPD) (20m3) | 4d | 2014-06-27 A | 2014-07-04 A | 823A-ST-EP-L4-1080 | 100% | 2014-07-19 | 2014-07-23 |  | Crawler Crane/Mobile Crane [40 h]; Reinforcement [3029 kg]; Permanent Concrete [20 Cu m]; Concrete 40/20A [20 Cu m]; Plant and Equipment Operator (Crawler-mounted Mobile Crane) [40 h]; Rigger/Metal Formwork Erector [80 h]; Bar Bender & Fixer [160 h]; PY Concretor [80 h]; Carpenter (Formwork - Civil Construction) [160 h]; General Worker [160 h] | 100% | 100% | 823A_AB | 20 | m3 | 20 | 20 |
| 823A-ST-EP-L4-1086 |  | Staircase construction (+25.956mPD to +27.606mPD) (20m3) | 4d | 2014-07-05 A | 2014-08-16 A | 823A-ST-EP-L4-1085 | 100% | 2014-07-05 | 2014-07-09 |  | Carpenter (Formwork - Civil Construction) [160 h]; General Worker [160 h]; Permanent Concrete [20 Cu m]; Concrete 45/20A [20 Cu m]; Crawler Crane/Mobile Crane [40 h]; Reinforcement [3029 kg]; Plant and Equipment Operator (Crawler-mounted Mobile Crane) [40 h]; Rigger/Metal Formwork Erector [80 h]; Bar Bender & Fixer [160 h]; PY Concretor [80 h] | 100% | 100% | 823A_AB | 20 | m3 | 20 | 20 |
| 823A-ST-EP-L4-1090 |  | Rebar fixing (Beam, Floor Slab and Staircase) | 1d | 2014-07-10 A | 2014-09-01 A | 823A-ST-EP-L4-1086 | 100% | 2014-07-10 | 2014-07-10 |  | Crawler Crane/Mobile Crane [8 h]; Reinforcement [30286 kg]; Plant and Equipment Operator (Crawler-mounted Mobile Crane) [8 h]; Bar Bender & Fixer [48 h] | 100% | 100% | 823A_AB |  |  |  |  |
| 823A-ST-EP-L4-1100 |  | Concreting (Beam, Floor Slab and Staircase) (31m3) | 1d | 2014-07-11 A | 2014-09-20 A | 823A-ST-EP-L4-1090 | 100% | 2014-07-11 | 2014-07-11 |  | Crawler Crane/Mobile Crane [8 h]; Permanent Concrete [31 Cu m]; Concrete 45/20A [31 Cu m]; Rigger/Metal Formwork Erector [16 h]; PY Concretor [16 h]; General Worker [16 h]; Plant and Equipment Operator (Crawler-mounted Mobile Crane) [8 h] | 100% | 100% | 823A_AB | 31 | m3 | 31 | 31 |
| 823A-ST-EP-L4-1110 |  | Curing (Beam, Floor Slab and Staircase) | 7d | 2014-09-22 A | 2014-09-29 A | 823A-ST-EP-L4-1060, 823A-ST-EP-L4-1100 | 100% | 2014-09-03 | 2014-09-09 | 823-7d | General Worker [112 h] | 100% | 100% | 823A_AB |  |  |  |  |
|  | 5 | **Level +32.856mPD** |  | 2014-09-22 | 2014-10-22 |  |  |  |  |  |  |  |  |  |  |  |  |  |
| 823A-ST-EP-L5-1010 |  | Erect working platform to +33.576mPD | 4d | 2014-09-22 A | 2014-09-25 A | 823A-ST-EP-L4-1100 | 100% | 2014-09-03 | 2014-09-06 |  | Crawler Crane/Mobile Crane [8 h]; Plant and Equipment Operator (Crawler-mounted Mobile Crane) [8 h]; Rigger/Metal Formwork Erector [32 h] | 100% | 100% | 823A_AB |  |  |  |  |
| 823A-ST-EP-L5-1020 |  | Erect external formwork (External Wall) | 2d | 2014-09-26 A | 2014-09-27 A | 823A-ST-EP-L5-1010 | 100% | 2014-09-08 | 2014-09-10 |  | Crawler Crane/Mobile Crane [8 h]; Plant and Equipment Operator (Crawler-mounted Mobile Crane) [8 h]; Carpenter (Formwork - Civil Construction) [48 h] | 100% | 100% | 823A_AB |  |  |  |  |
| 823A-ST-EP-L5-1030 |  | Rebar fixing (External Wall) | 2d | 2014-09-29 A | 2014-10-03 A | 823A-ST-EP-L5-1020, 823A-ST-EP-L4-1110 | 100% | 2014-09-11 | 2014-09-12 |  | Crawler Crane/Mobile Crane [8 h]; Reinforcement [10600 kg]; Bar Bender & Fixer [48 h]; Plant and Equipment Operator (Crawler-mounted Mobile Crane) [8 h] | 100% | 100% | 823A_AB |  |  |  |  |
| 823A-ST-EP-L5-1040 |  | Erect internal formwork (External Wall) | 1d | 2014-10-04 A | 2014-10-04 A | 823A-ST-EP-L5-1030 | 100% |  |  |  | Crawler Crane/Mobile Crane [8 h]; Plant and Equipment Operator (Crawler-mounted Mobile Crane) [8 h]; Carpenter (Formwork - Civil Construction) [48 h] | 100% | 100% | 823A_AB |  |  |  |  |
| 823A-ST-EP-L5-1050 |  | Concreting (External Wall) (49m3) | 1d | 2014-10-06 A | 2014-10-06 A | 823A-ST-EP-L5-1040 | 100% |  |  |  | Crawler Crane/Mobile Crane [8 h]; Permanent Concrete [49 Cu m]; Concrete 45/20A [49 Cu m]; Rigger/Metal Formwork Erector [16 h]; PY Concretor [16 h]; General Worker [32 h]; Plant and Equipment Operator (Crawler-mounted Mobile Crane) [8 h] | 100% | 100% | 823A_AB | 49 | m3 | 49 | 49 |
| 823A-ST-EP-L5-1060 |  | Curing (External Wall) | 7d | 2014-10-07 A | 2014-10-13 A | 823A-ST-EP-L5-1050 | 100% |  |  | 823-7d | General Worker [112 h] | 100% | 100% | 823A_AB |  |  |  |  |
| 823A-ST-EP-L5-1070 |  | Removal formwork (External Wall) | 1d | 2014-10-09 A | 2014-10-09 A | 823A-ST-EP-L5-1050 FS+2d | 100% |  |  |  | Crawler Crane/Mobile Crane [8 h]; Plant and Equipment Operator (Crawler-mounted Mobile Crane) [8 h]; Carpenter (Formwork - Civil Construction) [48 h] | 100% | 100% | 823A_AB |  |  |  |  |
| 823A-ST-EP-L5-1080 |  | Erect falsework and soffit formwork +32.656 | 2d | 2014-10-10 A | 2014-10-11 A | 823A-ST-EP-L5-1070 | 100% |  |  |  | Plant and Equipment Operator (Crawler-mounted Mobile Crane) [16 h]; Rigger/Metal Formwork Erector [64 h]; Crawler Crane/Mobile Crane [16 h] | 100% | 100% | 823A_AB |  |  |  |  |
| 823A-ST-EP-L5-1090 |  | Rebar fixing (Beam & Floor Slab) | 2d | 2014-10-13 A | 2014-10-14 A | 823A-ST-EP-L5-1080 | 100% |  |  |  | Crawler Crane/Mobile Crane [16 h]; Reinforcement [3029 kg]; Plant and Equipment Operator (Crawler-mounted Mobile Crane) [16 h]; Bar Bender & Fixer [96 h] | 100% | 100% | 823A_AB |  |  |  |  |
| 823A-ST-EP-L5-1100 |  | Concreting (Beam & Floor Slab) (31m3) | 1d | 2014-10-15 A | 2014-10-15 A | 823A-ST-EP-L5-1090 | 100% |  |  |  | Crawler Crane/Mobile Crane [8 h]; Permanent Concrete [31 Cu m]; Concrete 45/20A [31 Cu m]; Plant and Equipment Operator (Crawler-mounted Mobile Crane) [8 h]; Rigger/Metal Formwork Erector [16 h]; PY Concretor [16 h]; General Worker [16 h] | 100% | 100% | 823A_AB | 31 | m3 | 31 | 31 |
| 823A-ST-EP-L5-1110 |  | Curing (Beam & Floor Slab) | 7d | 2014-10-16 A | 2014-10-22 A | 823A-ST-EP-L5-1060, 823A-ST-EP-L5-1100 | 100% |  |  | 823-7d | General Worker [112 h] | 100% | 100% | 823A_AB |  |  |  |  |

| ID | WBS | Activity | Duration | Start | Finish | Predecessors | Complete | Planned start | Planned finish | Calendar | Resources | % Planned | % Actual | 823A_As-built | Actual Up to Date | UNITS | Total Quantity | Planned Up to Date | TIme Gain/Loss |
| --- | --- | --- | --- | --- | --- | --- | --- | --- | --- | --- | --- | --- | --- | --- | --- | --- | --- | --- | --- |
|  | 6 | **Level +33.576mPD** |  | 2014-10-16 | 2014-11-04 |  |  |  |  |  |  |  |  |  |  |  |  |  |  |
| 823A-ST-EP-L6-1010 |  | Erect external formwork (Roof Parapet Wall) | 2d | 2014-10-16 A | 2014-10-17 A | 823A-ST-EP-L5-1100 | 100% |  |  |  | Crawler Crane/Mobile Crane [16 h]; Plant and Equipment Operator (Crawler-mounted Mobile Crane) [16 h]; Rigger/Metal Formwork Erector [64 h] | 100% | 100% | 823A_AB |  |  |  |  |  |
| 823A-ST-EP-L6-1020 |  | Rebar fixing (Roof Parapet Wall) | 2d | 2014-10-18 A | 2014-10-20 A | 823A-ST-EP-L6-1010 | 100% |  |  |  | Crawler Crane/Mobile Crane [16 h]; Reinforcement [1211 kg]; Plant and Equipment Operator (Crawler-mounted Mobile Crane) [16 h]; Bar Bender & Fixer [96 h] | 100% | 100% | 823A_AB |  |  |  |  |  |
| 823A-ST-EP-L6-1030 |  | Erect external formwork (Roof Parapet Wall) | 2d | 2014-10-21 A | 2014-10-22 A | 823A-ST-EP-L6-1020 | 100% |  |  |  | Crawler Crane/Mobile Crane [16 h]; Plant and Equipment Operator (Crawler-mounted Mobile Crane) [16 h]; Carpenter (Formwork - Civil Construction) [96 h] | 100% | 100% | 823A_AB |  |  |  |  |  |
| 823A-ST-EP-L6-1040 |  | Concreting (Roof Parapet Wall) (30m3) | 1d | 2014-10-23 A | 2014-10-23 A | 823A-ST-EP-L6-1030, 823A-ST-EP-L5-1110 | 100% |  |  |  | Crawler Crane/Mobile Crane [8 h]; Permanent Concrete [30 Cu m]; Concrete 45/20A [30 Cu m]; Plant and Equipment Operator (Crawler-mounted Mobile Crane) [8 h]; Rigger/Metal Formwork Erector [8 h]; PY Concretor [8 h]; General Worker [16 h] | 100% | 100% | 823A_AB | 30 | m3 | 30 | 30 |  |
| 823A-ST-EP-L6-1050 |  | Curing (Roof Parapet Wall) | 7d | 2014-10-24 A | 2014-10-30 A | 823A-ST-EP-L6-1040 | 100% |  |  | 823-7d | General Worker [112 h] | 100% | 100% | 823A_AB |  |  |  |  |  |
| 823A-ST-EP-L6-1060 |  | Removal formwork (Roof Parapet Wall) | 1d | 2014-10-27 A | 2014-10-27 A | 823A-ST-EP-L6-1040 FS+2d | 100% |  |  |  | Crawler Crane/Mobile Crane [8 h]; Plant and Equipment Operator (Crawler-mounted Mobile Crane) [8 h]; Carpenter (Formwork - Civil Construction) [32 h] | 100% | 100% | 823A_AB |  |  |  |  |  |
| 823A-ST-EP-L6-1070 |  | Removal of falsework and soffit formwork | 4d | 2014-10-31 A | 2014-11-04 A | 823A-ST-EP-L6-1060, 823A-ST-EP-L6-1050 | 100% |  |  |  | Crawler Crane/Mobile Crane [56 h]; Plant and Equipment Operator (Crawler-mounted Mobile Crane) [56 h]; Rigger/Metal Formwork Erector [224 h]; Carpenter (Formwork - Civil Construction) [224 h] | 100% | 100% | 823A_AB |  |  |  |  |  |
|  | 8 | **ABWF Works** |  | 2014-11-05 | 2015-03-19 |  |  |  |  |  |  |  |  |  |  |  |  |  |  |
| 823A-ST-EP-ABWF-1010 |  | Wet trade work | 19d | 2014-11-05 A | 2014-11-26 A | 823A-ST-EP-L6-1070 | 100% |  |  |  | Plasterer [1440 h]; Tiler [1440 h]; General Worker [960 h] | 100% | 100% | 823A_AB |  |  |  |  |  |
| 823A-ST-EP-ABWF-1020 |  | Metal works (Louver, Door, Cat-ladder, Architectural Fins, Handrail, Roof Sliding Hatch and Balustrade, etc) | 14d | 2014-11-27 A | 2015-03-05 A | 823A-ST-EP-ABWF-1010 | 100% | 2014-11-27 | 2014-12-12 |  | Metal Worker [672 h]; Crawler Crane/Mobile Crane [168 h]; Plant and Equipment Operator (Crawler-mounted Mobile Crane) [168 h] | 100% | 100% | 823A_AB |  |  |  |  |  |
| 823A-ST-EP-ABWF-1030 |  | Coat works | 12d | 2015-03-06 A | 2015-03-19 A | 823A-ST-EP-ABWF-1020 | 100% |  |  |  | Painter and Decorator [240 h] | 100% | 100% | 823A_AB |  |  |  |  |  |
|  | 4 | **Backfilling** |  | 2013-03-27 | 2017-02-28 |  |  |  |  |  |  |  |  |  |  |  |  |  |  |
|  | 1 | **Bay SN1 to SN7** |  | 2013-06-26 | 2014-05-03 |  |  |  |  |  |  |  |  |  |  |  |  |  |  |
| 823A-ST-SNT-BF1-1010 |  | Spray waterproofing member & testing (Wall & Roof) | 6d | 2013-06-26 A | 2014-02-04 A | 823A-ST-SNT7-1070, 823A-ST-SNT5-1070 | 100% | 2013-11-29 | 2013-12-05 |  | Skill Labour [80 h] | 100% | 100% | 823A_AB |  |  |  |  | -19 |
| 823A-ST-SNT-BF1-1020 |  | Backfilling between D-wall and 0.5m below S1 14,240m3 soil | 29d | 2014-02-05 A | 2014-02-22 A | 823A-ST-SNT-BF1-1010 FF, 823A-ST-SNT-BF1-1010 | 100% | 2014-02-06 | 2014-03-11 |  | Backhoe [160 h]; Crawler Crane/Mobile Crane [80 h]; Vibration Roller [80 h]; Backfilling Materials [2075 Cu m]; Soil Fill [2075 Cu m]; Plant and Equipment Operator (Crawler-mounted Mobile Crane) [320 h]; General Worker [480 h] | 100% | 100% | 823A_AB | 14240 | m3 | 14240 | 14240 | -1 |
| 823A-ST-SNT-BF1-1030 |  | Removal of S1 | 12d | 2014-02-24 A | 2014-02-28 A | 823A-ST-SNT-BF1-1020 | 100% | 2014-03-12 | 2014-03-25 |  | Crawler Crane/Mobile Crane [32 h]; Plant and Equipment Operator (Crawler-mounted Mobile Crane) [32 h]; Rigger/Metal Formwork Erector [192 h] | 100% | 100% | 823A_AB |  |  |  |  |  |
| 823A-ST-SNT-BF1-1040 |  | Backfilling to original ground level 21,390m3 (approx. +25.0mPD) | 16d | 2014-03-01 A | 2014-05-03 A | 823A-ST-SNT-BF1-1030 | 100% | 2014-03-01 | 2014-03-19 |  | Backhoe [112 h]; Vibration Roller [56 h]; Backfilling Materials [1353 Cu m]; Soil Fill [1353 Cu m]; Plant and Equipment Operator (Crawler-mounted Mobile Crane) [168 h]; General Worker [336 h] | 100% | 100% | 823A_AB | 21390 | m3 | 21390 | 21390 |  |
|  | 2 | **Bay SN8 to SN9** |  | 2013-03-27 | 2014-05-02 |  |  |  |  |  |  |  |  |  |  |  |  |  |  |
| 823A-ST-SNT-BF2-2010 |  | Spray waterproofing member & testing (Wall & Roof) | 4d | 2013-03-27 A | 2013-04-23 A | 823A-ST-SNT9-1070, 823A-ST-SNT8-1070 | 100% | 2013-07-02 | 2013-07-05 |  | Skill Labour [80 h] | 100% | 100% | 823A_AB |  |  |  |  |  |
| 823A-ST-SNT-BF2-2040 |  | Construction of mud pit | 11d | 2013-05-31 A | 2013-06-22 A | 823A-ST-SNT-BF2-2030 | 100% | 2013-07-06 | 2013-07-18 | 823-6dPH |  | 100% | 100% | 823A_AB | 1 | nos | 1 | 1 |  |
| 823A-ST-SNT-BF2-2020 |  | Backfilling backfilling to +20mPD from SN8 to SN9 (Soil: 7,050m3 @ 500m3/day) | 14d | 2013-06-01 A | 2013-06-29 A | 823A-ST-SNT-BF2-2010 FF, 823A-ST-SNT-BF2-2010 | 100% | 2013-07-02 | 2013-07-17 |  | Backhoe [160 h]; Crawler Crane/Mobile Crane [80 h]; Vibration Roller [80 h]; Backfilling Materials [2075 Cu m]; Soil Fill [2075 Cu m]; Plant and Equipment Operator (Crawler-mounted Mobile Crane) [320 h]; General Worker [480 h] | 100% | 100% | 823A_AB | 7050 | m3 | 7050 | 7050 | -66 |
| 823A-ST-SNT-BF2-3000 |  | Backfilling from +20mPD to ground level from SN8 to SN9 (Soil: 5,000m3 @ 500m3/day) | 11d | 2013-07-02 A | 2013-08-10 A | 823A-ST-SNT-BF2-2030 | 100% | 2013-08-06 | 2013-08-17 | 823-6dPH |  | 100% | 100% | 823A_AB |  |  |  |  | -21 |
| 823A-ST-SNT-BF2-2030 |  | Removal of S1 | 4d | 2013-07-13 A | 2013-07-20 A | 823A-ST-SNT-BF2-2020 | 100% | 2013-09-02 | 2013-09-05 |  | Crawler Crane/Mobile Crane [32 h]; Plant and Equipment Operator (Crawler-mounted Mobile Crane) [32 h]; Rigger/Metal Formwork Erector [192 h] | 100% | 100% | 823A_AB |  |  |  |  | -21 |
| 823A-ST-SNT-BF2-1020 |  | Spray waterproofing member & testing (Wall & Roof) | 2d | 2014-02-04 A | 2014-02-05 A | 823A-ST-SNT6-1070 | 100% |  |  |  | Skill Labour [80 h] | 100% | 100% | 823A_AB |  |  |  |  | -19 |
| 823A-ST-SNT-BF2-1030 |  | Backfilling between D-wall and 0.5m below S1 (2075m3) | 7d | 2014-02-06 A | 2014-02-13 A | 823A-ST-SNT-BF2-1020 | 100% |  |  |  | Backhoe [160 h]; Crawler Crane/Mobile Crane [80 h]; Vibration Roller [80 h]; Backfilling Materials [2075 Cu m]; Soil Fill [2075 Cu m]; Plant and Equipment Operator (Crawler-mounted Mobile Crane) [320 h]; General Worker [480 h] | 100% | 100% | 823A_AB | 2075 | m3 | 2075 | 2075 | -19 |
| 823A-ST-SNT-BF2-1040 |  | Removal of S1 | 2d | 2014-02-14 A | 2014-02-15 A | 823A-ST-SNT-BF2-1030 | 100% |  |  |  | Crawler Crane/Mobile Crane [32 h]; Rigger/Metal Formwork Erector [192 h]; Plant and Equipment Operator (Crawler-mounted Mobile Crane) [32 h] | 100% | 100% | 823A_AB |  |  |  |  | -19 |
| 823A-ST-SNT-BF2-1050 |  | Backfilling to original ground level 3,900m3 (approx. +25.0mPD) (1353m3) | 5d | 2014-03-01 A | 2014-05-02 A | 823A-ST-SNT-BF2-1040 | 100% | 2014-03-01 | 2014-03-06 |  | Backhoe [112 h]; Vibration Roller [56 h]; Backfilling Materials [1353 Cu m]; Soil Fill [1353 Cu m]; Plant and Equipment Operator (Crawler-mounted Mobile Crane) [168 h]; General Worker [336 h] | 100% | 100% | 823A_AB | 1353 | m3 | 1353 | 1353 | -19 |

| ID | WBS | Activity | Type | Duration | Start | Finish | Predecessors | Complete | Remaining | Planned start | Planned finish | Total float | Free float | Constraint | Calendar | Resources | % Planned | % Actual | 823A_As-built | Actual Up to Date | UNITS | Total Quantity | Planned Up to Date | TIme Gain/Loss | Time Gain / Loss | (+/-) Weeks |
| --- | --- | --- | --- | --- | --- | --- | --- | --- | --- | --- | --- | --- | --- | --- | --- | --- | --- | --- | --- | --- | --- | --- | --- | --- | --- | --- |
|  | 3 | **Bay SN10 to SN15** |  |  | 2015-07-02 | 2016-04-01 |  |  |  |  |  |  |  |  |  |  |  |  |  |  |  |  |  |  |  |  |
| 823A-ST-SNT-BF3-1010 |  | Spray waterproofing member & testing (Wall & Roof) |  | 6d | 2015-07-02 A | 2015-10-06 A | 823A-ST-SNT11-1180 | 100% |  | 2015-08-07 | 2015-08-13 |  |  |  |  | Skill Labour [80 h] | 100% | 100% | 823A_AB |  |  |  |  |  |  |  |
| 823A-ST-SNT-BF3-1020 |  | Backfilling between D-wall and 0.5m below S2 (180m3) |  | 4d | 2015-07-02 A | 2015-12-24 A | 823A-ST-SNT-BF3-1010 | 100% |  | 2015-08-14 | 2015-08-18 |  |  |  |  | Soil Fill [180 Cu m]; Crawler Crane/Mobile Crane [16 h]; Vibration Roller [16 h]; Backhoe [32 h]; Plant and Equipment Operator (Crawler-mounted Mobile Crane) [64 h]; General Worker [96 h]; Backfilling Materials [180 Cu m] | 100% | 100% | 823A_AB | 180 | m3 | 180 | 180 |  |  |  |
| 823A-ST-SNT-BF3-1030 |  | Placing mass concrete infill between tunnel and D-wall |  | 1d | 2015-12-24 A | 2015-12-24 A | 823A-ST-SNT-BF3-1020 | 100% |  | 2015-12-02 | 2015-12-02 |  |  |  |  | Concrete 20/20C [154 Cu m]; PY Concretor [32 h]; General Worker [48 h]; Plant and Equipment Operator (Crawler-mounted Mobile Crane) [8 h]; Crawler Crane/Mobile Crane [8 h]; Temporary Concrete [154 Cu m] | 100% | 100% | 823A_AB |  |  |  |  |  |  |  |
| 823A-ST-SNT-BF3-1040 |  | Removal of S2 |  | 4d | 2015-12-28 A | 2016-01-04 A | 823A-ST-SNT-BF3-1030 FS+3d | 100% |  | 2015-12-07 | 2015-12-10 |  |  |  |  | Crawler Crane/Mobile Crane [32 h]; Plant and Equipment Operator (Crawler-mounted Mobile Crane) [32 h]; Rigger/Metal Formwork Erector [192 h] | 100% | 100% | 823A_AB |  |  |  |  |  |  |  |
| 823A-ST-SNT-BF3-1050 |  | Spray waterproofing member & testing (Wall & Roof) |  | 4d | 2016-01-05 A | 2016-01-08 A | 823A-ST-SNT-BF3-1040 | 100% |  |  |  |  |  |  |  | Skill Labour [64 h] | 100% | 100% | 823A_AB |  |  |  |  |  |  |  |
| 823A-ST-SNT-BF3-1060 |  | Backfilling to 0.5m below S1 (+24.0mPD) (2480m3 of soil) |  | 5d | 2016-01-09 A | 2016-01-14 A | 823A-ST-SNT-BF3-1050 | 100% |  |  |  |  |  |  |  | Crawler Crane/Mobile Crane [96 h]; Vibration Roller [96 h]; Backhoe [192 h]; Backfilling Materials [2480 Cu m]; Soil Fill [2480 Cu m]; Plant and Equipment Operator (Crawler-mounted Mobile Crane) [384 h]; General Worker [576 h] | 100% | 100% | 823A_AB | 2480 | m3 | 2480 | 2480 |  |  |  |
| 823A-ST-SNT-BF3-1070 |  | Removal strut S1 |  | 4d | 2016-01-15 A | 2016-01-19 A | 823A-ST-SNT-BF3-1060 | 100% |  |  |  |  |  |  |  | Crawler Crane/Mobile Crane [16 h]; Rigger/Metal Formwork Erector [96 h]; Plant and Equipment Operator (Crawler-mounted Mobile Crane) [16 h] | 100% | 100% | 823A_AB |  |  |  |  |  |  |  |
| 823A-ST-SNT-BF3-1080 |  | Spray waterproofing member & testing (Wall & Roof) |  | 4d | 2016-01-20 A | 2016-01-23 A | 823A-ST-SNT-BF3-1070 | 100% |  |  |  |  |  |  |  | General Worker [64 h] | 100% | 100% | 823A_AB |  |  |  |  |  |  |  |
| 823A-ST-SNT-BF3-1090 |  | Backfilling to original ground level (approx. +27.0mPD) (1488 m3 of soil) |  | 5d | 2016-01-25 A | 2016-04-01 A | 823A-ST-SNT-BF3-1080 | 100% |  | 2016-01-25 | 2016-01-29 |  |  |  |  | Backhoe [128 h]; Vibration Roller [64 h]; Backfilling Materials [1488 Cu m]; Soil Fill [1488 Cu m]; Plant and Equipment Operator (Crawler-mounted Mobile Crane) [192 h]; General Worker [384 h] | 100% | 100% | 823A_AB | 1488 | m3 | 1488 | 1488 |  |  |  |
|  | 4 | **Bay SN16 to SN19** |  |  | 2014-04-16 | 2014-06-27 |  |  |  |  |  |  |  |  |  |  |  |  |  |  |  |  |  |  |  |  |
| 823A-ST-SNT-BF4-1010 |  | Spray waterproofing member & testing (Wall & Roof) (SN18-19) |  | 6d | 2014-04-16 A | 2014-04-25 A | 823A-ST-SNT18-1180 | 100% |  |  |  |  |  |  |  | Skill Labour [80 h] | 100% | 100% | 823A_AB |  |  |  |  | -20 |  |  |
| 823A-ST-SNT-BF4-1020 |  | Backfilling between D-wall and 0.5m below S2 (180m3) (SN18-19) |  | 6d | 2014-04-26 A | 2014-05-15 A | 823A-ST-SNT-BF4-1010 | 100% |  | 2014-04-26 | 2014-05-03 |  |  |  |  | Crawler Crane/Mobile Crane [16 h]; Vibration Roller [16 h]; Backhoe [32 h]; Soil Fill [180 Cu m]; Plant and Equipment Operator (Crawler-mounted Mobile Crane) [64 h]; General Worker [96 h]; Backfilling Materials [180 Cu m] | 100% | 100% | 823A_AB |  |  |  |  |  |  |  |
| 823A-ST-SNT-BF4-1030 |  | Placing mass concrete infill between tunnel and D-wall (SN18-19) |  | 1d | 2014-05-16 A | 2014-05-16 A | 823A-ST-SNT-BF4-1020 | 100% |  | 2014-05-20 | 2014-05-20 |  |  |  |  | Crawler Crane/Mobile Crane [8 h]; Temporary Concrete [154 Cu m]; Concrete 20/20C [154 Cu m]; Plant and Equipment Operator (Crawler-mounted Mobile Crane) [8 h]; PY Concretor [32 h]; General Worker [48 h] | 100% | 100% | 823A_AB |  |  |  |  |  |  |  |
| 823A-ST-SNT-BF4-1040 |  | Removal of S2 (SN16-18) |  | 4d | 2014-05-17 A | 2014-05-21 A | 823A-ST-EP-L3-1090 | 100% |  | 2014-06-04 | 2014-06-07 |  |  |  |  | Plant and Equipment Operator (Crawler-mounted Mobile Crane) [32 h]; Rigger/Metal Formwork Erector [192 h]; Crawler Crane/Mobile Crane [32 h] | 100% | 100% | 823A_AB |  |  |  |  |  |  |  |
| 823A-ST-SNT-BF4-1070 |  | Backfilling to 0.5m below S1 (+24.0mPD) (2480m3 of soil) (SN16-18) |  | 5d | 2014-05-22 A | 2014-05-27 A | 823A-ST-SNT-BF4-1040 | 100% |  | 2014-06-09 | 2014-06-13 |  |  |  |  | Crawler Crane/Mobile Crane [96 h]; Vibration Roller [96 h]; Backhoe [192 h]; Backfilling Materials [2480 Cu m]; Soil Fill [2480 Cu m]; Plant and Equipment Operator (Crawler-mounted Mobile Crane) [384 h]; General Worker [576 h] | 100% | 100% | 823A_AB |  |  |  |  |  |  |  |
| 823A-ST-SNT-BF4-1080 |  | Removal strut S1 (SN16-18) |  | 4d | 2014-05-28 A | 2014-05-31 A | 823A-ST-SNT-BF4-1070, 823A-ST-EP-L3-1070 | 100% |  | 2014-06-14 | 2014-06-18 |  |  |  |  | Crawler Crane/Mobile Crane [16 h]; Rigger/Metal Formwork Erector [96 h]; Plant and Equipment Operator (Crawler-mounted Mobile Crane) [16 h] | 100% | 100% | 823A_AB |  |  |  |  |  |  |  |
| 823A-ST-SNT-BF4-1100 |  | Backfilling to original ground level (approx. +27.0mPD) (1488m3 of soil) |  | 5d | 2014-06-23 A | 2014-06-27 A | 823A-ST-SNT-BF4-1080 | 100% |  | 2014-06-27 | 2014-07-03 |  |  |  |  | Backhoe [128 h]; Vibration Roller [64 h]; Backfilling Materials [1488 Cu m]; Soil Fill [1488 Cu m]; Plant and Equipment Operator (Crawler-mounted Mobile Crane) [192 h]; General Worker [384 h] | 100% | 100% | 823A_AB | 1488 | m3 | 1488 | 1488 |  |  |  |
|  | 5 | **Reinstatement** |  |  | 2015-06-01 | 2017-02-28 |  |  |  |  |  |  |  |  |  |  |  |  |  |  |  |  |  |  |  |  |
| 823A-ST-SNT-RN-1005 |  | Dismantling temporary bridge deck |  | 30d | 2015-06-01 A | 2015-06-30 A | 823A-ST-TBM-NB-1060 | 100% |  | 2015-06-15 | 2015-07-21 |  |  |  | 823-6dPH |  | 100% | 100% | 823A_AB |  |  |  |  |  |  |  |
| 823A-ST-SNT-RN-1010 |  | Reinstatement of Works Area 4.10 |  | 186d | 2016-05-02 A | 2016-06-30 A | 823A-ST-SNT-RN-1005, 823A-ST-SNT-BF4-1100, 823A-ST-SNT-BF1-1040 | 100% |  | 2016-06-01 | 2017-01-11 |  |  |  | 823-6dPH |  | 100% | 100% | 823A_AB |  |  |  |  |  |  |  |
| 823A-ST-SNT-RN-1030 |  | Reinstate Works Areas 4.9, 4.9A and 4.12A prior to handover |  | 90d | 2016-07-02 A | 2017-02-28 |  | 44% | 50d | 2017-05-22 | 2017-09-02 | -448d | 0d |  | 823-6dPH |  | 100% | 75% | 823A_AB |  |  |  |  |  | -6 | -81.7 |
| 823A-ST-SNT-RN-1020 |  | Complete all tree planting and reinstate Works Area 4.12C |  | 217d | 2016-10-01 A | 2017-02-28 | 823A-ST-SNT-BF3-1090 | 77% | 50d | 2016-11-01 | 2017-07-13 | -635d | 0d |  | 823-6dPH |  | 100% | 40% | 823A_AB |  |  |  |  |  | 26 | -98.7 |
|  | 4 | **TBM Bored Tunnel (ERS to Tse Uk Tsuen)** |  |  | 2011-11-15 | 2016-01-19 |  |  |  |  |  |  |  |  |  |  |  |  |  |  |  |  |  |  |  |  |
|  | 1 | **Preliminaries** |  |  | 2011-11-15 | 2013-05-29 |  |  |  |  |  |  |  |  |  |  |  |  |  |  |  |  |  |  |  |  |
| 823A-ST-TBM-PR-1010 |  | Engineer Instruction for procurement of 2nd TBM | milestone | 0d | 2011-11-15 A | 2011-11-15 A |  | 100% |  |  |  |  |  | start on 2011-11-15 |  |  | 100% | 100% | 823A_AB |  |  |  |  |  |  |  |
| 823A-ST-TBM-PR-1020 |  | Application of power supply, environmental permits and construction substation |  | 285d | 2011-11-15 A | 2012-10-31 A | 823A-ST-TBM-PR-1010 | 100% |  |  |  |  |  |  |  |  | 100% | 100% | 823A_AB |  |  |  |  |  |  |  |
| 823A-ST-TBM-PR-1030 |  | Procurement and Confirmation of the order of 2nd tunnel boring machine |  | 23d | 2011-11-15 A | 2011-12-10 A | 823A-ST-TBM-PR-1010 | 100% |  |  |  |  |  |  |  |  | 100% | 100% | 823A_AB |  |  |  |  |  |  |  |
| 823A-ST-TBM-PR-1040 |  | TBM design and submission for approval |  | 23d | 2011-11-15 A | 2011-12-10 A | 823A-ST-TBM-PR-1030 SS | 100% |  |  |  |  |  |  |  |  | 100% | 100% | 823A_AB |  |  |  |  |  |  |  |
| 823A-ST-TBM-PR-1050 |  | TBM materials order and delivery to factory |  | 38d | 2011-12-12 A | 2012-01-31 A | 823A-ST-TBM-PR-1040 | 100% |  |  |  |  |  |  |  |  | 100% | 100% | 823A_AB |  |  |  |  |  |  |  |
| 823A-ST-TBM-PR-1060 |  | TBM equipments order and delivery to factory |  | 84d | 2011-12-12 A | 2012-03-24 A | 823A-ST-TBM-PR-1050 SS | 100% |  |  |  |  |  |  |  |  | 100% | 100% | 823A_AB |  |  |  |  |  |  |  |
| 823A-ST-TBM-PR-1070 |  | TBM Fabrication |  | 88d | 2012-02-01 A | 2012-05-19 A | 823A-ST-TBM-PR-1050 | 100% |  |  |  |  |  |  |  |  | 100% | 100% | 823A_AB |  |  |  |  |  |  |  |
| 823A-ST-TBM-PR-1080 |  | Final assembly for tunnel boring machine at the factory |  | 41d | 2012-04-21 A | 2012-06-09 A | 823A-ST-TBM-PR-1070 FS-23d, 823A-ST-TBM-PR-1060 | 100% |  |  |  |  |  |  |  |  | 100% | 100% | 823A_AB |  |  |  |  |  |  |  |
| 823A-ST-TBM-PR-1090 |  | TBM test Run |  | 17d | 2012-06-11 A | 2012-06-30 A | 823A-ST-TBM-PR-1080 | 100% |  |  |  |  |  |  |  |  | 100% | 100% | 823A_AB |  |  |  |  |  |  |  |
| 823A-ST-TBM-PR-1100 |  | TBM disassembly and packing for shipping to HK |  | 16d | 2012-07-03 A | 2012-07-20 A | 823A-ST-TBM-PR-1090 | 100% |  |  |  |  |  |  |  |  | 100% | 100% | 823A_AB |  |  |  |  |  |  |  |
| 823A-ST-TBM-PR-1110 |  | TBM Shipping to HK and delivery to site |  | 9d | 2012-07-21 A | 2012-07-31 A | 823A-ST-TBM-PR-1100 | 100% |  |  |  |  |  |  |  |  | 100% | 100% | 823A_AB |  |  |  |  |  |  |  |
| 823A-ST-TBM-PR-1120 |  | Setup TBM facilities |  | 98d | 2012-08-01 A | 2012-11-26 A | 823A-ST-TBM-PR-1110 | 100% |  |  |  |  |  |  |  |  | 100% | 100% | 823A_AB |  |  |  |  |  |  |  |
| 823A-ST-TBM-PR-1140 |  | Fabrication 50% of South Tunnel South Bound Precast Lining |  | 26d | 2012-08-01 A | 2012-08-30 A | 823A-ST-TBM-PR-1120 SS | 100% |  |  |  |  |  |  |  | Segment [106 NO]; Concrete 50/20A [1055.4 Cu m] | 100% | 100% | 823A_AB |  |  |  |  |  |  |  |
| 823A-ST-TBM-PR-1150 |  | Fabrication 100% of South Tunnel South Bound Precast Lining |  | 26d | 2012-08-31 A | 2012-09-29 A | 823A-ST-TBM-PR-1140 | 100% |  |  |  |  |  |  |  | Concrete 50/20A [1055.4 Cu m]; Segment [106 NO] | 100% | 100% | 823A_AB |  |  |  |  |  |  |  |
| 823A-ST-TBM-PR-1160 |  | Fabrication 50% of South Tunnel North Bound Precast Lining |  | 121d | 2012-10-03 A | 2013-02-26 A | 823A-ST-TBM-PR-1150 | 100% |  | 2012-10-03 | 2013-02-28 |  |  |  |  | Segment [106 NO]; Concrete 50/20A [1055.4 Cu m] | 100% | 100% | 823A_AB |  |  |  |  |  |  |  |
| 823A-ST-TBM-PR-1170 |  | Fabrication 100% of South Tunnel North Bound Precast Lining |  | 123d | 2013-02-27 A | 2013-05-29 A | 823A-ST-TBM-PR-1160 | 100% |  | 2013-08-26 | 2014-01-22 |  |  |  |  | Segment [106 NO]; Concrete 50/20A [1055.4 Cu m] | 100% | 100% | 823A_AB |  |  |  |  |  |  |  |

| ID | WBS | Activity | Duration | Start | Finish | Predecessors | Complete | Planned start | Planned finish | Calendar | Resources | % Planned | % Actual | 823A_As-built | Actual Up to Date | UNITS | Total Quantity | Planned Up to Date | 823A_As-built-verified | TIme Gain/Loss |
| --- | --- | --- | --- | --- | --- | --- | --- | --- | --- | --- | --- | --- | --- | --- | --- | --- | --- | --- | --- | --- |
|  | 2 | **Southbound CH124+912 TO CH125+338 (Down Track) 426m** |  | 2012-10-15 | 2014-09-06 |  |  |  |  |  |  |  |  |  |  |  |  |  |  |  |
| 823A-ST-TBM-SB-1010 |  | Ground treatment at lauching shaft Southbound | 29d | 2012-10-15 A | 2012-11-17 A |  | 100% |  |  |  | Air Compressor [232 h]; G.I Rig/Drill Rig [232 h]; General Worker [232 h]; Grouting Machine [232 h]; Plant and Equipment Operator (Crawler-mounted Mobile Crane) [232 h] | 100% | 100% | 823A_AB |  |  |  |  |  |  |
| 823A-ST-TBM-SB-1020 |  | TBM assemble, thrust frame, testing and commissioning | 57d | 2012-12-14 A | 2013-02-27 A | 823A-ST-TBM-PR-1120, 823A-ST-TBM-PR-1020, 823A-ST-SLS-ELS-1200, 823A-ST-SLS-ELS-1160, 823A-ST-SLS-ELS-1180 FF | 100% | 2013-06-01 | 2013-08-08 |  |  | 100% | 100% | 823A_AB |  |  |  |  |  |  |
| 823A-ST-TBM-SB-1030 |  | Lowing back-up plant for final drive | 6d | 2013-01-26 A | 2013-02-01 A | 823A-ST-SCCT-5a-2080, 823A-ST-SCCT-4a-1110 | 100% | 2013-06-01 | 2013-06-07 |  |  | 100% | 100% | 823A_AB |  |  |  |  |  |  |
| 823A-ST-TBM-SB-1035 |  | Assemble and set up back-up plant for final drive | 24d | 2013-02-02 A | 2013-02-27 A | 823A-ST-TBM-SB-1030 | 100% | 2013-06-08 | 2013-07-08 | 823-6dPH |  | 100% | 100% | 823A_AB |  |  |  |  |  |  |
| 823A-ST-TBM-SB-1040 |  | Erection of noise enclosure | 50d | 2013-02-18 A | 2013-11-01 A | 823A-ST-TBM-NB-1010, 823A-ST-SLS-DW-1050 | 100% | 2013-07-20 | 2013-09-16 |  |  | 100% | 100% | 823A_AB |  |  |  |  |  |  |
| 823A-ST-TBM-SB-1050 |  | TBM drive & lining installation CH124+912 to CH125+012 (Initial Drive) | 43d | 2013-03-11 A | 2013-05-27 A | 823A-ST-TBM-SB-1010, 823A-ST-TBM-SB-1035 FF, 823A-ST-TBM-SB-1020, 823A-ST-TBM-NB-1010, 823A-ST-SLS-ELS-1190 | 100% | 2013-07-20 | 2013-09-07 |  | Backhoe [352 h]; Truck Driver (Heavy Goods Vehicles) [1408 h]; Driver [2112 h]; Electrical Wireman [2464 h]; Electrical Fitter [1056 h]; Gantry Crane [352 h]; Construction Plant Mechanic [2464 h]; Plant and Equipment Operator (Crawler-mounted Mobile Crane) [1760 h]; TBM [352 h]; Dump Truck [1408 h]; Tunnel Lining [264 NO]; Tunnel Spoil [4020 Cu m]; Weld Set [1408 h]; General Welder [1408 h] | 100% | 100% | 823A_AB | 100 | m | 100 | 100 | 823A_ABV |  |
| 823A-ST-TBM-SB-1060 |  | TBM drive & lining installation CH125+012 to CH125+338 | 30d | 2013-05-27 A | 2014-05-20 A | 823A-ST-TUT-ELS-1160 FF+18d, 823A-ST-SLS-ELS-1170, 823A-ST-TBM-SB-1040, 823A-ST-SCCT-BF-1040, 823A-ST-TBM-SB-1050, 823A-ST-SNT-BF2-3000, 823A-ST-SNT-BF2-2040, 823A-ST-SNT-BF2-1050 | 100% | 2013-10-15 | 2013-11-18 |  |  | 100% | 100% | 823A_AB | 326 | m | 326 | 326 | 823A_ABV |  |
| 823A-ST-TBM-SB-1070 |  | Dis-assemble TBM | 26d | 2014-05-22 A | 2014-08-08 A | 823A-ST-TBM-SB-1060 | 100% | 2014-05-23 | 2014-06-23 |  |  | 100% | 100% | 823A_AB |  |  |  |  |  | -19 |
| 823A-ST-TBM-SB-1080 |  | Invert slab and side walkway | 37d | 2014-08-01 A | 2014-09-02 A | 823A-ST-TBM-SB-1060 FS+14d | 100% | 2014-08-01 | 2014-09-13 |  |  | 100% | 100% | 823A_AB |  |  |  |  |  | -19 |
| 823A-ST-TBM-SB-1090 |  | Installation of cable bracket | 12d | 2014-08-18 A | 2014-09-06 A | 823A-ST-TBM-SB-1080 FS+40d | 100% | 2014-11-03 | 2014-11-15 |  |  | 100% | 100% | 823A_AB |  |  |  |  |  |  |
|  | 3 | **Northbound CH124+927 TO CH125+353 (Up Track) 426m** |  | 2012-11-27 | 2015-11-10 |  |  |  |  |  |  |  |  |  |  |  |  |  |  |  |
| 823A-ST-TBM-NB-1010 |  | Ground treatment at lauching shaft Northbound | 44d | 2012-11-27 A | 2013-01-26 A | 823A-ST-TBM-SB-1010 | 100% | 2012-11-27 | 2013-01-19 |  | Air Compressor [352 h]; G.I Rig/Drill Rig [352 h]; General Worker [352 h]; Grouting Machine [352 h]; Plant and Equipment Operator (Crawler-mounted Mobile Crane) [352 h] | 100% | 100% | 823A_AB |  |  |  |  |  |  |
| 823A-ST-TBM-NB-1030 |  | Setup back-up plant for final drive | 30d | 2014-06-03 A | 2014-07-04 A | 823A-ST-TBM-NB-1020 SS | 100% | 2014-06-03 | 2014-07-08 |  | General Welder [960 h]; Electrical Fitter [720 h]; Electrical Wireman [1680 h]; Construction Plant Mechanic [1680 h]; Rigger/Metal Formwork Erector [1680 h]; Plant and Equipment Operator (Crawler-mounted Mobile Crane) [240 h]; Crawler Crane/Mobile Crane [240 h]; Weld Set [960 h] | 100% | 100% | 823A_AB |  |  |  |  |  | -19 |
| 823A-ST-TBM-NB-1020 |  | TBM assemble, testing and commissioning | 55d | 2014-07-14 A | 2014-10-27 A | 823A-ST-TBM-SB-1070 SS | 100% | 2014-07-02 | 2014-09-03 |  | Crawler Crane/Mobile Crane [488 h]; Electrical Wireman [3416 h]; Electrical Fitter [1464 h]; Gantry Crane [488 h]; Construction Plant Mechanic [3416 h]; Plant and Equipment Operator (Crawler-mounted Mobile Crane) [976 h]; Rigger/Metal Formwork Erector [2928 h]; TBM [488 h]; Weld Set [1952 h]; General Welder [1952 h] | 100% | 100% | 823A_AB |  |  |  |  |  | -19 |
| 823A-ST-TBM-NB-1005 |  | Removal of Roof of Noise Enclosure | 17d | 2014-08-09 A | 2014-08-28 A | 823A-ST-TBM-SB-1070 | 100% | 2014-09-01 | 2014-09-20 | 823-6dPH |  | 100% | 100% | 823A_AB |  |  |  |  |  | -19 |
| 823A-ST-TBM-NB-1040 |  | Reinstate of noise enclosure | 23d | 2014-10-28 A | 2015-01-09 A | 823A-ST-TBM-NB-1020, 823A-ST-TBM-NB-1005 | 100% | 2014-10-10 | 2014-11-05 |  | Crawler Crane/Mobile Crane [128 h]; Weld Set [512 h]; General Welder [512 h]; Plant and Equipment Operator (Crawler-mounted Mobile Crane) [128 h]; Rigger/Metal Formwork Erector [512 h] | 100% | 100% | 823A_AB |  |  |  |  |  |  |
| 823A-ST-TBM-NB-1050 |  | TBM drive & lining installation CH124+927 to CH125+027 (Initial Drive) | 30d | 2014-10-30 A | 2014-12-06 A | 823A-ST-TBM-PR-1170, 823A-ST-TBM-NB-1020, 823A-ST-TBM-NB-1030 | 100% | 2014-10-10 | 2014-11-13 |  | Backhoe [240 h]; Electrical Wireman [1680 h]; Electrical Fitter [720 h]; Gantry Crane [240 h]; Construction Plant Mechanic [1680 h]; Plant and Equipment Operator (Crawler-mounted Mobile Crane) [1200 h]; TBM [240 h]; Truck Driver (Heavy Goods Vehicles) [960 h]; Tunnel Lining [20 NO]; Tunnel Spoil [12060 Cu m]; Weld Set [960 h]; General Welder [960 h]; Dump Truck [960 h]; Driver [1440 h] | 100% | 100% | 823A_AB | 100 | m | 100 | 100 | 823A_ABV |  |
| 823A-ST-TBM-NB-1060 |  | TBM drive & lining installation CH125+027 to CH125+353 (Final Drive) | 36d | 2014-12-08 A | 2015-08-07 A | 823A-ST-TBM-NB-1040, 823A-ST-TBM-NB-1050 | 100% | 2015-01-02 | 2015-02-12 |  | Tunnel Spoil [16348 Cu m]; Backhoe [288 h]; Driver [1728 h]; Dump Truck [1152 h]; Electrical Wireman [2016 h]; Electrical Fitter [864 h]; Gantry Crane [288 h]; Construction Plant Mechanic [2016 h]; Plant and Equipment Operator (Crawler-mounted Mobile Crane) [1440 h]; TBM [288 h]; Truck Driver (Heavy Goods Vehicles) [1152 h]; Tunnel Lining [163 NO]; Weld Set [1152 h]; General Welder [1152 h] | 100% | 100% | 823A_AB | 326 | m | 326 | 326 | 823A_ABV |  |
| 823A-ST-TBM-NB-1090 |  | Installation of cable bracket | 12d | 2015-07-02 A | 2015-08-31 A | 823A-ST-TBM-NB-1080 FS+17d | 100% | 2015-09-24 | 2015-10-09 |  | Skill Labour [576 h] | 100% | 100% | 823A_AB |  |  |  |  |  |  |
| 823A-ST-TBM-NB-1065 |  | Demobilization of TBM facilities and noise enclosure | 23d | 2015-08-10 A | 2015-10-19 A | 823A-ST-TBM-NB-1060 | 100% | 2015-08-04 | 2015-08-29 |  |  | 100% | 100% | 823A_AB |  |  |  |  |  |  |
| 823A-ST-TBM-NB-1070 |  | Dis-assemble TBM | 27d | 2015-08-10 A | 2015-09-24 A | 823A-ST-TBM-NB-1060 | 100% | 2015-08-04 | 2015-09-03 |  | Crawler Crane/Mobile Crane [432 h]; Electrical Wireman [1512 h]; Electrical Fitter [648 h]; Construction Plant Mechanic [1512 h]; Plant and Equipment Operator (Crawler-mounted Mobile Crane) [432 h]; Rigger/Metal Formwork Erector [1296 h]; Weld Set [864 h]; General Welder [864 h] | 100% | 100% | 823A_AB |  |  |  |  |  |  |
| 823A-ST-TBM-NB-1080 |  | Invert slab and side walkway | 37d | 2015-09-09 A | 2015-11-10 A | 823A-ST-TBM-NB-1060 FS+11d | 100% | 2015-09-09 | 2015-10-24 |  | Bar Bender & Fixer [1776 h]; Carpenter (Formwork - Civil Construction) [1184 h]; Concrete 30/20B [2027 Cu m]; Concrete Pump [296 h]; PY Concretor [1776 h]; Gantry Crane [296 h]; General Worker [1776 h]; Permanent Concrete [2027 Cu m]; Plant and Equipment Operator (Crawler-mounted Mobile Crane) [592 h]; Reinforcement [164 kg] | 100% | 100% | 823A_AB |  |  |  |  |  |  |
|  | 4 | **Cross Passenges** |  | 2014-08-01 | 2016-01-19 |  |  |  |  |  |  |  |  |  |  |  |  |  |  |  |
|  | 1 | **CP32** |  | 2014-08-01 | 2016-01-19 |  |  |  |  |  |  |  |  |  |  |  |  |  |  |  |
| 823A-ST-CP32-1000 |  | Install and Erect Temporary support inside Main Tunnel for Cross Passage Tunnel CP32 (Partial length) at down track | 14d | 2014-08-01 A | 2014-08-09 A | 823A-ST-TBM-SB-1080 SS | 100% | 2014-08-01 | 2014-08-16 |  |  | 100% | 100% | 823A_AB |  |  |  |  |  | -19 |
| 823A-ST-CP32-1010 |  | Probe/Grout | 9d | 2014-08-11 A | 2014-08-15 A | 823A-ST-CP32-1000 | 100% | 2014-08-18 | 2014-08-27 |  |  | 100% | 100% | 823A_AB |  |  |  |  |  | -19 |
| 823A-ST-CP32-1020 |  | Coring of Segment | 4d | 2014-08-16 A | 2014-08-20 A | 823A-ST-CP32-1010 | 100% | 2014-08-28 | 2014-09-01 |  |  | 100% | 100% | 823A_AB |  |  |  |  |  | -20 |
| 823A-ST-CP32-1030 |  | Removal of segment | 3d | 2014-08-21 A | 2014-08-23 A | 823A-ST-CP32-1020 | 100% | 2014-09-02 | 2014-09-04 |  |  | 100% | 100% | 823A_AB |  |  |  |  |  | -20 |
| 823A-ST-CP32-1040 |  | Excavation 0-4mts with Shotcrete | 25d | 2014-08-25 A | 2014-10-03 A | 823A-ST-CP32-1030 | 100% | 2014-09-05 | 2014-10-07 |  |  | 100% | 100% | 823A_AB |  |  |  |  |  | -20 |
| 823A-ST-CP32-1050 |  | Invert Concrete | 9d | 2014-10-04 A | 2014-10-11 A | 823A-ST-CP32-1040 | 100% | 2014-10-23 | 2014-11-01 |  |  | 100% | 100% | 823A_AB |  |  |  |  |  |  |
| 823A-ST-CP32-1060 |  | Wall and Roof concrete | 14d | 2014-10-13 A | 2014-10-31 A | 823A-ST-CP32-1050 | 100% | 2014-11-03 | 2014-11-18 |  |  | 100% | 100% | 823A_AB |  |  |  |  |  |  |
| 823A-ST-CP32-1070 |  | Dismantle Temporary frame | 7d | 2014-11-01 A | 2014-11-08 A | 823A-ST-CP32-1060 | 100% |  |  |  |  | 100% | 100% | 823A_AB |  |  |  |  |  |  |
| 823A-ST-CP32-1080 |  | Install Door to Cross Passage (By contract 827) | 4d | 2014-11-10 A | 2014-11-13 A | 823A-ST-CP32-1070, 823A-ST-TBM-SB-1090 FF | 100% |  |  |  |  | 100% | 100% | 823A_AB |  |  |  |  |  |  |
| 823A-ST-CP32-1090 |  | Install and Erect Temporary support inside Main Tunnel for Cross Passage Tunnel CP32 (Remaining length ) at down track | 16d | 2015-04-01 A | 2015-04-16 A | 823A-ST-CP32-1080, 823A-ST-TBM-NB-1080 SS | 100% | 2015-05-09 | 2015-05-28 |  |  | 100% | 100% | 823A_AB |  |  |  |  |  |  |
| 823A-ST-CP32-1100 |  | Probe/Grout | 1d | 2015-04-20 A | 2015-06-29 A | 823A-ST-CP32-1090 | 100% | 2015-05-29 | 2015-05-29 |  |  | 100% | 100% | 823A_AB |  |  |  |  |  |  |
| 823A-ST-CP32-1110 |  | Coring of Segment | 4d | 2015-10-16 A | 2015-10-20 A | 823A-ST-CP32-1100 | 100% | 2015-10-02 | 2015-10-06 |  |  | 100% | 100% | 823A_AB |  |  |  |  |  |  |
| 823A-ST-CP32-1120 |  | Removal of segment | 3d | 2015-10-22 A | 2015-10-24 A | 823A-ST-CP32-1110 | 100% | 2015-10-07 | 2015-10-09 |  |  | 100% | 100% | 823A_AB |  |  |  |  |  |  |
| 823A-ST-CP32-1130 |  | Excavation 0-4mts with Shotcrete | 17d | 2015-10-26 A | 2015-12-11 A | 823A-ST-CP32-1120 | 100% | 2015-10-10 | 2015-10-30 |  |  | 100% | 100% | 823A_AB |  |  |  |  |  |  |
| 823A-ST-CP32-1140 |  | Invert Concrete | 9d | 2015-12-12 A | 2015-12-24 A | 823A-ST-CP32-1130 | 100% | 2015-12-03 | 2015-12-12 |  |  | 100% | 100% | 823A_AB |  |  |  |  |  |  |
| 823A-ST-CP32-1150 |  | Wall and Roof concrete | 10d | 2015-12-28 A | 2016-01-15 A | 823A-ST-CP32-1140 | 100% | 2015-12-14 | 2015-12-24 |  |  | 100% | 100% | 823A_AB |  |  |  |  |  |  |
| 823A-ST-CP32-1160 |  | Dismantle Temporary frame | 4d | 2016-01-16 A | 2016-01-16 A | 823A-ST-CP32-1150 | 100% | 2016-01-13 | 2016-01-16 |  |  | 100% | 100% | 823A_AB |  |  |  |  |  |  |
| 823A-ST-CP32-1170 |  | Install Door to Cross Passage (By contract 827) | 2d | 2016-01-18 A | 2016-01-19 A | 823A-ST-TBM-NB-1090 FF, 823A-ST-CP32-1160 | 100% |  |  |  |  | 100% | 100% | 823A_AB |  |  |  |  |  |  |

| ID | WBS | Activity | Type | Duration | Start | Finish | Predecessors | Complete | Planned start | Planned finish | Calendar | Resources | % Planned | % Actual | 823A_As-built | Actual Up to Date | UNITS | Total Quantity | Planned Up to Date | user_text8 |
| --- | --- | --- | --- | --- | --- | --- | --- | --- | --- | --- | --- | --- | --- | --- | --- | --- | --- | --- | --- | --- |
|  | 5 | **Tse Uk Tsuen Shaft** |  |  | 2011-03-21 | 2017-02-28 |  |  |  |  |  |  |  |  |  |  |  |  |  |  |
|  | 1 | **D-Wall** |  |  | 2011-03-21 | 2012-02-29 |  |  |  |  |  |  |  |  |  |  |  |  |  |  |
| 823A-ST-TUT-DW-1010 |  | Site Possession and Site set up and Mobilization |  | 54d | 2011-03-21 A | 2011-05-28 A | 823A-AD1-WA5-1280 | 100% |  |  |  |  | 100% | 100% | 823A_AB |  |  |  |  |  |
| 823A-ST-TUT-DW-1020 |  | Pre-drill and guide wall |  | 37d | 2011-05-30 A | 2011-07-13 A | 823A-ST-TUT-DW-1010 | 100% |  |  |  | G.I Rig/Drill Rig [592 h]; Backhoe [296 h]; Carpenter (Formwork - Civil Construction) [592 h]; Bar Bender & Fixer [592 h]; Concrete 30/20B [56 Cu m]; PY Concretor [592 h]; General Worker [592 h]; Plant Operator [592 h]; Plant and Equipment Operator (Excavator) [296 h] | 100% | 100% | 823A_AB |  |  |  |  |  |
| 823A-ST-TUT-DW-1030 |  | D-wall design review |  | 30d | 2011-07-14 A | 2011-08-17 A | 823A-ST-TUT-DW-1020 | 100% |  |  | 823-6dPH |  | 100% | 100% | 823A_AB |  |  |  |  |  |
| 823A-ST-TUT-DW-1040 |  | D-Wall Construction (1075m3) |  | 71d | 2011-08-18 A | 2011-11-11 A | 823A-ST-TUT-DW-1030 | 100% |  |  |  | Hydrofraise Cutter [568 h]; Bar Bender & Fixer [6816 h]; Concrete 45/20A [1057 Cu m]; Crawler Crane/Mobile Crane [568 h]; D-Wall Grab [568 h]; D-Wall [17 NO]; General Worker [2272 h]; Plant and Equipment Operator (Crawler-mounted Mobile Crane) [2272 h]; Rigger/Metal Formwork Erector [3408 h]; Temporary Concrete [1075 Cu m] | 100% | 100% | 823A_AB | 1075 | m3 | 1075 | 1075 |  |
| 823A-ST-TUT-DW-1050 |  | Shear pin, toe grout and pumping test |  | 88d | 2011-11-12 A | 2012-02-29 A | 823A-ST-TUT-DW-1040 | 100% |  |  | 823-6dPH | G.I Rig/Drill Rig [1408 h]; Plant and Equipment Operator (Crawler-mounted Mobile Crane) [2816 h]; General Worker [2816 h]; Air Compressor [1408 h]; Crawler Crane/Mobile Crane [704 h]; Grouting Machine [704 h]; Shear Pin [72 NO]; Toe Grout [88 NO] | 100% | 100% | 823A_AB |  |  |  |  |  |
|  | 2 | **Ground Treatment** |  |  | 2012-03-01 | 2012-10-31 |  |  |  |  |  |  |  |  |  |  |  |  |  |  |
| 823A-ST-TUT-GT-1010 |  | SI for TBM ground treatment |  | 27d | 2012-03-01 A | 2012-03-31 A | 823A-ST-TUT-DW-1050 | 100% |  |  | 823-6dPH | General Worker [216 h]; G.I Rig/Drill Rig [216 h]; Plant Operator [216 h] | 100% | 100% | 823A_AB |  |  |  |  |  |
| 823A-ST-TUT-GT-1020 |  | Design review of TBM ground treatment |  | 71d | 2012-04-02 A | 2012-06-30 A | 823A-ST-TUT-GT-1010 | 100% |  |  | 823-6dPH |  | 100% | 100% | 823A_AB |  |  |  |  |  |
| 823A-ST-TUT-GT-1030 |  | Ground treatment for TBM southbound |  | 52d | 2012-07-03 A | 2012-08-31 A | 823A-ST-TUT-GT-1020 | 100% |  |  | 823-6dPH | Crawler Crane/Mobile Crane [416 h]; Air Compressor [416 h]; Grouting Machine [416 h]; G.I Rig/Drill Rig [416 h]; Plant and Equipment Operator (Crawler-mounted Mobile Crane) [416 h]; Grouting Worker [832 h]; General Worker [832 h]; Plant Operator [416 h] | 100% | 100% | 823A_AB |  |  |  |  |  |
| 823A-ST-TUT-GT-1040 |  | Ground treatment for TBM northbound |  | 49d | 2012-09-01 A | 2012-10-31 A | 823A-ST-TUT-GT-1030 | 100% |  |  | 823-6dPH | Plant and Equipment Operator (Crawler-mounted Mobile Crane) [392 h]; G.I Rig/Drill Rig [392 h]; Grouting Machine [392 h]; Air Compressor [392 h]; Crawler Crane/Mobile Crane [392 h]; General Worker [784 h]; Plant Operator [392 h]; Grouting Worker [784 h] | 100% | 100% | 823A_AB |  |  |  |  |  |
|  | 3 | **Excavation and Lateral Support** |  |  | 2012-03-01 | 2013-07-11 |  |  |  |  |  |  |  |  |  |  |  |  |  |  |
| 823A-ST-TUT-ELS-1010 |  | Capping beam construction |  | 27d | 2012-03-01 A | 2012-03-31 A | 823A-ST-TUT-DW-1050 | 100% |  |  | 823-6dPH | Carpenter (Formwork - Civil Construction) [432 h]; Bar Bender & Fixer [432 h]; Backhoe [216 h]; Plant and Equipment Operator (Excavator) [216 h]; PY Concretor [432 h]; General Worker [432 h] | 100% | 100% | 823A_AB |  |  |  |  |  |
| 823A-ST-TUT-ELS-1020 |  | L-Shape wall construction |  | 8d | 2012-04-02 A | 2012-04-14 A | 823A-ST-TUT-ELS-1010 | 100% |  |  |  | Backhoe [64 h]; Carpenter (Formwork - Civil Construction) [256 h]; Bar Bender & Fixer [256 h]; Plant and Equipment Operator (Excavator) [64 h]; PY Concretor [64 h]; General Worker [64 h] | 100% | 100% | 823A_AB |  |  |  |  |  |
| 823A-ST-TUT-ELS-1030 |  | Excavate up to +28.5mPD (1488m3) |  | 5d | 2012-04-16 A | 2012-04-20 A | 823A-ST-TUT-ELS-1020 | 100% |  |  |  | Backhoe [120 h]; Excavation Materials [1488 Cu m]; Soil Excavation [1488 Cu m]; Plant and Equipment Operator (Crawler-mounted Mobile Crane) [40 h]; Truck Driver (Heavy Goods Vehicles) [560 h]; General Worker [160 h]; Dump Truck [560 h]; Plant Operator [120 h] | 100% | 100% | 823A_AB | 1488 | m3 | 1488 | 1488 |  |
| 823A-ST-TUT-ELS-1040 |  | Install Strut S1 +29.0mPD |  | 4d | 2012-04-19 A | 2012-04-23 A | 823A-ST-TUT-ELS-1030 | 100% |  |  |  | Weld Set [64 h]; Plant and Equipment Operator (Crawler-mounted Mobile Crane) [32 h]; Rigger/Metal Formwork Erector [64 h]; General Welder [64 h]; Crawler Crane/Mobile Crane [32 h] | 100% | 100% | 823A_AB |  |  |  |  |  |
| 823A-ST-TUT-ELS-1050 |  | Excavate up to +23.5mPD (2480m3) |  | 8d | 2012-04-24 A | 2012-05-04 A | 823A-ST-TUT-ELS-1040 | 100% |  |  |  | Excavation Materials [2480 Cu m]; Soil Excavation [2480 Cu m]; Backhoe [192 h]; Crawler Crane/Mobile Crane [64 h]; Plant and Equipment Operator (Crawler-mounted Mobile Crane) [64 h]; Truck Driver (Heavy Goods Vehicles) [448 h]; General Worker [256 h]; Dump Truck [448 h]; Plant and Equipment Operator (Excavator) [192 h] | 100% | 100% | 823A_AB | 2480 | m3 | 2480 | 2480 |  |
| 823A-ST-TUT-ELS-1060 |  | Install Strut S2 +24.0mPD |  | 4d | 2012-05-05 A | 2012-05-09 A | 823A-ST-TUT-ELS-1050 | 100% |  |  |  | Crawler Crane/Mobile Crane [32 h]; Weld Set [64 h]; Plant and Equipment Operator (Crawler-mounted Mobile Crane) [32 h]; Rigger/Metal Formwork Erector [64 h]; General Welder [64 h] | 100% | 100% | 823A_AB |  |  |  |  |  |
| 823A-ST-TUT-ELS-1070 |  | Excavate up to +19.5mPD (1984m3) |  | 16d | 2012-05-10 A | 2012-05-28 A | 823A-ST-TUT-ELS-1060 | 100% |  |  |  | Excavation Materials [1984 Cu m]; Soil Excavation [1580 Cu m]; Rock Excavation [404 Cu m]; Backhoe [256 h]; Breaker [128 h]; Crawler Crane/Mobile Crane [128 h]; G.I Rig/Drill Rig [128 h]; Plant and Equipment Operator (Crawler-mounted Mobile Crane) [128 h]; Truck Driver (Heavy Goods Vehicles) [512 h]; General Worker [512 h]; Dump Truck [512 h]; Hydraulic Rock Splitter [128 h]; Plant and Equipment Operator (Excavator) [128 h]; Plant Operator [128 h] | 100% | 100% | 823A_AB | 1984 | m3 | 1984 | 1984 | 1,580m3 soil + 404 rock |
| 823A-ST-TUT-ELS-1080 |  | Install Strut S3 +20.0mPD |  | 4d | 2012-05-29 A | 2012-06-01 A | 823A-ST-TUT-ELS-1070 | 100% |  |  |  | Weld Set [64 h]; Crawler Crane/Mobile Crane [32 h]; Plant and Equipment Operator (Crawler-mounted Mobile Crane) [32 h]; General Welder [64 h]; Rigger/Metal Formwork Erector [64 h] | 100% | 100% | 823A_AB |  |  |  |  |  |
| 823A-ST-TUT-ELS-1090 |  | Excavate up to +15.5mPD (1984m3) |  | 50d | 2012-06-02 A | 2012-08-01 A | 823A-ST-TUT-ELS-1080 | 100% |  |  |  | Excavation Materials [1984 Cu m]; Rock Excavation [1984 Cu m]; Backhoe [800 h]; Breaker [400 h]; G.I Rig/Drill Rig [400 h]; Crawler Crane/Mobile Crane [400 h]; Plant and Equipment Operator (Crawler-mounted Mobile Crane) [400 h]; Truck Driver (Heavy Goods Vehicles) [400 h]; General Worker [800 h]; Dump Truck [400 h]; Hydraulic Rock Splitter [400 h]; Plant Operator [400 h]; Plant and Equipment Operator (Excavator) [1200 h] | 100% | 100% | 823A_AB | 1984 | m3 | 1984 | 1984 | 1,984m3 rock |
| 823A-ST-TUT-ELS-1120 |  | Install rock dowel and tie back |  | 152d | 2012-06-02 A | 2013-02-28 A | 823A-ST-TUT-ELS-1080 | 100% | 2012-06-02 | 2012-12-01 |  | Coring Machine [1216 h]; G.I Rig/Drill Rig [1216 h]; Air Compressor [1216 h]; General Worker [3648 h]; Grouting Machine [1216 h]; Plant and Equipment Operator (Crawler-mounted Mobile Crane) [3648 h] | 100% | 100% | 823A_AB |  |  |  |  |  |
| 823A-ST-TUT-ELS-1100 |  | Install Strut S4 +16.0mPD |  | 4d | 2012-08-02 A | 2012-08-06 A | 823A-ST-TUT-ELS-1090 | 100% |  |  |  | Crawler Crane/Mobile Crane [32 h]; Weld Set [64 h]; Plant and Equipment Operator (Crawler-mounted Mobile Crane) [32 h]; Rigger/Metal Formwork Erector [64 h]; General Welder [64 h] | 100% | 100% | 823A_AB |  |  |  |  |  |
| 823A-ST-TUT-ELS-1110 |  | Excavate up to formation (4117m3) |  | 98d | 2012-08-07 A | 2012-12-01 A | 823A-ST-TUT-ELS-1100 | 100% |  |  |  | Excavation Materials [4117 Cu m]; Rock Excavation [4117 Cu m]; G.I Rig/Drill Rig [784 h]; Backhoe [1568 h]; Breaker [784 h]; Crawler Crane/Mobile Crane [784 h]; Plant and Equipment Operator (Crawler-mounted Mobile Crane) [784 h]; Truck Driver (Heavy Goods Vehicles) [2352 h]; General Worker [2352 h]; Dump Truck [2352 h]; Hydraulic Rock Splitter [784 h]; Plant Operator [784 h]; Plant and Equipment Operator (Excavator) [2352 h] | 100% | 100% | 823A_AB | 4117 | m3 | 4117 | 4117 | 4,117m3 rock |
| 823A-ST-TUT-ELS-1130 |  | Temporary handover the shaft to contract 822 |  | 70d | 2012-12-03 A | 2013-02-28 A | 823A-ST-TUT-ELS-1120, 823A-ST-TUT-GT-1040, 823A-ST-TUT-ELS-1110 | 100% | 2013-06-03 | 2013-08-24 | 823-6dPH |  | 100% | 100% | 823A_AB |  |  |  |  |  |
| 823A-ST-TUT-ELS-1140 |  | Return TUT shaft by contract 822 | milestone | 0d | 2013-03-18 A | 2013-03-18 A | 823A-ST-TUT-ELS-1130 | 100% | 2013-08-26 | 2013-08-26 | 823-6dPH |  | 100% | 100% | 823A_AB |  |  |  |  |  |
| 823A-ST-TUT-ELS-1150 |  | Rock breaking works |  | 30d | 2013-03-18 A | 2013-05-08 A | 823A-ST-TUT-ELS-1140 | 100% | 2013-08-26 | 2013-09-30 | 823-6dPH | Crawler Crane/Mobile Crane [416 h]; General Worker [832 h]; Plant and Equipment Operator (Excavator) [832 h]; Breaker [416 h]; Backhoe [416 h] | 100% | 100% | 823A_AB |  |  |  |  |  |
| 823A-ST-TUT-ELS-1160 |  | Temporary base Slab for TBM Drive |  | 22d | 2013-05-09 A | 2013-07-11 A | 823A-ST-TUT-ELS-1150 | 100% | 2013-06-01 | 2013-06-27 | 823-6dPH |  | 100% | 100% | 823A_AB |  |  |  |  |  |

| ID | WBS | Activity | Duration | Start | Finish | Predecessors | Complete | Planned start | Planned finish | Calendar | Resources | % Planned | % Actual | 823A_As-built | Actual Up to Date | UNITS | Total Quantity | Planned Up to Date |
| --- | --- | --- | --- | --- | --- | --- | --- | --- | --- | --- | --- | --- | --- | --- | --- | --- | --- | --- |
|  | 4 | **Structure** |  | 2014-08-14 | 2016-03-16 |  |  |  |  |  |  |  |  |  |  |  |  |  |
|  | 1 | **Southbound (Down Track)** |  | 2014-08-14 | 2014-12-11 |  |  |  |  |  |  |  |  |  |  |  |  |  |
| 823A-ST-TUT-SB-1010 |  | Placing of waterproof member T-lock & testing (Base Slab) | 2d | 2014-08-14 A | 2014-08-15 A | 823A-ST-TBM-NB-1020 | 100% | 2014-08-08 | 2014-08-09 |  | General Worker [32 h] | 100% | 100% | 823A_AB |  |  |  |  |
| 823A-ST-TUT-SB-1020 |  | Erect external formwork (Base Slab) | 3d | 2014-08-16 A | 2014-08-19 A | 823A-ST-TUT-SB-1010 | 100% | 2014-08-11 | 2014-08-13 |  | Crawler Crane/Mobile Crane [24 h]; Plant and Equipment Operator (Crawler-mounted Mobile Crane) [24 h]; Carpenter (Formwork - Civil Construction) [96 h] | 100% | 100% | 823A_AB |  |  |  |  |
| 823A-ST-TUT-SB-1030 |  | Rebar fixing (Base Slab) | 4d | 2014-08-20 A | 2014-08-23 A | 823A-ST-TUT-SB-1020 | 100% | 2014-08-14 | 2014-08-18 |  | Crawler Crane/Mobile Crane [32 h]; Reinforcement [37004 kg]; Bar Bender & Fixer [256 h]; Plant and Equipment Operator (Crawler-mounted Mobile Crane) [32 h] | 100% | 100% | 823A_AB |  |  |  |  |
| 823A-ST-TUT-SB-1040 |  | Erect internal kicker formwork (Base Slab) | 3d | 2014-08-25 A | 2014-08-27 A | 823A-ST-TUT-SB-1030 | 100% | 2014-08-19 | 2014-08-21 |  | Crawler Crane/Mobile Crane [24 h]; Plant and Equipment Operator (Crawler-mounted Mobile Crane) [24 h]; Carpenter (Formwork - Civil Construction) [96 h] | 100% | 100% | 823A_AB |  |  |  |  |
| 823A-ST-TUT-SB-1050 |  | Clearing and inspection (Base Slab) | 1d | 2014-08-28 A | 2014-08-28 A | 823A-ST-TUT-SB-1040 | 100% | 2014-08-22 | 2014-08-22 |  | General Worker [16 h]; Air Compressor [8 h] | 100% | 100% | 823A_AB |  |  |  |  |
| 823A-ST-TUT-SB-1060 |  | Concreting (Base Slab) (245m3) | 1d | 2014-08-29 A | 2014-08-29 A | 823A-ST-TUT-SB-1050 | 100% | 2014-08-23 | 2014-08-23 |  | Permanent Concrete [245 Cu m]; Concrete 45/20A [245 Cu m]; Crawler Crane/Mobile Crane [8 h]; Plant and Equipment Operator (Crawler-mounted Mobile Crane) [8 h]; Rigger/Metal Formwork Erector [32 h]; PY Concretor [32 h]; General Worker [32 h]; Concrete Pump [8 h]; Plant Operator [8 h] | 100% | 100% | 823A_AB | 245 | m3 | 245 | 245 |
| 823A-ST-TUT-SB-1070 |  | Curing (Base Slab) | 7d | 2014-08-30 A | 2014-09-06 A | 823A-ST-TUT-SB-1060 | 100% | 2014-08-25 | 2014-09-01 |  |  | 100% | 100% | 823A_AB |  |  |  |  |
| 823A-ST-TUT-SB-1080 |  | Removal of formwork (Base Slab) | 1d | 2014-09-01 A | 2014-09-01 A | 823A-ST-TUT-SB-1060 FS+1d | 100% | 2014-09-08 | 2014-09-08 |  | Crawler Crane/Mobile Crane [8 h]; Plant and Equipment Operator (Crawler-mounted Mobile Crane) [8 h]; Carpenter (Formwork - Civil Construction) [32 h] | 100% | 100% | 823A_AB |  |  |  |  |
| 823A-ST-TUT-SB-1090 |  | Erect internal formwork and scaffold system (Wall and roof) | 7d | 2014-09-02 A | 2014-09-10 A | 823A-ST-TUT-SB-1080 | 100% | 2014-09-10 | 2014-09-17 |  | Crawler Crane/Mobile Crane [56 h]; Plant and Equipment Operator (Crawler-mounted Mobile Crane) [56 h]; Rigger/Metal Formwork Erector [224 h]; Carpenter (Formwork - Civil Construction) [448 h] | 100% | 100% | 823A_AB |  |  |  |  |
| 823A-ST-TUT-SB-1100 |  | Rebar fixing (Wall and roof) | 6d | 2014-09-11 A | 2014-09-20 A | 823A-ST-TUT-SB-1070, 823A-ST-TUT-SB-1090 | 100% | 2014-09-18 | 2014-09-24 |  | Crawler Crane/Mobile Crane [48 h]; Reinforcement [25004 kg]; Plant and Equipment Operator (Crawler-mounted Mobile Crane) [48 h]; Bar Bender & Fixer [384 h] | 100% | 100% | 823A_AB |  |  |  |  |
| 823A-ST-TUT-SB-1110 |  | Erect external formwork (Wall) | 3d | 2014-09-22 A | 2014-09-27 A | 823A-ST-TUT-SB-1100 | 100% | 2014-09-25 | 2014-09-27 |  | Crawler Crane/Mobile Crane [24 h]; Plant and Equipment Operator (Crawler-mounted Mobile Crane) [24 h]; Carpenter (Formwork - Civil Construction) [96 h] | 100% | 100% | 823A_AB |  |  |  |  |
| 823A-ST-TUT-SB-1120 |  | Clearing and inspection (Wall and roof) | 1d | 2014-09-29 A | 2014-09-29 A | 823A-ST-TUT-SB-1110 | 100% |  |  |  | General Worker [16 h]; Air Compressor [8 h] | 100% | 100% | 823A_AB |  |  |  |  |
| 823A-ST-TUT-SB-1130 |  | Concreting (Wall and roof) (166m3) | 1d | 2014-10-25 A | 2014-10-25 A | 823A-ST-TUT-SB-1120 | 100% | 2014-10-10 | 2014-10-10 |  | Permanent Concrete [166 Cu m]; Concrete 45/20A [166 Cu m]; Plant and Equipment Operator (Crawler-mounted Mobile Crane) [8 h]; PY Concretor [32 h]; General Worker [32 h]; Rigger/Metal Formwork Erector [32 h]; Concrete Pump [8 h]; Plant Operator [8 h]; Crawler Crane/Mobile Crane [8 h] | 100% | 100% | 823A_AB | 166 | m3 | 166 | 166 |
| 823A-ST-TUT-SB-1140 |  | Curing (Wall and roof) | 13d | 2014-10-27 A | 2014-11-07 A | 823A-ST-TUT-SB-1130 | 100% | 2014-10-11 | 2014-10-25 |  |  | 100% | 100% | 823A_AB |  |  |  |  |
| 823A-ST-TUT-SB-1150 |  | Removal formwork (Wall) | 3d | 2014-10-30 A | 2014-11-01 A | 823A-ST-TUT-SB-1130 FS+2d | 100% | 2014-10-14 | 2014-10-16 |  | Crawler Crane/Mobile Crane [24 h]; Plant and Equipment Operator (Crawler-mounted Mobile Crane) [24 h]; Carpenter (Formwork - Civil Construction) [96 h] | 100% | 100% | 823A_AB |  |  |  |  |
| 823A-ST-TUT-SB-1160 |  | Removal formwork (Roof) | 1d | 2014-11-08 A | 2014-11-08 A | 823A-ST-TUT-SB-1150, 823A-ST-TUT-SB-1140 | 100% |  |  | 823-6dPH | Crawler Crane/Mobile Crane [8 h]; Rigger/Metal Formwork Erector [32 h]; Carpenter (Formwork - Civil Construction) [32 h]; Plant and Equipment Operator (Crawler-mounted Mobile Crane) [8 h] | 100% | 100% | 823A_AB |  |  |  |  |
| 823A-ST-TUT-SB-1170 |  | Side walkway and cable bracket (72m3) | 10d | 2014-12-01 A | 2014-12-11 A | 823A-ST-TUT-SB-1160 | 100% |  |  |  | Crawler Crane/Mobile Crane [80 h]; Permanent Concrete [72 Cu m]; Concrete 20/20C [72 Cu m]; Plant and Equipment Operator (Crawler-mounted Mobile Crane) [80 h]; PY Concretor [160 h]; General Worker [320 h]; Carpenter (Formwork - Civil Construction) [320 h]; Plant Operator [80 h]; Concrete Pump [80 h] | 100% | 100% | 823A_AB | 72 | m3 | 72 | 72 |
|  | 2 | **Northbound (Up Track)** |  | 2015-11-07 | 2016-03-16 |  |  |  |  |  |  |  |  |  |  |  |  |  |
| 823A-ST-TUT-NB-1010 |  | Placing of waterproof member T-lock & testing (Base Slab) | 2d | 2015-11-07 A | 2015-11-14 A | 823A-ST-TBM-NB-1080, 823A-ST-TBM-NB-1070 | 100% | 2015-11-07 | 2015-11-09 |  | General Worker [32 h] | 100% | 100% | 823A_AB |  |  |  |  |
| 823A-ST-TUT-NB-1170 |  | Side walkway and cable bracket (72m3) | 10d | 2015-11-12 A | 2016-03-01 A | 823A-ST-TUT-NB-1160 | 100% | 2016-01-06 | 2016-01-16 |  | Crawler Crane/Mobile Crane [80 h]; Permanent Concrete [72 Cu m]; Concrete 20/20C [72 Cu m]; Plant and Equipment Operator (Crawler-mounted Mobile Crane) [80 h]; PY Concretor [160 h]; General Worker [320 h]; Concrete Pump [80 h]; Carpenter (Formwork - Civil Construction) [320 h] | 100% | 100% | 823A_AB | 72 | m3 | 72 | 72 |
| 823A-ST-TUT-NB-1020 |  | Erect external formwork (Base Slab) | 3d | 2015-11-16 A | 2015-11-18 A | 823A-ST-TUT-NB-1010 | 100% | 2015-11-10 | 2015-11-12 |  | Crawler Crane/Mobile Crane [24 h]; Plant and Equipment Operator (Crawler-mounted Mobile Crane) [24 h]; Carpenter (Formwork - Civil Construction) [96 h] | 100% | 100% | 823A_AB |  |  |  |  |
| 823A-ST-TUT-NB-1030 |  | Rebar fixing (Base Slab) | 4d | 2015-11-19 A | 2015-11-23 A | 823A-ST-TUT-NB-1020 | 100% | 2015-11-13 | 2015-11-17 |  | Crawler Crane/Mobile Crane [32 h]; Reinforcement [37004 kg]; Plant and Equipment Operator (Crawler-mounted Mobile Crane) [32 h]; Bar Bender & Fixer [256 h] | 100% | 100% | 823A_AB |  |  |  |  |
| 823A-ST-TUT-NB-1040 |  | Erect internal kicker formwork (Base Slab) | 3d | 2015-11-24 A | 2015-11-26 A | 823A-ST-TUT-NB-1030 | 100% | 2015-11-18 | 2015-11-20 |  | Crawler Crane/Mobile Crane [24 h]; Plant and Equipment Operator (Crawler-mounted Mobile Crane) [24 h]; Carpenter (Formwork - Civil Construction) [144 h] | 100% | 100% | 823A_AB |  |  |  |  |
| 823A-ST-TUT-NB-1050 |  | Clearing and inspection (Base Slab) | 1d | 2015-11-27 A | 2015-11-27 A | 823A-ST-TUT-NB-1040 | 100% | 2015-11-21 | 2015-11-21 |  | General Worker [16 h]; Air Compressor [8 h] | 100% | 100% | 823A_AB |  |  |  |  |
| 823A-ST-TUT-NB-1060 |  | Concreting (Base Slab) (245m3) | 1d | 2015-11-28 A | 2015-11-28 A | 823A-ST-TUT-NB-1050 | 100% | 2015-11-23 | 2015-11-23 |  | Permanent Concrete [245 Cu m]; Concrete 45/20A [245 Cu m]; Crawler Crane/Mobile Crane [8 h]; Plant and Equipment Operator (Crawler-mounted Mobile Crane) [8 h]; Rigger/Metal Formwork Erector [32 h]; PY Concretor [32 h]; General Worker [32 h]; Concrete Pump [8 h]; Plant Operator [8 h] | 100% | 100% | 823A_AB | 245 | m3 | 245 | 245 |
| 823A-ST-TUT-NB-1070 |  | Curing (Base Slab) | 7d | 2015-11-30 A | 2015-12-03 A | 823A-ST-TUT-NB-1060 | 100% | 2015-11-24 | 2015-12-01 |  |  | 100% | 100% | 823A_AB |  |  |  |  |
| 823A-ST-TUT-NB-1080 |  | Removal of formwork (Base Slab) | 1d | 2015-12-04 A | 2015-12-05 A | 823A-ST-TUT-NB-1060 FS+1d | 100% | 2015-12-01 | 2015-12-01 |  | Crawler Crane/Mobile Crane [8 h]; Plant and Equipment Operator (Crawler-mounted Mobile Crane) [8 h]; Carpenter (Formwork - Civil Construction) [16 h] | 100% | 100% | 823A_AB |  |  |  |  |
| 823A-ST-TUT-NB-1090 |  | Erect internal formwork and scaffold system (Wall and roof) | 7d | 2015-12-07 A | 2016-01-02 A | 823A-ST-TUT-NB-1080 | 100% | 2015-12-02 | 2015-12-09 |  | Crawler Crane/Mobile Crane [56 h]; Plant and Equipment Operator (Crawler-mounted Mobile Crane) [56 h]; Rigger/Metal Formwork Erector [224 h]; Carpenter (Formwork - Civil Construction) [448 h] | 100% | 100% | 823A_AB |  |  |  |  |
| 823A-ST-TUT-NB-1180 |  | Provision access opening to DC | 29d | 2015-12-07 A | 2015-12-24 A | 823A-ST-TUT-NB-1170 | 100% | 2016-02-02 | 2016-03-09 |  |  | 100% | 100% | 823A_AB |  |  |  |  |
| 823A-ST-TUT-NB-1190 |  | Erect falsework and soffit formwork (Opening) | 10d | 2015-12-28 A | 2016-01-08 A | 823A-ST-TUT-NB-1180 | 100% | 2016-03-10 | 2016-03-21 |  | Crawler Crane/Mobile Crane [80 h]; Plant and Equipment Operator (Crawler-mounted Mobile Crane) [80 h]; Rigger/Metal Formwork Erector [320 h]; Carpenter (Formwork - Civil Construction) [160 h] | 100% | 100% | 823A_AB |  |  |  |  |
| 823A-ST-TUT-NB-1100 |  | Rebar fixing (Wall and roof) | 6d | 2016-01-04 A | 2016-01-09 A | 823A-ST-TUT-NB-1090, 823A-ST-TUT-NB-1070 | 100% |  |  |  | Crawler Crane/Mobile Crane [48 h]; Reinforcement [25004 kg]; Bar Bender & Fixer [384 h]; Plant and Equipment Operator (Crawler-mounted Mobile Crane) [48 h] | 100% | 100% | 823A_AB |  |  |  |  |
| 823A-ST-TUT-NB-1110 |  | Erect external formwork (Wall) | 3d | 2016-01-07 A | 2016-01-09 A | 823A-ST-TUT-NB-1100 | 100% | 2016-01-11 | 2016-01-13 |  | Crawler Crane/Mobile Crane [24 h]; Plant and Equipment Operator (Crawler-mounted Mobile Crane) [24 h]; Carpenter (Formwork - Civil Construction) [96 h] | 100% | 100% | 823A_AB |  |  |  |  |
| 823A-ST-TUT-NB-1200 |  | Rebar fixing (Roof) | 1d | 2016-01-09 A | 2016-01-09 A | 823A-ST-TUT-NB-1190 | 100% | 2016-03-22 | 2016-03-22 |  | Crawler Crane/Mobile Crane [8 h]; Reinforcement [34053 kg]; Plant and Equipment Operator (Crawler-mounted Mobile Crane) [8 h]; Bar Bender & Fixer [32 h] | 100% | 100% | 823A_AB |  |  |  |  |
| 823A-ST-TUT-NB-1120 |  | Clearing and inspection (Wall and roof) | 1d | 2016-01-11 A | 2016-01-11 A | 823A-ST-TUT-NB-1110 | 100% | 2016-01-14 | 2016-01-14 |  | General Worker [16 h]; Air Compressor [8 h] | 100% | 100% | 823A_AB |  |  |  |  |
| 823A-ST-TUT-NB-1210 |  | Clearing and inspection (Roof) | 1d | 2016-01-11 A | 2016-01-11 A | 823A-ST-TUT-NB-1200 | 100% | 2016-03-23 | 2016-03-23 |  | General Worker [16 h]; Air Compressor [8 h] | 100% | 100% | 823A_AB |  |  |  |  |
| 823A-ST-TUT-NB-1130 |  | Concreting (Wall and roof) (166m3) | 1d | 2016-01-12 A | 2016-01-12 A | 823A-ST-TUT-NB-1120 | 100% | 2016-01-15 | 2016-01-15 |  | Permanent Concrete [166 Cu m]; Concrete 45/20A [166 Cu m]; Crawler Crane/Mobile Crane [8 h]; Plant and Equipment Operator (Crawler-mounted Mobile Crane) [8 h]; PY Concretor [32 h]; General Worker [32 h]; Rigger/Metal Formwork Erector [32 h]; Concrete Pump [8 h]; Plant Operator [8 h] | 100% | 100% | 823A_AB | 166 | m3 | 166 | 166 |
| 823A-ST-TUT-NB-1220 |  | Concreting (Roof) (225m3) | 1d | 2016-01-12 A | 2016-01-12 A | 823A-ST-TUT-NB-1210 | 100% | 2016-03-24 | 2016-03-24 |  | Permanent Concrete [225 Cu m]; Crawler Crane/Mobile Crane [8 h]; Plant and Equipment Operator (Crawler-mounted Mobile Crane) [8 h]; Rigger/Metal Formwork Erector [32 h]; PY Concretor [64 h]; General Worker [48 h]; Concrete Pump [8 h]; Plant Operator [8 h]; Concrete 45/20A [225 Cu m] | 100% | 100% | 823A_AB | 225 | m3 | 225 | 225 |
| 823A-ST-TUT-NB-1140 |  | Curing (Wall and roof) | 13d | 2016-01-13 A | 2016-01-27 A | 823A-ST-TUT-NB-1130 | 100% | 2016-01-16 | 2016-01-30 |  |  | 100% | 100% | 823A_AB |  |  |  |  |
| 823A-ST-TUT-NB-1230 |  | Curing (Roof) | 14d | 2016-01-13 A | 2016-03-12 A | 823A-ST-TUT-NB-1220 | 100% | 2016-03-29 | 2016-04-14 |  |  | 100% | 100% | 823A_AB |  |  |  |  |
| 823A-ST-TUT-NB-1150 |  | Removal formwork (Wall) | 3d | 2016-01-28 A | 2016-01-30 A | 823A-ST-TUT-NB-1130 FS+2d | 100% | 2016-01-19 | 2016-01-21 |  | Crawler Crane/Mobile Crane [24 h]; Plant and Equipment Operator (Crawler-mounted Mobile Crane) [24 h]; Carpenter (Formwork - Civil Construction) [96 h] | 100% | 100% | 823A_AB |  |  |  |  |
| 823A-ST-TUT-NB-1160 |  | Removal formwork and falsework (Roof) | 1d | 2016-01-30 A | 2016-01-30 A | 823A-ST-TUT-NB-1150, 823A-ST-TUT-NB-1140 | 100% | 2016-02-01 | 2016-02-01 | 823-6dPH | Carpenter (Formwork - Civil Construction) [32 h]; Rigger/Metal Formwork Erector [32 h]; Plant and Equipment Operator (Crawler-mounted Mobile Crane) [8 h]; Crawler Crane/Mobile Crane [8 h] | 100% | 100% | 823A_AB |  |  |  |  |
| 823A-ST-TUT-NB-1240 |  | Removal internal falsework and soffit formwork (Roof) | 3d | 2016-03-14 A | 2016-03-16 A | 823A-ST-TUT-NB-1230 | 100% |  |  |  | Crawler Crane/Mobile Crane [24 h]; Plant and Equipment Operator (Crawler-mounted Mobile Crane) [24 h]; Rigger/Metal Formwork Erector [96 h]; Carpenter (Formwork - Civil Construction) [48 h] | 100% | 100% | 823A_AB |  |  |  |  |

| ID | WBS | Activity | Duration | Start | Finish | Predecessors | Complete | Remaining | Planned start | Planned finish | Total float | Free float | Resources | % Planned | % Actual | 823A_As-built | Actual Up to Date | UNITS | Total Quantity | Planned Up to Date | Time Gain / Loss | (+/-) Weeks |
| --- | --- | --- | --- | --- | --- | --- | --- | --- | --- | --- | --- | --- | --- | --- | --- | --- | --- | --- | --- | --- | --- | --- |
|  | 5 | **Backfilling** |  | 2016-03-01 | 2016-09-19 |  |  |  |  |  |  |  |  |  |  |  |  |  |  |  |  |  |
| 823A-ST-TUT-BF-1010 |  | Spray waterproofing member & testing (Wall & Roof) | 2d | 2016-03-01 A | 2016-03-02 A | 823A-COTATUTS-10, 823A-ST-TUT-NB-1240 | 100% |  | 2016-03-17 | 2016-03-18 |  |  | General Worker [64 h] | 100% | 100% | 823A_AB |  |  |  |  |  |  |
| 823A-ST-TUT-BF-1020 |  | Protection screening to waterproofing member (Wall & Roof) | 5d | 2016-03-03 A | 2016-03-08 A | 823A-ST-TUT-BF-1010 | 100% |  | 2016-03-19 | 2016-03-24 |  |  | Crawler Crane/Mobile Crane [40 h]; Plant and Equipment Operator (Crawler-mounted Mobile Crane) [40 h]; PY Concretor [80 h]; General Worker [160 h] | 100% | 100% | 823A_AB |  |  |  |  |  |  |
| 823A-ST-TUT-BF-1030 |  | Backfilling to +18.25mPD (1229 m3 of soil) | 8d | 2016-07-25 A | 2016-08-02 A | 823A-ST-TUT-BF-1020 | 100% |  | 2016-07-02 | 2016-07-11 |  |  | Crawler Crane/Mobile Crane [64 h]; Backhoe [128 h]; Vibration Roller [64 h]; Plant and Equipment Operator (Crawler-mounted Mobile Crane) [64 h]; General Worker [256 h]; Plant Operator [192 h]; Soil Fill [1229 Cu m] | 100% | 100% | 823A_AB | 1229 | m3 | 1229 | 1229 |  |  |
| 823A-ST-TUT-BF-1040 |  | Laying 500mm mass concrete lateral support | 1d | 2016-08-03 A | 2016-08-03 A | 823A-ST-TUT-BF-1030 | 100% |  |  |  |  |  | Temporary Concrete [88 Cu m]; Crawler Crane/Mobile Crane [8 h]; Plant and Equipment Operator (Crawler-mounted Mobile Crane) [8 h]; PY Concretor [16 h]; General Worker [16 h] | 100% | 100% | 823A_AB |  |  |  |  |  |  |
| 823A-ST-TUT-BF-1050 |  | Backfilling to 0.5m below S3 (+19.5mPD) (372m3 of soil) | 3d | 2016-08-04 A | 2016-08-06 A | 823A-ST-TUT-BF-1040 | 100% |  |  |  |  |  | Soil Fill [372 Cu m]; Crawler Crane/Mobile Crane [24 h]; Backhoe [48 h]; Vibration Roller [24 h]; Plant and Equipment Operator (Crawler-mounted Mobile Crane) [24 h]; General Worker [96 h]; Plant Operator [72 h] | 100% | 100% | 823A_AB | 372 | m3 | 372 | 372 |  |  |
| 823A-ST-TUT-BF-1060 |  | Removal strut S3 | 3d | 2016-08-08 A | 2016-08-10 A | 823A-ST-TUT-BF-1050 | 100% |  |  |  |  |  | Crawler Crane/Mobile Crane [24 h]; Plant and Equipment Operator (Crawler-mounted Mobile Crane) [24 h]; Rigger/Metal Formwork Erector [144 h] | 100% | 100% | 823A_AB |  |  |  |  |  |  |
| 823A-ST-TUT-BF-1070 |  | Backfilling to 0.5m below S2 (+23.5mPD) (1984m3 of soil) | 11d | 2016-08-11 A | 2016-08-23 A | 823A-ST-TUT-BF-1060 | 100% |  |  |  |  |  | Soil Fill [1984 Cu m]; Crawler Crane/Mobile Crane [88 h]; Vibration Roller [88 h]; Plant and Equipment Operator (Crawler-mounted Mobile Crane) [88 h]; General Worker [352 h]; Plant Operator [264 h]; Backhoe [176 h] | 100% | 100% | 823A_AB | 1984 | m3 | 1984 | 1984 |  |  |
| 823A-ST-TUT-BF-1080 |  | Removal strut S2 | 3d | 2016-08-24 A | 2016-09-01 A | 823A-ST-TUT-BF-1070 | 100% |  | 2016-08-24 | 2016-08-26 |  |  | Crawler Crane/Mobile Crane [24 h]; Plant and Equipment Operator (Crawler-mounted Mobile Crane) [24 h]; Rigger/Metal Formwork Erector [144 h] | 100% | 100% | 823A_AB |  |  |  |  |  |  |
| 823A-ST-TUT-BF-1090 |  | Backfilling to 0.5m below S1 (+28.5mPD) (2480m3 of soil) | 13d | 2016-09-02 A | 2016-09-09 A | 823A-ST-TUT-BF-1080 | 100% |  | 2016-09-05 | 2016-09-20 |  |  | Soil Fill [2480 Cu m]; Backhoe [208 h]; Crawler Crane/Mobile Crane [104 h]; Vibration Roller [104 h]; Plant and Equipment Operator (Crawler-mounted Mobile Crane) [104 h]; General Worker [416 h]; Plant and Equipment Operator (Excavator) [312 h] | 100% | 100% | 823A_AB | 2480 | m3 | 2480 | 2480 |  |  |
| 823A-ST-TUT-BF-1100 |  | Removal strut S1 | 2d | 2016-09-10 A | 2016-09-14 A | 823A-ST-TUT-BF-1090 | 100% |  | 2016-09-21 | 2016-09-22 |  |  | Crawler Crane/Mobile Crane [16 h]; Plant and Equipment Operator (Crawler-mounted Mobile Crane) [16 h]; Rigger/Metal Formwork Erector [96 h] | 100% | 100% | 823A_AB |  |  |  |  |  |  |
| 823A-ST-TUT-BF-1110 |  | Backfilling to original ground level (approx. +31.5mPD) (1488m3 of soil) | 8d | 2016-09-15 A | 2016-09-19 A | 823A-ST-TUT-BF-1100 | 100% |  | 2016-09-23 | 2016-10-03 |  |  | Soil Fill [1488 Cu m]; General Worker [256 h]; Backhoe [128 h]; Plant Operator [192 h]; Vibration Roller [64 h] | 100% | 100% | 823A_AB | 1488 | m3 | 1488 | 1488 |  |  |
|  | 6 | **Reinstatement** |  | 2016-10-07 | 2017-02-28 |  |  |  |  |  |  |  |  |  |  |  |  |  |  |  |  |  |
| ST-TUT-RE-1010 |  | Reinstatement of TUT area (Including Hydroseeding) | 220d | 2016-10-07 A | 2017-02-28 | 823A-ST-TUT-BF-1110 | 77% | 50d | 2016-10-03 | 2017-06-19 | 89d | 27d | Backhoe [1760 h]; General Worker [7040 h]; Plant and Equipment Operator (Crawler-mounted Mobile Crane) [1760 h] | 100% | 20% | 823A_AB |  |  |  |  | -15 | -91.7 |
|  | 6 | **Option 1 - Tai Lam Kok Baring Facility** |  |  |  |  |  |  |  |  |  |  |  |  |  |  |  |  |  |  |  |  |

## Activity codes

| Code | Value | Meaning |
| --- | --- | --- |
| 823A_As-built | 823A_AB | 823A As-built |
| 823A_As-built-verified | 823A_ABV | 823A As-built verified |
